Codigo,Nombre,Cuenta,Fase,Entregable,Descripcion,Exclusiones,Aceptacion,Responsable_ultimo,HH,HH_perfil,Recursos,Supuestos,Inicio,Fin,Predecesoras,Hito,Referencias
1.1.1.1,"Acta de arranque, interlocutores y decisiones",1.1,E1 Desarrollo,"Acta de arranque, interlocutores y decisiones",Resultado de la ficha de familia y del paquete original; registro individual por código/ventana,"No duplicar padres, informes, ingeniería ni cobertura; no incluye horas de contraparte ni obras/adquisiciones del cliente",Criterio específico del diccionario T-14 del mismo código; evidencia sobre versión/periodo identificado,Ignacio Silva,32,A:8;I:8;J:16,"Asignación y cuadrante integrado por código; entornos, usuarios y habilitaciones autorizados",BA gobierno; SD1/SD2,2026-12-01,2026-12-03,Inicio,Recepción por etapa o control del periodo; no acredita ejecución,BA gobierno; SD1/SD2
1.1.1.2,Línea base de alcance y trazabilidad,1.1,E1 Desarrollo,Línea base de alcance y trazabilidad,Resultado de la ficha de familia y del paquete original; registro individual por código/ventana,"No duplicar padres, informes, ingeniería ni cobertura; no incluye horas de contraparte ni obras/adquisiciones del cliente",Criterio específico del diccionario T-14 del mismo código; evidencia sobre versión/periodo identificado,Ignacio Silva,40,A:16;Q:8;J:16,"Asignación y cuadrante integrado por código; entornos, usuarios y habilitaciones autorizados",E-25 H1; RT-19.01,2026-12-16,2026-12-21,1.1.1.1,Recepción por etapa o control del periodo; no acredita ejecución,E-25 H1; RT-19.01
1.1.1.3,Definición de terminado y recepción,1.1,E1 Desarrollo,Definición de terminado y recepción,Resultado de la ficha de familia y del paquete original; registro individual por código/ventana,"No duplicar padres, informes, ingeniería ni cobertura; no incluye horas de contraparte ni obras/adquisiciones del cliente",Criterio específico del diccionario T-14 del mismo código; evidencia sobre versión/periodo identificado,Davor Serey,32,S:8;Q:16;J:8,"Asignación y cuadrante integrado por código; entornos, usuarios y habilitaciones autorizados",RT-20.07/08; BA18,2027-01-18,2027-01-21,1.1.1.2,Recepción por etapa o control del periodo; no acredita ejecución,RT-20.07/08; BA18
1.1.2.1,Registro de riesgos y respuestas presupuestadas,1.1,E1 Desarrollo,Registro de riesgos y respuestas presupuestadas,Resultado de la ficha de familia y del paquete original; registro individual por código/ventana,"No duplicar padres, informes, ingeniería ni cobertura; no incluye horas de contraparte ni obras/adquisiciones del cliente",Criterio específico del diccionario T-14 del mismo código; evidencia sobre versión/periodo identificado,Ignacio Silva,32,S:8;I:8;J:16,"Asignación y cuadrante integrado por código; entornos, usuarios y habilitaciones autorizados",SD2; RT-19.06,2027-01-19,2027-01-21,1.1.1.1,Recepción por etapa o control del periodo; no acredita ejecución,SD2; RT-19.06
1.1.2.2,"Línea base integrada de plazo, costo y recursos",1.1,E1 Desarrollo,"Línea base integrada de plazo, costo y recursos",Resultado de la ficha de familia y del paquete original; registro individual por código/ventana,"No duplicar padres, informes, ingeniería ni cobertura; no incluye horas de contraparte ni obras/adquisiciones del cliente",Criterio específico del diccionario T-14 del mismo código; evidencia sobre versión/periodo identificado,Ignacio Silva,40,Q:8;I:8;J:24,"Asignación y cuadrante integrado por código; entornos, usuarios y habilitaciones autorizados",T-14/T-15; E-25; RT-19.07,2027-03-16,2027-03-18,H1;H2,Recepción por etapa o control del periodo; no acredita ejecución,T-14/T-15; E-25; RT-19.07
1.1.3.1,Plan inicial de reversibilidad,1.1,E1 Desarrollo,Plan inicial de reversibilidad,Resultado de la ficha de familia y del paquete original; registro individual por código/ventana,"No duplicar padres, informes, ingeniería ni cobertura; no incluye horas de contraparte ni obras/adquisiciones del cliente",Criterio específico del diccionario T-14 del mismo código; evidencia sobre versión/periodo identificado,Ignacio Silva,48,D:8;S:8;I:16;J:16,"Asignación y cuadrante integrado por código; entornos, usuarios y habilitaciones autorizados",BA77; SD4 reversibilidad,2027-02-01,2027-02-03,1.1.1.1,Recepción por etapa o control del periodo; no acredita ejecución,BA77; SD4 reversibilidad
1.12.1.1,Modelo operativo y contrato de cobertura preparados,1.12,E2 Desarrollo,Modelo operativo y contrato de cobertura preparados,Resultado de la ficha de familia y del paquete original; registro individual por código/ventana,"No duplicar padres, informes, ingeniería ni cobertura; no incluye horas de contraparte ni obras/adquisiciones del cliente",Criterio específico del diccionario T-14 del mismo código; evidencia sobre versión/periodo identificado,José Lara Arce,48,S:8;I:8;O:16;J:16,"Asignación y cuadrante integrado por código; entornos, usuarios y habilitaciones autorizados",RT-21.01--06; BA78,2028-05-04,2028-05-08,H3,Recepción por etapa o control del periodo; no acredita ejecución,RT-21.01--06; BA78
1.12.1.2,"Catálogo, runbooks y traspaso al servicio",1.12,E2 Desarrollo,"Catálogo, runbooks y traspaso al servicio",Resultado de la ficha de familia y del paquete original; registro individual por código/ventana,"No duplicar padres, informes, ingeniería ni cobertura; no incluye horas de contraparte ni obras/adquisiciones del cliente",Criterio específico del diccionario T-14 del mismo código; evidencia sobre versión/periodo identificado,José Lara Arce,56,D:8;S:8;Q:8;I:8;O:24,"Asignación y cuadrante integrado por código; entornos, usuarios y habilitaciones autorizados",RT-21.04; BA77,2028-07-03,2028-07-05,1.12.1.1,Recepción por etapa o control del periodo; no acredita ejecución,RT-21.04; BA77
1.1.3.2,Expediente de custodia independiente de fuentes,1.1,E1 Desarrollo,Expediente de custodia independiente de fuentes,Resultado de la ficha de familia y del paquete original; registro individual por código/ventana,"No duplicar padres, informes, ingeniería ni cobertura; no incluye horas de contraparte ni obras/adquisiciones del cliente",Criterio específico del diccionario T-14 del mismo código; evidencia sobre versión/periodo identificado,Ignacio Silva,24,S:8;I:8;J:8,"Asignación y cuadrante integrado por código; entornos, usuarios y habilitaciones autorizados",BA propiedad de fuentes; SD3 entregables,2027-05-03,2027-05-04,1.2.1.1,Recepción por etapa o control del periodo; no acredita ejecución,BA propiedad de fuentes; SD3 entregables
1.1.3.3.12,Actualización semestral de custodia de fuentes,1.1,E1 Desarrollo,Actualización semestral de custodia de fuentes,Resultado de la ficha de familia y del paquete original; registro individual por código/ventana,"No duplicar padres, informes, ingeniería ni cobertura; no incluye horas de contraparte ni obras/adquisiciones del cliente",Criterio específico del diccionario T-14 del mismo código; evidencia sobre versión/periodo identificado,Ignacio Silva,16,S:4;I:8;J:4,"Asignación y cuadrante integrado por código; entornos, usuarios y habilitaciones autorizados",BA custodia independiente; actualización semestral,2027-11-02,2027-11-03,1.1.3.2,Recepción por etapa o control del periodo; no acredita ejecución,BA custodia independiente; actualización semestral
1.1.3.3.18,Actualización semestral de custodia de fuentes,1.1,E2 Desarrollo,Actualización semestral de custodia de fuentes,Resultado de la ficha de familia y del paquete original; registro individual por código/ventana,"No duplicar padres, informes, ingeniería ni cobertura; no incluye horas de contraparte ni obras/adquisiciones del cliente",Criterio específico del diccionario T-14 del mismo código; evidencia sobre versión/periodo identificado,Ignacio Silva,16,S:4;I:8;J:4,"Asignación y cuadrante integrado por código; entornos, usuarios y habilitaciones autorizados",BA custodia independiente; actualización semestral,2028-05-02,2028-05-03,1.1.3.2,Recepción por etapa o control del periodo; no acredita ejecución,BA custodia independiente; actualización semestral
1.1.3.4,Plan de reversibilidad actualizado durante implementación,1.1,E2 Desarrollo,Plan de reversibilidad actualizado durante implementación,Resultado de la ficha de familia y del paquete original; registro individual por código/ventana,"No duplicar padres, informes, ingeniería ni cobertura; no incluye horas de contraparte ni obras/adquisiciones del cliente",Criterio específico del diccionario T-14 del mismo código; evidencia sobre versión/periodo identificado,Ignacio Silva,32,D:8;S:8;I:8;J:8,"Asignación y cuadrante integrado por código; entornos, usuarios y habilitaciones autorizados",BA77; SD4 reversibilidad,2028-02-01,2028-02-02,1.1.3.1,Recepción por etapa o control del periodo; no acredita ejecución,BA77; SD4 reversibilidad
1.1.4.1.1,Expediente quincenal de control,1.1,E1 Desarrollo,Expediente quincenal de control,Resultado de la ficha de familia y del paquete original; registro individual por código/ventana,"No duplicar padres, informes, ingeniería ni cobertura; no incluye horas de contraparte ni obras/adquisiciones del cliente",Criterio específico del diccionario T-14 del mismo código; evidencia sobre versión/periodo identificado,Ignacio Silva,16,A:4;Q:4;J:8,"Asignación y cuadrante integrado por código; entornos, usuarios y habilitaciones autorizados",RT-19.07--10,2026-12-03,2026-12-04,1.1.1.1,Recepción por etapa o control del periodo; no acredita ejecución,RT-19.07--10
1.1.4.1.2,Expediente quincenal de control,1.1,E1 Desarrollo,Expediente quincenal de control,Resultado de la ficha de familia y del paquete original; registro individual por código/ventana,"No duplicar padres, informes, ingeniería ni cobertura; no incluye horas de contraparte ni obras/adquisiciones del cliente",Criterio específico del diccionario T-14 del mismo código; evidencia sobre versión/periodo identificado,Ignacio Silva,16,A:4;Q:4;J:8,"Asignación y cuadrante integrado por código; entornos, usuarios y habilitaciones autorizados",RT-19.07--10,2026-12-18,2026-12-21,1.1.1.1,Recepción por etapa o control del periodo; no acredita ejecución,RT-19.07--10
1.1.4.2.1,Expediente quincenal de control,1.1,E1 Desarrollo,Expediente quincenal de control,Resultado de la ficha de familia y del paquete original; registro individual por código/ventana,"No duplicar padres, informes, ingeniería ni cobertura; no incluye horas de contraparte ni obras/adquisiciones del cliente",Criterio específico del diccionario T-14 del mismo código; evidencia sobre versión/periodo identificado,Ignacio Silva,16,A:4;Q:4;J:8,"Asignación y cuadrante integrado por código; entornos, usuarios y habilitaciones autorizados",RT-19.07--10,2027-01-04,2027-01-05,1.1.1.1,Recepción por etapa o control del periodo; no acredita ejecución,RT-19.07--10
1.1.4.2.2,Expediente quincenal de control,1.1,E1 Desarrollo,Expediente quincenal de control,Resultado de la ficha de familia y del paquete original; registro individual por código/ventana,"No duplicar padres, informes, ingeniería ni cobertura; no incluye horas de contraparte ni obras/adquisiciones del cliente",Criterio específico del diccionario T-14 del mismo código; evidencia sobre versión/periodo identificado,Ignacio Silva,16,A:4;Q:4;J:8,"Asignación y cuadrante integrado por código; entornos, usuarios y habilitaciones autorizados",RT-19.07--10,2027-01-21,2027-01-22,1.1.1.1,Recepción por etapa o control del periodo; no acredita ejecución,RT-19.07--10
1.1.4.3.1,Expediente quincenal de control,1.1,E1 Desarrollo,Expediente quincenal de control,Resultado de la ficha de familia y del paquete original; registro individual por código/ventana,"No duplicar padres, informes, ingeniería ni cobertura; no incluye horas de contraparte ni obras/adquisiciones del cliente",Criterio específico del diccionario T-14 del mismo código; evidencia sobre versión/periodo identificado,Ignacio Silva,16,A:4;Q:4;J:8,"Asignación y cuadrante integrado por código; entornos, usuarios y habilitaciones autorizados",RT-19.07--10,2027-02-03,2027-02-04,1.1.1.1,Recepción por etapa o control del periodo; no acredita ejecución,RT-19.07--10
1.1.4.3.2,Expediente quincenal de control,1.1,E1 Desarrollo,Expediente quincenal de control,Resultado de la ficha de familia y del paquete original; registro individual por código/ventana,"No duplicar padres, informes, ingeniería ni cobertura; no incluye horas de contraparte ni obras/adquisiciones del cliente",Criterio específico del diccionario T-14 del mismo código; evidencia sobre versión/periodo identificado,Ignacio Silva,16,A:4;Q:4;J:8,"Asignación y cuadrante integrado por código; entornos, usuarios y habilitaciones autorizados",RT-19.07--10,2027-02-16,2027-02-17,1.1.1.1,Recepción por etapa o control del periodo; no acredita ejecución,RT-19.07--10
1.1.4.4.1,Expediente quincenal de control,1.1,E1 Desarrollo,Expediente quincenal de control,Resultado de la ficha de familia y del paquete original; registro individual por código/ventana,"No duplicar padres, informes, ingeniería ni cobertura; no incluye horas de contraparte ni obras/adquisiciones del cliente",Criterio específico del diccionario T-14 del mismo código; evidencia sobre versión/periodo identificado,Ignacio Silva,16,A:4;Q:4;J:8,"Asignación y cuadrante integrado por código; entornos, usuarios y habilitaciones autorizados",RT-19.07--10,2027-03-01,2027-03-02,1.1.1.1,Recepción por etapa o control del periodo; no acredita ejecución,RT-19.07--10
1.1.4.4.2,Expediente quincenal de control,1.1,E1 Desarrollo,Expediente quincenal de control,Resultado de la ficha de familia y del paquete original; registro individual por código/ventana,"No duplicar padres, informes, ingeniería ni cobertura; no incluye horas de contraparte ni obras/adquisiciones del cliente",Criterio específico del diccionario T-14 del mismo código; evidencia sobre versión/periodo identificado,Ignacio Silva,16,A:4;Q:4;J:8,"Asignación y cuadrante integrado por código; entornos, usuarios y habilitaciones autorizados",RT-19.07--10,2027-03-17,2027-03-19,1.1.1.1,Recepción por etapa o control del periodo; no acredita ejecución,RT-19.07--10
1.1.4.5.1,Expediente quincenal de control,1.1,E1 Desarrollo,Expediente quincenal de control,Resultado de la ficha de familia y del paquete original; registro individual por código/ventana,"No duplicar padres, informes, ingeniería ni cobertura; no incluye horas de contraparte ni obras/adquisiciones del cliente",Criterio específico del diccionario T-14 del mismo código; evidencia sobre versión/periodo identificado,Ignacio Silva,16,A:4;Q:4;J:8,"Asignación y cuadrante integrado por código; entornos, usuarios y habilitaciones autorizados",RT-19.07--10,2027-04-01,2027-04-02,1.1.1.1,Recepción por etapa o control del periodo; no acredita ejecución,RT-19.07--10
1.1.4.5.2,Expediente quincenal de control,1.1,E1 Desarrollo,Expediente quincenal de control,Resultado de la ficha de familia y del paquete original; registro individual por código/ventana,"No duplicar padres, informes, ingeniería ni cobertura; no incluye horas de contraparte ni obras/adquisiciones del cliente",Criterio específico del diccionario T-14 del mismo código; evidencia sobre versión/periodo identificado,Ignacio Silva,16,A:4;Q:4;J:8,"Asignación y cuadrante integrado por código; entornos, usuarios y habilitaciones autorizados",RT-19.07--10,2027-04-16,2027-04-19,1.1.1.1,Recepción por etapa o control del periodo; no acredita ejecución,RT-19.07--10
1.1.4.6.1,Expediente quincenal de control,1.1,E1 Desarrollo,Expediente quincenal de control,Resultado de la ficha de familia y del paquete original; registro individual por código/ventana,"No duplicar padres, informes, ingeniería ni cobertura; no incluye horas de contraparte ni obras/adquisiciones del cliente",Criterio específico del diccionario T-14 del mismo código; evidencia sobre versión/periodo identificado,Ignacio Silva,16,A:4;Q:4;J:8,"Asignación y cuadrante integrado por código; entornos, usuarios y habilitaciones autorizados",RT-19.07--10,2027-05-04,2027-05-05,1.1.1.1,Recepción por etapa o control del periodo; no acredita ejecución,RT-19.07--10
1.1.4.6.2,Expediente quincenal de control,1.1,E1 Desarrollo,Expediente quincenal de control,Resultado de la ficha de familia y del paquete original; registro individual por código/ventana,"No duplicar padres, informes, ingeniería ni cobertura; no incluye horas de contraparte ni obras/adquisiciones del cliente",Criterio específico del diccionario T-14 del mismo código; evidencia sobre versión/periodo identificado,Ignacio Silva,16,A:4;Q:4;J:8,"Asignación y cuadrante integrado por código; entornos, usuarios y habilitaciones autorizados",RT-19.07--10,2027-05-17,2027-05-18,1.1.1.1,Recepción por etapa o control del periodo; no acredita ejecución,RT-19.07--10
1.1.4.7.1,Expediente quincenal de control,1.1,E1 Desarrollo,Expediente quincenal de control,Resultado de la ficha de familia y del paquete original; registro individual por código/ventana,"No duplicar padres, informes, ingeniería ni cobertura; no incluye horas de contraparte ni obras/adquisiciones del cliente",Criterio específico del diccionario T-14 del mismo código; evidencia sobre versión/periodo identificado,Ignacio Silva,16,A:4;Q:4;J:8,"Asignación y cuadrante integrado por código; entornos, usuarios y habilitaciones autorizados",RT-19.07--10,2027-06-01,2027-06-02,1.1.1.1,Recepción por etapa o control del periodo; no acredita ejecución,RT-19.07--10
1.1.4.7.2,Expediente quincenal de control,1.1,E1 Desarrollo,Expediente quincenal de control,Resultado de la ficha de familia y del paquete original; registro individual por código/ventana,"No duplicar padres, informes, ingeniería ni cobertura; no incluye horas de contraparte ni obras/adquisiciones del cliente",Criterio específico del diccionario T-14 del mismo código; evidencia sobre versión/periodo identificado,Ignacio Silva,16,A:4;Q:4;J:8,"Asignación y cuadrante integrado por código; entornos, usuarios y habilitaciones autorizados",RT-19.07--10,2027-06-16,2027-06-17,1.1.1.1,Recepción por etapa o control del periodo; no acredita ejecución,RT-19.07--10
1.1.4.8.1,Expediente quincenal de control,1.1,E1 Desarrollo,Expediente quincenal de control,Resultado de la ficha de familia y del paquete original; registro individual por código/ventana,"No duplicar padres, informes, ingeniería ni cobertura; no incluye horas de contraparte ni obras/adquisiciones del cliente",Criterio específico del diccionario T-14 del mismo código; evidencia sobre versión/periodo identificado,Ignacio Silva,16,A:4;Q:4;J:8,"Asignación y cuadrante integrado por código; entornos, usuarios y habilitaciones autorizados",RT-19.07--10,2027-07-01,2027-07-02,1.1.1.1,Recepción por etapa o control del periodo; no acredita ejecución,RT-19.07--10
1.1.4.8.2,Expediente quincenal de control,1.1,E1 Desarrollo,Expediente quincenal de control,Resultado de la ficha de familia y del paquete original; registro individual por código/ventana,"No duplicar padres, informes, ingeniería ni cobertura; no incluye horas de contraparte ni obras/adquisiciones del cliente",Criterio específico del diccionario T-14 del mismo código; evidencia sobre versión/periodo identificado,Ignacio Silva,16,A:4;Q:4;J:8,"Asignación y cuadrante integrado por código; entornos, usuarios y habilitaciones autorizados",RT-19.07--10,2027-07-19,2027-07-20,1.1.1.1,Recepción por etapa o control del periodo; no acredita ejecución,RT-19.07--10
1.1.4.9.1,Expediente quincenal de control,1.1,E1 Desarrollo,Expediente quincenal de control,Resultado de la ficha de familia y del paquete original; registro individual por código/ventana,"No duplicar padres, informes, ingeniería ni cobertura; no incluye horas de contraparte ni obras/adquisiciones del cliente",Criterio específico del diccionario T-14 del mismo código; evidencia sobre versión/periodo identificado,Ignacio Silva,16,A:4;Q:4;J:8,"Asignación y cuadrante integrado por código; entornos, usuarios y habilitaciones autorizados",RT-19.07--10,2027-08-03,2027-08-05,1.1.1.1,Recepción por etapa o control del periodo; no acredita ejecución,RT-19.07--10
1.1.4.9.2,Expediente quincenal de control,1.1,E1 Desarrollo,Expediente quincenal de control,Resultado de la ficha de familia y del paquete original; registro individual por código/ventana,"No duplicar padres, informes, ingeniería ni cobertura; no incluye horas de contraparte ni obras/adquisiciones del cliente",Criterio específico del diccionario T-14 del mismo código; evidencia sobre versión/periodo identificado,Ignacio Silva,16,A:4;Q:4;J:8,"Asignación y cuadrante integrado por código; entornos, usuarios y habilitaciones autorizados",RT-19.07--10,2027-08-17,2027-08-18,1.1.1.1,Recepción por etapa o control del periodo; no acredita ejecución,RT-19.07--10
1.1.4.10.1,Expediente quincenal de control,1.1,E1 Desarrollo,Expediente quincenal de control,Resultado de la ficha de familia y del paquete original; registro individual por código/ventana,"No duplicar padres, informes, ingeniería ni cobertura; no incluye horas de contraparte ni obras/adquisiciones del cliente",Criterio específico del diccionario T-14 del mismo código; evidencia sobre versión/periodo identificado,Ignacio Silva,16,A:4;Q:4;J:8,"Asignación y cuadrante integrado por código; entornos, usuarios y habilitaciones autorizados",RT-19.07--10,2027-09-01,2027-09-02,1.1.1.1,Recepción por etapa o control del periodo; no acredita ejecución,RT-19.07--10
1.1.4.10.2,Expediente quincenal de control,1.1,E1 Desarrollo,Expediente quincenal de control,Resultado de la ficha de familia y del paquete original; registro individual por código/ventana,"No duplicar padres, informes, ingeniería ni cobertura; no incluye horas de contraparte ni obras/adquisiciones del cliente",Criterio específico del diccionario T-14 del mismo código; evidencia sobre versión/periodo identificado,Ignacio Silva,16,A:4;Q:4;J:8,"Asignación y cuadrante integrado por código; entornos, usuarios y habilitaciones autorizados",RT-19.07--10,2027-09-16,2027-09-20,1.1.1.1,Recepción por etapa o control del periodo; no acredita ejecución,RT-19.07--10
1.1.4.11.1,Expediente quincenal de control,1.1,E1 Desarrollo,Expediente quincenal de control,Resultado de la ficha de familia y del paquete original; registro individual por código/ventana,"No duplicar padres, informes, ingeniería ni cobertura; no incluye horas de contraparte ni obras/adquisiciones del cliente",Criterio específico del diccionario T-14 del mismo código; evidencia sobre versión/periodo identificado,Ignacio Silva,16,A:4;Q:4;J:8,"Asignación y cuadrante integrado por código; entornos, usuarios y habilitaciones autorizados",RT-19.07--10,2027-10-06,2027-10-07,1.1.1.1,Recepción por etapa o control del periodo; no acredita ejecución,RT-19.07--10
1.1.4.11.2,Expediente quincenal de control,1.1,E1 Desarrollo,Expediente quincenal de control,Resultado de la ficha de familia y del paquete original; registro individual por código/ventana,"No duplicar padres, informes, ingeniería ni cobertura; no incluye horas de contraparte ni obras/adquisiciones del cliente",Criterio específico del diccionario T-14 del mismo código; evidencia sobre versión/periodo identificado,Ignacio Silva,16,A:4;Q:4;J:8,"Asignación y cuadrante integrado por código; entornos, usuarios y habilitaciones autorizados",RT-19.07--10,2027-10-18,2027-10-19,1.1.1.1,Recepción por etapa o control del periodo; no acredita ejecución,RT-19.07--10
1.1.4.12.1,Expediente quincenal de control,1.1,E1 Desarrollo,Expediente quincenal de control,Resultado de la ficha de familia y del paquete original; registro individual por código/ventana,"No duplicar padres, informes, ingeniería ni cobertura; no incluye horas de contraparte ni obras/adquisiciones del cliente",Criterio específico del diccionario T-14 del mismo código; evidencia sobre versión/periodo identificado,Ignacio Silva,16,A:4;Q:4;J:8,"Asignación y cuadrante integrado por código; entornos, usuarios y habilitaciones autorizados",RT-19.07--10,2027-11-03,2027-11-04,1.1.1.1,Recepción por etapa o control del periodo; no acredita ejecución,RT-19.07--10
1.1.4.12.2,Expediente quincenal de control,1.1,E1 Desarrollo,Expediente quincenal de control,Resultado de la ficha de familia y del paquete original; registro individual por código/ventana,"No duplicar padres, informes, ingeniería ni cobertura; no incluye horas de contraparte ni obras/adquisiciones del cliente",Criterio específico del diccionario T-14 del mismo código; evidencia sobre versión/periodo identificado,Ignacio Silva,16,A:4;Q:4;J:8,"Asignación y cuadrante integrado por código; entornos, usuarios y habilitaciones autorizados",RT-19.07--10,2027-11-17,2027-11-19,1.1.1.1,Recepción por etapa o control del periodo; no acredita ejecución,RT-19.07--10
1.1.4.13.1,Expediente quincenal de control,1.1,E2 Desarrollo,Expediente quincenal de control,Resultado de la ficha de familia y del paquete original; registro individual por código/ventana,"No duplicar padres, informes, ingeniería ni cobertura; no incluye horas de contraparte ni obras/adquisiciones del cliente",Criterio específico del diccionario T-14 del mismo código; evidencia sobre versión/periodo identificado,Ignacio Silva,16,A:4;Q:4;J:8,"Asignación y cuadrante integrado por código; entornos, usuarios y habilitaciones autorizados",RT-19.07--10,2027-12-01,2027-12-02,1.1.1.1,Recepción por etapa o control del periodo; no acredita ejecución,RT-19.07--10
1.1.4.13.2,Expediente quincenal de control,1.1,E2 Desarrollo,Expediente quincenal de control,Resultado de la ficha de familia y del paquete original; registro individual por código/ventana,"No duplicar padres, informes, ingeniería ni cobertura; no incluye horas de contraparte ni obras/adquisiciones del cliente",Criterio específico del diccionario T-14 del mismo código; evidencia sobre versión/periodo identificado,Ignacio Silva,16,A:4;Q:4;J:8,"Asignación y cuadrante integrado por código; entornos, usuarios y habilitaciones autorizados",RT-19.07--10,2027-12-16,2027-12-17,1.1.1.1,Recepción por etapa o control del periodo; no acredita ejecución,RT-19.07--10
1.1.4.14.1,Expediente quincenal de control,1.1,E2 Desarrollo,Expediente quincenal de control,Resultado de la ficha de familia y del paquete original; registro individual por código/ventana,"No duplicar padres, informes, ingeniería ni cobertura; no incluye horas de contraparte ni obras/adquisiciones del cliente",Criterio específico del diccionario T-14 del mismo código; evidencia sobre versión/periodo identificado,Ignacio Silva,16,A:4;Q:4;J:8,"Asignación y cuadrante integrado por código; entornos, usuarios y habilitaciones autorizados",RT-19.07--10,2028-01-03,2028-01-04,1.1.1.1,Recepción por etapa o control del periodo; no acredita ejecución,RT-19.07--10
1.1.4.14.2,Expediente quincenal de control,1.1,E2 Desarrollo,Expediente quincenal de control,Resultado de la ficha de familia y del paquete original; registro individual por código/ventana,"No duplicar padres, informes, ingeniería ni cobertura; no incluye horas de contraparte ni obras/adquisiciones del cliente",Criterio específico del diccionario T-14 del mismo código; evidencia sobre versión/periodo identificado,Ignacio Silva,16,A:4;Q:4;J:8,"Asignación y cuadrante integrado por código; entornos, usuarios y habilitaciones autorizados",RT-19.07--10,2028-01-17,2028-01-18,1.1.1.1,Recepción por etapa o control del periodo; no acredita ejecución,RT-19.07--10
1.1.4.15.1,Expediente quincenal de control,1.1,E2 Desarrollo,Expediente quincenal de control,Resultado de la ficha de familia y del paquete original; registro individual por código/ventana,"No duplicar padres, informes, ingeniería ni cobertura; no incluye horas de contraparte ni obras/adquisiciones del cliente",Criterio específico del diccionario T-14 del mismo código; evidencia sobre versión/periodo identificado,Ignacio Silva,16,A:4;Q:4;J:8,"Asignación y cuadrante integrado por código; entornos, usuarios y habilitaciones autorizados",RT-19.07--10,2028-02-02,2028-02-03,1.1.1.1,Recepción por etapa o control del periodo; no acredita ejecución,RT-19.07--10
1.1.4.15.2,Expediente quincenal de control,1.1,E2 Desarrollo,Expediente quincenal de control,Resultado de la ficha de familia y del paquete original; registro individual por código/ventana,"No duplicar padres, informes, ingeniería ni cobertura; no incluye horas de contraparte ni obras/adquisiciones del cliente",Criterio específico del diccionario T-14 del mismo código; evidencia sobre versión/periodo identificado,Ignacio Silva,16,A:4;Q:4;J:8,"Asignación y cuadrante integrado por código; entornos, usuarios y habilitaciones autorizados",RT-19.07--10,2028-02-17,2028-02-21,1.1.1.1,Recepción por etapa o control del periodo; no acredita ejecución,RT-19.07--10
1.1.4.16.1,Expediente quincenal de control,1.1,E2 Desarrollo,Expediente quincenal de control,Resultado de la ficha de familia y del paquete original; registro individual por código/ventana,"No duplicar padres, informes, ingeniería ni cobertura; no incluye horas de contraparte ni obras/adquisiciones del cliente",Criterio específico del diccionario T-14 del mismo código; evidencia sobre versión/periodo identificado,Ignacio Silva,16,A:4;Q:4;J:8,"Asignación y cuadrante integrado por código; entornos, usuarios y habilitaciones autorizados",RT-19.07--10,2028-03-03,2028-03-06,1.1.1.1,Recepción por etapa o control del periodo; no acredita ejecución,RT-19.07--10
1.1.4.16.2,Expediente quincenal de control,1.1,E2 Desarrollo,Expediente quincenal de control,Resultado de la ficha de familia y del paquete original; registro individual por código/ventana,"No duplicar padres, informes, ingeniería ni cobertura; no incluye horas de contraparte ni obras/adquisiciones del cliente",Criterio específico del diccionario T-14 del mismo código; evidencia sobre versión/periodo identificado,Ignacio Silva,16,A:4;Q:4;J:8,"Asignación y cuadrante integrado por código; entornos, usuarios y habilitaciones autorizados",RT-19.07--10,2028-03-16,2028-03-17,1.1.1.1,Recepción por etapa o control del periodo; no acredita ejecución,RT-19.07--10
1.1.4.17.1,Expediente quincenal de control,1.1,E2 Desarrollo,Expediente quincenal de control,Resultado de la ficha de familia y del paquete original; registro individual por código/ventana,"No duplicar padres, informes, ingeniería ni cobertura; no incluye horas de contraparte ni obras/adquisiciones del cliente",Criterio específico del diccionario T-14 del mismo código; evidencia sobre versión/periodo identificado,Ignacio Silva,16,A:4;Q:4;J:8,"Asignación y cuadrante integrado por código; entornos, usuarios y habilitaciones autorizados",RT-19.07--10,2028-04-03,2028-04-04,1.1.1.1,Recepción por etapa o control del periodo; no acredita ejecución,RT-19.07--10
1.1.4.17.2,Expediente quincenal de control,1.1,E2 Desarrollo,Expediente quincenal de control,Resultado de la ficha de familia y del paquete original; registro individual por código/ventana,"No duplicar padres, informes, ingeniería ni cobertura; no incluye horas de contraparte ni obras/adquisiciones del cliente",Criterio específico del diccionario T-14 del mismo código; evidencia sobre versión/periodo identificado,Ignacio Silva,16,A:4;Q:4;J:8,"Asignación y cuadrante integrado por código; entornos, usuarios y habilitaciones autorizados",RT-19.07--10,2028-04-17,2028-04-18,1.1.1.1,Recepción por etapa o control del periodo; no acredita ejecución,RT-19.07--10
1.1.4.18.1,Expediente quincenal de control,1.1,E2 Desarrollo,Expediente quincenal de control,Resultado de la ficha de familia y del paquete original; registro individual por código/ventana,"No duplicar padres, informes, ingeniería ni cobertura; no incluye horas de contraparte ni obras/adquisiciones del cliente",Criterio específico del diccionario T-14 del mismo código; evidencia sobre versión/periodo identificado,Ignacio Silva,16,A:4;Q:4;J:8,"Asignación y cuadrante integrado por código; entornos, usuarios y habilitaciones autorizados",RT-19.07--10,2028-05-03,2028-05-05,1.1.1.1,Recepción por etapa o control del periodo; no acredita ejecución,RT-19.07--10
1.1.4.18.2,Expediente quincenal de control,1.1,E2 Desarrollo,Expediente quincenal de control,Resultado de la ficha de familia y del paquete original; registro individual por código/ventana,"No duplicar padres, informes, ingeniería ni cobertura; no incluye horas de contraparte ni obras/adquisiciones del cliente",Criterio específico del diccionario T-14 del mismo código; evidencia sobre versión/periodo identificado,Ignacio Silva,16,A:4;Q:4;J:8,"Asignación y cuadrante integrado por código; entornos, usuarios y habilitaciones autorizados",RT-19.07--10,2028-05-16,2028-05-17,1.1.1.1,Recepción por etapa o control del periodo; no acredita ejecución,RT-19.07--10
1.1.4.19.1,Expediente quincenal de control,1.1,E2 Desarrollo,Expediente quincenal de control,Resultado de la ficha de familia y del paquete original; registro individual por código/ventana,"No duplicar padres, informes, ingeniería ni cobertura; no incluye horas de contraparte ni obras/adquisiciones del cliente",Criterio específico del diccionario T-14 del mismo código; evidencia sobre versión/periodo identificado,Ignacio Silva,16,A:4;Q:4;J:8,"Asignación y cuadrante integrado por código; entornos, usuarios y habilitaciones autorizados",RT-19.07--10,2028-06-01,2028-06-02,1.1.1.1,Recepción por etapa o control del periodo; no acredita ejecución,RT-19.07--10
1.1.4.19.2,Expediente quincenal de control,1.1,E2 Desarrollo,Expediente quincenal de control,Resultado de la ficha de familia y del paquete original; registro individual por código/ventana,"No duplicar padres, informes, ingeniería ni cobertura; no incluye horas de contraparte ni obras/adquisiciones del cliente",Criterio específico del diccionario T-14 del mismo código; evidencia sobre versión/periodo identificado,Ignacio Silva,16,A:4;Q:4;J:8,"Asignación y cuadrante integrado por código; entornos, usuarios y habilitaciones autorizados",RT-19.07--10,2028-06-16,2028-06-19,1.1.1.1,Recepción por etapa o control del periodo; no acredita ejecución,RT-19.07--10
1.1.4.20.1,Expediente quincenal de control,1.1,E2 Desarrollo,Expediente quincenal de control,Resultado de la ficha de familia y del paquete original; registro individual por código/ventana,"No duplicar padres, informes, ingeniería ni cobertura; no incluye horas de contraparte ni obras/adquisiciones del cliente",Criterio específico del diccionario T-14 del mismo código; evidencia sobre versión/periodo identificado,Ignacio Silva,16,A:4;Q:4;J:8,"Asignación y cuadrante integrado por código; entornos, usuarios y habilitaciones autorizados",RT-19.07--10,2028-07-05,2028-07-07,1.1.1.1,Recepción por etapa o control del periodo; no acredita ejecución,RT-19.07--10
1.1.4.20.2,Expediente quincenal de control,1.1,E2 Desarrollo,Expediente quincenal de control,Resultado de la ficha de familia y del paquete original; registro individual por código/ventana,"No duplicar padres, informes, ingeniería ni cobertura; no incluye horas de contraparte ni obras/adquisiciones del cliente",Criterio específico del diccionario T-14 del mismo código; evidencia sobre versión/periodo identificado,Ignacio Silva,16,A:4;Q:4;J:8,"Asignación y cuadrante integrado por código; entornos, usuarios y habilitaciones autorizados",RT-19.07--10,2028-07-17,2028-07-18,1.1.1.1,Recepción por etapa o control del periodo; no acredita ejecución,RT-19.07--10
1.10.2.1.1,Protocolo integral y datos de prueba E1,1.10,E1 Desarrollo,Protocolo integral y datos de prueba E1,Resultado de la ficha de familia y del paquete original; registro individual por código/ventana,"No duplicar padres, informes, ingeniería ni cobertura; no incluye horas de contraparte ni obras/adquisiciones del cliente",Criterio específico del diccionario T-14 del mismo código; evidencia sobre versión/periodo identificado,Davor Serey,32,A:8;Q:16;I:8,"Asignación y cuadrante integrado por código; entornos, usuarios y habilitaciones autorizados",BT20.1; SD3 CA; SD4/SD5,2027-08-23,2027-08-26,H2,Recepción por etapa o control del periodo; no acredita ejecución,BT20.1; SD3 CA; SD4/SD5
1.10.2.1.2,"Puerta de QA, cobertura y contratos E1",1.10,E1 Desarrollo,"Puerta de QA, cobertura y contratos E1",Resultado de la ficha de familia y del paquete original; registro individual por código/ventana,"No duplicar padres, informes, ingeniería ni cobertura; no incluye horas de contraparte ni obras/adquisiciones del cliente",Criterio específico del diccionario T-14 del mismo código; evidencia sobre versión/periodo identificado,Davor Serey,40,Q:24;V:8;I:8,"Asignación y cuadrante integrado por código; entornos, usuarios y habilitaciones autorizados",BT20.1; SD3 CA; SD4/SD5,2027-08-23,2027-08-25,VERSION-E1,Recepción por etapa o control del periodo; no acredita ejecución,BT20.1; SD3 CA; SD4/SD5
1.10.2.1.3,Regresión de sistema y convivencia E1,1.10,E1 Desarrollo,Regresión de sistema y convivencia E1,Resultado de la ficha de familia y del paquete original; registro individual por código/ventana,"No duplicar padres, informes, ingeniería ni cobertura; no incluye horas de contraparte ni obras/adquisiciones del cliente",Criterio específico del diccionario T-14 del mismo código; evidencia sobre versión/periodo identificado,Davor Serey,40,A:8;Q:24;V:8,"Asignación y cuadrante integrado por código; entornos, usuarios y habilitaciones autorizados",BT20.1; SD3 CA; SD4/SD5,2027-08-30,2027-09-02,1.10.2.1.8;VERSION-E1,Recepción por etapa o control del periodo; no acredita ejecución,BT20.1; SD3 CA; SD4/SD5
1.10.2.1.4,Carga y estrés con mezcla operacional E1,1.10,E1 Desarrollo,Carga y estrés con mezcla operacional E1,Resultado de la ficha de familia y del paquete original; registro individual por código/ventana,"No duplicar padres, informes, ingeniería ni cobertura; no incluye horas de contraparte ni obras/adquisiciones del cliente",Criterio específico del diccionario T-14 del mismo código; evidencia sobre versión/periodo identificado,Davor Serey,48,D:8;Q:24;I:8;O:8,"Asignación y cuadrante integrado por código; entornos, usuarios y habilitaciones autorizados",BT20.1; SD3 CA; SD4/SD5,2027-08-24,2027-08-26,VERSION-E1,Recepción por etapa o control del periodo; no acredita ejecución,BT20.1; SD3 CA; SD4/SD5
1.10.2.1.5,Continuidad local y terminales desconectados E1,1.10,E1 Desarrollo,Continuidad local y terminales desconectados E1,Resultado de la ficha de familia y del paquete original; registro individual por código/ventana,"No duplicar padres, informes, ingeniería ni cobertura; no incluye horas de contraparte ni obras/adquisiciones del cliente",Criterio específico del diccionario T-14 del mismo código; evidencia sobre versión/periodo identificado,Davor Serey,56,A:8;Q:24;I:8;O:16,"Asignación y cuadrante integrado por código; entornos, usuarios y habilitaciones autorizados",BT20.1; SD3 CA; SD4/SD5,2027-08-26,2027-09-01,1.10.2.1.4;VERSION-E1,Recepción por etapa o control del periodo; no acredita ejecución,BT20.1; SD3 CA; SD4/SD5
1.10.2.1.6,Resiliencia de componentes y recuperación E1,1.10,E1 Desarrollo,Resiliencia de componentes y recuperación E1,Resultado de la ficha de familia y del paquete original; registro individual por código/ventana,"No duplicar padres, informes, ingeniería ni cobertura; no incluye horas de contraparte ni obras/adquisiciones del cliente",Criterio específico del diccionario T-14 del mismo código; evidencia sobre versión/periodo identificado,José Lara Arce,48,D:8;Q:16;I:8;O:16,"Asignación y cuadrante integrado por código; entornos, usuarios y habilitaciones autorizados",BT20.1; SD3 CA; SD4/SD5,2027-09-01,2027-09-08,1.10.2.1.5;VERSION-E1,Recepción por etapa o control del periodo; no acredita ejecución,BT20.1; SD3 CA; SD4/SD5
1.10.2.1.7,Conmutación real de desastre y retorno E1,1.10,E1 Desarrollo,Conmutación real de desastre y retorno E1,Resultado de la ficha de familia y del paquete original; registro individual por código/ventana,"No duplicar padres, informes, ingeniería ni cobertura; no incluye horas de contraparte ni obras/adquisiciones del cliente",Criterio específico del diccionario T-14 del mismo código; evidencia sobre versión/periodo identificado,José Lara Arce,64,D:8;S:8;Q:8;I:16;O:24,"Asignación y cuadrante integrado por código; entornos, usuarios y habilitaciones autorizados",BT20.1; SD3 CA; SD4/SD5,2027-09-08,2027-09-13,1.10.2.1.6;VERSION-E1,Recepción por etapa o control del periodo; no acredita ejecución,BT20.1; SD3 CA; SD4/SD5
1.10.2.1.8,Prueba ofensiva y cierre de hallazgos E1,1.10,E1 Desarrollo,Prueba ofensiva y cierre de hallazgos E1,Resultado de la ficha de familia y del paquete original; registro individual por código/ventana,"No duplicar padres, informes, ingeniería ni cobertura; no incluye horas de contraparte ni obras/adquisiciones del cliente",Criterio específico del diccionario T-14 del mismo código; evidencia sobre versión/periodo identificado,Bruno Toro,56,S:32;Q:16;I:8,"Asignación y cuadrante integrado por código; entornos, usuarios y habilitaciones autorizados",BT20.1; SD3 CA; SD4/SD5,2027-08-24,2027-08-30,VERSION-E1,Recepción por etapa o control del periodo; no acredita ejecución,BT20.1; SD3 CA; SD4/SD5
1.10.2.1.9,Verificación de accesibilidad WCAG 2.2 AA E1,1.10,E1 Desarrollo,Verificación de accesibilidad WCAG 2.2 AA E1,Resultado de la ficha de familia y del paquete original; registro individual por código/ventana,"No duplicar padres, informes, ingeniería ni cobertura; no incluye horas de contraparte ni obras/adquisiciones del cliente",Criterio específico del diccionario T-14 del mismo código; evidencia sobre versión/periodo identificado,Davor Serey,40,A:8;Q:24;V:8,"Asignación y cuadrante integrado por código; entornos, usuarios y habilitaciones autorizados",BT20.1; SD3 CA; SD4/SD5,2027-08-23,2027-08-25,VERSION-E1,Recepción por etapa o control del periodo; no acredita ejecución,BT20.1; SD3 CA; SD4/SD5
1.10.2.1.10,Aceptación de usuario y expediente T-17 E1,1.10,E1 Desarrollo,Aceptación de usuario y expediente T-17 E1,Resultado de la ficha de familia y del paquete original; registro individual por código/ventana,"No duplicar padres, informes, ingeniería ni cobertura; no incluye horas de contraparte ni obras/adquisiciones del cliente",Criterio específico del diccionario T-14 del mismo código; evidencia sobre versión/periodo identificado,Davor Serey,48,A:16;Q:24;J:8,"Asignación y cuadrante integrado por código; entornos, usuarios y habilitaciones autorizados",BT20.1; SD3 CA; SD4/SD5,2027-10-04,2027-10-07,1.10.1.1.2.5;1.10.2.1.1;1.10.2.1.2;1.10.2.1.3;1.10.2.1.4;1.10.2.1.5;1.10.2.1.6;1.10.2.1.7;1.10.2.1.8;1.10.2.1.9,Recepción por etapa o control del periodo; no acredita ejecución,BT20.1; SD3 CA; SD4/SD5
1.11.2.1.1,Materiales y ejercicios perfil 1 E1,1.11,E1 Desarrollo,Materiales y ejercicios perfil 1 E1,Resultado de la ficha de familia y del paquete original; registro individual por código/ventana,"No duplicar padres, informes, ingeniería ni cobertura; no incluye horas de contraparte ni obras/adquisiciones del cliente",Criterio específico del diccionario T-14 del mismo código; evidencia sobre versión/periodo identificado,José Lara Arce,32,A:8;Q:8;L:16,"Asignación y cuadrante integrado por código; entornos, usuarios y habilitaciones autorizados",RT-22.01--03,2027-10-18,2027-10-21,VERSION-E1,Recepción por etapa o control del periodo; no acredita ejecución,RT-22.01--03
1.11.2.1.2,Materiales y ejercicios perfil 2 E1,1.11,E1 Desarrollo,Materiales y ejercicios perfil 2 E1,Resultado de la ficha de familia y del paquete original; registro individual por código/ventana,"No duplicar padres, informes, ingeniería ni cobertura; no incluye horas de contraparte ni obras/adquisiciones del cliente",Criterio específico del diccionario T-14 del mismo código; evidencia sobre versión/periodo identificado,José Lara Arce,32,A:8;Q:8;L:16,"Asignación y cuadrante integrado por código; entornos, usuarios y habilitaciones autorizados",RT-22.01--03,2027-10-19,2027-10-22,VERSION-E1,Recepción por etapa o control del periodo; no acredita ejecución,RT-22.01--03
1.11.2.1.3,Materiales y ejercicios perfil 3 E1,1.11,E1 Desarrollo,Materiales y ejercicios perfil 3 E1,Resultado de la ficha de familia y del paquete original; registro individual por código/ventana,"No duplicar padres, informes, ingeniería ni cobertura; no incluye horas de contraparte ni obras/adquisiciones del cliente",Criterio específico del diccionario T-14 del mismo código; evidencia sobre versión/periodo identificado,José Lara Arce,32,A:8;Q:8;L:16,"Asignación y cuadrante integrado por código; entornos, usuarios y habilitaciones autorizados",RT-22.01--03,2027-10-21,2027-10-26,VERSION-E1,Recepción por etapa o control del periodo; no acredita ejecución,RT-22.01--03
1.11.2.1.4,Materiales y ejercicios perfil 4 E1,1.11,E1 Desarrollo,Materiales y ejercicios perfil 4 E1,Resultado de la ficha de familia y del paquete original; registro individual por código/ventana,"No duplicar padres, informes, ingeniería ni cobertura; no incluye horas de contraparte ni obras/adquisiciones del cliente",Criterio específico del diccionario T-14 del mismo código; evidencia sobre versión/periodo identificado,José Lara Arce,32,A:8;Q:8;L:16,"Asignación y cuadrante integrado por código; entornos, usuarios y habilitaciones autorizados",RT-22.01--03,2027-10-20,2027-10-25,VERSION-E1,Recepción por etapa o control del periodo; no acredita ejecución,RT-22.01--03
1.11.2.1.5,Materiales y ejercicios perfil 5 E1,1.11,E1 Desarrollo,Materiales y ejercicios perfil 5 E1,Resultado de la ficha de familia y del paquete original; registro individual por código/ventana,"No duplicar padres, informes, ingeniería ni cobertura; no incluye horas de contraparte ni obras/adquisiciones del cliente",Criterio específico del diccionario T-14 del mismo código; evidencia sobre versión/periodo identificado,José Lara Arce,32,A:8;Q:8;L:16,"Asignación y cuadrante integrado por código; entornos, usuarios y habilitaciones autorizados",RT-22.01--03,2027-10-18,2027-10-21,VERSION-E1,Recepción por etapa o control del periodo; no acredita ejecución,RT-22.01--03
1.11.3.1.1,Plan de formación y turnos E1,1.11,E1 Desarrollo,Plan de formación y turnos E1,Resultado de la ficha de familia y del paquete original; registro individual por código/ventana,"No duplicar padres, informes, ingeniería ni cobertura; no incluye horas de contraparte ni obras/adquisiciones del cliente",Criterio específico del diccionario T-14 del mismo código; evidencia sobre versión/periodo identificado,José Lara Arce,32,A:8;L:16;J:8,"Asignación y cuadrante integrado por código; entornos, usuarios y habilitaciones autorizados",RT-22.04/05; caso07 capacitación,2027-10-26,2027-10-28,1.11.2.1.1;1.11.2.1.2;1.11.2.1.3;1.11.2.1.4;1.11.2.1.5,Recepción por etapa o control del periodo; no acredita ejecución,RT-22.04/05; caso07 capacitación
1.11.3.1.2,Expediente de evaluación y certificación E1,1.11,E2 Desarrollo,Expediente de evaluación y certificación E1,Resultado de la ficha de familia y del paquete original; registro individual por código/ventana,"No duplicar padres, informes, ingeniería ni cobertura; no incluye horas de contraparte ni obras/adquisiciones del cliente",Criterio específico del diccionario T-14 del mismo código; evidencia sobre versión/periodo identificado,José Lara Arce,32,A:8;Q:8;L:16,"Asignación y cuadrante integrado por código; entornos, usuarios y habilitaciones autorizados",RT-22.05; BA17.3,2028-02-01,2028-02-04,FORMACION-E1,Recepción por etapa o control del periodo; no acredita ejecución,RT-22.05; BA17.3
1.11.5.1.1,Expediente de cierre de marcha blanca E1,1.11,E2 Desarrollo,Expediente de cierre de marcha blanca E1,Resultado de la ficha de familia y del paquete original; registro individual por código/ventana,"No duplicar padres, informes, ingeniería ni cobertura; no incluye horas de contraparte ni obras/adquisiciones del cliente",Criterio específico del diccionario T-14 del mismo código; evidencia sobre versión/periodo identificado,Ignacio Silva,40,A:8;Q:16;O:8;J:8,"Asignación y cuadrante integrado por código; entornos, usuarios y habilitaciones autorizados",BA17.3; RT-20.04,2028-02-14,2028-02-17,1.11.3.1.2;MB-INI-E1,Recepción por etapa o control del periodo; no acredita ejecución,BA17.3; RT-20.04
1.10.2.2.1,Protocolo integral y datos de prueba E2,1.10,E2 Desarrollo,Protocolo integral y datos de prueba E2,Resultado de la ficha de familia y del paquete original; registro individual por código/ventana,"No duplicar padres, informes, ingeniería ni cobertura; no incluye horas de contraparte ni obras/adquisiciones del cliente",Criterio específico del diccionario T-14 del mismo código; evidencia sobre versión/periodo identificado,Davor Serey,32,A:8;Q:16;I:8,"Asignación y cuadrante integrado por código; entornos, usuarios y habilitaciones autorizados",BT20.1; SD3 CA; SD4/SD5,2028-03-16,2028-03-21,H8,Recepción por etapa o control del periodo; no acredita ejecución,BT20.1; SD3 CA; SD4/SD5
1.10.2.2.2,"Puerta de QA, cobertura y contratos E2",1.10,E2 Desarrollo,"Puerta de QA, cobertura y contratos E2",Resultado de la ficha de familia y del paquete original; registro individual por código/ventana,"No duplicar padres, informes, ingeniería ni cobertura; no incluye horas de contraparte ni obras/adquisiciones del cliente",Criterio específico del diccionario T-14 del mismo código; evidencia sobre versión/periodo identificado,Davor Serey,40,Q:24;V:8;I:8,"Asignación y cuadrante integrado por código; entornos, usuarios y habilitaciones autorizados",BT20.1; SD3 CA; SD4/SD5,2028-03-16,2028-03-20,VERSION-E2,Recepción por etapa o control del periodo; no acredita ejecución,BT20.1; SD3 CA; SD4/SD5
1.10.2.2.3,Regresión de sistema y convivencia E2,1.10,E2 Desarrollo,Regresión de sistema y convivencia E2,Resultado de la ficha de familia y del paquete original; registro individual por código/ventana,"No duplicar padres, informes, ingeniería ni cobertura; no incluye horas de contraparte ni obras/adquisiciones del cliente",Criterio específico del diccionario T-14 del mismo código; evidencia sobre versión/periodo identificado,Davor Serey,40,A:8;Q:24;V:8,"Asignación y cuadrante integrado por código; entornos, usuarios y habilitaciones autorizados",BT20.1; SD3 CA; SD4/SD5,2028-03-22,2028-03-27,1.10.2.2.8;VERSION-E2,Recepción por etapa o control del periodo; no acredita ejecución,BT20.1; SD3 CA; SD4/SD5
1.10.2.2.4,Carga y estrés con mezcla operacional E2,1.10,E2 Desarrollo,Carga y estrés con mezcla operacional E2,Resultado de la ficha de familia y del paquete original; registro individual por código/ventana,"No duplicar padres, informes, ingeniería ni cobertura; no incluye horas de contraparte ni obras/adquisiciones del cliente",Criterio específico del diccionario T-14 del mismo código; evidencia sobre versión/periodo identificado,Davor Serey,48,D:8;Q:24;I:8;O:8,"Asignación y cuadrante integrado por código; entornos, usuarios y habilitaciones autorizados",BT20.1; SD3 CA; SD4/SD5,2028-03-16,2028-03-20,VERSION-E2,Recepción por etapa o control del periodo; no acredita ejecución,BT20.1; SD3 CA; SD4/SD5
1.10.2.2.5,Continuidad local y terminales desconectados E2,1.10,E2 Desarrollo,Continuidad local y terminales desconectados E2,Resultado de la ficha de familia y del paquete original; registro individual por código/ventana,"No duplicar padres, informes, ingeniería ni cobertura; no incluye horas de contraparte ni obras/adquisiciones del cliente",Criterio específico del diccionario T-14 del mismo código; evidencia sobre versión/periodo identificado,Davor Serey,56,A:8;Q:24;I:8;O:16,"Asignación y cuadrante integrado por código; entornos, usuarios y habilitaciones autorizados",BT20.1; SD3 CA; SD4/SD5,2028-03-20,2028-03-24,1.10.2.2.4;VERSION-E2,Recepción por etapa o control del periodo; no acredita ejecución,BT20.1; SD3 CA; SD4/SD5
1.10.2.2.6,Resiliencia de componentes y recuperación E2,1.10,E2 Desarrollo,Resiliencia de componentes y recuperación E2,Resultado de la ficha de familia y del paquete original; registro individual por código/ventana,"No duplicar padres, informes, ingeniería ni cobertura; no incluye horas de contraparte ni obras/adquisiciones del cliente",Criterio específico del diccionario T-14 del mismo código; evidencia sobre versión/periodo identificado,José Lara Arce,48,D:8;Q:16;I:8;O:16,"Asignación y cuadrante integrado por código; entornos, usuarios y habilitaciones autorizados",BT20.1; SD3 CA; SD4/SD5,2028-03-24,2028-03-31,1.10.2.2.5;VERSION-E2,Recepción por etapa o control del periodo; no acredita ejecución,BT20.1; SD3 CA; SD4/SD5
1.10.2.2.7,Conmutación real de desastre y retorno E2,1.10,E2 Desarrollo,Conmutación real de desastre y retorno E2,Resultado de la ficha de familia y del paquete original; registro individual por código/ventana,"No duplicar padres, informes, ingeniería ni cobertura; no incluye horas de contraparte ni obras/adquisiciones del cliente",Criterio específico del diccionario T-14 del mismo código; evidencia sobre versión/periodo identificado,José Lara Arce,64,D:8;S:8;Q:8;I:16;O:24,"Asignación y cuadrante integrado por código; entornos, usuarios y habilitaciones autorizados",BT20.1; SD3 CA; SD4/SD5,2028-03-31,2028-04-05,1.10.2.2.6;VERSION-E2,Recepción por etapa o control del periodo; no acredita ejecución,BT20.1; SD3 CA; SD4/SD5
1.10.2.2.8,Prueba ofensiva y cierre de hallazgos E2,1.10,E2 Desarrollo,Prueba ofensiva y cierre de hallazgos E2,Resultado de la ficha de familia y del paquete original; registro individual por código/ventana,"No duplicar padres, informes, ingeniería ni cobertura; no incluye horas de contraparte ni obras/adquisiciones del cliente",Criterio específico del diccionario T-14 del mismo código; evidencia sobre versión/periodo identificado,Bruno Toro,56,S:32;Q:16;I:8,"Asignación y cuadrante integrado por código; entornos, usuarios y habilitaciones autorizados",BT20.1; SD3 CA; SD4/SD5,2028-03-16,2028-03-22,VERSION-E2,Recepción por etapa o control del periodo; no acredita ejecución,BT20.1; SD3 CA; SD4/SD5
1.10.2.2.9,Verificación de accesibilidad WCAG 2.2 AA E2,1.10,E2 Desarrollo,Verificación de accesibilidad WCAG 2.2 AA E2,Resultado de la ficha de familia y del paquete original; registro individual por código/ventana,"No duplicar padres, informes, ingeniería ni cobertura; no incluye horas de contraparte ni obras/adquisiciones del cliente",Criterio específico del diccionario T-14 del mismo código; evidencia sobre versión/periodo identificado,Davor Serey,40,A:8;Q:24;V:8,"Asignación y cuadrante integrado por código; entornos, usuarios y habilitaciones autorizados",BT20.1; SD3 CA; SD4/SD5,2028-03-16,2028-03-20,VERSION-E2,Recepción por etapa o control del periodo; no acredita ejecución,BT20.1; SD3 CA; SD4/SD5
1.10.2.2.10,Aceptación de usuario y expediente T-17 E2,1.10,E2 Desarrollo,Aceptación de usuario y expediente T-17 E2,Resultado de la ficha de familia y del paquete original; registro individual por código/ventana,"No duplicar padres, informes, ingeniería ni cobertura; no incluye horas de contraparte ni obras/adquisiciones del cliente",Criterio específico del diccionario T-14 del mismo código; evidencia sobre versión/periodo identificado,Davor Serey,48,A:16;Q:24;J:8,"Asignación y cuadrante integrado por código; entornos, usuarios y habilitaciones autorizados",BT20.1; SD3 CA; SD4/SD5,2028-04-05,2028-04-11,1.10.1.2.2.5;1.10.2.2.1;1.10.2.2.2;1.10.2.2.3;1.10.2.2.4;1.10.2.2.5;1.10.2.2.6;1.10.2.2.7;1.10.2.2.8;1.10.2.2.9,Recepción por etapa o control del periodo; no acredita ejecución,BT20.1; SD3 CA; SD4/SD5
1.11.2.2.1,Materiales y ejercicios perfil 1 E2,1.11,E2 Desarrollo,Materiales y ejercicios perfil 1 E2,Resultado de la ficha de familia y del paquete original; registro individual por código/ventana,"No duplicar padres, informes, ingeniería ni cobertura; no incluye horas de contraparte ni obras/adquisiciones del cliente",Criterio específico del diccionario T-14 del mismo código; evidencia sobre versión/periodo identificado,José Lara Arce,32,A:8;Q:8;L:16,"Asignación y cuadrante integrado por código; entornos, usuarios y habilitaciones autorizados",RT-22.01--03,2028-04-17,2028-04-20,VERSION-E2,Recepción por etapa o control del periodo; no acredita ejecución,RT-22.01--03
1.11.2.2.2,Materiales y ejercicios perfil 2 E2,1.11,E2 Desarrollo,Materiales y ejercicios perfil 2 E2,Resultado de la ficha de familia y del paquete original; registro individual por código/ventana,"No duplicar padres, informes, ingeniería ni cobertura; no incluye horas de contraparte ni obras/adquisiciones del cliente",Criterio específico del diccionario T-14 del mismo código; evidencia sobre versión/periodo identificado,José Lara Arce,32,A:8;Q:8;L:16,"Asignación y cuadrante integrado por código; entornos, usuarios y habilitaciones autorizados",RT-22.01--03,2028-04-17,2028-04-20,VERSION-E2,Recepción por etapa o control del periodo; no acredita ejecución,RT-22.01--03
1.11.2.2.3,Materiales y ejercicios perfil 3 E2,1.11,E2 Desarrollo,Materiales y ejercicios perfil 3 E2,Resultado de la ficha de familia y del paquete original; registro individual por código/ventana,"No duplicar padres, informes, ingeniería ni cobertura; no incluye horas de contraparte ni obras/adquisiciones del cliente",Criterio específico del diccionario T-14 del mismo código; evidencia sobre versión/periodo identificado,José Lara Arce,32,A:8;Q:8;L:16,"Asignación y cuadrante integrado por código; entornos, usuarios y habilitaciones autorizados",RT-22.01--03,2028-04-19,2028-04-24,VERSION-E2,Recepción por etapa o control del periodo; no acredita ejecución,RT-22.01--03
1.11.2.2.4,Materiales y ejercicios perfil 4 E2,1.11,E2 Desarrollo,Materiales y ejercicios perfil 4 E2,Resultado de la ficha de familia y del paquete original; registro individual por código/ventana,"No duplicar padres, informes, ingeniería ni cobertura; no incluye horas de contraparte ni obras/adquisiciones del cliente",Criterio específico del diccionario T-14 del mismo código; evidencia sobre versión/periodo identificado,José Lara Arce,32,A:8;Q:8;L:16,"Asignación y cuadrante integrado por código; entornos, usuarios y habilitaciones autorizados",RT-22.01--03,2028-04-17,2028-04-20,VERSION-E2,Recepción por etapa o control del periodo; no acredita ejecución,RT-22.01--03
1.11.2.2.5,Materiales y ejercicios perfil 5 E2,1.11,E2 Desarrollo,Materiales y ejercicios perfil 5 E2,Resultado de la ficha de familia y del paquete original; registro individual por código/ventana,"No duplicar padres, informes, ingeniería ni cobertura; no incluye horas de contraparte ni obras/adquisiciones del cliente",Criterio específico del diccionario T-14 del mismo código; evidencia sobre versión/periodo identificado,José Lara Arce,32,A:8;Q:8;L:16,"Asignación y cuadrante integrado por código; entornos, usuarios y habilitaciones autorizados",RT-22.01--03,2028-04-19,2028-04-24,VERSION-E2,Recepción por etapa o control del periodo; no acredita ejecución,RT-22.01--03
1.11.3.2.1,Plan de formación y turnos E2,1.11,E2 Desarrollo,Plan de formación y turnos E2,Resultado de la ficha de familia y del paquete original; registro individual por código/ventana,"No duplicar padres, informes, ingeniería ni cobertura; no incluye horas de contraparte ni obras/adquisiciones del cliente",Criterio específico del diccionario T-14 del mismo código; evidencia sobre versión/periodo identificado,José Lara Arce,32,A:8;L:16;J:8,"Asignación y cuadrante integrado por código; entornos, usuarios y habilitaciones autorizados",RT-22.04/05; caso07 capacitación,2028-04-24,2028-04-26,1.11.2.2.1;1.11.2.2.2;1.11.2.2.3;1.11.2.2.4;1.11.2.2.5,Recepción por etapa o control del periodo; no acredita ejecución,RT-22.04/05; caso07 capacitación
1.11.3.2.2,Expediente de evaluación y certificación E2,1.11,E2 Desarrollo,Expediente de evaluación y certificación E2,Resultado de la ficha de familia y del paquete original; registro individual por código/ventana,"No duplicar padres, informes, ingeniería ni cobertura; no incluye horas de contraparte ni obras/adquisiciones del cliente",Criterio específico del diccionario T-14 del mismo código; evidencia sobre versión/periodo identificado,José Lara Arce,32,A:8;Q:8;L:16,"Asignación y cuadrante integrado por código; entornos, usuarios y habilitaciones autorizados",RT-22.05; BA17.3,2028-06-01,2028-06-06,FORMACION-E2,Recepción por etapa o control del periodo; no acredita ejecución,RT-22.05; BA17.3
1.11.5.2.1,Expediente parcial de recepción continua E2 y registro de observaciones,1.11,E2 Marcha blanca,Expediente parcial de recepción continua E2 y registro de observaciones,Resultado de la ficha de familia y del paquete original; registro individual por código/ventana,"No duplicar padres, informes, ingeniería ni cobertura; no incluye horas de contraparte ni obras/adquisiciones del cliente",Criterio específico del diccionario T-14 del mismo código; evidencia sobre versión/periodo identificado,Ignacio Silva,40,A:8;Q:16;O:8;J:8,"Asignación y cuadrante integrado por código; entornos, usuarios y habilitaciones autorizados",BA17.3; RT-20.04,2028-06-15,2028-06-21,1.11.3.2.2;MB-INI-E2,Recepción por etapa o control del periodo; no acredita ejecución,BA17.3; RT-20.04
1.12.3.1.21,Control mensual de servicio y SLA,1.12,Operación,Control mensual de servicio y SLA,Resultado de la ficha de familia y del paquete original; registro individual por código/ventana,"No duplicar padres, informes, ingeniería ni cobertura; no incluye horas de contraparte ni obras/adquisiciones del cliente",Criterio específico del diccionario T-14 del mismo código; evidencia sobre versión/periodo identificado,José Lara Arce,16,Q:4;O:8;J:4,"Asignación y cuadrante integrado por código; entornos, usuarios y habilitaciones autorizados",BT21; BA78,2028-08-16,2028-08-18,SERVICIO-ACTIVO,Recepción por etapa o control del periodo; no acredita ejecución,BT21; BA78
1.12.3.2.21,Comprobación de respaldos y restauración,1.12,Operación,Comprobación de respaldos y restauración,Resultado de la ficha de familia y del paquete original; registro individual por código/ventana,"No duplicar padres, informes, ingeniería ni cobertura; no incluye horas de contraparte ni obras/adquisiciones del cliente",Criterio específico del diccionario T-14 del mismo código; evidencia sobre versión/periodo identificado,José Lara Arce,16,D:4;Q:4;O:8,"Asignación y cuadrante integrado por código; entornos, usuarios y habilitaciones autorizados",BT21; BA78,2028-08-21,2028-08-23,SERVICIO-ACTIVO,Recepción por etapa o control del periodo; no acredita ejecución,BT21; BA78
1.12.3.3.21,Revisión de seguridad y acceso,1.12,Operación,Revisión de seguridad y acceso,Resultado de la ficha de familia y del paquete original; registro individual por código/ventana,"No duplicar padres, informes, ingeniería ni cobertura; no incluye horas de contraparte ni obras/adquisiciones del cliente",Criterio específico del diccionario T-14 del mismo código; evidencia sobre versión/periodo identificado,Bruno Toro,16,S:8;Q:4;O:4,"Asignación y cuadrante integrado por código; entornos, usuarios y habilitaciones autorizados",BT21; BA78,2028-08-21,2028-08-23,SERVICIO-ACTIVO,Recepción por etapa o control del periodo; no acredita ejecución,BT21; BA78
1.12.3.4.21,"Mantenimiento, deuda y liberación controlada",1.12,Operación,"Mantenimiento, deuda y liberación controlada",Resultado de la ficha de familia y del paquete original; registro individual por código/ventana,"No duplicar padres, informes, ingeniería ni cobertura; no incluye horas de contraparte ni obras/adquisiciones del cliente",Criterio específico del diccionario T-14 del mismo código; evidencia sobre versión/periodo identificado,Nikolai Navea,24,S:4;Q:4;V:8;I:4;O:4,"Asignación y cuadrante integrado por código; entornos, usuarios y habilitaciones autorizados",BT21; BA78,2028-08-16,2028-08-17,SERVICIO-ACTIVO,Recepción por etapa o control del periodo; no acredita ejecución,BT21; BA78
1.12.3.5.21,Proyección de capacidad e infraestructura,1.12,Operación,Proyección de capacidad e infraestructura,Resultado de la ficha de familia y del paquete original; registro individual por código/ventana,"No duplicar padres, informes, ingeniería ni cobertura; no incluye horas de contraparte ni obras/adquisiciones del cliente",Criterio específico del diccionario T-14 del mismo código; evidencia sobre versión/periodo identificado,Fernando Guerrero,16,D:4;Q:4;I:4;O:4,"Asignación y cuadrante integrado por código; entornos, usuarios y habilitaciones autorizados",BT21; BA78,2028-08-21,2028-08-22,SERVICIO-ACTIVO,Recepción por etapa o control del periodo; no acredita ejecución,BT21; BA78
1.12.3.1.22,Control mensual de servicio y SLA,1.12,Operación,Control mensual de servicio y SLA,Resultado de la ficha de familia y del paquete original; registro individual por código/ventana,"No duplicar padres, informes, ingeniería ni cobertura; no incluye horas de contraparte ni obras/adquisiciones del cliente",Criterio específico del diccionario T-14 del mismo código; evidencia sobre versión/periodo identificado,José Lara Arce,16,Q:4;O:8;J:4,"Asignación y cuadrante integrado por código; entornos, usuarios y habilitaciones autorizados",BT21; BA78,2028-09-22,2028-09-26,SERVICIO-ACTIVO,Recepción por etapa o control del periodo; no acredita ejecución,BT21; BA78
1.12.3.2.22,Comprobación de respaldos y restauración,1.12,Operación,Comprobación de respaldos y restauración,Resultado de la ficha de familia y del paquete original; registro individual por código/ventana,"No duplicar padres, informes, ingeniería ni cobertura; no incluye horas de contraparte ni obras/adquisiciones del cliente",Criterio específico del diccionario T-14 del mismo código; evidencia sobre versión/periodo identificado,José Lara Arce,16,D:4;Q:4;O:8,"Asignación y cuadrante integrado por código; entornos, usuarios y habilitaciones autorizados",BT21; BA78,2028-09-20,2028-09-21,SERVICIO-ACTIVO,Recepción por etapa o control del periodo; no acredita ejecución,BT21; BA78
1.12.3.3.22,Revisión de seguridad y acceso,1.12,Operación,Revisión de seguridad y acceso,Resultado de la ficha de familia y del paquete original; registro individual por código/ventana,"No duplicar padres, informes, ingeniería ni cobertura; no incluye horas de contraparte ni obras/adquisiciones del cliente",Criterio específico del diccionario T-14 del mismo código; evidencia sobre versión/periodo identificado,Bruno Toro,16,S:8;Q:4;O:4,"Asignación y cuadrante integrado por código; entornos, usuarios y habilitaciones autorizados",BT21; BA78,2028-09-22,2028-09-25,SERVICIO-ACTIVO,Recepción por etapa o control del periodo; no acredita ejecución,BT21; BA78
1.12.3.4.22,"Mantenimiento, deuda y liberación controlada",1.12,Operación,"Mantenimiento, deuda y liberación controlada",Resultado de la ficha de familia y del paquete original; registro individual por código/ventana,"No duplicar padres, informes, ingeniería ni cobertura; no incluye horas de contraparte ni obras/adquisiciones del cliente",Criterio específico del diccionario T-14 del mismo código; evidencia sobre versión/periodo identificado,Nikolai Navea,24,S:4;Q:4;V:8;I:4;O:4,"Asignación y cuadrante integrado por código; entornos, usuarios y habilitaciones autorizados",BT21; BA78,2028-09-21,2028-09-25,SERVICIO-ACTIVO,Recepción por etapa o control del periodo; no acredita ejecución,BT21; BA78
1.12.3.5.22,Proyección de capacidad e infraestructura,1.12,Operación,Proyección de capacidad e infraestructura,Resultado de la ficha de familia y del paquete original; registro individual por código/ventana,"No duplicar padres, informes, ingeniería ni cobertura; no incluye horas de contraparte ni obras/adquisiciones del cliente",Criterio específico del diccionario T-14 del mismo código; evidencia sobre versión/periodo identificado,Fernando Guerrero,16,D:4;Q:4;I:4;O:4,"Asignación y cuadrante integrado por código; entornos, usuarios y habilitaciones autorizados",BT21; BA78,2028-09-21,2028-09-22,SERVICIO-ACTIVO,Recepción por etapa o control del periodo; no acredita ejecución,BT21; BA78
1.12.3.1.23,Control mensual de servicio y SLA,1.12,Operación,Control mensual de servicio y SLA,Resultado de la ficha de familia y del paquete original; registro individual por código/ventana,"No duplicar padres, informes, ingeniería ni cobertura; no incluye horas de contraparte ni obras/adquisiciones del cliente",Criterio específico del diccionario T-14 del mismo código; evidencia sobre versión/periodo identificado,José Lara Arce,16,Q:4;O:8;J:4,"Asignación y cuadrante integrado por código; entornos, usuarios y habilitaciones autorizados",BT21; BA78,2028-10-18,2028-10-20,SERVICIO-ACTIVO,Recepción por etapa o control del periodo; no acredita ejecución,BT21; BA78
1.12.3.2.23,Comprobación de respaldos y restauración,1.12,Operación,Comprobación de respaldos y restauración,Resultado de la ficha de familia y del paquete original; registro individual por código/ventana,"No duplicar padres, informes, ingeniería ni cobertura; no incluye horas de contraparte ni obras/adquisiciones del cliente",Criterio específico del diccionario T-14 del mismo código; evidencia sobre versión/periodo identificado,José Lara Arce,16,D:4;Q:4;O:8,"Asignación y cuadrante integrado por código; entornos, usuarios y habilitaciones autorizados",BT21; BA78,2028-10-16,2028-10-17,SERVICIO-ACTIVO,Recepción por etapa o control del periodo; no acredita ejecución,BT21; BA78
1.12.3.3.23,Revisión de seguridad y acceso,1.12,Operación,Revisión de seguridad y acceso,Resultado de la ficha de familia y del paquete original; registro individual por código/ventana,"No duplicar padres, informes, ingeniería ni cobertura; no incluye horas de contraparte ni obras/adquisiciones del cliente",Criterio específico del diccionario T-14 del mismo código; evidencia sobre versión/periodo identificado,Bruno Toro,16,S:8;Q:4;O:4,"Asignación y cuadrante integrado por código; entornos, usuarios y habilitaciones autorizados",BT21; BA78,2028-10-18,2028-10-19,SERVICIO-ACTIVO,Recepción por etapa o control del periodo; no acredita ejecución,BT21; BA78
1.12.3.4.23,"Mantenimiento, deuda y liberación controlada",1.12,Operación,"Mantenimiento, deuda y liberación controlada",Resultado de la ficha de familia y del paquete original; registro individual por código/ventana,"No duplicar padres, informes, ingeniería ni cobertura; no incluye horas de contraparte ni obras/adquisiciones del cliente",Criterio específico del diccionario T-14 del mismo código; evidencia sobre versión/periodo identificado,Nikolai Navea,24,S:4;Q:4;V:8;I:4;O:4,"Asignación y cuadrante integrado por código; entornos, usuarios y habilitaciones autorizados",BT21; BA78,2028-10-17,2028-10-19,SERVICIO-ACTIVO,Recepción por etapa o control del periodo; no acredita ejecución,BT21; BA78
1.12.3.5.23,Proyección de capacidad e infraestructura,1.12,Operación,Proyección de capacidad e infraestructura,Resultado de la ficha de familia y del paquete original; registro individual por código/ventana,"No duplicar padres, informes, ingeniería ni cobertura; no incluye horas de contraparte ni obras/adquisiciones del cliente",Criterio específico del diccionario T-14 del mismo código; evidencia sobre versión/periodo identificado,Fernando Guerrero,16,D:4;Q:4;I:4;O:4,"Asignación y cuadrante integrado por código; entornos, usuarios y habilitaciones autorizados",BT21; BA78,2028-10-17,2028-10-18,SERVICIO-ACTIVO,Recepción por etapa o control del periodo; no acredita ejecución,BT21; BA78
1.12.3.1.24,Control mensual de servicio y SLA,1.12,Operación,Control mensual de servicio y SLA,Resultado de la ficha de familia y del paquete original; registro individual por código/ventana,"No duplicar padres, informes, ingeniería ni cobertura; no incluye horas de contraparte ni obras/adquisiciones del cliente",Criterio específico del diccionario T-14 del mismo código; evidencia sobre versión/periodo identificado,José Lara Arce,16,Q:4;O:8;J:4,"Asignación y cuadrante integrado por código; entornos, usuarios y habilitaciones autorizados",BT21; BA78,2028-11-17,2028-11-21,SERVICIO-ACTIVO,Recepción por etapa o control del periodo; no acredita ejecución,BT21; BA78
1.12.3.2.24,Comprobación de respaldos y restauración,1.12,Operación,Comprobación de respaldos y restauración,Resultado de la ficha de familia y del paquete original; registro individual por código/ventana,"No duplicar padres, informes, ingeniería ni cobertura; no incluye horas de contraparte ni obras/adquisiciones del cliente",Criterio específico del diccionario T-14 del mismo código; evidencia sobre versión/periodo identificado,José Lara Arce,16,D:4;Q:4;O:8,"Asignación y cuadrante integrado por código; entornos, usuarios y habilitaciones autorizados",BT21; BA78,2028-11-20,2028-11-21,SERVICIO-ACTIVO,Recepción por etapa o control del periodo; no acredita ejecución,BT21; BA78
1.12.3.3.24,Revisión de seguridad y acceso,1.12,Operación,Revisión de seguridad y acceso,Resultado de la ficha de familia y del paquete original; registro individual por código/ventana,"No duplicar padres, informes, ingeniería ni cobertura; no incluye horas de contraparte ni obras/adquisiciones del cliente",Criterio específico del diccionario T-14 del mismo código; evidencia sobre versión/periodo identificado,Bruno Toro,16,S:8;Q:4;O:4,"Asignación y cuadrante integrado por código; entornos, usuarios y habilitaciones autorizados",BT21; BA78,2028-11-20,2028-11-22,SERVICIO-ACTIVO,Recepción por etapa o control del periodo; no acredita ejecución,BT21; BA78
1.12.3.4.24,"Mantenimiento, deuda y liberación controlada",1.12,Operación,"Mantenimiento, deuda y liberación controlada",Resultado de la ficha de familia y del paquete original; registro individual por código/ventana,"No duplicar padres, informes, ingeniería ni cobertura; no incluye horas de contraparte ni obras/adquisiciones del cliente",Criterio específico del diccionario T-14 del mismo código; evidencia sobre versión/periodo identificado,Nikolai Navea,24,S:4;Q:4;V:8;I:4;O:4,"Asignación y cuadrante integrado por código; entornos, usuarios y habilitaciones autorizados",BT21; BA78,2028-11-21,2028-11-22,SERVICIO-ACTIVO,Recepción por etapa o control del periodo; no acredita ejecución,BT21; BA78
1.12.3.5.24,Proyección de capacidad e infraestructura,1.12,Operación,Proyección de capacidad e infraestructura,Resultado de la ficha de familia y del paquete original; registro individual por código/ventana,"No duplicar padres, informes, ingeniería ni cobertura; no incluye horas de contraparte ni obras/adquisiciones del cliente",Criterio específico del diccionario T-14 del mismo código; evidencia sobre versión/periodo identificado,Fernando Guerrero,16,D:4;Q:4;I:4;O:4,"Asignación y cuadrante integrado por código; entornos, usuarios y habilitaciones autorizados",BT21; BA78,2028-11-16,2028-11-17,SERVICIO-ACTIVO,Recepción por etapa o control del periodo; no acredita ejecución,BT21; BA78
1.12.3.1.25,Control mensual de servicio y SLA,1.12,Operación,Control mensual de servicio y SLA,Resultado de la ficha de familia y del paquete original; registro individual por código/ventana,"No duplicar padres, informes, ingeniería ni cobertura; no incluye horas de contraparte ni obras/adquisiciones del cliente",Criterio específico del diccionario T-14 del mismo código; evidencia sobre versión/periodo identificado,José Lara Arce,16,Q:4;O:8;J:4,"Asignación y cuadrante integrado por código; entornos, usuarios y habilitaciones autorizados",BT21; BA78,2028-12-20,2028-12-22,SERVICIO-ACTIVO,Recepción por etapa o control del periodo; no acredita ejecución,BT21; BA78
1.12.3.2.25,Comprobación de respaldos y restauración,1.12,Operación,Comprobación de respaldos y restauración,Resultado de la ficha de familia y del paquete original; registro individual por código/ventana,"No duplicar padres, informes, ingeniería ni cobertura; no incluye horas de contraparte ni obras/adquisiciones del cliente",Criterio específico del diccionario T-14 del mismo código; evidencia sobre versión/periodo identificado,José Lara Arce,16,D:4;Q:4;O:8,"Asignación y cuadrante integrado por código; entornos, usuarios y habilitaciones autorizados",BT21; BA78,2028-12-18,2028-12-19,SERVICIO-ACTIVO,Recepción por etapa o control del periodo; no acredita ejecución,BT21; BA78
1.12.3.3.25,Revisión de seguridad y acceso,1.12,Operación,Revisión de seguridad y acceso,Resultado de la ficha de familia y del paquete original; registro individual por código/ventana,"No duplicar padres, informes, ingeniería ni cobertura; no incluye horas de contraparte ni obras/adquisiciones del cliente",Criterio específico del diccionario T-14 del mismo código; evidencia sobre versión/periodo identificado,Bruno Toro,16,S:8;Q:4;O:4,"Asignación y cuadrante integrado por código; entornos, usuarios y habilitaciones autorizados",BT21; BA78,2028-12-20,2028-12-21,SERVICIO-ACTIVO,Recepción por etapa o control del periodo; no acredita ejecución,BT21; BA78
1.12.3.4.25,"Mantenimiento, deuda y liberación controlada",1.12,Operación,"Mantenimiento, deuda y liberación controlada",Resultado de la ficha de familia y del paquete original; registro individual por código/ventana,"No duplicar padres, informes, ingeniería ni cobertura; no incluye horas de contraparte ni obras/adquisiciones del cliente",Criterio específico del diccionario T-14 del mismo código; evidencia sobre versión/periodo identificado,Nikolai Navea,24,S:4;Q:4;V:8;I:4;O:4,"Asignación y cuadrante integrado por código; entornos, usuarios y habilitaciones autorizados",BT21; BA78,2028-12-19,2028-12-21,SERVICIO-ACTIVO,Recepción por etapa o control del periodo; no acredita ejecución,BT21; BA78
1.12.3.5.25,Proyección de capacidad e infraestructura,1.12,Operación,Proyección de capacidad e infraestructura,Resultado de la ficha de familia y del paquete original; registro individual por código/ventana,"No duplicar padres, informes, ingeniería ni cobertura; no incluye horas de contraparte ni obras/adquisiciones del cliente",Criterio específico del diccionario T-14 del mismo código; evidencia sobre versión/periodo identificado,Fernando Guerrero,16,D:4;Q:4;I:4;O:4,"Asignación y cuadrante integrado por código; entornos, usuarios y habilitaciones autorizados",BT21; BA78,2028-12-19,2028-12-20,SERVICIO-ACTIVO,Recepción por etapa o control del periodo; no acredita ejecución,BT21; BA78
1.12.3.1.26,Control mensual de servicio y SLA,1.12,Operación,Control mensual de servicio y SLA,Resultado de la ficha de familia y del paquete original; registro individual por código/ventana,"No duplicar padres, informes, ingeniería ni cobertura; no incluye horas de contraparte ni obras/adquisiciones del cliente",Criterio específico del diccionario T-14 del mismo código; evidencia sobre versión/periodo identificado,José Lara Arce,16,Q:4;O:8;J:4,"Asignación y cuadrante integrado por código; entornos, usuarios y habilitaciones autorizados",BT21; BA78,2029-01-18,2029-01-22,SERVICIO-ACTIVO,Recepción por etapa o control del periodo; no acredita ejecución,BT21; BA78
1.12.3.2.26,Comprobación de respaldos y restauración,1.12,Operación,Comprobación de respaldos y restauración,Resultado de la ficha de familia y del paquete original; registro individual por código/ventana,"No duplicar padres, informes, ingeniería ni cobertura; no incluye horas de contraparte ni obras/adquisiciones del cliente",Criterio específico del diccionario T-14 del mismo código; evidencia sobre versión/periodo identificado,José Lara Arce,16,D:4;Q:4;O:8,"Asignación y cuadrante integrado por código; entornos, usuarios y habilitaciones autorizados",BT21; BA78,2029-01-16,2029-01-17,SERVICIO-ACTIVO,Recepción por etapa o control del periodo; no acredita ejecución,BT21; BA78
1.12.3.3.26,Revisión de seguridad y acceso,1.12,Operación,Revisión de seguridad y acceso,Resultado de la ficha de familia y del paquete original; registro individual por código/ventana,"No duplicar padres, informes, ingeniería ni cobertura; no incluye horas de contraparte ni obras/adquisiciones del cliente",Criterio específico del diccionario T-14 del mismo código; evidencia sobre versión/periodo identificado,Bruno Toro,16,S:8;Q:4;O:4,"Asignación y cuadrante integrado por código; entornos, usuarios y habilitaciones autorizados",BT21; BA78,2029-01-18,2029-01-19,SERVICIO-ACTIVO,Recepción por etapa o control del periodo; no acredita ejecución,BT21; BA78
1.12.3.4.26,"Mantenimiento, deuda y liberación controlada",1.12,Operación,"Mantenimiento, deuda y liberación controlada",Resultado de la ficha de familia y del paquete original; registro individual por código/ventana,"No duplicar padres, informes, ingeniería ni cobertura; no incluye horas de contraparte ni obras/adquisiciones del cliente",Criterio específico del diccionario T-14 del mismo código; evidencia sobre versión/periodo identificado,Nikolai Navea,24,S:4;Q:4;V:8;I:4;O:4,"Asignación y cuadrante integrado por código; entornos, usuarios y habilitaciones autorizados",BT21; BA78,2029-01-17,2029-01-19,SERVICIO-ACTIVO,Recepción por etapa o control del periodo; no acredita ejecución,BT21; BA78
1.12.3.5.26,Proyección de capacidad e infraestructura,1.12,Operación,Proyección de capacidad e infraestructura,Resultado de la ficha de familia y del paquete original; registro individual por código/ventana,"No duplicar padres, informes, ingeniería ni cobertura; no incluye horas de contraparte ni obras/adquisiciones del cliente",Criterio específico del diccionario T-14 del mismo código; evidencia sobre versión/periodo identificado,Fernando Guerrero,16,D:4;Q:4;I:4;O:4,"Asignación y cuadrante integrado por código; entornos, usuarios y habilitaciones autorizados",BT21; BA78,2029-01-17,2029-01-18,SERVICIO-ACTIVO,Recepción por etapa o control del periodo; no acredita ejecución,BT21; BA78
1.12.3.1.27,Control mensual de servicio y SLA,1.12,Operación,Control mensual de servicio y SLA,Resultado de la ficha de familia y del paquete original; registro individual por código/ventana,"No duplicar padres, informes, ingeniería ni cobertura; no incluye horas de contraparte ni obras/adquisiciones del cliente",Criterio específico del diccionario T-14 del mismo código; evidencia sobre versión/periodo identificado,José Lara Arce,16,Q:4;O:8;J:4,"Asignación y cuadrante integrado por código; entornos, usuarios y habilitaciones autorizados",BT21; BA78,2029-02-20,2029-02-22,SERVICIO-ACTIVO,Recepción por etapa o control del periodo; no acredita ejecución,BT21; BA78
1.12.3.2.27,Comprobación de respaldos y restauración,1.12,Operación,Comprobación de respaldos y restauración,Resultado de la ficha de familia y del paquete original; registro individual por código/ventana,"No duplicar padres, informes, ingeniería ni cobertura; no incluye horas de contraparte ni obras/adquisiciones del cliente",Criterio específico del diccionario T-14 del mismo código; evidencia sobre versión/periodo identificado,José Lara Arce,16,D:4;Q:4;O:8,"Asignación y cuadrante integrado por código; entornos, usuarios y habilitaciones autorizados",BT21; BA78,2029-02-16,2029-02-19,SERVICIO-ACTIVO,Recepción por etapa o control del periodo; no acredita ejecución,BT21; BA78
1.12.3.3.27,Revisión de seguridad y acceso,1.12,Operación,Revisión de seguridad y acceso,Resultado de la ficha de familia y del paquete original; registro individual por código/ventana,"No duplicar padres, informes, ingeniería ni cobertura; no incluye horas de contraparte ni obras/adquisiciones del cliente",Criterio específico del diccionario T-14 del mismo código; evidencia sobre versión/periodo identificado,Bruno Toro,16,S:8;Q:4;O:4,"Asignación y cuadrante integrado por código; entornos, usuarios y habilitaciones autorizados",BT21; BA78,2029-02-20,2029-02-21,SERVICIO-ACTIVO,Recepción por etapa o control del periodo; no acredita ejecución,BT21; BA78
1.12.3.4.27,"Mantenimiento, deuda y liberación controlada",1.12,Operación,"Mantenimiento, deuda y liberación controlada",Resultado de la ficha de familia y del paquete original; registro individual por código/ventana,"No duplicar padres, informes, ingeniería ni cobertura; no incluye horas de contraparte ni obras/adquisiciones del cliente",Criterio específico del diccionario T-14 del mismo código; evidencia sobre versión/periodo identificado,Nikolai Navea,24,S:4;Q:4;V:8;I:4;O:4,"Asignación y cuadrante integrado por código; entornos, usuarios y habilitaciones autorizados",BT21; BA78,2029-02-19,2029-02-21,SERVICIO-ACTIVO,Recepción por etapa o control del periodo; no acredita ejecución,BT21; BA78
1.12.3.5.27,Proyección de capacidad e infraestructura,1.12,Operación,Proyección de capacidad e infraestructura,Resultado de la ficha de familia y del paquete original; registro individual por código/ventana,"No duplicar padres, informes, ingeniería ni cobertura; no incluye horas de contraparte ni obras/adquisiciones del cliente",Criterio específico del diccionario T-14 del mismo código; evidencia sobre versión/periodo identificado,Fernando Guerrero,16,D:4;Q:4;I:4;O:4,"Asignación y cuadrante integrado por código; entornos, usuarios y habilitaciones autorizados",BT21; BA78,2029-02-19,2029-02-20,SERVICIO-ACTIVO,Recepción por etapa o control del periodo; no acredita ejecución,BT21; BA78
1.12.3.1.28,Control mensual de servicio y SLA,1.12,Operación,Control mensual de servicio y SLA,Resultado de la ficha de familia y del paquete original; registro individual por código/ventana,"No duplicar padres, informes, ingeniería ni cobertura; no incluye horas de contraparte ni obras/adquisiciones del cliente",Criterio específico del diccionario T-14 del mismo código; evidencia sobre versión/periodo identificado,José Lara Arce,16,Q:4;O:8;J:4,"Asignación y cuadrante integrado por código; entornos, usuarios y habilitaciones autorizados",BT21; BA78,2029-03-20,2029-03-22,SERVICIO-ACTIVO,Recepción por etapa o control del periodo; no acredita ejecución,BT21; BA78
1.12.3.2.28,Comprobación de respaldos y restauración,1.12,Operación,Comprobación de respaldos y restauración,Resultado de la ficha de familia y del paquete original; registro individual por código/ventana,"No duplicar padres, informes, ingeniería ni cobertura; no incluye horas de contraparte ni obras/adquisiciones del cliente",Criterio específico del diccionario T-14 del mismo código; evidencia sobre versión/periodo identificado,José Lara Arce,16,D:4;Q:4;O:8,"Asignación y cuadrante integrado por código; entornos, usuarios y habilitaciones autorizados",BT21; BA78,2029-03-16,2029-03-19,SERVICIO-ACTIVO,Recepción por etapa o control del periodo; no acredita ejecución,BT21; BA78
1.12.3.3.28,Revisión de seguridad y acceso,1.12,Operación,Revisión de seguridad y acceso,Resultado de la ficha de familia y del paquete original; registro individual por código/ventana,"No duplicar padres, informes, ingeniería ni cobertura; no incluye horas de contraparte ni obras/adquisiciones del cliente",Criterio específico del diccionario T-14 del mismo código; evidencia sobre versión/periodo identificado,Bruno Toro,16,S:8;Q:4;O:4,"Asignación y cuadrante integrado por código; entornos, usuarios y habilitaciones autorizados",BT21; BA78,2029-03-20,2029-03-21,SERVICIO-ACTIVO,Recepción por etapa o control del periodo; no acredita ejecución,BT21; BA78
1.12.3.4.28,"Mantenimiento, deuda y liberación controlada",1.12,Operación,"Mantenimiento, deuda y liberación controlada",Resultado de la ficha de familia y del paquete original; registro individual por código/ventana,"No duplicar padres, informes, ingeniería ni cobertura; no incluye horas de contraparte ni obras/adquisiciones del cliente",Criterio específico del diccionario T-14 del mismo código; evidencia sobre versión/periodo identificado,Nikolai Navea,24,S:4;Q:4;V:8;I:4;O:4,"Asignación y cuadrante integrado por código; entornos, usuarios y habilitaciones autorizados",BT21; BA78,2029-03-19,2029-03-21,SERVICIO-ACTIVO,Recepción por etapa o control del periodo; no acredita ejecución,BT21; BA78
1.12.3.5.28,Proyección de capacidad e infraestructura,1.12,Operación,Proyección de capacidad e infraestructura,Resultado de la ficha de familia y del paquete original; registro individual por código/ventana,"No duplicar padres, informes, ingeniería ni cobertura; no incluye horas de contraparte ni obras/adquisiciones del cliente",Criterio específico del diccionario T-14 del mismo código; evidencia sobre versión/periodo identificado,Fernando Guerrero,16,D:4;Q:4;I:4;O:4,"Asignación y cuadrante integrado por código; entornos, usuarios y habilitaciones autorizados",BT21; BA78,2029-03-19,2029-03-20,SERVICIO-ACTIVO,Recepción por etapa o control del periodo; no acredita ejecución,BT21; BA78
1.12.3.1.29,Control mensual de servicio y SLA,1.12,Operación,Control mensual de servicio y SLA,Resultado de la ficha de familia y del paquete original; registro individual por código/ventana,"No duplicar padres, informes, ingeniería ni cobertura; no incluye horas de contraparte ni obras/adquisiciones del cliente",Criterio específico del diccionario T-14 del mismo código; evidencia sobre versión/periodo identificado,José Lara Arce,16,Q:4;O:8;J:4,"Asignación y cuadrante integrado por código; entornos, usuarios y habilitaciones autorizados",BT21; BA78,2029-04-18,2029-04-20,SERVICIO-ACTIVO,Recepción por etapa o control del periodo; no acredita ejecución,BT21; BA78
1.12.3.2.29,Comprobación de respaldos y restauración,1.12,Operación,Comprobación de respaldos y restauración,Resultado de la ficha de familia y del paquete original; registro individual por código/ventana,"No duplicar padres, informes, ingeniería ni cobertura; no incluye horas de contraparte ni obras/adquisiciones del cliente",Criterio específico del diccionario T-14 del mismo código; evidencia sobre versión/periodo identificado,José Lara Arce,16,D:4;Q:4;O:8,"Asignación y cuadrante integrado por código; entornos, usuarios y habilitaciones autorizados",BT21; BA78,2029-04-16,2029-04-17,SERVICIO-ACTIVO,Recepción por etapa o control del periodo; no acredita ejecución,BT21; BA78
1.12.3.3.29,Revisión de seguridad y acceso,1.12,Operación,Revisión de seguridad y acceso,Resultado de la ficha de familia y del paquete original; registro individual por código/ventana,"No duplicar padres, informes, ingeniería ni cobertura; no incluye horas de contraparte ni obras/adquisiciones del cliente",Criterio específico del diccionario T-14 del mismo código; evidencia sobre versión/periodo identificado,Bruno Toro,16,S:8;Q:4;O:4,"Asignación y cuadrante integrado por código; entornos, usuarios y habilitaciones autorizados",BT21; BA78,2029-04-18,2029-04-19,SERVICIO-ACTIVO,Recepción por etapa o control del periodo; no acredita ejecución,BT21; BA78
1.12.3.4.29,"Mantenimiento, deuda y liberación controlada",1.12,Operación,"Mantenimiento, deuda y liberación controlada",Resultado de la ficha de familia y del paquete original; registro individual por código/ventana,"No duplicar padres, informes, ingeniería ni cobertura; no incluye horas de contraparte ni obras/adquisiciones del cliente",Criterio específico del diccionario T-14 del mismo código; evidencia sobre versión/periodo identificado,Nikolai Navea,24,S:4;Q:4;V:8;I:4;O:4,"Asignación y cuadrante integrado por código; entornos, usuarios y habilitaciones autorizados",BT21; BA78,2029-04-17,2029-04-19,SERVICIO-ACTIVO,Recepción por etapa o control del periodo; no acredita ejecución,BT21; BA78
1.12.3.5.29,Proyección de capacidad e infraestructura,1.12,Operación,Proyección de capacidad e infraestructura,Resultado de la ficha de familia y del paquete original; registro individual por código/ventana,"No duplicar padres, informes, ingeniería ni cobertura; no incluye horas de contraparte ni obras/adquisiciones del cliente",Criterio específico del diccionario T-14 del mismo código; evidencia sobre versión/periodo identificado,Fernando Guerrero,16,D:4;Q:4;I:4;O:4,"Asignación y cuadrante integrado por código; entornos, usuarios y habilitaciones autorizados",BT21; BA78,2029-04-17,2029-04-18,SERVICIO-ACTIVO,Recepción por etapa o control del periodo; no acredita ejecución,BT21; BA78
1.12.3.1.30,Control mensual de servicio y SLA,1.12,Operación,Control mensual de servicio y SLA,Resultado de la ficha de familia y del paquete original; registro individual por código/ventana,"No duplicar padres, informes, ingeniería ni cobertura; no incluye horas de contraparte ni obras/adquisiciones del cliente",Criterio específico del diccionario T-14 del mismo código; evidencia sobre versión/periodo identificado,José Lara Arce,16,Q:4;O:8;J:4,"Asignación y cuadrante integrado por código; entornos, usuarios y habilitaciones autorizados",BT21; BA78,2029-05-18,2029-05-23,SERVICIO-ACTIVO,Recepción por etapa o control del periodo; no acredita ejecución,BT21; BA78
1.12.3.2.30,Comprobación de respaldos y restauración,1.12,Operación,Comprobación de respaldos y restauración,Resultado de la ficha de familia y del paquete original; registro individual por código/ventana,"No duplicar padres, informes, ingeniería ni cobertura; no incluye horas de contraparte ni obras/adquisiciones del cliente",Criterio específico del diccionario T-14 del mismo código; evidencia sobre versión/periodo identificado,José Lara Arce,16,D:4;Q:4;O:8,"Asignación y cuadrante integrado por código; entornos, usuarios y habilitaciones autorizados",BT21; BA78,2029-05-16,2029-05-17,SERVICIO-ACTIVO,Recepción por etapa o control del periodo; no acredita ejecución,BT21; BA78
1.12.3.3.30,Revisión de seguridad y acceso,1.12,Operación,Revisión de seguridad y acceso,Resultado de la ficha de familia y del paquete original; registro individual por código/ventana,"No duplicar padres, informes, ingeniería ni cobertura; no incluye horas de contraparte ni obras/adquisiciones del cliente",Criterio específico del diccionario T-14 del mismo código; evidencia sobre versión/periodo identificado,Bruno Toro,16,S:8;Q:4;O:4,"Asignación y cuadrante integrado por código; entornos, usuarios y habilitaciones autorizados",BT21; BA78,2029-05-18,2029-05-22,SERVICIO-ACTIVO,Recepción por etapa o control del periodo; no acredita ejecución,BT21; BA78
1.12.3.4.30,"Mantenimiento, deuda y liberación controlada",1.12,Operación,"Mantenimiento, deuda y liberación controlada",Resultado de la ficha de familia y del paquete original; registro individual por código/ventana,"No duplicar padres, informes, ingeniería ni cobertura; no incluye horas de contraparte ni obras/adquisiciones del cliente",Criterio específico del diccionario T-14 del mismo código; evidencia sobre versión/periodo identificado,Nikolai Navea,24,S:4;Q:4;V:8;I:4;O:4,"Asignación y cuadrante integrado por código; entornos, usuarios y habilitaciones autorizados",BT21; BA78,2029-05-17,2029-05-22,SERVICIO-ACTIVO,Recepción por etapa o control del periodo; no acredita ejecución,BT21; BA78
1.12.3.5.30,Proyección de capacidad e infraestructura,1.12,Operación,Proyección de capacidad e infraestructura,Resultado de la ficha de familia y del paquete original; registro individual por código/ventana,"No duplicar padres, informes, ingeniería ni cobertura; no incluye horas de contraparte ni obras/adquisiciones del cliente",Criterio específico del diccionario T-14 del mismo código; evidencia sobre versión/periodo identificado,Fernando Guerrero,16,D:4;Q:4;I:4;O:4,"Asignación y cuadrante integrado por código; entornos, usuarios y habilitaciones autorizados",BT21; BA78,2029-05-17,2029-05-18,SERVICIO-ACTIVO,Recepción por etapa o control del periodo; no acredita ejecución,BT21; BA78
1.12.3.1.31,Control mensual de servicio y SLA,1.12,Operación,Control mensual de servicio y SLA,Resultado de la ficha de familia y del paquete original; registro individual por código/ventana,"No duplicar padres, informes, ingeniería ni cobertura; no incluye horas de contraparte ni obras/adquisiciones del cliente",Criterio específico del diccionario T-14 del mismo código; evidencia sobre versión/periodo identificado,José Lara Arce,16,Q:4;O:8;J:4,"Asignación y cuadrante integrado por código; entornos, usuarios y habilitaciones autorizados",BT21; BA78,2029-06-18,2029-06-19,SERVICIO-ACTIVO,Recepción por etapa o control del periodo; no acredita ejecución,BT21; BA78
1.12.3.2.31,Comprobación de respaldos y restauración,1.12,Operación,Comprobación de respaldos y restauración,Resultado de la ficha de familia y del paquete original; registro individual por código/ventana,"No duplicar padres, informes, ingeniería ni cobertura; no incluye horas de contraparte ni obras/adquisiciones del cliente",Criterio específico del diccionario T-14 del mismo código; evidencia sobre versión/periodo identificado,José Lara Arce,16,D:4;Q:4;O:8,"Asignación y cuadrante integrado por código; entornos, usuarios y habilitaciones autorizados",BT21; BA78,2029-06-18,2029-06-19,SERVICIO-ACTIVO,Recepción por etapa o control del periodo; no acredita ejecución,BT21; BA78
1.12.3.3.31,Revisión de seguridad y acceso,1.12,Operación,Revisión de seguridad y acceso,Resultado de la ficha de familia y del paquete original; registro individual por código/ventana,"No duplicar padres, informes, ingeniería ni cobertura; no incluye horas de contraparte ni obras/adquisiciones del cliente",Criterio específico del diccionario T-14 del mismo código; evidencia sobre versión/periodo identificado,Bruno Toro,16,S:8;Q:4;O:4,"Asignación y cuadrante integrado por código; entornos, usuarios y habilitaciones autorizados",BT21; BA78,2029-06-19,2029-06-21,SERVICIO-ACTIVO,Recepción por etapa o control del periodo; no acredita ejecución,BT21; BA78
1.12.3.4.31,"Mantenimiento, deuda y liberación controlada",1.12,Operación,"Mantenimiento, deuda y liberación controlada",Resultado de la ficha de familia y del paquete original; registro individual por código/ventana,"No duplicar padres, informes, ingeniería ni cobertura; no incluye horas de contraparte ni obras/adquisiciones del cliente",Criterio específico del diccionario T-14 del mismo código; evidencia sobre versión/periodo identificado,Nikolai Navea,24,S:4;Q:4;V:8;I:4;O:4,"Asignación y cuadrante integrado por código; entornos, usuarios y habilitaciones autorizados",BT21; BA78,2029-06-19,2029-06-22,SERVICIO-ACTIVO,Recepción por etapa o control del periodo; no acredita ejecución,BT21; BA78
1.12.3.5.31,Proyección de capacidad e infraestructura,1.12,Operación,Proyección de capacidad e infraestructura,Resultado de la ficha de familia y del paquete original; registro individual por código/ventana,"No duplicar padres, informes, ingeniería ni cobertura; no incluye horas de contraparte ni obras/adquisiciones del cliente",Criterio específico del diccionario T-14 del mismo código; evidencia sobre versión/periodo identificado,Fernando Guerrero,16,D:4;Q:4;I:4;O:4,"Asignación y cuadrante integrado por código; entornos, usuarios y habilitaciones autorizados",BT21; BA78,2029-06-19,2029-06-21,SERVICIO-ACTIVO,Recepción por etapa o control del periodo; no acredita ejecución,BT21; BA78
1.12.3.1.32,Control mensual de servicio y SLA,1.12,Operación,Control mensual de servicio y SLA,Resultado de la ficha de familia y del paquete original; registro individual por código/ventana,"No duplicar padres, informes, ingeniería ni cobertura; no incluye horas de contraparte ni obras/adquisiciones del cliente",Criterio específico del diccionario T-14 del mismo código; evidencia sobre versión/periodo identificado,José Lara Arce,16,Q:4;O:8;J:4,"Asignación y cuadrante integrado por código; entornos, usuarios y habilitaciones autorizados",BT21; BA78,2029-07-17,2029-07-18,SERVICIO-ACTIVO,Recepción por etapa o control del periodo; no acredita ejecución,BT21; BA78
1.12.3.2.32,Comprobación de respaldos y restauración,1.12,Operación,Comprobación de respaldos y restauración,Resultado de la ficha de familia y del paquete original; registro individual por código/ventana,"No duplicar padres, informes, ingeniería ni cobertura; no incluye horas de contraparte ni obras/adquisiciones del cliente",Criterio específico del diccionario T-14 del mismo código; evidencia sobre versión/periodo identificado,José Lara Arce,16,D:4;Q:4;O:8,"Asignación y cuadrante integrado por código; entornos, usuarios y habilitaciones autorizados",BT21; BA78,2029-07-17,2029-07-18,SERVICIO-ACTIVO,Recepción por etapa o control del periodo; no acredita ejecución,BT21; BA78
1.12.3.3.32,Revisión de seguridad y acceso,1.12,Operación,Revisión de seguridad y acceso,Resultado de la ficha de familia y del paquete original; registro individual por código/ventana,"No duplicar padres, informes, ingeniería ni cobertura; no incluye horas de contraparte ni obras/adquisiciones del cliente",Criterio específico del diccionario T-14 del mismo código; evidencia sobre versión/periodo identificado,Bruno Toro,16,S:8;Q:4;O:4,"Asignación y cuadrante integrado por código; entornos, usuarios y habilitaciones autorizados",BT21; BA78,2029-07-18,2029-07-19,SERVICIO-ACTIVO,Recepción por etapa o control del periodo; no acredita ejecución,BT21; BA78
1.12.3.4.32,"Mantenimiento, deuda y liberación controlada",1.12,Operación,"Mantenimiento, deuda y liberación controlada",Resultado de la ficha de familia y del paquete original; registro individual por código/ventana,"No duplicar padres, informes, ingeniería ni cobertura; no incluye horas de contraparte ni obras/adquisiciones del cliente",Criterio específico del diccionario T-14 del mismo código; evidencia sobre versión/periodo identificado,Nikolai Navea,24,S:4;Q:4;V:8;I:4;O:4,"Asignación y cuadrante integrado por código; entornos, usuarios y habilitaciones autorizados",BT21; BA78,2029-07-18,2029-07-20,SERVICIO-ACTIVO,Recepción por etapa o control del periodo; no acredita ejecución,BT21; BA78
1.12.3.5.32,Proyección de capacidad e infraestructura,1.12,Operación,Proyección de capacidad e infraestructura,Resultado de la ficha de familia y del paquete original; registro individual por código/ventana,"No duplicar padres, informes, ingeniería ni cobertura; no incluye horas de contraparte ni obras/adquisiciones del cliente",Criterio específico del diccionario T-14 del mismo código; evidencia sobre versión/periodo identificado,Fernando Guerrero,16,D:4;Q:4;I:4;O:4,"Asignación y cuadrante integrado por código; entornos, usuarios y habilitaciones autorizados",BT21; BA78,2029-07-18,2029-07-19,SERVICIO-ACTIVO,Recepción por etapa o control del periodo; no acredita ejecución,BT21; BA78
1.12.3.1.33,Control mensual de servicio y SLA,1.12,Operación,Control mensual de servicio y SLA,Resultado de la ficha de familia y del paquete original; registro individual por código/ventana,"No duplicar padres, informes, ingeniería ni cobertura; no incluye horas de contraparte ni obras/adquisiciones del cliente",Criterio específico del diccionario T-14 del mismo código; evidencia sobre versión/periodo identificado,José Lara Arce,16,Q:4;O:8;J:4,"Asignación y cuadrante integrado por código; entornos, usuarios y habilitaciones autorizados",BT21; BA78,2029-08-20,2029-08-22,SERVICIO-ACTIVO,Recepción por etapa o control del periodo; no acredita ejecución,BT21; BA78
1.12.3.2.33,Comprobación de respaldos y restauración,1.12,Operación,Comprobación de respaldos y restauración,Resultado de la ficha de familia y del paquete original; registro individual por código/ventana,"No duplicar padres, informes, ingeniería ni cobertura; no incluye horas de contraparte ni obras/adquisiciones del cliente",Criterio específico del diccionario T-14 del mismo código; evidencia sobre versión/periodo identificado,José Lara Arce,16,D:4;Q:4;O:8,"Asignación y cuadrante integrado por código; entornos, usuarios y habilitaciones autorizados",BT21; BA78,2029-08-16,2029-08-20,SERVICIO-ACTIVO,Recepción por etapa o control del periodo; no acredita ejecución,BT21; BA78
1.12.3.3.33,Revisión de seguridad y acceso,1.12,Operación,Revisión de seguridad y acceso,Resultado de la ficha de familia y del paquete original; registro individual por código/ventana,"No duplicar padres, informes, ingeniería ni cobertura; no incluye horas de contraparte ni obras/adquisiciones del cliente",Criterio específico del diccionario T-14 del mismo código; evidencia sobre versión/periodo identificado,Bruno Toro,16,S:8;Q:4;O:4,"Asignación y cuadrante integrado por código; entornos, usuarios y habilitaciones autorizados",BT21; BA78,2029-08-17,2029-08-20,SERVICIO-ACTIVO,Recepción por etapa o control del periodo; no acredita ejecución,BT21; BA78
1.12.3.4.33,"Mantenimiento, deuda y liberación controlada",1.12,Operación,"Mantenimiento, deuda y liberación controlada",Resultado de la ficha de familia y del paquete original; registro individual por código/ventana,"No duplicar padres, informes, ingeniería ni cobertura; no incluye horas de contraparte ni obras/adquisiciones del cliente",Criterio específico del diccionario T-14 del mismo código; evidencia sobre versión/periodo identificado,Nikolai Navea,24,S:4;Q:4;V:8;I:4;O:4,"Asignación y cuadrante integrado por código; entornos, usuarios y habilitaciones autorizados",BT21; BA78,2029-08-17,2029-08-21,SERVICIO-ACTIVO,Recepción por etapa o control del periodo; no acredita ejecución,BT21; BA78
1.12.3.5.33,Proyección de capacidad e infraestructura,1.12,Operación,Proyección de capacidad e infraestructura,Resultado de la ficha de familia y del paquete original; registro individual por código/ventana,"No duplicar padres, informes, ingeniería ni cobertura; no incluye horas de contraparte ni obras/adquisiciones del cliente",Criterio específico del diccionario T-14 del mismo código; evidencia sobre versión/periodo identificado,Fernando Guerrero,16,D:4;Q:4;I:4;O:4,"Asignación y cuadrante integrado por código; entornos, usuarios y habilitaciones autorizados",BT21; BA78,2029-08-16,2029-08-17,SERVICIO-ACTIVO,Recepción por etapa o control del periodo; no acredita ejecución,BT21; BA78
1.12.3.1.34,Control mensual de servicio y SLA,1.12,Operación,Control mensual de servicio y SLA,Resultado de la ficha de familia y del paquete original; registro individual por código/ventana,"No duplicar padres, informes, ingeniería ni cobertura; no incluye horas de contraparte ni obras/adquisiciones del cliente",Criterio específico del diccionario T-14 del mismo código; evidencia sobre versión/periodo identificado,José Lara Arce,16,Q:4;O:8;J:4,"Asignación y cuadrante integrado por código; entornos, usuarios y habilitaciones autorizados",BT21; BA78,2029-09-20,2029-09-21,SERVICIO-ACTIVO,Recepción por etapa o control del periodo; no acredita ejecución,BT21; BA78
1.12.3.2.34,Comprobación de respaldos y restauración,1.12,Operación,Comprobación de respaldos y restauración,Resultado de la ficha de familia y del paquete original; registro individual por código/ventana,"No duplicar padres, informes, ingeniería ni cobertura; no incluye horas de contraparte ni obras/adquisiciones del cliente",Criterio específico del diccionario T-14 del mismo código; evidencia sobre versión/periodo identificado,José Lara Arce,16,D:4;Q:4;O:8,"Asignación y cuadrante integrado por código; entornos, usuarios y habilitaciones autorizados",BT21; BA78,2029-09-20,2029-09-21,SERVICIO-ACTIVO,Recepción por etapa o control del periodo; no acredita ejecución,BT21; BA78
1.12.3.3.34,Revisión de seguridad y acceso,1.12,Operación,Revisión de seguridad y acceso,Resultado de la ficha de familia y del paquete original; registro individual por código/ventana,"No duplicar padres, informes, ingeniería ni cobertura; no incluye horas de contraparte ni obras/adquisiciones del cliente",Criterio específico del diccionario T-14 del mismo código; evidencia sobre versión/periodo identificado,Bruno Toro,16,S:8;Q:4;O:4,"Asignación y cuadrante integrado por código; entornos, usuarios y habilitaciones autorizados",BT21; BA78,2029-09-21,2029-09-24,SERVICIO-ACTIVO,Recepción por etapa o control del periodo; no acredita ejecución,BT21; BA78
1.12.3.4.34,"Mantenimiento, deuda y liberación controlada",1.12,Operación,"Mantenimiento, deuda y liberación controlada",Resultado de la ficha de familia y del paquete original; registro individual por código/ventana,"No duplicar padres, informes, ingeniería ni cobertura; no incluye horas de contraparte ni obras/adquisiciones del cliente",Criterio específico del diccionario T-14 del mismo código; evidencia sobre versión/periodo identificado,Nikolai Navea,24,S:4;Q:4;V:8;I:4;O:4,"Asignación y cuadrante integrado por código; entornos, usuarios y habilitaciones autorizados",BT21; BA78,2029-09-21,2029-09-25,SERVICIO-ACTIVO,Recepción por etapa o control del periodo; no acredita ejecución,BT21; BA78
1.12.3.5.34,Proyección de capacidad e infraestructura,1.12,Operación,Proyección de capacidad e infraestructura,Resultado de la ficha de familia y del paquete original; registro individual por código/ventana,"No duplicar padres, informes, ingeniería ni cobertura; no incluye horas de contraparte ni obras/adquisiciones del cliente",Criterio específico del diccionario T-14 del mismo código; evidencia sobre versión/periodo identificado,Fernando Guerrero,16,D:4;Q:4;I:4;O:4,"Asignación y cuadrante integrado por código; entornos, usuarios y habilitaciones autorizados",BT21; BA78,2029-09-21,2029-09-24,SERVICIO-ACTIVO,Recepción por etapa o control del periodo; no acredita ejecución,BT21; BA78
1.12.3.1.35,Control mensual de servicio y SLA,1.12,Operación,Control mensual de servicio y SLA,Resultado de la ficha de familia y del paquete original; registro individual por código/ventana,"No duplicar padres, informes, ingeniería ni cobertura; no incluye horas de contraparte ni obras/adquisiciones del cliente",Criterio específico del diccionario T-14 del mismo código; evidencia sobre versión/periodo identificado,José Lara Arce,16,Q:4;O:8;J:4,"Asignación y cuadrante integrado por código; entornos, usuarios y habilitaciones autorizados",BT21; BA78,2029-10-16,2029-10-17,SERVICIO-ACTIVO,Recepción por etapa o control del periodo; no acredita ejecución,BT21; BA78
1.12.3.2.35,Comprobación de respaldos y restauración,1.12,Operación,Comprobación de respaldos y restauración,Resultado de la ficha de familia y del paquete original; registro individual por código/ventana,"No duplicar padres, informes, ingeniería ni cobertura; no incluye horas de contraparte ni obras/adquisiciones del cliente",Criterio específico del diccionario T-14 del mismo código; evidencia sobre versión/periodo identificado,José Lara Arce,16,D:4;Q:4;O:8,"Asignación y cuadrante integrado por código; entornos, usuarios y habilitaciones autorizados",BT21; BA78,2029-10-16,2029-10-17,SERVICIO-ACTIVO,Recepción por etapa o control del periodo; no acredita ejecución,BT21; BA78
1.12.3.3.35,Revisión de seguridad y acceso,1.12,Operación,Revisión de seguridad y acceso,Resultado de la ficha de familia y del paquete original; registro individual por código/ventana,"No duplicar padres, informes, ingeniería ni cobertura; no incluye horas de contraparte ni obras/adquisiciones del cliente",Criterio específico del diccionario T-14 del mismo código; evidencia sobre versión/periodo identificado,Bruno Toro,16,S:8;Q:4;O:4,"Asignación y cuadrante integrado por código; entornos, usuarios y habilitaciones autorizados",BT21; BA78,2029-10-17,2029-10-18,SERVICIO-ACTIVO,Recepción por etapa o control del periodo; no acredita ejecución,BT21; BA78
1.12.3.4.35,"Mantenimiento, deuda y liberación controlada",1.12,Operación,"Mantenimiento, deuda y liberación controlada",Resultado de la ficha de familia y del paquete original; registro individual por código/ventana,"No duplicar padres, informes, ingeniería ni cobertura; no incluye horas de contraparte ni obras/adquisiciones del cliente",Criterio específico del diccionario T-14 del mismo código; evidencia sobre versión/periodo identificado,Nikolai Navea,24,S:4;Q:4;V:8;I:4;O:4,"Asignación y cuadrante integrado por código; entornos, usuarios y habilitaciones autorizados",BT21; BA78,2029-10-17,2029-10-19,SERVICIO-ACTIVO,Recepción por etapa o control del periodo; no acredita ejecución,BT21; BA78
1.12.3.5.35,Proyección de capacidad e infraestructura,1.12,Operación,Proyección de capacidad e infraestructura,Resultado de la ficha de familia y del paquete original; registro individual por código/ventana,"No duplicar padres, informes, ingeniería ni cobertura; no incluye horas de contraparte ni obras/adquisiciones del cliente",Criterio específico del diccionario T-14 del mismo código; evidencia sobre versión/periodo identificado,Fernando Guerrero,16,D:4;Q:4;I:4;O:4,"Asignación y cuadrante integrado por código; entornos, usuarios y habilitaciones autorizados",BT21; BA78,2029-10-17,2029-10-18,SERVICIO-ACTIVO,Recepción por etapa o control del periodo; no acredita ejecución,BT21; BA78
1.12.3.1.36,Control mensual de servicio y SLA,1.12,Operación,Control mensual de servicio y SLA,Resultado de la ficha de familia y del paquete original; registro individual por código/ventana,"No duplicar padres, informes, ingeniería ni cobertura; no incluye horas de contraparte ni obras/adquisiciones del cliente",Criterio específico del diccionario T-14 del mismo código; evidencia sobre versión/periodo identificado,José Lara Arce,16,Q:4;O:8;J:4,"Asignación y cuadrante integrado por código; entornos, usuarios y habilitaciones autorizados",BT21; BA78,2029-11-20,2029-11-22,SERVICIO-ACTIVO,Recepción por etapa o control del periodo; no acredita ejecución,BT21; BA78
1.12.3.2.36,Comprobación de respaldos y restauración,1.12,Operación,Comprobación de respaldos y restauración,Resultado de la ficha de familia y del paquete original; registro individual por código/ventana,"No duplicar padres, informes, ingeniería ni cobertura; no incluye horas de contraparte ni obras/adquisiciones del cliente",Criterio específico del diccionario T-14 del mismo código; evidencia sobre versión/periodo identificado,José Lara Arce,16,D:4;Q:4;O:8,"Asignación y cuadrante integrado por código; entornos, usuarios y habilitaciones autorizados",BT21; BA78,2029-11-21,2029-11-22,SERVICIO-ACTIVO,Recepción por etapa o control del periodo; no acredita ejecución,BT21; BA78
1.12.3.3.36,Revisión de seguridad y acceso,1.12,Operación,Revisión de seguridad y acceso,Resultado de la ficha de familia y del paquete original; registro individual por código/ventana,"No duplicar padres, informes, ingeniería ni cobertura; no incluye horas de contraparte ni obras/adquisiciones del cliente",Criterio específico del diccionario T-14 del mismo código; evidencia sobre versión/periodo identificado,Bruno Toro,16,S:8;Q:4;O:4,"Asignación y cuadrante integrado por código; entornos, usuarios y habilitaciones autorizados",BT21; BA78,2029-11-21,2029-11-23,SERVICIO-ACTIVO,Recepción por etapa o control del periodo; no acredita ejecución,BT21; BA78
1.12.3.4.36,"Mantenimiento, deuda y liberación controlada",1.12,Operación,"Mantenimiento, deuda y liberación controlada",Resultado de la ficha de familia y del paquete original; registro individual por código/ventana,"No duplicar padres, informes, ingeniería ni cobertura; no incluye horas de contraparte ni obras/adquisiciones del cliente",Criterio específico del diccionario T-14 del mismo código; evidencia sobre versión/periodo identificado,Nikolai Navea,24,S:4;Q:4;V:8;I:4;O:4,"Asignación y cuadrante integrado por código; entornos, usuarios y habilitaciones autorizados",BT21; BA78,2029-11-19,2029-11-21,SERVICIO-ACTIVO,Recepción por etapa o control del periodo; no acredita ejecución,BT21; BA78
1.12.3.5.36,Proyección de capacidad e infraestructura,1.12,Operación,Proyección de capacidad e infraestructura,Resultado de la ficha de familia y del paquete original; registro individual por código/ventana,"No duplicar padres, informes, ingeniería ni cobertura; no incluye horas de contraparte ni obras/adquisiciones del cliente",Criterio específico del diccionario T-14 del mismo código; evidencia sobre versión/periodo identificado,Fernando Guerrero,16,D:4;Q:4;I:4;O:4,"Asignación y cuadrante integrado por código; entornos, usuarios y habilitaciones autorizados",BT21; BA78,2029-11-19,2029-11-20,SERVICIO-ACTIVO,Recepción por etapa o control del periodo; no acredita ejecución,BT21; BA78
1.12.3.1.37,Control mensual de servicio y SLA,1.12,Operación,Control mensual de servicio y SLA,Resultado de la ficha de familia y del paquete original; registro individual por código/ventana,"No duplicar padres, informes, ingeniería ni cobertura; no incluye horas de contraparte ni obras/adquisiciones del cliente",Criterio específico del diccionario T-14 del mismo código; evidencia sobre versión/periodo identificado,José Lara Arce,16,Q:4;O:8;J:4,"Asignación y cuadrante integrado por código; entornos, usuarios y habilitaciones autorizados",BT21; BA78,2029-12-17,2029-12-18,SERVICIO-ACTIVO,Recepción por etapa o control del periodo; no acredita ejecución,BT21; BA78
1.12.3.2.37,Comprobación de respaldos y restauración,1.12,Operación,Comprobación de respaldos y restauración,Resultado de la ficha de familia y del paquete original; registro individual por código/ventana,"No duplicar padres, informes, ingeniería ni cobertura; no incluye horas de contraparte ni obras/adquisiciones del cliente",Criterio específico del diccionario T-14 del mismo código; evidencia sobre versión/periodo identificado,José Lara Arce,16,D:4;Q:4;O:8,"Asignación y cuadrante integrado por código; entornos, usuarios y habilitaciones autorizados",BT21; BA78,2029-12-17,2029-12-18,SERVICIO-ACTIVO,Recepción por etapa o control del periodo; no acredita ejecución,BT21; BA78
1.12.3.3.37,Revisión de seguridad y acceso,1.12,Operación,Revisión de seguridad y acceso,Resultado de la ficha de familia y del paquete original; registro individual por código/ventana,"No duplicar padres, informes, ingeniería ni cobertura; no incluye horas de contraparte ni obras/adquisiciones del cliente",Criterio específico del diccionario T-14 del mismo código; evidencia sobre versión/periodo identificado,Bruno Toro,16,S:8;Q:4;O:4,"Asignación y cuadrante integrado por código; entornos, usuarios y habilitaciones autorizados",BT21; BA78,2029-12-18,2029-12-19,SERVICIO-ACTIVO,Recepción por etapa o control del periodo; no acredita ejecución,BT21; BA78
1.12.3.4.37,"Mantenimiento, deuda y liberación controlada",1.12,Operación,"Mantenimiento, deuda y liberación controlada",Resultado de la ficha de familia y del paquete original; registro individual por código/ventana,"No duplicar padres, informes, ingeniería ni cobertura; no incluye horas de contraparte ni obras/adquisiciones del cliente",Criterio específico del diccionario T-14 del mismo código; evidencia sobre versión/periodo identificado,Nikolai Navea,24,S:4;Q:4;V:8;I:4;O:4,"Asignación y cuadrante integrado por código; entornos, usuarios y habilitaciones autorizados",BT21; BA78,2029-12-18,2029-12-20,SERVICIO-ACTIVO,Recepción por etapa o control del periodo; no acredita ejecución,BT21; BA78
1.12.3.5.37,Proyección de capacidad e infraestructura,1.12,Operación,Proyección de capacidad e infraestructura,Resultado de la ficha de familia y del paquete original; registro individual por código/ventana,"No duplicar padres, informes, ingeniería ni cobertura; no incluye horas de contraparte ni obras/adquisiciones del cliente",Criterio específico del diccionario T-14 del mismo código; evidencia sobre versión/periodo identificado,Fernando Guerrero,16,D:4;Q:4;I:4;O:4,"Asignación y cuadrante integrado por código; entornos, usuarios y habilitaciones autorizados",BT21; BA78,2029-12-18,2029-12-19,SERVICIO-ACTIVO,Recepción por etapa o control del periodo; no acredita ejecución,BT21; BA78
1.12.3.1.38,Control mensual de servicio y SLA,1.12,Operación,Control mensual de servicio y SLA,Resultado de la ficha de familia y del paquete original; registro individual por código/ventana,"No duplicar padres, informes, ingeniería ni cobertura; no incluye horas de contraparte ni obras/adquisiciones del cliente",Criterio específico del diccionario T-14 del mismo código; evidencia sobre versión/periodo identificado,José Lara Arce,16,Q:4;O:8;J:4,"Asignación y cuadrante integrado por código; entornos, usuarios y habilitaciones autorizados",BT21; BA78,2030-01-16,2030-01-17,SERVICIO-ACTIVO,Recepción por etapa o control del periodo; no acredita ejecución,BT21; BA78
1.12.3.2.38,Comprobación de respaldos y restauración,1.12,Operación,Comprobación de respaldos y restauración,Resultado de la ficha de familia y del paquete original; registro individual por código/ventana,"No duplicar padres, informes, ingeniería ni cobertura; no incluye horas de contraparte ni obras/adquisiciones del cliente",Criterio específico del diccionario T-14 del mismo código; evidencia sobre versión/periodo identificado,José Lara Arce,16,D:4;Q:4;O:8,"Asignación y cuadrante integrado por código; entornos, usuarios y habilitaciones autorizados",BT21; BA78,2030-01-16,2030-01-17,SERVICIO-ACTIVO,Recepción por etapa o control del periodo; no acredita ejecución,BT21; BA78
1.12.3.3.38,Revisión de seguridad y acceso,1.12,Operación,Revisión de seguridad y acceso,Resultado de la ficha de familia y del paquete original; registro individual por código/ventana,"No duplicar padres, informes, ingeniería ni cobertura; no incluye horas de contraparte ni obras/adquisiciones del cliente",Criterio específico del diccionario T-14 del mismo código; evidencia sobre versión/periodo identificado,Bruno Toro,16,S:8;Q:4;O:4,"Asignación y cuadrante integrado por código; entornos, usuarios y habilitaciones autorizados",BT21; BA78,2030-01-17,2030-01-18,SERVICIO-ACTIVO,Recepción por etapa o control del periodo; no acredita ejecución,BT21; BA78
1.12.3.4.38,"Mantenimiento, deuda y liberación controlada",1.12,Operación,"Mantenimiento, deuda y liberación controlada",Resultado de la ficha de familia y del paquete original; registro individual por código/ventana,"No duplicar padres, informes, ingeniería ni cobertura; no incluye horas de contraparte ni obras/adquisiciones del cliente",Criterio específico del diccionario T-14 del mismo código; evidencia sobre versión/periodo identificado,Nikolai Navea,24,S:4;Q:4;V:8;I:4;O:4,"Asignación y cuadrante integrado por código; entornos, usuarios y habilitaciones autorizados",BT21; BA78,2030-01-17,2030-01-21,SERVICIO-ACTIVO,Recepción por etapa o control del periodo; no acredita ejecución,BT21; BA78
1.12.3.5.38,Proyección de capacidad e infraestructura,1.12,Operación,Proyección de capacidad e infraestructura,Resultado de la ficha de familia y del paquete original; registro individual por código/ventana,"No duplicar padres, informes, ingeniería ni cobertura; no incluye horas de contraparte ni obras/adquisiciones del cliente",Criterio específico del diccionario T-14 del mismo código; evidencia sobre versión/periodo identificado,Fernando Guerrero,16,D:4;Q:4;I:4;O:4,"Asignación y cuadrante integrado por código; entornos, usuarios y habilitaciones autorizados",BT21; BA78,2030-01-17,2030-01-18,SERVICIO-ACTIVO,Recepción por etapa o control del periodo; no acredita ejecución,BT21; BA78
1.12.3.1.39,Control mensual de servicio y SLA,1.12,Operación,Control mensual de servicio y SLA,Resultado de la ficha de familia y del paquete original; registro individual por código/ventana,"No duplicar padres, informes, ingeniería ni cobertura; no incluye horas de contraparte ni obras/adquisiciones del cliente",Criterio específico del diccionario T-14 del mismo código; evidencia sobre versión/periodo identificado,José Lara Arce,16,Q:4;O:8;J:4,"Asignación y cuadrante integrado por código; entornos, usuarios y habilitaciones autorizados",BT21; BA78,2030-02-18,2030-02-19,SERVICIO-ACTIVO,Recepción por etapa o control del periodo; no acredita ejecución,BT21; BA78
1.12.3.2.39,Comprobación de respaldos y restauración,1.12,Operación,Comprobación de respaldos y restauración,Resultado de la ficha de familia y del paquete original; registro individual por código/ventana,"No duplicar padres, informes, ingeniería ni cobertura; no incluye horas de contraparte ni obras/adquisiciones del cliente",Criterio específico del diccionario T-14 del mismo código; evidencia sobre versión/periodo identificado,José Lara Arce,16,D:4;Q:4;O:8,"Asignación y cuadrante integrado por código; entornos, usuarios y habilitaciones autorizados",BT21; BA78,2030-02-18,2030-02-19,SERVICIO-ACTIVO,Recepción por etapa o control del periodo; no acredita ejecución,BT21; BA78
1.12.3.3.39,Revisión de seguridad y acceso,1.12,Operación,Revisión de seguridad y acceso,Resultado de la ficha de familia y del paquete original; registro individual por código/ventana,"No duplicar padres, informes, ingeniería ni cobertura; no incluye horas de contraparte ni obras/adquisiciones del cliente",Criterio específico del diccionario T-14 del mismo código; evidencia sobre versión/periodo identificado,Bruno Toro,16,S:8;Q:4;O:4,"Asignación y cuadrante integrado por código; entornos, usuarios y habilitaciones autorizados",BT21; BA78,2030-02-19,2030-02-20,SERVICIO-ACTIVO,Recepción por etapa o control del periodo; no acredita ejecución,BT21; BA78
1.12.3.4.39,"Mantenimiento, deuda y liberación controlada",1.12,Operación,"Mantenimiento, deuda y liberación controlada",Resultado de la ficha de familia y del paquete original; registro individual por código/ventana,"No duplicar padres, informes, ingeniería ni cobertura; no incluye horas de contraparte ni obras/adquisiciones del cliente",Criterio específico del diccionario T-14 del mismo código; evidencia sobre versión/periodo identificado,Nikolai Navea,24,S:4;Q:4;V:8;I:4;O:4,"Asignación y cuadrante integrado por código; entornos, usuarios y habilitaciones autorizados",BT21; BA78,2030-02-19,2030-02-21,SERVICIO-ACTIVO,Recepción por etapa o control del periodo; no acredita ejecución,BT21; BA78
1.12.3.5.39,Proyección de capacidad e infraestructura,1.12,Operación,Proyección de capacidad e infraestructura,Resultado de la ficha de familia y del paquete original; registro individual por código/ventana,"No duplicar padres, informes, ingeniería ni cobertura; no incluye horas de contraparte ni obras/adquisiciones del cliente",Criterio específico del diccionario T-14 del mismo código; evidencia sobre versión/periodo identificado,Fernando Guerrero,16,D:4;Q:4;I:4;O:4,"Asignación y cuadrante integrado por código; entornos, usuarios y habilitaciones autorizados",BT21; BA78,2030-02-19,2030-02-20,SERVICIO-ACTIVO,Recepción por etapa o control del periodo; no acredita ejecución,BT21; BA78
1.12.3.1.40,Control mensual de servicio y SLA,1.12,Operación,Control mensual de servicio y SLA,Resultado de la ficha de familia y del paquete original; registro individual por código/ventana,"No duplicar padres, informes, ingeniería ni cobertura; no incluye horas de contraparte ni obras/adquisiciones del cliente",Criterio específico del diccionario T-14 del mismo código; evidencia sobre versión/periodo identificado,José Lara Arce,16,Q:4;O:8;J:4,"Asignación y cuadrante integrado por código; entornos, usuarios y habilitaciones autorizados",BT21; BA78,2030-03-18,2030-03-19,SERVICIO-ACTIVO,Recepción por etapa o control del periodo; no acredita ejecución,BT21; BA78
1.12.3.2.40,Comprobación de respaldos y restauración,1.12,Operación,Comprobación de respaldos y restauración,Resultado de la ficha de familia y del paquete original; registro individual por código/ventana,"No duplicar padres, informes, ingeniería ni cobertura; no incluye horas de contraparte ni obras/adquisiciones del cliente",Criterio específico del diccionario T-14 del mismo código; evidencia sobre versión/periodo identificado,José Lara Arce,16,D:4;Q:4;O:8,"Asignación y cuadrante integrado por código; entornos, usuarios y habilitaciones autorizados",BT21; BA78,2030-03-18,2030-03-19,SERVICIO-ACTIVO,Recepción por etapa o control del periodo; no acredita ejecución,BT21; BA78
1.12.3.3.40,Revisión de seguridad y acceso,1.12,Operación,Revisión de seguridad y acceso,Resultado de la ficha de familia y del paquete original; registro individual por código/ventana,"No duplicar padres, informes, ingeniería ni cobertura; no incluye horas de contraparte ni obras/adquisiciones del cliente",Criterio específico del diccionario T-14 del mismo código; evidencia sobre versión/periodo identificado,Bruno Toro,16,S:8;Q:4;O:4,"Asignación y cuadrante integrado por código; entornos, usuarios y habilitaciones autorizados",BT21; BA78,2030-03-19,2030-03-20,SERVICIO-ACTIVO,Recepción por etapa o control del periodo; no acredita ejecución,BT21; BA78
1.12.3.4.40,"Mantenimiento, deuda y liberación controlada",1.12,Operación,"Mantenimiento, deuda y liberación controlada",Resultado de la ficha de familia y del paquete original; registro individual por código/ventana,"No duplicar padres, informes, ingeniería ni cobertura; no incluye horas de contraparte ni obras/adquisiciones del cliente",Criterio específico del diccionario T-14 del mismo código; evidencia sobre versión/periodo identificado,Nikolai Navea,24,S:4;Q:4;V:8;I:4;O:4,"Asignación y cuadrante integrado por código; entornos, usuarios y habilitaciones autorizados",BT21; BA78,2030-03-19,2030-03-21,SERVICIO-ACTIVO,Recepción por etapa o control del periodo; no acredita ejecución,BT21; BA78
1.12.3.5.40,Proyección de capacidad e infraestructura,1.12,Operación,Proyección de capacidad e infraestructura,Resultado de la ficha de familia y del paquete original; registro individual por código/ventana,"No duplicar padres, informes, ingeniería ni cobertura; no incluye horas de contraparte ni obras/adquisiciones del cliente",Criterio específico del diccionario T-14 del mismo código; evidencia sobre versión/periodo identificado,Fernando Guerrero,16,D:4;Q:4;I:4;O:4,"Asignación y cuadrante integrado por código; entornos, usuarios y habilitaciones autorizados",BT21; BA78,2030-03-19,2030-03-20,SERVICIO-ACTIVO,Recepción por etapa o control del periodo; no acredita ejecución,BT21; BA78
1.12.3.1.41,Control mensual de servicio y SLA,1.12,Operación,Control mensual de servicio y SLA,Resultado de la ficha de familia y del paquete original; registro individual por código/ventana,"No duplicar padres, informes, ingeniería ni cobertura; no incluye horas de contraparte ni obras/adquisiciones del cliente",Criterio específico del diccionario T-14 del mismo código; evidencia sobre versión/periodo identificado,José Lara Arce,16,Q:4;O:8;J:4,"Asignación y cuadrante integrado por código; entornos, usuarios y habilitaciones autorizados",BT21; BA78,2030-04-16,2030-04-17,SERVICIO-ACTIVO,Recepción por etapa o control del periodo; no acredita ejecución,BT21; BA78
1.12.3.2.41,Comprobación de respaldos y restauración,1.12,Operación,Comprobación de respaldos y restauración,Resultado de la ficha de familia y del paquete original; registro individual por código/ventana,"No duplicar padres, informes, ingeniería ni cobertura; no incluye horas de contraparte ni obras/adquisiciones del cliente",Criterio específico del diccionario T-14 del mismo código; evidencia sobre versión/periodo identificado,José Lara Arce,16,D:4;Q:4;O:8,"Asignación y cuadrante integrado por código; entornos, usuarios y habilitaciones autorizados",BT21; BA78,2030-04-16,2030-04-17,SERVICIO-ACTIVO,Recepción por etapa o control del periodo; no acredita ejecución,BT21; BA78
1.12.3.3.41,Revisión de seguridad y acceso,1.12,Operación,Revisión de seguridad y acceso,Resultado de la ficha de familia y del paquete original; registro individual por código/ventana,"No duplicar padres, informes, ingeniería ni cobertura; no incluye horas de contraparte ni obras/adquisiciones del cliente",Criterio específico del diccionario T-14 del mismo código; evidencia sobre versión/periodo identificado,Bruno Toro,16,S:8;Q:4;O:4,"Asignación y cuadrante integrado por código; entornos, usuarios y habilitaciones autorizados",BT21; BA78,2030-04-17,2030-04-18,SERVICIO-ACTIVO,Recepción por etapa o control del periodo; no acredita ejecución,BT21; BA78
1.12.3.4.41,"Mantenimiento, deuda y liberación controlada",1.12,Operación,"Mantenimiento, deuda y liberación controlada",Resultado de la ficha de familia y del paquete original; registro individual por código/ventana,"No duplicar padres, informes, ingeniería ni cobertura; no incluye horas de contraparte ni obras/adquisiciones del cliente",Criterio específico del diccionario T-14 del mismo código; evidencia sobre versión/periodo identificado,Nikolai Navea,24,S:4;Q:4;V:8;I:4;O:4,"Asignación y cuadrante integrado por código; entornos, usuarios y habilitaciones autorizados",BT21; BA78,2030-04-17,2030-04-22,SERVICIO-ACTIVO,Recepción por etapa o control del periodo; no acredita ejecución,BT21; BA78
1.12.3.5.41,Proyección de capacidad e infraestructura,1.12,Operación,Proyección de capacidad e infraestructura,Resultado de la ficha de familia y del paquete original; registro individual por código/ventana,"No duplicar padres, informes, ingeniería ni cobertura; no incluye horas de contraparte ni obras/adquisiciones del cliente",Criterio específico del diccionario T-14 del mismo código; evidencia sobre versión/periodo identificado,Fernando Guerrero,16,D:4;Q:4;I:4;O:4,"Asignación y cuadrante integrado por código; entornos, usuarios y habilitaciones autorizados",BT21; BA78,2030-04-17,2030-04-18,SERVICIO-ACTIVO,Recepción por etapa o control del periodo; no acredita ejecución,BT21; BA78
1.12.3.1.42,Control mensual de servicio y SLA,1.12,Operación,Control mensual de servicio y SLA,Resultado de la ficha de familia y del paquete original; registro individual por código/ventana,"No duplicar padres, informes, ingeniería ni cobertura; no incluye horas de contraparte ni obras/adquisiciones del cliente",Criterio específico del diccionario T-14 del mismo código; evidencia sobre versión/periodo identificado,José Lara Arce,16,Q:4;O:8;J:4,"Asignación y cuadrante integrado por código; entornos, usuarios y habilitaciones autorizados",BT21; BA78,2030-05-16,2030-05-17,SERVICIO-ACTIVO,Recepción por etapa o control del periodo; no acredita ejecución,BT21; BA78
1.12.3.2.42,Comprobación de respaldos y restauración,1.12,Operación,Comprobación de respaldos y restauración,Resultado de la ficha de familia y del paquete original; registro individual por código/ventana,"No duplicar padres, informes, ingeniería ni cobertura; no incluye horas de contraparte ni obras/adquisiciones del cliente",Criterio específico del diccionario T-14 del mismo código; evidencia sobre versión/periodo identificado,José Lara Arce,16,D:4;Q:4;O:8,"Asignación y cuadrante integrado por código; entornos, usuarios y habilitaciones autorizados",BT21; BA78,2030-05-16,2030-05-17,SERVICIO-ACTIVO,Recepción por etapa o control del periodo; no acredita ejecución,BT21; BA78
1.12.3.3.42,Revisión de seguridad y acceso,1.12,Operación,Revisión de seguridad y acceso,Resultado de la ficha de familia y del paquete original; registro individual por código/ventana,"No duplicar padres, informes, ingeniería ni cobertura; no incluye horas de contraparte ni obras/adquisiciones del cliente",Criterio específico del diccionario T-14 del mismo código; evidencia sobre versión/periodo identificado,Bruno Toro,16,S:8;Q:4;O:4,"Asignación y cuadrante integrado por código; entornos, usuarios y habilitaciones autorizados",BT21; BA78,2030-05-17,2030-05-20,SERVICIO-ACTIVO,Recepción por etapa o control del periodo; no acredita ejecución,BT21; BA78
1.12.3.4.42,"Mantenimiento, deuda y liberación controlada",1.12,Operación,"Mantenimiento, deuda y liberación controlada",Resultado de la ficha de familia y del paquete original; registro individual por código/ventana,"No duplicar padres, informes, ingeniería ni cobertura; no incluye horas de contraparte ni obras/adquisiciones del cliente",Criterio específico del diccionario T-14 del mismo código; evidencia sobre versión/periodo identificado,Nikolai Navea,24,S:4;Q:4;V:8;I:4;O:4,"Asignación y cuadrante integrado por código; entornos, usuarios y habilitaciones autorizados",BT21; BA78,2030-05-17,2030-05-22,SERVICIO-ACTIVO,Recepción por etapa o control del periodo; no acredita ejecución,BT21; BA78
1.12.3.5.42,Proyección de capacidad e infraestructura,1.12,Operación,Proyección de capacidad e infraestructura,Resultado de la ficha de familia y del paquete original; registro individual por código/ventana,"No duplicar padres, informes, ingeniería ni cobertura; no incluye horas de contraparte ni obras/adquisiciones del cliente",Criterio específico del diccionario T-14 del mismo código; evidencia sobre versión/periodo identificado,Fernando Guerrero,16,D:4;Q:4;I:4;O:4,"Asignación y cuadrante integrado por código; entornos, usuarios y habilitaciones autorizados",BT21; BA78,2030-05-17,2030-05-20,SERVICIO-ACTIVO,Recepción por etapa o control del periodo; no acredita ejecución,BT21; BA78
1.12.3.1.43,Control mensual de servicio y SLA,1.12,Operación,Control mensual de servicio y SLA,Resultado de la ficha de familia y del paquete original; registro individual por código/ventana,"No duplicar padres, informes, ingeniería ni cobertura; no incluye horas de contraparte ni obras/adquisiciones del cliente",Criterio específico del diccionario T-14 del mismo código; evidencia sobre versión/periodo identificado,José Lara Arce,16,Q:4;O:8;J:4,"Asignación y cuadrante integrado por código; entornos, usuarios y habilitaciones autorizados",BT21; BA78,2030-06-17,2030-06-18,SERVICIO-ACTIVO,Recepción por etapa o control del periodo; no acredita ejecución,BT21; BA78
1.12.3.2.43,Comprobación de respaldos y restauración,1.12,Operación,Comprobación de respaldos y restauración,Resultado de la ficha de familia y del paquete original; registro individual por código/ventana,"No duplicar padres, informes, ingeniería ni cobertura; no incluye horas de contraparte ni obras/adquisiciones del cliente",Criterio específico del diccionario T-14 del mismo código; evidencia sobre versión/periodo identificado,José Lara Arce,16,D:4;Q:4;O:8,"Asignación y cuadrante integrado por código; entornos, usuarios y habilitaciones autorizados",BT21; BA78,2030-06-17,2030-06-18,SERVICIO-ACTIVO,Recepción por etapa o control del periodo; no acredita ejecución,BT21; BA78
1.12.3.3.43,Revisión de seguridad y acceso,1.12,Operación,Revisión de seguridad y acceso,Resultado de la ficha de familia y del paquete original; registro individual por código/ventana,"No duplicar padres, informes, ingeniería ni cobertura; no incluye horas de contraparte ni obras/adquisiciones del cliente",Criterio específico del diccionario T-14 del mismo código; evidencia sobre versión/periodo identificado,Bruno Toro,16,S:8;Q:4;O:4,"Asignación y cuadrante integrado por código; entornos, usuarios y habilitaciones autorizados",BT21; BA78,2030-06-18,2030-06-19,SERVICIO-ACTIVO,Recepción por etapa o control del periodo; no acredita ejecución,BT21; BA78
1.12.3.4.43,"Mantenimiento, deuda y liberación controlada",1.12,Operación,"Mantenimiento, deuda y liberación controlada",Resultado de la ficha de familia y del paquete original; registro individual por código/ventana,"No duplicar padres, informes, ingeniería ni cobertura; no incluye horas de contraparte ni obras/adquisiciones del cliente",Criterio específico del diccionario T-14 del mismo código; evidencia sobre versión/periodo identificado,Nikolai Navea,24,S:4;Q:4;V:8;I:4;O:4,"Asignación y cuadrante integrado por código; entornos, usuarios y habilitaciones autorizados",BT21; BA78,2030-06-18,2030-06-20,SERVICIO-ACTIVO,Recepción por etapa o control del periodo; no acredita ejecución,BT21; BA78
1.12.3.5.43,Proyección de capacidad e infraestructura,1.12,Operación,Proyección de capacidad e infraestructura,Resultado de la ficha de familia y del paquete original; registro individual por código/ventana,"No duplicar padres, informes, ingeniería ni cobertura; no incluye horas de contraparte ni obras/adquisiciones del cliente",Criterio específico del diccionario T-14 del mismo código; evidencia sobre versión/periodo identificado,Fernando Guerrero,16,D:4;Q:4;I:4;O:4,"Asignación y cuadrante integrado por código; entornos, usuarios y habilitaciones autorizados",BT21; BA78,2030-06-18,2030-06-19,SERVICIO-ACTIVO,Recepción por etapa o control del periodo; no acredita ejecución,BT21; BA78
1.12.3.1.44,Control mensual de servicio y SLA,1.12,Operación,Control mensual de servicio y SLA,Resultado de la ficha de familia y del paquete original; registro individual por código/ventana,"No duplicar padres, informes, ingeniería ni cobertura; no incluye horas de contraparte ni obras/adquisiciones del cliente",Criterio específico del diccionario T-14 del mismo código; evidencia sobre versión/periodo identificado,José Lara Arce,16,Q:4;O:8;J:4,"Asignación y cuadrante integrado por código; entornos, usuarios y habilitaciones autorizados",BT21; BA78,2030-07-17,2030-07-18,SERVICIO-ACTIVO,Recepción por etapa o control del periodo; no acredita ejecución,BT21; BA78
1.12.3.2.44,Comprobación de respaldos y restauración,1.12,Operación,Comprobación de respaldos y restauración,Resultado de la ficha de familia y del paquete original; registro individual por código/ventana,"No duplicar padres, informes, ingeniería ni cobertura; no incluye horas de contraparte ni obras/adquisiciones del cliente",Criterio específico del diccionario T-14 del mismo código; evidencia sobre versión/periodo identificado,José Lara Arce,16,D:4;Q:4;O:8,"Asignación y cuadrante integrado por código; entornos, usuarios y habilitaciones autorizados",BT21; BA78,2030-07-17,2030-07-18,SERVICIO-ACTIVO,Recepción por etapa o control del periodo; no acredita ejecución,BT21; BA78
1.12.3.3.44,Revisión de seguridad y acceso,1.12,Operación,Revisión de seguridad y acceso,Resultado de la ficha de familia y del paquete original; registro individual por código/ventana,"No duplicar padres, informes, ingeniería ni cobertura; no incluye horas de contraparte ni obras/adquisiciones del cliente",Criterio específico del diccionario T-14 del mismo código; evidencia sobre versión/periodo identificado,Bruno Toro,16,S:8;Q:4;O:4,"Asignación y cuadrante integrado por código; entornos, usuarios y habilitaciones autorizados",BT21; BA78,2030-07-18,2030-07-19,SERVICIO-ACTIVO,Recepción por etapa o control del periodo; no acredita ejecución,BT21; BA78
1.12.3.4.44,"Mantenimiento, deuda y liberación controlada",1.12,Operación,"Mantenimiento, deuda y liberación controlada",Resultado de la ficha de familia y del paquete original; registro individual por código/ventana,"No duplicar padres, informes, ingeniería ni cobertura; no incluye horas de contraparte ni obras/adquisiciones del cliente",Criterio específico del diccionario T-14 del mismo código; evidencia sobre versión/periodo identificado,Nikolai Navea,24,S:4;Q:4;V:8;I:4;O:4,"Asignación y cuadrante integrado por código; entornos, usuarios y habilitaciones autorizados",BT21; BA78,2030-07-18,2030-07-22,SERVICIO-ACTIVO,Recepción por etapa o control del periodo; no acredita ejecución,BT21; BA78
1.12.3.5.44,Proyección de capacidad e infraestructura,1.12,Operación,Proyección de capacidad e infraestructura,Resultado de la ficha de familia y del paquete original; registro individual por código/ventana,"No duplicar padres, informes, ingeniería ni cobertura; no incluye horas de contraparte ni obras/adquisiciones del cliente",Criterio específico del diccionario T-14 del mismo código; evidencia sobre versión/periodo identificado,Fernando Guerrero,16,D:4;Q:4;I:4;O:4,"Asignación y cuadrante integrado por código; entornos, usuarios y habilitaciones autorizados",BT21; BA78,2030-07-18,2030-07-19,SERVICIO-ACTIVO,Recepción por etapa o control del periodo; no acredita ejecución,BT21; BA78
1.12.3.1.45,Control mensual de servicio y SLA,1.12,Operación,Control mensual de servicio y SLA,Resultado de la ficha de familia y del paquete original; registro individual por código/ventana,"No duplicar padres, informes, ingeniería ni cobertura; no incluye horas de contraparte ni obras/adquisiciones del cliente",Criterio específico del diccionario T-14 del mismo código; evidencia sobre versión/periodo identificado,José Lara Arce,16,Q:4;O:8;J:4,"Asignación y cuadrante integrado por código; entornos, usuarios y habilitaciones autorizados",BT21; BA78,2030-08-20,2030-08-22,SERVICIO-ACTIVO,Recepción por etapa o control del periodo; no acredita ejecución,BT21; BA78
1.12.3.2.45,Comprobación de respaldos y restauración,1.12,Operación,Comprobación de respaldos y restauración,Resultado de la ficha de familia y del paquete original; registro individual por código/ventana,"No duplicar padres, informes, ingeniería ni cobertura; no incluye horas de contraparte ni obras/adquisiciones del cliente",Criterio específico del diccionario T-14 del mismo código; evidencia sobre versión/periodo identificado,José Lara Arce,16,D:4;Q:4;O:8,"Asignación y cuadrante integrado por código; entornos, usuarios y habilitaciones autorizados",BT21; BA78,2030-08-16,2030-08-20,SERVICIO-ACTIVO,Recepción por etapa o control del periodo; no acredita ejecución,BT21; BA78
1.12.3.3.45,Revisión de seguridad y acceso,1.12,Operación,Revisión de seguridad y acceso,Resultado de la ficha de familia y del paquete original; registro individual por código/ventana,"No duplicar padres, informes, ingeniería ni cobertura; no incluye horas de contraparte ni obras/adquisiciones del cliente",Criterio específico del diccionario T-14 del mismo código; evidencia sobre versión/periodo identificado,Bruno Toro,16,S:8;Q:4;O:4,"Asignación y cuadrante integrado por código; entornos, usuarios y habilitaciones autorizados",BT21; BA78,2030-08-19,2030-08-20,SERVICIO-ACTIVO,Recepción por etapa o control del periodo; no acredita ejecución,BT21; BA78
1.12.3.4.45,"Mantenimiento, deuda y liberación controlada",1.12,Operación,"Mantenimiento, deuda y liberación controlada",Resultado de la ficha de familia y del paquete original; registro individual por código/ventana,"No duplicar padres, informes, ingeniería ni cobertura; no incluye horas de contraparte ni obras/adquisiciones del cliente",Criterio específico del diccionario T-14 del mismo código; evidencia sobre versión/periodo identificado,Nikolai Navea,24,S:4;Q:4;V:8;I:4;O:4,"Asignación y cuadrante integrado por código; entornos, usuarios y habilitaciones autorizados",BT21; BA78,2030-08-19,2030-08-21,SERVICIO-ACTIVO,Recepción por etapa o control del periodo; no acredita ejecución,BT21; BA78
1.12.3.5.45,Proyección de capacidad e infraestructura,1.12,Operación,Proyección de capacidad e infraestructura,Resultado de la ficha de familia y del paquete original; registro individual por código/ventana,"No duplicar padres, informes, ingeniería ni cobertura; no incluye horas de contraparte ni obras/adquisiciones del cliente",Criterio específico del diccionario T-14 del mismo código; evidencia sobre versión/periodo identificado,Fernando Guerrero,16,D:4;Q:4;I:4;O:4,"Asignación y cuadrante integrado por código; entornos, usuarios y habilitaciones autorizados",BT21; BA78,2030-08-16,2030-08-19,SERVICIO-ACTIVO,Recepción por etapa o control del periodo; no acredita ejecución,BT21; BA78
1.12.3.1.46,Control mensual de servicio y SLA,1.12,Operación,Control mensual de servicio y SLA,Resultado de la ficha de familia y del paquete original; registro individual por código/ventana,"No duplicar padres, informes, ingeniería ni cobertura; no incluye horas de contraparte ni obras/adquisiciones del cliente",Criterio específico del diccionario T-14 del mismo código; evidencia sobre versión/periodo identificado,José Lara Arce,16,Q:4;O:8;J:4,"Asignación y cuadrante integrado por código; entornos, usuarios y habilitaciones autorizados",BT21; BA78,2030-09-16,2030-09-17,SERVICIO-ACTIVO,Recepción por etapa o control del periodo; no acredita ejecución,BT21; BA78
1.12.3.2.46,Comprobación de respaldos y restauración,1.12,Operación,Comprobación de respaldos y restauración,Resultado de la ficha de familia y del paquete original; registro individual por código/ventana,"No duplicar padres, informes, ingeniería ni cobertura; no incluye horas de contraparte ni obras/adquisiciones del cliente",Criterio específico del diccionario T-14 del mismo código; evidencia sobre versión/periodo identificado,José Lara Arce,16,D:4;Q:4;O:8,"Asignación y cuadrante integrado por código; entornos, usuarios y habilitaciones autorizados",BT21; BA78,2030-09-16,2030-09-17,SERVICIO-ACTIVO,Recepción por etapa o control del periodo; no acredita ejecución,BT21; BA78
1.12.3.3.46,Revisión de seguridad y acceso,1.12,Operación,Revisión de seguridad y acceso,Resultado de la ficha de familia y del paquete original; registro individual por código/ventana,"No duplicar padres, informes, ingeniería ni cobertura; no incluye horas de contraparte ni obras/adquisiciones del cliente",Criterio específico del diccionario T-14 del mismo código; evidencia sobre versión/periodo identificado,Bruno Toro,16,S:8;Q:4;O:4,"Asignación y cuadrante integrado por código; entornos, usuarios y habilitaciones autorizados",BT21; BA78,2030-09-17,2030-09-23,SERVICIO-ACTIVO,Recepción por etapa o control del periodo; no acredita ejecución,BT21; BA78
1.12.3.4.46,"Mantenimiento, deuda y liberación controlada",1.12,Operación,"Mantenimiento, deuda y liberación controlada",Resultado de la ficha de familia y del paquete original; registro individual por código/ventana,"No duplicar padres, informes, ingeniería ni cobertura; no incluye horas de contraparte ni obras/adquisiciones del cliente",Criterio específico del diccionario T-14 del mismo código; evidencia sobre versión/periodo identificado,Nikolai Navea,24,S:4;Q:4;V:8;I:4;O:4,"Asignación y cuadrante integrado por código; entornos, usuarios y habilitaciones autorizados",BT21; BA78,2030-09-17,2030-09-24,SERVICIO-ACTIVO,Recepción por etapa o control del periodo; no acredita ejecución,BT21; BA78
1.12.3.5.46,Proyección de capacidad e infraestructura,1.12,Operación,Proyección de capacidad e infraestructura,Resultado de la ficha de familia y del paquete original; registro individual por código/ventana,"No duplicar padres, informes, ingeniería ni cobertura; no incluye horas de contraparte ni obras/adquisiciones del cliente",Criterio específico del diccionario T-14 del mismo código; evidencia sobre versión/periodo identificado,Fernando Guerrero,16,D:4;Q:4;I:4;O:4,"Asignación y cuadrante integrado por código; entornos, usuarios y habilitaciones autorizados",BT21; BA78,2030-09-17,2030-09-23,SERVICIO-ACTIVO,Recepción por etapa o control del periodo; no acredita ejecución,BT21; BA78
1.12.3.1.47,Control mensual de servicio y SLA,1.12,Operación,Control mensual de servicio y SLA,Resultado de la ficha de familia y del paquete original; registro individual por código/ventana,"No duplicar padres, informes, ingeniería ni cobertura; no incluye horas de contraparte ni obras/adquisiciones del cliente",Criterio específico del diccionario T-14 del mismo código; evidencia sobre versión/periodo identificado,José Lara Arce,16,Q:4;O:8;J:4,"Asignación y cuadrante integrado por código; entornos, usuarios y habilitaciones autorizados",BT21; BA78,2030-10-16,2030-10-17,SERVICIO-ACTIVO,Recepción por etapa o control del periodo; no acredita ejecución,BT21; BA78
1.12.3.2.47,Comprobación de respaldos y restauración,1.12,Operación,Comprobación de respaldos y restauración,Resultado de la ficha de familia y del paquete original; registro individual por código/ventana,"No duplicar padres, informes, ingeniería ni cobertura; no incluye horas de contraparte ni obras/adquisiciones del cliente",Criterio específico del diccionario T-14 del mismo código; evidencia sobre versión/periodo identificado,José Lara Arce,16,D:4;Q:4;O:8,"Asignación y cuadrante integrado por código; entornos, usuarios y habilitaciones autorizados",BT21; BA78,2030-10-16,2030-10-17,SERVICIO-ACTIVO,Recepción por etapa o control del periodo; no acredita ejecución,BT21; BA78
1.12.3.3.47,Revisión de seguridad y acceso,1.12,Operación,Revisión de seguridad y acceso,Resultado de la ficha de familia y del paquete original; registro individual por código/ventana,"No duplicar padres, informes, ingeniería ni cobertura; no incluye horas de contraparte ni obras/adquisiciones del cliente",Criterio específico del diccionario T-14 del mismo código; evidencia sobre versión/periodo identificado,Bruno Toro,16,S:8;Q:4;O:4,"Asignación y cuadrante integrado por código; entornos, usuarios y habilitaciones autorizados",BT21; BA78,2030-10-17,2030-10-18,SERVICIO-ACTIVO,Recepción por etapa o control del periodo; no acredita ejecución,BT21; BA78
1.12.3.4.47,"Mantenimiento, deuda y liberación controlada",1.12,Operación,"Mantenimiento, deuda y liberación controlada",Resultado de la ficha de familia y del paquete original; registro individual por código/ventana,"No duplicar padres, informes, ingeniería ni cobertura; no incluye horas de contraparte ni obras/adquisiciones del cliente",Criterio específico del diccionario T-14 del mismo código; evidencia sobre versión/periodo identificado,Nikolai Navea,24,S:4;Q:4;V:8;I:4;O:4,"Asignación y cuadrante integrado por código; entornos, usuarios y habilitaciones autorizados",BT21; BA78,2030-10-17,2030-10-21,SERVICIO-ACTIVO,Recepción por etapa o control del periodo; no acredita ejecución,BT21; BA78
1.12.3.5.47,Proyección de capacidad e infraestructura,1.12,Operación,Proyección de capacidad e infraestructura,Resultado de la ficha de familia y del paquete original; registro individual por código/ventana,"No duplicar padres, informes, ingeniería ni cobertura; no incluye horas de contraparte ni obras/adquisiciones del cliente",Criterio específico del diccionario T-14 del mismo código; evidencia sobre versión/periodo identificado,Fernando Guerrero,16,D:4;Q:4;I:4;O:4,"Asignación y cuadrante integrado por código; entornos, usuarios y habilitaciones autorizados",BT21; BA78,2030-10-17,2030-10-18,SERVICIO-ACTIVO,Recepción por etapa o control del periodo; no acredita ejecución,BT21; BA78
1.12.3.1.48,Control mensual de servicio y SLA,1.12,Operación,Control mensual de servicio y SLA,Resultado de la ficha de familia y del paquete original; registro individual por código/ventana,"No duplicar padres, informes, ingeniería ni cobertura; no incluye horas de contraparte ni obras/adquisiciones del cliente",Criterio específico del diccionario T-14 del mismo código; evidencia sobre versión/periodo identificado,José Lara Arce,16,Q:4;O:8;J:4,"Asignación y cuadrante integrado por código; entornos, usuarios y habilitaciones autorizados",BT21; BA78,2030-11-20,2030-11-21,SERVICIO-ACTIVO,Recepción por etapa o control del periodo; no acredita ejecución,BT21; BA78
1.12.3.2.48,Comprobación de respaldos y restauración,1.12,Operación,Comprobación de respaldos y restauración,Resultado de la ficha de familia y del paquete original; registro individual por código/ventana,"No duplicar padres, informes, ingeniería ni cobertura; no incluye horas de contraparte ni obras/adquisiciones del cliente",Criterio específico del diccionario T-14 del mismo código; evidencia sobre versión/periodo identificado,José Lara Arce,16,D:4;Q:4;O:8,"Asignación y cuadrante integrado por código; entornos, usuarios y habilitaciones autorizados",BT21; BA78,2030-11-20,2030-11-22,SERVICIO-ACTIVO,Recepción por etapa o control del periodo; no acredita ejecución,BT21; BA78
1.12.3.3.48,Revisión de seguridad y acceso,1.12,Operación,Revisión de seguridad y acceso,Resultado de la ficha de familia y del paquete original; registro individual por código/ventana,"No duplicar padres, informes, ingeniería ni cobertura; no incluye horas de contraparte ni obras/adquisiciones del cliente",Criterio específico del diccionario T-14 del mismo código; evidencia sobre versión/periodo identificado,Bruno Toro,16,S:8;Q:4;O:4,"Asignación y cuadrante integrado por código; entornos, usuarios y habilitaciones autorizados",BT21; BA78,2030-11-21,2030-11-22,SERVICIO-ACTIVO,Recepción por etapa o control del periodo; no acredita ejecución,BT21; BA78
1.12.3.4.48,"Mantenimiento, deuda y liberación controlada",1.12,Operación,"Mantenimiento, deuda y liberación controlada",Resultado de la ficha de familia y del paquete original; registro individual por código/ventana,"No duplicar padres, informes, ingeniería ni cobertura; no incluye horas de contraparte ni obras/adquisiciones del cliente",Criterio específico del diccionario T-14 del mismo código; evidencia sobre versión/periodo identificado,Nikolai Navea,24,S:4;Q:4;V:8;I:4;O:4,"Asignación y cuadrante integrado por código; entornos, usuarios y habilitaciones autorizados",BT21; BA78,2030-11-21,2030-11-25,SERVICIO-ACTIVO,Recepción por etapa o control del periodo; no acredita ejecución,BT21; BA78
1.12.3.5.48,Proyección de capacidad e infraestructura,1.12,Operación,Proyección de capacidad e infraestructura,Resultado de la ficha de familia y del paquete original; registro individual por código/ventana,"No duplicar padres, informes, ingeniería ni cobertura; no incluye horas de contraparte ni obras/adquisiciones del cliente",Criterio específico del diccionario T-14 del mismo código; evidencia sobre versión/periodo identificado,Fernando Guerrero,16,D:4;Q:4;I:4;O:4,"Asignación y cuadrante integrado por código; entornos, usuarios y habilitaciones autorizados",BT21; BA78,2030-11-18,2030-11-19,SERVICIO-ACTIVO,Recepción por etapa o control del periodo; no acredita ejecución,BT21; BA78
1.12.3.1.49,Control mensual de servicio y SLA,1.12,Operación,Control mensual de servicio y SLA,Resultado de la ficha de familia y del paquete original; registro individual por código/ventana,"No duplicar padres, informes, ingeniería ni cobertura; no incluye horas de contraparte ni obras/adquisiciones del cliente",Criterio específico del diccionario T-14 del mismo código; evidencia sobre versión/periodo identificado,José Lara Arce,16,Q:4;O:8;J:4,"Asignación y cuadrante integrado por código; entornos, usuarios y habilitaciones autorizados",BT21; BA78,2030-12-16,2030-12-17,SERVICIO-ACTIVO,Recepción por etapa o control del periodo; no acredita ejecución,BT21; BA78
1.12.3.2.49,Comprobación de respaldos y restauración,1.12,Operación,Comprobación de respaldos y restauración,Resultado de la ficha de familia y del paquete original; registro individual por código/ventana,"No duplicar padres, informes, ingeniería ni cobertura; no incluye horas de contraparte ni obras/adquisiciones del cliente",Criterio específico del diccionario T-14 del mismo código; evidencia sobre versión/periodo identificado,José Lara Arce,16,D:4;Q:4;O:8,"Asignación y cuadrante integrado por código; entornos, usuarios y habilitaciones autorizados",BT21; BA78,2030-12-16,2030-12-17,SERVICIO-ACTIVO,Recepción por etapa o control del periodo; no acredita ejecución,BT21; BA78
1.12.3.3.49,Revisión de seguridad y acceso,1.12,Operación,Revisión de seguridad y acceso,Resultado de la ficha de familia y del paquete original; registro individual por código/ventana,"No duplicar padres, informes, ingeniería ni cobertura; no incluye horas de contraparte ni obras/adquisiciones del cliente",Criterio específico del diccionario T-14 del mismo código; evidencia sobre versión/periodo identificado,Bruno Toro,16,S:8;Q:4;O:4,"Asignación y cuadrante integrado por código; entornos, usuarios y habilitaciones autorizados",BT21; BA78,2030-12-17,2030-12-18,SERVICIO-ACTIVO,Recepción por etapa o control del periodo; no acredita ejecución,BT21; BA78
1.12.3.4.49,"Mantenimiento, deuda y liberación controlada",1.12,Operación,"Mantenimiento, deuda y liberación controlada",Resultado de la ficha de familia y del paquete original; registro individual por código/ventana,"No duplicar padres, informes, ingeniería ni cobertura; no incluye horas de contraparte ni obras/adquisiciones del cliente",Criterio específico del diccionario T-14 del mismo código; evidencia sobre versión/periodo identificado,Nikolai Navea,24,S:4;Q:4;V:8;I:4;O:4,"Asignación y cuadrante integrado por código; entornos, usuarios y habilitaciones autorizados",BT21; BA78,2030-12-17,2030-12-19,SERVICIO-ACTIVO,Recepción por etapa o control del periodo; no acredita ejecución,BT21; BA78
1.12.3.5.49,Proyección de capacidad e infraestructura,1.12,Operación,Proyección de capacidad e infraestructura,Resultado de la ficha de familia y del paquete original; registro individual por código/ventana,"No duplicar padres, informes, ingeniería ni cobertura; no incluye horas de contraparte ni obras/adquisiciones del cliente",Criterio específico del diccionario T-14 del mismo código; evidencia sobre versión/periodo identificado,Fernando Guerrero,16,D:4;Q:4;I:4;O:4,"Asignación y cuadrante integrado por código; entornos, usuarios y habilitaciones autorizados",BT21; BA78,2030-12-17,2030-12-18,SERVICIO-ACTIVO,Recepción por etapa o control del periodo; no acredita ejecución,BT21; BA78
1.12.3.1.50,Control mensual de servicio y SLA,1.12,Operación,Control mensual de servicio y SLA,Resultado de la ficha de familia y del paquete original; registro individual por código/ventana,"No duplicar padres, informes, ingeniería ni cobertura; no incluye horas de contraparte ni obras/adquisiciones del cliente",Criterio específico del diccionario T-14 del mismo código; evidencia sobre versión/periodo identificado,José Lara Arce,16,Q:4;O:8;J:4,"Asignación y cuadrante integrado por código; entornos, usuarios y habilitaciones autorizados",BT21; BA78,2031-01-16,2031-01-17,SERVICIO-ACTIVO,Recepción por etapa o control del periodo; no acredita ejecución,BT21; BA78
1.12.3.2.50,Comprobación de respaldos y restauración,1.12,Operación,Comprobación de respaldos y restauración,Resultado de la ficha de familia y del paquete original; registro individual por código/ventana,"No duplicar padres, informes, ingeniería ni cobertura; no incluye horas de contraparte ni obras/adquisiciones del cliente",Criterio específico del diccionario T-14 del mismo código; evidencia sobre versión/periodo identificado,José Lara Arce,16,D:4;Q:4;O:8,"Asignación y cuadrante integrado por código; entornos, usuarios y habilitaciones autorizados",BT21; BA78,2031-01-16,2031-01-17,SERVICIO-ACTIVO,Recepción por etapa o control del periodo; no acredita ejecución,BT21; BA78
1.12.3.3.50,Revisión de seguridad y acceso,1.12,Operación,Revisión de seguridad y acceso,Resultado de la ficha de familia y del paquete original; registro individual por código/ventana,"No duplicar padres, informes, ingeniería ni cobertura; no incluye horas de contraparte ni obras/adquisiciones del cliente",Criterio específico del diccionario T-14 del mismo código; evidencia sobre versión/periodo identificado,Bruno Toro,16,S:8;Q:4;O:4,"Asignación y cuadrante integrado por código; entornos, usuarios y habilitaciones autorizados",BT21; BA78,2031-01-17,2031-01-20,SERVICIO-ACTIVO,Recepción por etapa o control del periodo; no acredita ejecución,BT21; BA78
1.12.3.4.50,"Mantenimiento, deuda y liberación controlada",1.12,Operación,"Mantenimiento, deuda y liberación controlada",Resultado de la ficha de familia y del paquete original; registro individual por código/ventana,"No duplicar padres, informes, ingeniería ni cobertura; no incluye horas de contraparte ni obras/adquisiciones del cliente",Criterio específico del diccionario T-14 del mismo código; evidencia sobre versión/periodo identificado,Nikolai Navea,24,S:4;Q:4;V:8;I:4;O:4,"Asignación y cuadrante integrado por código; entornos, usuarios y habilitaciones autorizados",BT21; BA78,2031-01-17,2031-01-21,SERVICIO-ACTIVO,Recepción por etapa o control del periodo; no acredita ejecución,BT21; BA78
1.12.3.5.50,Proyección de capacidad e infraestructura,1.12,Operación,Proyección de capacidad e infraestructura,Resultado de la ficha de familia y del paquete original; registro individual por código/ventana,"No duplicar padres, informes, ingeniería ni cobertura; no incluye horas de contraparte ni obras/adquisiciones del cliente",Criterio específico del diccionario T-14 del mismo código; evidencia sobre versión/periodo identificado,Fernando Guerrero,16,D:4;Q:4;I:4;O:4,"Asignación y cuadrante integrado por código; entornos, usuarios y habilitaciones autorizados",BT21; BA78,2031-01-17,2031-01-20,SERVICIO-ACTIVO,Recepción por etapa o control del periodo; no acredita ejecución,BT21; BA78
1.12.3.1.51,Control mensual de servicio y SLA,1.12,Operación,Control mensual de servicio y SLA,Resultado de la ficha de familia y del paquete original; registro individual por código/ventana,"No duplicar padres, informes, ingeniería ni cobertura; no incluye horas de contraparte ni obras/adquisiciones del cliente",Criterio específico del diccionario T-14 del mismo código; evidencia sobre versión/periodo identificado,José Lara Arce,16,Q:4;O:8;J:4,"Asignación y cuadrante integrado por código; entornos, usuarios y habilitaciones autorizados",BT21; BA78,2031-02-17,2031-02-18,SERVICIO-ACTIVO,Recepción por etapa o control del periodo; no acredita ejecución,BT21; BA78
1.12.3.2.51,Comprobación de respaldos y restauración,1.12,Operación,Comprobación de respaldos y restauración,Resultado de la ficha de familia y del paquete original; registro individual por código/ventana,"No duplicar padres, informes, ingeniería ni cobertura; no incluye horas de contraparte ni obras/adquisiciones del cliente",Criterio específico del diccionario T-14 del mismo código; evidencia sobre versión/periodo identificado,José Lara Arce,16,D:4;Q:4;O:8,"Asignación y cuadrante integrado por código; entornos, usuarios y habilitaciones autorizados",BT21; BA78,2031-02-17,2031-02-18,SERVICIO-ACTIVO,Recepción por etapa o control del periodo; no acredita ejecución,BT21; BA78
1.12.3.3.51,Revisión de seguridad y acceso,1.12,Operación,Revisión de seguridad y acceso,Resultado de la ficha de familia y del paquete original; registro individual por código/ventana,"No duplicar padres, informes, ingeniería ni cobertura; no incluye horas de contraparte ni obras/adquisiciones del cliente",Criterio específico del diccionario T-14 del mismo código; evidencia sobre versión/periodo identificado,Bruno Toro,16,S:8;Q:4;O:4,"Asignación y cuadrante integrado por código; entornos, usuarios y habilitaciones autorizados",BT21; BA78,2031-02-18,2031-02-19,SERVICIO-ACTIVO,Recepción por etapa o control del periodo; no acredita ejecución,BT21; BA78
1.12.3.4.51,"Mantenimiento, deuda y liberación controlada",1.12,Operación,"Mantenimiento, deuda y liberación controlada",Resultado de la ficha de familia y del paquete original; registro individual por código/ventana,"No duplicar padres, informes, ingeniería ni cobertura; no incluye horas de contraparte ni obras/adquisiciones del cliente",Criterio específico del diccionario T-14 del mismo código; evidencia sobre versión/periodo identificado,Nikolai Navea,24,S:4;Q:4;V:8;I:4;O:4,"Asignación y cuadrante integrado por código; entornos, usuarios y habilitaciones autorizados",BT21; BA78,2031-02-18,2031-02-20,SERVICIO-ACTIVO,Recepción por etapa o control del periodo; no acredita ejecución,BT21; BA78
1.12.3.5.51,Proyección de capacidad e infraestructura,1.12,Operación,Proyección de capacidad e infraestructura,Resultado de la ficha de familia y del paquete original; registro individual por código/ventana,"No duplicar padres, informes, ingeniería ni cobertura; no incluye horas de contraparte ni obras/adquisiciones del cliente",Criterio específico del diccionario T-14 del mismo código; evidencia sobre versión/periodo identificado,Fernando Guerrero,16,D:4;Q:4;I:4;O:4,"Asignación y cuadrante integrado por código; entornos, usuarios y habilitaciones autorizados",BT21; BA78,2031-02-18,2031-02-19,SERVICIO-ACTIVO,Recepción por etapa o control del periodo; no acredita ejecución,BT21; BA78
1.12.3.1.52,Control mensual de servicio y SLA,1.12,Operación,Control mensual de servicio y SLA,Resultado de la ficha de familia y del paquete original; registro individual por código/ventana,"No duplicar padres, informes, ingeniería ni cobertura; no incluye horas de contraparte ni obras/adquisiciones del cliente",Criterio específico del diccionario T-14 del mismo código; evidencia sobre versión/periodo identificado,José Lara Arce,16,Q:4;O:8;J:4,"Asignación y cuadrante integrado por código; entornos, usuarios y habilitaciones autorizados",BT21; BA78,2031-03-17,2031-03-18,SERVICIO-ACTIVO,Recepción por etapa o control del periodo; no acredita ejecución,BT21; BA78
1.12.3.2.52,Comprobación de respaldos y restauración,1.12,Operación,Comprobación de respaldos y restauración,Resultado de la ficha de familia y del paquete original; registro individual por código/ventana,"No duplicar padres, informes, ingeniería ni cobertura; no incluye horas de contraparte ni obras/adquisiciones del cliente",Criterio específico del diccionario T-14 del mismo código; evidencia sobre versión/periodo identificado,José Lara Arce,16,D:4;Q:4;O:8,"Asignación y cuadrante integrado por código; entornos, usuarios y habilitaciones autorizados",BT21; BA78,2031-03-17,2031-03-18,SERVICIO-ACTIVO,Recepción por etapa o control del periodo; no acredita ejecución,BT21; BA78
1.12.3.3.52,Revisión de seguridad y acceso,1.12,Operación,Revisión de seguridad y acceso,Resultado de la ficha de familia y del paquete original; registro individual por código/ventana,"No duplicar padres, informes, ingeniería ni cobertura; no incluye horas de contraparte ni obras/adquisiciones del cliente",Criterio específico del diccionario T-14 del mismo código; evidencia sobre versión/periodo identificado,Bruno Toro,16,S:8;Q:4;O:4,"Asignación y cuadrante integrado por código; entornos, usuarios y habilitaciones autorizados",BT21; BA78,2031-03-18,2031-03-19,SERVICIO-ACTIVO,Recepción por etapa o control del periodo; no acredita ejecución,BT21; BA78
1.12.3.4.52,"Mantenimiento, deuda y liberación controlada",1.12,Operación,"Mantenimiento, deuda y liberación controlada",Resultado de la ficha de familia y del paquete original; registro individual por código/ventana,"No duplicar padres, informes, ingeniería ni cobertura; no incluye horas de contraparte ni obras/adquisiciones del cliente",Criterio específico del diccionario T-14 del mismo código; evidencia sobre versión/periodo identificado,Nikolai Navea,24,S:4;Q:4;V:8;I:4;O:4,"Asignación y cuadrante integrado por código; entornos, usuarios y habilitaciones autorizados",BT21; BA78,2031-03-18,2031-03-20,SERVICIO-ACTIVO,Recepción por etapa o control del periodo; no acredita ejecución,BT21; BA78
1.12.3.5.52,Proyección de capacidad e infraestructura,1.12,Operación,Proyección de capacidad e infraestructura,Resultado de la ficha de familia y del paquete original; registro individual por código/ventana,"No duplicar padres, informes, ingeniería ni cobertura; no incluye horas de contraparte ni obras/adquisiciones del cliente",Criterio específico del diccionario T-14 del mismo código; evidencia sobre versión/periodo identificado,Fernando Guerrero,16,D:4;Q:4;I:4;O:4,"Asignación y cuadrante integrado por código; entornos, usuarios y habilitaciones autorizados",BT21; BA78,2031-03-18,2031-03-19,SERVICIO-ACTIVO,Recepción por etapa o control del periodo; no acredita ejecución,BT21; BA78
1.12.3.1.53,Control mensual de servicio y SLA,1.12,Operación,Control mensual de servicio y SLA,Resultado de la ficha de familia y del paquete original; registro individual por código/ventana,"No duplicar padres, informes, ingeniería ni cobertura; no incluye horas de contraparte ni obras/adquisiciones del cliente",Criterio específico del diccionario T-14 del mismo código; evidencia sobre versión/periodo identificado,José Lara Arce,16,Q:4;O:8;J:4,"Asignación y cuadrante integrado por código; entornos, usuarios y habilitaciones autorizados",BT21; BA78,2031-04-16,2031-04-17,SERVICIO-ACTIVO,Recepción por etapa o control del periodo; no acredita ejecución,BT21; BA78
1.12.3.2.53,Comprobación de respaldos y restauración,1.12,Operación,Comprobación de respaldos y restauración,Resultado de la ficha de familia y del paquete original; registro individual por código/ventana,"No duplicar padres, informes, ingeniería ni cobertura; no incluye horas de contraparte ni obras/adquisiciones del cliente",Criterio específico del diccionario T-14 del mismo código; evidencia sobre versión/periodo identificado,José Lara Arce,16,D:4;Q:4;O:8,"Asignación y cuadrante integrado por código; entornos, usuarios y habilitaciones autorizados",BT21; BA78,2031-04-16,2031-04-17,SERVICIO-ACTIVO,Recepción por etapa o control del periodo; no acredita ejecución,BT21; BA78
1.12.3.3.53,Revisión de seguridad y acceso,1.12,Operación,Revisión de seguridad y acceso,Resultado de la ficha de familia y del paquete original; registro individual por código/ventana,"No duplicar padres, informes, ingeniería ni cobertura; no incluye horas de contraparte ni obras/adquisiciones del cliente",Criterio específico del diccionario T-14 del mismo código; evidencia sobre versión/periodo identificado,Bruno Toro,16,S:8;Q:4;O:4,"Asignación y cuadrante integrado por código; entornos, usuarios y habilitaciones autorizados",BT21; BA78,2031-04-17,2031-04-18,SERVICIO-ACTIVO,Recepción por etapa o control del periodo; no acredita ejecución,BT21; BA78
1.12.3.4.53,"Mantenimiento, deuda y liberación controlada",1.12,Operación,"Mantenimiento, deuda y liberación controlada",Resultado de la ficha de familia y del paquete original; registro individual por código/ventana,"No duplicar padres, informes, ingeniería ni cobertura; no incluye horas de contraparte ni obras/adquisiciones del cliente",Criterio específico del diccionario T-14 del mismo código; evidencia sobre versión/periodo identificado,Nikolai Navea,24,S:4;Q:4;V:8;I:4;O:4,"Asignación y cuadrante integrado por código; entornos, usuarios y habilitaciones autorizados",BT21; BA78,2031-04-17,2031-04-21,SERVICIO-ACTIVO,Recepción por etapa o control del periodo; no acredita ejecución,BT21; BA78
1.12.3.5.53,Proyección de capacidad e infraestructura,1.12,Operación,Proyección de capacidad e infraestructura,Resultado de la ficha de familia y del paquete original; registro individual por código/ventana,"No duplicar padres, informes, ingeniería ni cobertura; no incluye horas de contraparte ni obras/adquisiciones del cliente",Criterio específico del diccionario T-14 del mismo código; evidencia sobre versión/periodo identificado,Fernando Guerrero,16,D:4;Q:4;I:4;O:4,"Asignación y cuadrante integrado por código; entornos, usuarios y habilitaciones autorizados",BT21; BA78,2031-04-17,2031-04-18,SERVICIO-ACTIVO,Recepción por etapa o control del periodo; no acredita ejecución,BT21; BA78
1.12.3.1.54,Control mensual de servicio y SLA,1.12,Operación,Control mensual de servicio y SLA,Resultado de la ficha de familia y del paquete original; registro individual por código/ventana,"No duplicar padres, informes, ingeniería ni cobertura; no incluye horas de contraparte ni obras/adquisiciones del cliente",Criterio específico del diccionario T-14 del mismo código; evidencia sobre versión/periodo identificado,José Lara Arce,16,Q:4;O:8;J:4,"Asignación y cuadrante integrado por código; entornos, usuarios y habilitaciones autorizados",BT21; BA78,2031-05-20,2031-05-23,SERVICIO-ACTIVO,Recepción por etapa o control del periodo; no acredita ejecución,BT21; BA78
1.12.3.2.54,Comprobación de respaldos y restauración,1.12,Operación,Comprobación de respaldos y restauración,Resultado de la ficha de familia y del paquete original; registro individual por código/ventana,"No duplicar padres, informes, ingeniería ni cobertura; no incluye horas de contraparte ni obras/adquisiciones del cliente",Criterio específico del diccionario T-14 del mismo código; evidencia sobre versión/periodo identificado,José Lara Arce,16,D:4;Q:4;O:8,"Asignación y cuadrante integrado por código; entornos, usuarios y habilitaciones autorizados",BT21; BA78,2031-05-16,2031-05-20,SERVICIO-ACTIVO,Recepción por etapa o control del periodo; no acredita ejecución,BT21; BA78
1.12.3.3.54,Revisión de seguridad y acceso,1.12,Operación,Revisión de seguridad y acceso,Resultado de la ficha de familia y del paquete original; registro individual por código/ventana,"No duplicar padres, informes, ingeniería ni cobertura; no incluye horas de contraparte ni obras/adquisiciones del cliente",Criterio específico del diccionario T-14 del mismo código; evidencia sobre versión/periodo identificado,Bruno Toro,16,S:8;Q:4;O:4,"Asignación y cuadrante integrado por código; entornos, usuarios y habilitaciones autorizados",BT21; BA78,2031-05-19,2031-05-20,SERVICIO-ACTIVO,Recepción por etapa o control del periodo; no acredita ejecución,BT21; BA78
1.12.3.4.54,"Mantenimiento, deuda y liberación controlada",1.12,Operación,"Mantenimiento, deuda y liberación controlada",Resultado de la ficha de familia y del paquete original; registro individual por código/ventana,"No duplicar padres, informes, ingeniería ni cobertura; no incluye horas de contraparte ni obras/adquisiciones del cliente",Criterio específico del diccionario T-14 del mismo código; evidencia sobre versión/periodo identificado,Nikolai Navea,24,S:4;Q:4;V:8;I:4;O:4,"Asignación y cuadrante integrado por código; entornos, usuarios y habilitaciones autorizados",BT21; BA78,2031-05-19,2031-05-22,SERVICIO-ACTIVO,Recepción por etapa o control del periodo; no acredita ejecución,BT21; BA78
1.12.3.5.54,Proyección de capacidad e infraestructura,1.12,Operación,Proyección de capacidad e infraestructura,Resultado de la ficha de familia y del paquete original; registro individual por código/ventana,"No duplicar padres, informes, ingeniería ni cobertura; no incluye horas de contraparte ni obras/adquisiciones del cliente",Criterio específico del diccionario T-14 del mismo código; evidencia sobre versión/periodo identificado,Fernando Guerrero,16,D:4;Q:4;I:4;O:4,"Asignación y cuadrante integrado por código; entornos, usuarios y habilitaciones autorizados",BT21; BA78,2031-05-16,2031-05-19,SERVICIO-ACTIVO,Recepción por etapa o control del periodo; no acredita ejecución,BT21; BA78
1.12.3.1.55,Control mensual de servicio y SLA,1.12,Operación,Control mensual de servicio y SLA,Resultado de la ficha de familia y del paquete original; registro individual por código/ventana,"No duplicar padres, informes, ingeniería ni cobertura; no incluye horas de contraparte ni obras/adquisiciones del cliente",Criterio específico del diccionario T-14 del mismo código; evidencia sobre versión/periodo identificado,José Lara Arce,16,Q:4;O:8;J:4,"Asignación y cuadrante integrado por código; entornos, usuarios y habilitaciones autorizados",BT21; BA78,2031-06-16,2031-06-17,SERVICIO-ACTIVO,Recepción por etapa o control del periodo; no acredita ejecución,BT21; BA78
1.12.3.2.55,Comprobación de respaldos y restauración,1.12,Operación,Comprobación de respaldos y restauración,Resultado de la ficha de familia y del paquete original; registro individual por código/ventana,"No duplicar padres, informes, ingeniería ni cobertura; no incluye horas de contraparte ni obras/adquisiciones del cliente",Criterio específico del diccionario T-14 del mismo código; evidencia sobre versión/periodo identificado,José Lara Arce,16,D:4;Q:4;O:8,"Asignación y cuadrante integrado por código; entornos, usuarios y habilitaciones autorizados",BT21; BA78,2031-06-16,2031-06-17,SERVICIO-ACTIVO,Recepción por etapa o control del periodo; no acredita ejecución,BT21; BA78
1.12.3.3.55,Revisión de seguridad y acceso,1.12,Operación,Revisión de seguridad y acceso,Resultado de la ficha de familia y del paquete original; registro individual por código/ventana,"No duplicar padres, informes, ingeniería ni cobertura; no incluye horas de contraparte ni obras/adquisiciones del cliente",Criterio específico del diccionario T-14 del mismo código; evidencia sobre versión/periodo identificado,Bruno Toro,16,S:8;Q:4;O:4,"Asignación y cuadrante integrado por código; entornos, usuarios y habilitaciones autorizados",BT21; BA78,2031-06-17,2031-06-18,SERVICIO-ACTIVO,Recepción por etapa o control del periodo; no acredita ejecución,BT21; BA78
1.12.3.4.55,"Mantenimiento, deuda y liberación controlada",1.12,Operación,"Mantenimiento, deuda y liberación controlada",Resultado de la ficha de familia y del paquete original; registro individual por código/ventana,"No duplicar padres, informes, ingeniería ni cobertura; no incluye horas de contraparte ni obras/adquisiciones del cliente",Criterio específico del diccionario T-14 del mismo código; evidencia sobre versión/periodo identificado,Nikolai Navea,24,S:4;Q:4;V:8;I:4;O:4,"Asignación y cuadrante integrado por código; entornos, usuarios y habilitaciones autorizados",BT21; BA78,2031-06-17,2031-06-19,SERVICIO-ACTIVO,Recepción por etapa o control del periodo; no acredita ejecución,BT21; BA78
1.12.3.5.55,Proyección de capacidad e infraestructura,1.12,Operación,Proyección de capacidad e infraestructura,Resultado de la ficha de familia y del paquete original; registro individual por código/ventana,"No duplicar padres, informes, ingeniería ni cobertura; no incluye horas de contraparte ni obras/adquisiciones del cliente",Criterio específico del diccionario T-14 del mismo código; evidencia sobre versión/periodo identificado,Fernando Guerrero,16,D:4;Q:4;I:4;O:4,"Asignación y cuadrante integrado por código; entornos, usuarios y habilitaciones autorizados",BT21; BA78,2031-06-17,2031-06-18,SERVICIO-ACTIVO,Recepción por etapa o control del periodo; no acredita ejecución,BT21; BA78
1.12.3.1.56,Control mensual de servicio y SLA,1.12,Operación,Control mensual de servicio y SLA,Resultado de la ficha de familia y del paquete original; registro individual por código/ventana,"No duplicar padres, informes, ingeniería ni cobertura; no incluye horas de contraparte ni obras/adquisiciones del cliente",Criterio específico del diccionario T-14 del mismo código; evidencia sobre versión/periodo identificado,José Lara Arce,16,Q:4;O:8;J:4,"Asignación y cuadrante integrado por código; entornos, usuarios y habilitaciones autorizados",BT21; BA78,2031-07-21,2031-07-23,SERVICIO-ACTIVO,Recepción por etapa o control del periodo; no acredita ejecución,BT21; BA78
1.12.3.2.56,Comprobación de respaldos y restauración,1.12,Operación,Comprobación de respaldos y restauración,Resultado de la ficha de familia y del paquete original; registro individual por código/ventana,"No duplicar padres, informes, ingeniería ni cobertura; no incluye horas de contraparte ni obras/adquisiciones del cliente",Criterio específico del diccionario T-14 del mismo código; evidencia sobre versión/periodo identificado,José Lara Arce,16,D:4;Q:4;O:8,"Asignación y cuadrante integrado por código; entornos, usuarios y habilitaciones autorizados",BT21; BA78,2031-07-17,2031-07-21,SERVICIO-ACTIVO,Recepción por etapa o control del periodo; no acredita ejecución,BT21; BA78
1.12.3.3.56,Revisión de seguridad y acceso,1.12,Operación,Revisión de seguridad y acceso,Resultado de la ficha de familia y del paquete original; registro individual por código/ventana,"No duplicar padres, informes, ingeniería ni cobertura; no incluye horas de contraparte ni obras/adquisiciones del cliente",Criterio específico del diccionario T-14 del mismo código; evidencia sobre versión/periodo identificado,Bruno Toro,16,S:8;Q:4;O:4,"Asignación y cuadrante integrado por código; entornos, usuarios y habilitaciones autorizados",BT21; BA78,2031-07-18,2031-07-21,SERVICIO-ACTIVO,Recepción por etapa o control del periodo; no acredita ejecución,BT21; BA78
1.12.3.4.56,"Mantenimiento, deuda y liberación controlada",1.12,Operación,"Mantenimiento, deuda y liberación controlada",Resultado de la ficha de familia y del paquete original; registro individual por código/ventana,"No duplicar padres, informes, ingeniería ni cobertura; no incluye horas de contraparte ni obras/adquisiciones del cliente",Criterio específico del diccionario T-14 del mismo código; evidencia sobre versión/periodo identificado,Nikolai Navea,24,S:4;Q:4;V:8;I:4;O:4,"Asignación y cuadrante integrado por código; entornos, usuarios y habilitaciones autorizados",BT21; BA78,2031-07-18,2031-07-22,SERVICIO-ACTIVO,Recepción por etapa o control del periodo; no acredita ejecución,BT21; BA78
1.12.3.5.56,Proyección de capacidad e infraestructura,1.12,Operación,Proyección de capacidad e infraestructura,Resultado de la ficha de familia y del paquete original; registro individual por código/ventana,"No duplicar padres, informes, ingeniería ni cobertura; no incluye horas de contraparte ni obras/adquisiciones del cliente",Criterio específico del diccionario T-14 del mismo código; evidencia sobre versión/periodo identificado,Fernando Guerrero,16,D:4;Q:4;I:4;O:4,"Asignación y cuadrante integrado por código; entornos, usuarios y habilitaciones autorizados",BT21; BA78,2031-07-17,2031-07-18,SERVICIO-ACTIVO,Recepción por etapa o control del periodo; no acredita ejecución,BT21; BA78
1.12.4.1.6,Resiliencia de componentes y recuperación: control semestral,1.12,Operación,Resiliencia de componentes y recuperación: control semestral,Resultado de la ficha de familia y del paquete original; registro individual por código/ventana,"No duplicar padres, informes, ingeniería ni cobertura; no incluye horas de contraparte ni obras/adquisiciones del cliente",Criterio específico del diccionario T-14 del mismo código; evidencia sobre versión/periodo identificado,José Lara Arce,48,D:8;Q:16;I:8;O:16,"Asignación y cuadrante integrado por código; entornos, usuarios y habilitaciones autorizados",BT20.1; BA continuidad,2028-11-03,2028-11-09,SERVICIO-ACTIVO,Recepción por etapa o control del periodo; no acredita ejecución,BT20.1; BA continuidad
1.12.4.1.7,Conmutación real de desastre y retorno: control semestral,1.12,Operación,Conmutación real de desastre y retorno: control semestral,Resultado de la ficha de familia y del paquete original; registro individual por código/ventana,"No duplicar padres, informes, ingeniería ni cobertura; no incluye horas de contraparte ni obras/adquisiciones del cliente",Criterio específico del diccionario T-14 del mismo código; evidencia sobre versión/periodo identificado,José Lara Arce,64,D:8;S:8;Q:8;I:16;O:24,"Asignación y cuadrante integrado por código; entornos, usuarios y habilitaciones autorizados",BT20.1; BA continuidad,2028-11-07,2028-11-10,SERVICIO-ACTIVO,Recepción por etapa o control del periodo; no acredita ejecución,BT20.1; BA continuidad
1.12.4.2.6,Resiliencia de componentes y recuperación: control semestral,1.12,Operación,Resiliencia de componentes y recuperación: control semestral,Resultado de la ficha de familia y del paquete original; registro individual por código/ventana,"No duplicar padres, informes, ingeniería ni cobertura; no incluye horas de contraparte ni obras/adquisiciones del cliente",Criterio específico del diccionario T-14 del mismo código; evidencia sobre versión/periodo identificado,José Lara Arce,48,D:8;Q:16;I:8;O:16,"Asignación y cuadrante integrado por código; entornos, usuarios y habilitaciones autorizados",BT20.1; BA continuidad,2029-03-21,2029-03-27,SERVICIO-ACTIVO,Recepción por etapa o control del periodo; no acredita ejecución,BT20.1; BA continuidad
1.12.4.2.7,Conmutación real de desastre y retorno: control semestral,1.12,Operación,Conmutación real de desastre y retorno: control semestral,Resultado de la ficha de familia y del paquete original; registro individual por código/ventana,"No duplicar padres, informes, ingeniería ni cobertura; no incluye horas de contraparte ni obras/adquisiciones del cliente",Criterio específico del diccionario T-14 del mismo código; evidencia sobre versión/periodo identificado,José Lara Arce,64,D:8;S:8;Q:8;I:16;O:24,"Asignación y cuadrante integrado por código; entornos, usuarios y habilitaciones autorizados",BT20.1; BA continuidad,2029-03-21,2029-03-27,SERVICIO-ACTIVO,Recepción por etapa o control del periodo; no acredita ejecución,BT20.1; BA continuidad
1.12.4.3.6,Resiliencia de componentes y recuperación: control semestral,1.12,Operación,Resiliencia de componentes y recuperación: control semestral,Resultado de la ficha de familia y del paquete original; registro individual por código/ventana,"No duplicar padres, informes, ingeniería ni cobertura; no incluye horas de contraparte ni obras/adquisiciones del cliente",Criterio específico del diccionario T-14 del mismo código; evidencia sobre versión/periodo identificado,José Lara Arce,48,D:8;Q:16;I:8;O:16,"Asignación y cuadrante integrado por código; entornos, usuarios y habilitaciones autorizados",BT20.1; BA continuidad,2029-08-02,2029-08-08,SERVICIO-ACTIVO,Recepción por etapa o control del periodo; no acredita ejecución,BT20.1; BA continuidad
1.12.4.3.7,Conmutación real de desastre y retorno: control semestral,1.12,Operación,Conmutación real de desastre y retorno: control semestral,Resultado de la ficha de familia y del paquete original; registro individual por código/ventana,"No duplicar padres, informes, ingeniería ni cobertura; no incluye horas de contraparte ni obras/adquisiciones del cliente",Criterio específico del diccionario T-14 del mismo código; evidencia sobre versión/periodo identificado,José Lara Arce,64,D:8;S:8;Q:8;I:16;O:24,"Asignación y cuadrante integrado por código; entornos, usuarios y habilitaciones autorizados",BT20.1; BA continuidad,2029-08-06,2029-08-09,SERVICIO-ACTIVO,Recepción por etapa o control del periodo; no acredita ejecución,BT20.1; BA continuidad
1.12.4.4.6,Resiliencia de componentes y recuperación: control semestral,1.12,Operación,Resiliencia de componentes y recuperación: control semestral,Resultado de la ficha de familia y del paquete original; registro individual por código/ventana,"No duplicar padres, informes, ingeniería ni cobertura; no incluye horas de contraparte ni obras/adquisiciones del cliente",Criterio específico del diccionario T-14 del mismo código; evidencia sobre versión/periodo identificado,José Lara Arce,48,D:8;Q:16;I:8;O:16,"Asignación y cuadrante integrado por código; entornos, usuarios y habilitaciones autorizados",BT20.1; BA continuidad,2029-11-06,2029-11-12,SERVICIO-ACTIVO,Recepción por etapa o control del periodo; no acredita ejecución,BT20.1; BA continuidad
1.12.4.4.7,Conmutación real de desastre y retorno: control semestral,1.12,Operación,Conmutación real de desastre y retorno: control semestral,Resultado de la ficha de familia y del paquete original; registro individual por código/ventana,"No duplicar padres, informes, ingeniería ni cobertura; no incluye horas de contraparte ni obras/adquisiciones del cliente",Criterio específico del diccionario T-14 del mismo código; evidencia sobre versión/periodo identificado,José Lara Arce,64,D:8;S:8;Q:8;I:16;O:24,"Asignación y cuadrante integrado por código; entornos, usuarios y habilitaciones autorizados",BT20.1; BA continuidad,2029-11-08,2029-11-13,SERVICIO-ACTIVO,Recepción por etapa o control del periodo; no acredita ejecución,BT20.1; BA continuidad
1.12.4.5.6,Resiliencia de componentes y recuperación: control semestral,1.12,Operación,Resiliencia de componentes y recuperación: control semestral,Resultado de la ficha de familia y del paquete original; registro individual por código/ventana,"No duplicar padres, informes, ingeniería ni cobertura; no incluye horas de contraparte ni obras/adquisiciones del cliente",Criterio específico del diccionario T-14 del mismo código; evidencia sobre versión/periodo identificado,José Lara Arce,48,D:8;Q:16;I:8;O:16,"Asignación y cuadrante integrado por código; entornos, usuarios y habilitaciones autorizados",BT20.1; BA continuidad,2030-03-21,2030-03-28,SERVICIO-ACTIVO,Recepción por etapa o control del periodo; no acredita ejecución,BT20.1; BA continuidad
1.12.4.5.7,Conmutación real de desastre y retorno: control semestral,1.12,Operación,Conmutación real de desastre y retorno: control semestral,Resultado de la ficha de familia y del paquete original; registro individual por código/ventana,"No duplicar padres, informes, ingeniería ni cobertura; no incluye horas de contraparte ni obras/adquisiciones del cliente",Criterio específico del diccionario T-14 del mismo código; evidencia sobre versión/periodo identificado,José Lara Arce,64,D:8;S:8;Q:8;I:16;O:24,"Asignación y cuadrante integrado por código; entornos, usuarios y habilitaciones autorizados",BT20.1; BA continuidad,2030-03-21,2030-03-27,SERVICIO-ACTIVO,Recepción por etapa o control del periodo; no acredita ejecución,BT20.1; BA continuidad
1.12.4.6.6,Resiliencia de componentes y recuperación: control semestral,1.12,Operación,Resiliencia de componentes y recuperación: control semestral,Resultado de la ficha de familia y del paquete original; registro individual por código/ventana,"No duplicar padres, informes, ingeniería ni cobertura; no incluye horas de contraparte ni obras/adquisiciones del cliente",Criterio específico del diccionario T-14 del mismo código; evidencia sobre versión/periodo identificado,José Lara Arce,48,D:8;Q:16;I:8;O:16,"Asignación y cuadrante integrado por código; entornos, usuarios y habilitaciones autorizados",BT20.1; BA continuidad,2030-08-02,2030-08-08,SERVICIO-ACTIVO,Recepción por etapa o control del periodo; no acredita ejecución,BT20.1; BA continuidad
1.12.4.6.7,Conmutación real de desastre y retorno: control semestral,1.12,Operación,Conmutación real de desastre y retorno: control semestral,Resultado de la ficha de familia y del paquete original; registro individual por código/ventana,"No duplicar padres, informes, ingeniería ni cobertura; no incluye horas de contraparte ni obras/adquisiciones del cliente",Criterio específico del diccionario T-14 del mismo código; evidencia sobre versión/periodo identificado,José Lara Arce,64,D:8;S:8;Q:8;I:16;O:24,"Asignación y cuadrante integrado por código; entornos, usuarios y habilitaciones autorizados",BT20.1; BA continuidad,2030-08-06,2030-08-09,SERVICIO-ACTIVO,Recepción por etapa o control del periodo; no acredita ejecución,BT20.1; BA continuidad
1.12.11.1,Actualización semestral de custodia de fuentes,1.12,Operación,Actualización semestral de custodia de fuentes,Resultado de la ficha de familia y del paquete original; registro individual por código/ventana,"No duplicar padres, informes, ingeniería ni cobertura; no incluye horas de contraparte ni obras/adquisiciones del cliente",Criterio específico del diccionario T-14 del mismo código; evidencia sobre versión/periodo identificado,Ignacio Silva,16,S:4;I:8;J:4,"Asignación y cuadrante integrado por código; entornos, usuarios y habilitaciones autorizados",BA custodia independiente; actualización semestral,2028-11-02,2028-11-03,1.1.3.2,Recepción por etapa o control del periodo; no acredita ejecución,BA custodia independiente; actualización semestral
1.12.11.2,Actualización semestral de custodia de fuentes,1.12,Operación,Actualización semestral de custodia de fuentes,Resultado de la ficha de familia y del paquete original; registro individual por código/ventana,"No duplicar padres, informes, ingeniería ni cobertura; no incluye horas de contraparte ni obras/adquisiciones del cliente",Criterio específico del diccionario T-14 del mismo código; evidencia sobre versión/periodo identificado,Ignacio Silva,16,S:4;I:8;J:4,"Asignación y cuadrante integrado por código; entornos, usuarios y habilitaciones autorizados",BA custodia independiente; actualización semestral,2029-05-02,2029-05-03,1.1.3.2,Recepción por etapa o control del periodo; no acredita ejecución,BA custodia independiente; actualización semestral
1.12.11.3,Actualización semestral de custodia de fuentes,1.12,Operación,Actualización semestral de custodia de fuentes,Resultado de la ficha de familia y del paquete original; registro individual por código/ventana,"No duplicar padres, informes, ingeniería ni cobertura; no incluye horas de contraparte ni obras/adquisiciones del cliente",Criterio específico del diccionario T-14 del mismo código; evidencia sobre versión/periodo identificado,Ignacio Silva,16,S:4;I:8;J:4,"Asignación y cuadrante integrado por código; entornos, usuarios y habilitaciones autorizados",BA custodia independiente; actualización semestral,2029-11-05,2029-11-06,1.1.3.2,Recepción por etapa o control del periodo; no acredita ejecución,BA custodia independiente; actualización semestral
1.12.11.4,Actualización semestral de custodia de fuentes,1.12,Operación,Actualización semestral de custodia de fuentes,Resultado de la ficha de familia y del paquete original; registro individual por código/ventana,"No duplicar padres, informes, ingeniería ni cobertura; no incluye horas de contraparte ni obras/adquisiciones del cliente",Criterio específico del diccionario T-14 del mismo código; evidencia sobre versión/periodo identificado,Ignacio Silva,16,S:4;I:8;J:4,"Asignación y cuadrante integrado por código; entornos, usuarios y habilitaciones autorizados",BA custodia independiente; actualización semestral,2030-05-02,2030-05-03,1.1.3.2,Recepción por etapa o control del periodo; no acredita ejecución,BA custodia independiente; actualización semestral
1.12.11.5,Actualización semestral de custodia de fuentes,1.12,Operación,Actualización semestral de custodia de fuentes,Resultado de la ficha de familia y del paquete original; registro individual por código/ventana,"No duplicar padres, informes, ingeniería ni cobertura; no incluye horas de contraparte ni obras/adquisiciones del cliente",Criterio específico del diccionario T-14 del mismo código; evidencia sobre versión/periodo identificado,Ignacio Silva,16,S:4;I:8;J:4,"Asignación y cuadrante integrado por código; entornos, usuarios y habilitaciones autorizados",BA custodia independiente; actualización semestral,2030-11-04,2030-11-05,1.1.3.2,Recepción por etapa o control del periodo; no acredita ejecución,BA custodia independiente; actualización semestral
1.12.11.6,Actualización semestral de custodia de fuentes,1.12,Operación,Actualización semestral de custodia de fuentes,Resultado de la ficha de familia y del paquete original; registro individual por código/ventana,"No duplicar padres, informes, ingeniería ni cobertura; no incluye horas de contraparte ni obras/adquisiciones del cliente",Criterio específico del diccionario T-14 del mismo código; evidencia sobre versión/periodo identificado,Ignacio Silva,16,S:4;I:8;J:4,"Asignación y cuadrante integrado por código; entornos, usuarios y habilitaciones autorizados",BA custodia independiente; actualización semestral,2031-05-02,2031-05-05,1.1.3.2,Recepción por etapa o control del periodo; no acredita ejecución,BA custodia independiente; actualización semestral
1.12.5.1,Prueba ofensiva y cierre de hallazgos: control anual,1.12,Operación,Prueba ofensiva y cierre de hallazgos: control anual,Resultado de la ficha de familia y del paquete original; registro individual por código/ventana,"No duplicar padres, informes, ingeniería ni cobertura; no incluye horas de contraparte ni obras/adquisiciones del cliente",Criterio específico del diccionario T-14 del mismo código; evidencia sobre versión/periodo identificado,Bruno Toro,56,S:32;Q:16;I:8,"Asignación y cuadrante integrado por código; entornos, usuarios y habilitaciones autorizados",BT20.1,2029-03-19,2029-03-26,SERVICIO-ACTIVO,Recepción por etapa o control del periodo; no acredita ejecución,BT20.1
1.12.5.2,Prueba ofensiva y cierre de hallazgos: control anual,1.12,Operación,Prueba ofensiva y cierre de hallazgos: control anual,Resultado de la ficha de familia y del paquete original; registro individual por código/ventana,"No duplicar padres, informes, ingeniería ni cobertura; no incluye horas de contraparte ni obras/adquisiciones del cliente",Criterio específico del diccionario T-14 del mismo código; evidencia sobre versión/periodo identificado,Bruno Toro,56,S:32;Q:16;I:8,"Asignación y cuadrante integrado por código; entornos, usuarios y habilitaciones autorizados",BT20.1,2030-03-19,2030-03-26,SERVICIO-ACTIVO,Recepción por etapa o control del periodo; no acredita ejecución,BT20.1
1.12.5.3,Prueba ofensiva y cierre de hallazgos: control anual,1.12,Operación,Prueba ofensiva y cierre de hallazgos: control anual,Resultado de la ficha de familia y del paquete original; registro individual por código/ventana,"No duplicar padres, informes, ingeniería ni cobertura; no incluye horas de contraparte ni obras/adquisiciones del cliente",Criterio específico del diccionario T-14 del mismo código; evidencia sobre versión/periodo identificado,Bruno Toro,56,S:32;Q:16;I:8,"Asignación y cuadrante integrado por código; entornos, usuarios y habilitaciones autorizados",BT20.1,2031-03-18,2031-03-25,SERVICIO-ACTIVO,Recepción por etapa o control del periodo; no acredita ejecución,BT20.1
1.12.6.1,Jornada de actualización y transferencia,1.12,Operación,Jornada de actualización y transferencia,Resultado de la ficha de familia y del paquete original; registro individual por código/ventana,"No duplicar padres, informes, ingeniería ni cobertura; no incluye horas de contraparte ni obras/adquisiciones del cliente",Criterio específico del diccionario T-14 del mismo código; evidencia sobre versión/periodo identificado,José Lara Arce,32,A:8;Q:8;L:16,"Asignación y cuadrante integrado por código; entornos, usuarios y habilitaciones autorizados",RT-22.06/07,2028-11-02,2028-11-07,SERVICIO-ACTIVO,Recepción por etapa o control del periodo; no acredita ejecución,RT-22.06/07
1.12.6.2,Jornada de actualización y transferencia,1.12,Operación,Jornada de actualización y transferencia,Resultado de la ficha de familia y del paquete original; registro individual por código/ventana,"No duplicar padres, informes, ingeniería ni cobertura; no incluye horas de contraparte ni obras/adquisiciones del cliente",Criterio específico del diccionario T-14 del mismo código; evidencia sobre versión/periodo identificado,José Lara Arce,32,A:8;Q:8;L:16,"Asignación y cuadrante integrado por código; entornos, usuarios y habilitaciones autorizados",RT-22.06/07,2029-05-02,2029-05-07,SERVICIO-ACTIVO,Recepción por etapa o control del periodo; no acredita ejecución,RT-22.06/07
1.12.6.3,Jornada de actualización y transferencia,1.12,Operación,Jornada de actualización y transferencia,Resultado de la ficha de familia y del paquete original; registro individual por código/ventana,"No duplicar padres, informes, ingeniería ni cobertura; no incluye horas de contraparte ni obras/adquisiciones del cliente",Criterio específico del diccionario T-14 del mismo código; evidencia sobre versión/periodo identificado,José Lara Arce,32,A:8;Q:8;L:16,"Asignación y cuadrante integrado por código; entornos, usuarios y habilitaciones autorizados",RT-22.06/07,2029-11-05,2029-11-08,SERVICIO-ACTIVO,Recepción por etapa o control del periodo; no acredita ejecución,RT-22.06/07
1.12.6.4,Jornada de actualización y transferencia,1.12,Operación,Jornada de actualización y transferencia,Resultado de la ficha de familia y del paquete original; registro individual por código/ventana,"No duplicar padres, informes, ingeniería ni cobertura; no incluye horas de contraparte ni obras/adquisiciones del cliente",Criterio específico del diccionario T-14 del mismo código; evidencia sobre versión/periodo identificado,José Lara Arce,32,A:8;Q:8;L:16,"Asignación y cuadrante integrado por código; entornos, usuarios y habilitaciones autorizados",RT-22.06/07,2030-05-02,2030-05-07,SERVICIO-ACTIVO,Recepción por etapa o control del periodo; no acredita ejecución,RT-22.06/07
1.12.6.5,Jornada de actualización y transferencia,1.12,Operación,Jornada de actualización y transferencia,Resultado de la ficha de familia y del paquete original; registro individual por código/ventana,"No duplicar padres, informes, ingeniería ni cobertura; no incluye horas de contraparte ni obras/adquisiciones del cliente",Criterio específico del diccionario T-14 del mismo código; evidencia sobre versión/periodo identificado,José Lara Arce,32,A:8;Q:8;L:16,"Asignación y cuadrante integrado por código; entornos, usuarios y habilitaciones autorizados",RT-22.06/07,2030-11-04,2030-11-07,SERVICIO-ACTIVO,Recepción por etapa o control del periodo; no acredita ejecución,RT-22.06/07
1.12.6.6,Jornada de actualización y transferencia,1.12,Operación,Jornada de actualización y transferencia,Resultado de la ficha de familia y del paquete original; registro individual por código/ventana,"No duplicar padres, informes, ingeniería ni cobertura; no incluye horas de contraparte ni obras/adquisiciones del cliente",Criterio específico del diccionario T-14 del mismo código; evidencia sobre versión/periodo identificado,José Lara Arce,32,A:8;Q:8;L:16,"Asignación y cuadrante integrado por código; entornos, usuarios y habilitaciones autorizados",RT-22.06/07,2031-05-02,2031-05-07,SERVICIO-ACTIVO,Recepción por etapa o control del periodo; no acredita ejecución,RT-22.06/07
1.12.7.1,Plan de reversibilidad actualizado,1.12,Operación,Plan de reversibilidad actualizado,Resultado de la ficha de familia y del paquete original; registro individual por código/ventana,"No duplicar padres, informes, ingeniería ni cobertura; no incluye horas de contraparte ni obras/adquisiciones del cliente",Criterio específico del diccionario T-14 del mismo código; evidencia sobre versión/periodo identificado,Ignacio Silva,32,D:8;S:8;I:8;J:8,"Asignación y cuadrante integrado por código; entornos, usuarios y habilitaciones autorizados",BA77; SD4 RT-03.07,2028-11-03,2028-11-06,1.1.3.1,Recepción por etapa o control del periodo; no acredita ejecución,BA77; SD4 RT-03.07
1.12.7.2,Plan de reversibilidad actualizado,1.12,Operación,Plan de reversibilidad actualizado,Resultado de la ficha de familia y del paquete original; registro individual por código/ventana,"No duplicar padres, informes, ingeniería ni cobertura; no incluye horas de contraparte ni obras/adquisiciones del cliente",Criterio específico del diccionario T-14 del mismo código; evidencia sobre versión/periodo identificado,Ignacio Silva,32,D:8;S:8;I:8;J:8,"Asignación y cuadrante integrado por código; entornos, usuarios y habilitaciones autorizados",BA77; SD4 RT-03.07,2029-11-06,2029-11-07,1.1.3.1,Recepción por etapa o control del periodo; no acredita ejecución,BA77; SD4 RT-03.07
1.12.7.3,Plan de reversibilidad actualizado,1.12,Operación,Plan de reversibilidad actualizado,Resultado de la ficha de familia y del paquete original; registro individual por código/ventana,"No duplicar padres, informes, ingeniería ni cobertura; no incluye horas de contraparte ni obras/adquisiciones del cliente",Criterio específico del diccionario T-14 del mismo código; evidencia sobre versión/periodo identificado,Ignacio Silva,32,D:8;S:8;I:8;J:8,"Asignación y cuadrante integrado por código; entornos, usuarios y habilitaciones autorizados",BA77; SD4 RT-03.07,2030-11-05,2030-11-06,1.1.3.1,Recepción por etapa o control del periodo; no acredita ejecución,BA77; SD4 RT-03.07
1.12.8.1,Inventario de salida y responsables,1.12,Operación,Inventario de salida y responsables,Resultado de la ficha de familia y del paquete original; registro individual por código/ventana,"No duplicar padres, informes, ingeniería ni cobertura; no incluye horas de contraparte ni obras/adquisiciones del cliente",Criterio específico del diccionario T-14 del mismo código; evidencia sobre versión/periodo identificado,Ignacio Silva,40,D:8;S:8;I:16;J:8,"Asignación y cuadrante integrado por código; entornos, usuarios y habilitaciones autorizados",BA77; SD4 reversibilidad,2031-04-01,2031-04-03,PLAN-SALIDA,Recepción por etapa o control del periodo; no acredita ejecución,BA77; SD4 reversibilidad
1.12.8.2,Exportación abierta y manifiestos de datos,1.12,Operación,Exportación abierta y manifiestos de datos,Resultado de la ficha de familia y del paquete original; registro individual por código/ventana,"No duplicar padres, informes, ingeniería ni cobertura; no incluye horas de contraparte ni obras/adquisiciones del cliente",Criterio específico del diccionario T-14 del mismo código; evidencia sobre versión/periodo identificado,Nicolás Torfan,56,D:32;S:8;Q:8;I:8,"Asignación y cuadrante integrado por código; entornos, usuarios y habilitaciones autorizados",BA77; SD4 reversibilidad,2031-04-03,2031-04-08,PLAN-SALIDA,Recepción por etapa o control del periodo; no acredita ejecución,BA77; SD4 reversibilidad
1.12.8.3,"Fuentes, IaC, artefactos y documentación transferidos",1.12,Operación,"Fuentes, IaC, artefactos y documentación transferidos",Resultado de la ficha de familia y del paquete original; registro individual por código/ventana,"No duplicar padres, informes, ingeniería ni cobertura; no incluye horas de contraparte ni obras/adquisiciones del cliente",Criterio específico del diccionario T-14 del mismo código; evidencia sobre versión/periodo identificado,Fernando Guerrero,48,Q:8;V:8;I:24;O:8,"Asignación y cuadrante integrado por código; entornos, usuarios y habilitaciones autorizados",BA77; SD4 reversibilidad,2031-05-06,2031-05-08,PLAN-SALIDA,Recepción por etapa o control del periodo; no acredita ejecución,BA77; SD4 reversibilidad
1.12.8.4,"Custodia, credenciales y recifrado autorizado",1.12,Operación,"Custodia, credenciales y recifrado autorizado",Resultado de la ficha de familia y del paquete original; registro individual por código/ventana,"No duplicar padres, informes, ingeniería ni cobertura; no incluye horas de contraparte ni obras/adquisiciones del cliente",Criterio específico del diccionario T-14 del mismo código; evidencia sobre versión/periodo identificado,Bruno Toro,56,D:8;S:24;Q:8;I:8;O:8,"Asignación y cuadrante integrado por código; entornos, usuarios y habilitaciones autorizados",BA77; SD4 reversibilidad,2031-05-07,2031-05-12,PLAN-SALIDA,Recepción por etapa o control del periodo; no acredita ejecución,BA77; SD4 reversibilidad
1.12.8.5,Aceptación de transferencia y eliminación autorizada,1.12,Operación,Aceptación de transferencia y eliminación autorizada,Resultado de la ficha de familia y del paquete original; registro individual por código/ventana,"No duplicar padres, informes, ingeniería ni cobertura; no incluye horas de contraparte ni obras/adquisiciones del cliente",Criterio específico del diccionario T-14 del mismo código; evidencia sobre versión/periodo identificado,Ignacio Silva,48,D:8;S:8;Q:8;O:16;J:8,"Asignación y cuadrante integrado por código; entornos, usuarios y habilitaciones autorizados",BA77; SD4 reversibilidad,2031-07-01,2031-07-04,1.12.8.2;1.12.8.3;1.12.8.4;SALIDA-90,Recepción por etapa o control del periodo; no acredita ejecución,BA77; SD4 reversibilidad
1.12.9.53.1,Acompañamiento quincenal de transición,1.12,Operación,Acompañamiento quincenal de transición,Resultado de la ficha de familia y del paquete original; registro individual por código/ventana,"No duplicar padres, informes, ingeniería ni cobertura; no incluye horas de contraparte ni obras/adquisiciones del cliente",Criterio específico del diccionario T-14 del mismo código; evidencia sobre versión/periodo identificado,José Lara Arce,24,D:4;Q:4;I:8;O:8,"Asignación y cuadrante integrado por código; entornos, usuarios y habilitaciones autorizados",BA77,2031-04-02,2031-04-03,PLAN-SALIDA,Recepción por etapa o control del periodo; no acredita ejecución,BA77
1.12.9.53.2,Acompañamiento quincenal de transición,1.12,Operación,Acompañamiento quincenal de transición,Resultado de la ficha de familia y del paquete original; registro individual por código/ventana,"No duplicar padres, informes, ingeniería ni cobertura; no incluye horas de contraparte ni obras/adquisiciones del cliente",Criterio específico del diccionario T-14 del mismo código; evidencia sobre versión/periodo identificado,José Lara Arce,24,D:4;Q:4;I:8;O:8,"Asignación y cuadrante integrado por código; entornos, usuarios y habilitaciones autorizados",BA77,2031-04-21,2031-04-23,PLAN-SALIDA,Recepción por etapa o control del periodo; no acredita ejecución,BA77
1.12.9.54.1,Acompañamiento quincenal de transición,1.12,Operación,Acompañamiento quincenal de transición,Resultado de la ficha de familia y del paquete original; registro individual por código/ventana,"No duplicar padres, informes, ingeniería ni cobertura; no incluye horas de contraparte ni obras/adquisiciones del cliente",Criterio específico del diccionario T-14 del mismo código; evidencia sobre versión/periodo identificado,José Lara Arce,24,D:4;Q:4;I:8;O:8,"Asignación y cuadrante integrado por código; entornos, usuarios y habilitaciones autorizados",BA77,2031-05-02,2031-05-06,PLAN-SALIDA,Recepción por etapa o control del periodo; no acredita ejecución,BA77
1.12.9.54.2,Acompañamiento quincenal de transición,1.12,Operación,Acompañamiento quincenal de transición,Resultado de la ficha de familia y del paquete original; registro individual por código/ventana,"No duplicar padres, informes, ingeniería ni cobertura; no incluye horas de contraparte ni obras/adquisiciones del cliente",Criterio específico del diccionario T-14 del mismo código; evidencia sobre versión/periodo identificado,José Lara Arce,24,D:4;Q:4;I:8;O:8,"Asignación y cuadrante integrado por código; entornos, usuarios y habilitaciones autorizados",BA77,2031-05-22,2031-05-23,PLAN-SALIDA,Recepción por etapa o control del periodo; no acredita ejecución,BA77
1.12.9.55.1,Acompañamiento quincenal de transición,1.12,Operación,Acompañamiento quincenal de transición,Resultado de la ficha de familia y del paquete original; registro individual por código/ventana,"No duplicar padres, informes, ingeniería ni cobertura; no incluye horas de contraparte ni obras/adquisiciones del cliente",Criterio específico del diccionario T-14 del mismo código; evidencia sobre versión/periodo identificado,José Lara Arce,24,D:4;Q:4;I:8;O:8,"Asignación y cuadrante integrado por código; entornos, usuarios y habilitaciones autorizados",BA77,2031-06-03,2031-06-04,PLAN-SALIDA,Recepción por etapa o control del periodo; no acredita ejecución,BA77
1.12.9.55.2,Acompañamiento quincenal de transición,1.12,Operación,Acompañamiento quincenal de transición,Resultado de la ficha de familia y del paquete original; registro individual por código/ventana,"No duplicar padres, informes, ingeniería ni cobertura; no incluye horas de contraparte ni obras/adquisiciones del cliente",Criterio específico del diccionario T-14 del mismo código; evidencia sobre versión/periodo identificado,José Lara Arce,24,D:4;Q:4;I:8;O:8,"Asignación y cuadrante integrado por código; entornos, usuarios y habilitaciones autorizados",BA77,2031-06-19,2031-06-23,PLAN-SALIDA,Recepción por etapa o control del periodo; no acredita ejecución,BA77
1.12.9.56.1,Acompañamiento quincenal de transición,1.12,Operación,Acompañamiento quincenal de transición,Resultado de la ficha de familia y del paquete original; registro individual por código/ventana,"No duplicar padres, informes, ingeniería ni cobertura; no incluye horas de contraparte ni obras/adquisiciones del cliente",Criterio específico del diccionario T-14 del mismo código; evidencia sobre versión/periodo identificado,José Lara Arce,24,D:4;Q:4;I:8;O:8,"Asignación y cuadrante integrado por código; entornos, usuarios y habilitaciones autorizados",BA77,2031-07-03,2031-07-04,PLAN-SALIDA,Recepción por etapa o control del periodo; no acredita ejecución,BA77
1.12.9.56.2,Acompañamiento quincenal de transición,1.12,Operación,Acompañamiento quincenal de transición,Resultado de la ficha de familia y del paquete original; registro individual por código/ventana,"No duplicar padres, informes, ingeniería ni cobertura; no incluye horas de contraparte ni obras/adquisiciones del cliente",Criterio específico del diccionario T-14 del mismo código; evidencia sobre versión/periodo identificado,José Lara Arce,24,D:4;Q:4;I:8;O:8,"Asignación y cuadrante integrado por código; entornos, usuarios y habilitaciones autorizados",BA77,2031-07-22,2031-07-23,PLAN-SALIDA,Recepción por etapa o control del periodo; no acredita ejecución,BA77
1.4.1.1.1,Especificación y protocolo: Movimientos de salida y regreso identificados,1.4,E1 Desarrollo,Especificación y protocolo: Movimientos de salida y regreso identificados,Resultado de la ficha de familia y del paquete original; registro individual por código/ventana,"No duplicar padres, informes, ingeniería ni cobertura; no incluye horas de contraparte ni obras/adquisiciones del cliente",Criterio específico del diccionario T-14 del mismo código; evidencia sobre versión/periodo identificado,Ulysses Barreto,32,A:16;D:8;S:4;I:4,"Asignación y cuadrante integrado por código; entornos, usuarios y habilitaciones autorizados",RF-NAV-04/05; RN-01--03,2027-01-25,2027-01-27,H1,Recepción por etapa o control del periodo; no acredita ejecución,RF-NAV-04/05; RN-01--03
1.4.1.1.2,"Lógica, persistencia y contratos: Movimientos de salida y regreso identificados",1.4,E1 Desarrollo,"Lógica, persistencia y contratos: Movimientos de salida y regreso identificados",Resultado de la ficha de familia y del paquete original; registro individual por código/ventana,"No duplicar padres, informes, ingeniería ni cobertura; no incluye horas de contraparte ni obras/adquisiciones del cliente",Criterio específico del diccionario T-14 del mismo código; evidencia sobre versión/periodo identificado,Nikolai Navea,64,D:8;Q:4;V:48;I:4,"Asignación y cuadrante integrado por código; entornos, usuarios y habilitaciones autorizados",RF-NAV-04/05; RN-01--03,2027-07-19,2027-07-21,1.3.3.1;1.4.1.1.1;1.7.1.3;H2;H3,Recepción por etapa o control del periodo; no acredita ejecución,RF-NAV-04/05; RN-01--03
1.4.1.1.3,Vistas de tarea y comprobación: Movimientos de salida y regreso identificados,1.4,E1 Desarrollo,Vistas de tarea y comprobación: Movimientos de salida y regreso identificados,Resultado de la ficha de familia y del paquete original; registro individual por código/ventana,"No duplicar padres, informes, ingeniería ni cobertura; no incluye horas de contraparte ni obras/adquisiciones del cliente",Criterio específico del diccionario T-14 del mismo código; evidencia sobre versión/periodo identificado,Nikolai Navea,44,A:4;S:4;Q:4;V:32,"Asignación y cuadrante integrado por código; entornos, usuarios y habilitaciones autorizados",RF-NAV-04/05; RN-01--03,2027-07-27,2027-07-30,1.4.1.1.2;1.4.1.1.5.1;1.4.1.1.5.2;1.4.1.1.5.3;1.4.1.1.5.4;1.7.3.1;1.7.3.3,Recepción por etapa o control del periodo; no acredita ejecución,RF-NAV-04/05; RN-01--03
1.4.1.2.1,Especificación y protocolo: Planes voluntarios y discrepancias operacionales,1.4,E1 Desarrollo,Especificación y protocolo: Planes voluntarios y discrepancias operacionales,Resultado de la ficha de familia y del paquete original; registro individual por código/ventana,"No duplicar padres, informes, ingeniería ni cobertura; no incluye horas de contraparte ni obras/adquisiciones del cliente",Criterio específico del diccionario T-14 del mismo código; evidencia sobre versión/periodo identificado,Ulysses Barreto,32,A:16;D:8;S:4;I:4,"Asignación y cuadrante integrado por código; entornos, usuarios y habilitaciones autorizados",RF-AUT-08; RF-NAV-06; RN-04/05,2027-01-25,2027-01-27,H1,Recepción por etapa o control del periodo; no acredita ejecución,RF-AUT-08; RF-NAV-06; RN-04/05
1.4.1.2.2,"Lógica, persistencia y contratos: Planes voluntarios y discrepancias operacionales",1.4,E1 Desarrollo,"Lógica, persistencia y contratos: Planes voluntarios y discrepancias operacionales",Resultado de la ficha de familia y del paquete original; registro individual por código/ventana,"No duplicar padres, informes, ingeniería ni cobertura; no incluye horas de contraparte ni obras/adquisiciones del cliente",Criterio específico del diccionario T-14 del mismo código; evidencia sobre versión/periodo identificado,Nikolai Navea,64,D:8;Q:4;V:48;I:4,"Asignación y cuadrante integrado por código; entornos, usuarios y habilitaciones autorizados",RF-AUT-08; RF-NAV-06; RN-04/05,2027-07-19,2027-07-21,1.3.3.1;1.4.1.2.1;1.7.1.3;H2;H3,Recepción por etapa o control del periodo; no acredita ejecución,RF-AUT-08; RF-NAV-06; RN-04/05
1.4.1.2.3,Vistas de tarea y comprobación: Planes voluntarios y discrepancias operacionales,1.4,E1 Desarrollo,Vistas de tarea y comprobación: Planes voluntarios y discrepancias operacionales,Resultado de la ficha de familia y del paquete original; registro individual por código/ventana,"No duplicar padres, informes, ingeniería ni cobertura; no incluye horas de contraparte ni obras/adquisiciones del cliente",Criterio específico del diccionario T-14 del mismo código; evidencia sobre versión/periodo identificado,Nikolai Navea,44,A:4;S:4;Q:4;V:32,"Asignación y cuadrante integrado por código; entornos, usuarios y habilitaciones autorizados",RF-AUT-08; RF-NAV-06; RN-04/05,2027-07-23,2027-07-28,1.4.1.2.2;1.4.1.2.5.1;1.7.3.1;1.7.3.3,Recepción por etapa o control del periodo; no acredita ejecución,RF-AUT-08; RF-NAV-06; RN-04/05
1.4.1.3.1,Especificación y protocolo: Atención y escalamiento de planes vencidos,1.4,E1 Desarrollo,Especificación y protocolo: Atención y escalamiento de planes vencidos,Resultado de la ficha de familia y del paquete original; registro individual por código/ventana,"No duplicar padres, informes, ingeniería ni cobertura; no incluye horas de contraparte ni obras/adquisiciones del cliente",Criterio específico del diccionario T-14 del mismo código; evidencia sobre versión/periodo identificado,Ulysses Barreto,32,A:16;D:8;S:4;I:4,"Asignación y cuadrante integrado por código; entornos, usuarios y habilitaciones autorizados",RF-NAV-06; DEC-21,2027-01-25,2027-01-27,H1,Recepción por etapa o control del periodo; no acredita ejecución,RF-NAV-06; DEC-21
1.4.1.3.2,"Lógica, persistencia y contratos: Atención y escalamiento de planes vencidos",1.4,E1 Desarrollo,"Lógica, persistencia y contratos: Atención y escalamiento de planes vencidos",Resultado de la ficha de familia y del paquete original; registro individual por código/ventana,"No duplicar padres, informes, ingeniería ni cobertura; no incluye horas de contraparte ni obras/adquisiciones del cliente",Criterio específico del diccionario T-14 del mismo código; evidencia sobre versión/periodo identificado,Nikolai Navea,64,D:8;Q:4;V:48;I:4,"Asignación y cuadrante integrado por código; entornos, usuarios y habilitaciones autorizados",RF-NAV-06; DEC-21,2027-07-19,2027-07-21,1.3.3.1;1.4.1.3.1;1.7.1.3;H2;H3,Recepción por etapa o control del periodo; no acredita ejecución,RF-NAV-06; DEC-21
1.4.1.3.3,Vistas de tarea y comprobación: Atención y escalamiento de planes vencidos,1.4,E1 Desarrollo,Vistas de tarea y comprobación: Atención y escalamiento de planes vencidos,Resultado de la ficha de familia y del paquete original; registro individual por código/ventana,"No duplicar padres, informes, ingeniería ni cobertura; no incluye horas de contraparte ni obras/adquisiciones del cliente",Criterio específico del diccionario T-14 del mismo código; evidencia sobre versión/periodo identificado,Nikolai Navea,44,A:4;S:4;Q:4;V:32,"Asignación y cuadrante integrado por código; entornos, usuarios y habilitaciones autorizados",RF-NAV-06; DEC-21,2027-07-29,2027-08-03,1.4.1.3.2;1.4.1.3.5.1;1.7.3.1;1.7.3.3,Recepción por etapa o control del periodo; no acredita ejecución,RF-NAV-06; DEC-21
1.4.1.4.1,Especificación y protocolo: Autorización operacional de amarra y compatibilidad,1.4,E1 Desarrollo,Especificación y protocolo: Autorización operacional de amarra y compatibilidad,Resultado de la ficha de familia y del paquete original; registro individual por código/ventana,"No duplicar padres, informes, ingeniería ni cobertura; no incluye horas de contraparte ni obras/adquisiciones del cliente",Criterio específico del diccionario T-14 del mismo código; evidencia sobre versión/periodo identificado,Ulysses Barreto,32,A:16;D:8;S:4;I:4,"Asignación y cuadrante integrado por código; entornos, usuarios y habilitaciones autorizados",AMA; DEC-01/05; SD5 autoridad local,2027-01-25,2027-01-27,H1,Recepción por etapa o control del periodo; no acredita ejecución,AMA; DEC-01/05; SD5 autoridad local
1.4.1.4.2,"Lógica, persistencia y contratos: Autorización operacional de amarra y compatibilidad",1.4,E1 Desarrollo,"Lógica, persistencia y contratos: Autorización operacional de amarra y compatibilidad",Resultado de la ficha de familia y del paquete original; registro individual por código/ventana,"No duplicar padres, informes, ingeniería ni cobertura; no incluye horas de contraparte ni obras/adquisiciones del cliente",Criterio específico del diccionario T-14 del mismo código; evidencia sobre versión/periodo identificado,Nikolai Navea,64,D:8;Q:4;V:48;I:4,"Asignación y cuadrante integrado por código; entornos, usuarios y habilitaciones autorizados",AMA; DEC-01/05; SD5 autoridad local,2027-07-19,2027-07-21,1.3.3.1;1.4.1.4.1;1.7.1.3;H2;H3,Recepción por etapa o control del periodo; no acredita ejecución,AMA; DEC-01/05; SD5 autoridad local
1.4.1.4.3,Vistas de tarea y comprobación: Autorización operacional de amarra y compatibilidad,1.4,E1 Desarrollo,Vistas de tarea y comprobación: Autorización operacional de amarra y compatibilidad,Resultado de la ficha de familia y del paquete original; registro individual por código/ventana,"No duplicar padres, informes, ingeniería ni cobertura; no incluye horas de contraparte ni obras/adquisiciones del cliente",Criterio específico del diccionario T-14 del mismo código; evidencia sobre versión/periodo identificado,Nikolai Navea,44,A:4;S:4;Q:4;V:32,"Asignación y cuadrante integrado por código; entornos, usuarios y habilitaciones autorizados",AMA; DEC-01/05; SD5 autoridad local,2027-07-29,2027-08-03,1.4.1.4.2;1.4.1.4.5.1;1.7.3.1;1.7.3.3,Recepción por etapa o control del periodo; no acredita ejecución,AMA; DEC-01/05; SD5 autoridad local
1.4.2.1.1,"Especificación y protocolo: Clases, nóminas y participación por intervalo",1.4,E1 Desarrollo,"Especificación y protocolo: Clases, nóminas y participación por intervalo",Resultado de la ficha de familia y del paquete original; registro individual por código/ventana,"No duplicar padres, informes, ingeniería ni cobertura; no incluye horas de contraparte ni obras/adquisiciones del cliente",Criterio específico del diccionario T-14 del mismo código; evidencia sobre versión/periodo identificado,Ulysses Barreto,32,A:16;D:8;S:4;I:4,"Asignación y cuadrante integrado por código; entornos, usuarios y habilitaciones autorizados",RF-ESC-04/06/07; RN-10--13,2027-01-25,2027-01-27,H1,Recepción por etapa o control del periodo; no acredita ejecución,RF-ESC-04/06/07; RN-10--13
1.4.2.1.2,"Lógica, persistencia y contratos: Clases, nóminas y participación por intervalo",1.4,E1 Desarrollo,"Lógica, persistencia y contratos: Clases, nóminas y participación por intervalo",Resultado de la ficha de familia y del paquete original; registro individual por código/ventana,"No duplicar padres, informes, ingeniería ni cobertura; no incluye horas de contraparte ni obras/adquisiciones del cliente",Criterio específico del diccionario T-14 del mismo código; evidencia sobre versión/periodo identificado,Nikolai Navea,64,D:8;Q:4;V:48;I:4,"Asignación y cuadrante integrado por código; entornos, usuarios y habilitaciones autorizados",RF-ESC-04/06/07; RN-10--13,2027-07-19,2027-07-21,1.3.3.1;1.4.2.1.1;1.7.1.3;H2;H3,Recepción por etapa o control del periodo; no acredita ejecución,RF-ESC-04/06/07; RN-10--13
1.4.2.1.3,"Vistas de tarea y comprobación: Clases, nóminas y participación por intervalo",1.4,E1 Desarrollo,"Vistas de tarea y comprobación: Clases, nóminas y participación por intervalo",Resultado de la ficha de familia y del paquete original; registro individual por código/ventana,"No duplicar padres, informes, ingeniería ni cobertura; no incluye horas de contraparte ni obras/adquisiciones del cliente",Criterio específico del diccionario T-14 del mismo código; evidencia sobre versión/periodo identificado,Nikolai Navea,44,A:4;S:4;Q:4;V:32,"Asignación y cuadrante integrado por código; entornos, usuarios y habilitaciones autorizados",RF-ESC-04/06/07; RN-10--13,2027-07-29,2027-08-03,1.4.2.1.2;1.4.2.1.5.1;1.4.2.1.5.2;1.4.2.1.5.3;1.4.2.1.5.4;1.7.3.1;1.7.3.3,Recepción por etapa o control del periodo; no acredita ejecución,RF-ESC-04/06/07; RN-10--13
1.4.2.2.1,Especificación y protocolo: Retiros coordinados y entrega única de alumno,1.4,E1 Desarrollo,Especificación y protocolo: Retiros coordinados y entrega única de alumno,Resultado de la ficha de familia y del paquete original; registro individual por código/ventana,"No duplicar padres, informes, ingeniería ni cobertura; no incluye horas de contraparte ni obras/adquisiciones del cliente",Criterio específico del diccionario T-14 del mismo código; evidencia sobre versión/periodo identificado,Ulysses Barreto,32,A:16;D:8;S:4;I:4,"Asignación y cuadrante integrado por código; entornos, usuarios y habilitaciones autorizados",RF-ESC-08/09/10,2027-01-25,2027-01-27,H1,Recepción por etapa o control del periodo; no acredita ejecución,RF-ESC-08/09/10
1.4.2.2.2,"Lógica, persistencia y contratos: Retiros coordinados y entrega única de alumno",1.4,E1 Desarrollo,"Lógica, persistencia y contratos: Retiros coordinados y entrega única de alumno",Resultado de la ficha de familia y del paquete original; registro individual por código/ventana,"No duplicar padres, informes, ingeniería ni cobertura; no incluye horas de contraparte ni obras/adquisiciones del cliente",Criterio específico del diccionario T-14 del mismo código; evidencia sobre versión/periodo identificado,Nikolai Navea,64,D:8;Q:4;V:48;I:4,"Asignación y cuadrante integrado por código; entornos, usuarios y habilitaciones autorizados",RF-ESC-08/09/10,2027-07-20,2027-07-22,1.3.3.1;1.4.2.2.1;1.7.1.3;H2;H3,Recepción por etapa o control del periodo; no acredita ejecución,RF-ESC-08/09/10
1.4.2.2.3,Vistas de tarea y comprobación: Retiros coordinados y entrega única de alumno,1.4,E1 Desarrollo,Vistas de tarea y comprobación: Retiros coordinados y entrega única de alumno,Resultado de la ficha de familia y del paquete original; registro individual por código/ventana,"No duplicar padres, informes, ingeniería ni cobertura; no incluye horas de contraparte ni obras/adquisiciones del cliente",Criterio específico del diccionario T-14 del mismo código; evidencia sobre versión/periodo identificado,Nikolai Navea,44,A:4;S:4;Q:4;V:32,"Asignación y cuadrante integrado por código; entornos, usuarios y habilitaciones autorizados",RF-ESC-08/09/10,2027-07-29,2027-08-03,1.4.2.2.2;1.4.2.2.5.1;1.7.3.1;1.7.3.3,Recepción por etapa o control del periodo; no acredita ejecución,RF-ESC-08/09/10
1.4.2.3.1,Especificación y protocolo: Retorno de participantes y vista mínima de salud,1.4,E1 Desarrollo,Especificación y protocolo: Retorno de participantes y vista mínima de salud,Resultado de la ficha de familia y del paquete original; registro individual por código/ventana,"No duplicar padres, informes, ingeniería ni cobertura; no incluye horas de contraparte ni obras/adquisiciones del cliente",Criterio específico del diccionario T-14 del mismo código; evidencia sobre versión/periodo identificado,Ulysses Barreto,32,A:16;D:8;S:4;I:4,"Asignación y cuadrante integrado por código; entornos, usuarios y habilitaciones autorizados",RF-ESC-14; SD5 Escuela náutica,2027-01-27,2027-01-29,H1,Recepción por etapa o control del periodo; no acredita ejecución,RF-ESC-14; SD5 Escuela náutica
1.4.2.3.2,"Lógica, persistencia y contratos: Retorno de participantes y vista mínima de salud",1.4,E1 Desarrollo,"Lógica, persistencia y contratos: Retorno de participantes y vista mínima de salud",Resultado de la ficha de familia y del paquete original; registro individual por código/ventana,"No duplicar padres, informes, ingeniería ni cobertura; no incluye horas de contraparte ni obras/adquisiciones del cliente",Criterio específico del diccionario T-14 del mismo código; evidencia sobre versión/periodo identificado,Nikolai Navea,64,D:8;Q:4;V:48;I:4,"Asignación y cuadrante integrado por código; entornos, usuarios y habilitaciones autorizados",RF-ESC-14; SD5 Escuela náutica,2027-07-21,2027-07-23,1.3.3.1;1.4.2.3.1;1.7.1.3;H2;H3,Recepción por etapa o control del periodo; no acredita ejecución,RF-ESC-14; SD5 Escuela náutica
1.4.2.3.3,Vistas de tarea y comprobación: Retorno de participantes y vista mínima de salud,1.4,E1 Desarrollo,Vistas de tarea y comprobación: Retorno de participantes y vista mínima de salud,Resultado de la ficha de familia y del paquete original; registro individual por código/ventana,"No duplicar padres, informes, ingeniería ni cobertura; no incluye horas de contraparte ni obras/adquisiciones del cliente",Criterio específico del diccionario T-14 del mismo código; evidencia sobre versión/periodo identificado,Nikolai Navea,44,A:4;S:4;Q:4;V:32,"Asignación y cuadrante integrado por código; entornos, usuarios y habilitaciones autorizados",RF-ESC-14; SD5 Escuela náutica,2027-07-30,2027-08-04,1.4.2.3.2;1.4.2.3.5.1;1.4.2.3.5.2;1.4.2.3.5.3;1.4.2.3.5.4;1.7.3.1;1.7.3.3,Recepción por etapa o control del periodo; no acredita ejecución,RF-ESC-14; SD5 Escuela náutica
1.4.3.1.1,Especificación y protocolo: Inventario y condiciones de puestos y fondeos,1.4,E1 Desarrollo,Especificación y protocolo: Inventario y condiciones de puestos y fondeos,Resultado de la ficha de familia y del paquete original; registro individual por código/ventana,"No duplicar padres, informes, ingeniería ni cobertura; no incluye horas de contraparte ni obras/adquisiciones del cliente",Criterio específico del diccionario T-14 del mismo código; evidencia sobre versión/periodo identificado,Ulysses Barreto,32,A:16;D:8;S:4;I:4,"Asignación y cuadrante integrado por código; entornos, usuarios y habilitaciones autorizados",BOY; AMA; SD5 Infraestructura,2027-01-25,2027-01-27,H1,Recepción por etapa o control del periodo; no acredita ejecución,BOY; AMA; SD5 Infraestructura
1.4.3.1.2,"Lógica, persistencia y contratos: Inventario y condiciones de puestos y fondeos",1.4,E1 Desarrollo,"Lógica, persistencia y contratos: Inventario y condiciones de puestos y fondeos",Resultado de la ficha de familia y del paquete original; registro individual por código/ventana,"No duplicar padres, informes, ingeniería ni cobertura; no incluye horas de contraparte ni obras/adquisiciones del cliente",Criterio específico del diccionario T-14 del mismo código; evidencia sobre versión/periodo identificado,Nikolai Navea,64,D:8;Q:4;V:48;I:4,"Asignación y cuadrante integrado por código; entornos, usuarios y habilitaciones autorizados",BOY; AMA; SD5 Infraestructura,2027-07-21,2027-07-23,1.3.3.1;1.4.3.1.1;1.7.1.3;H2;H3,Recepción por etapa o control del periodo; no acredita ejecución,BOY; AMA; SD5 Infraestructura
1.4.3.1.3,Vistas de tarea y comprobación: Inventario y condiciones de puestos y fondeos,1.4,E1 Desarrollo,Vistas de tarea y comprobación: Inventario y condiciones de puestos y fondeos,Resultado de la ficha de familia y del paquete original; registro individual por código/ventana,"No duplicar padres, informes, ingeniería ni cobertura; no incluye horas de contraparte ni obras/adquisiciones del cliente",Criterio específico del diccionario T-14 del mismo código; evidencia sobre versión/periodo identificado,Nikolai Navea,44,A:4;S:4;Q:4;V:32,"Asignación y cuadrante integrado por código; entornos, usuarios y habilitaciones autorizados",BOY; AMA; SD5 Infraestructura,2027-08-02,2027-08-05,1.4.3.1.2;1.4.3.1.5.1;1.7.3.1;1.7.3.3,Recepción por etapa o control del periodo; no acredita ejecución,BOY; AMA; SD5 Infraestructura
1.4.3.2.1,Especificación y protocolo: Inspecciones de boyas y evidencia desconectada,1.4,E1 Desarrollo,Especificación y protocolo: Inspecciones de boyas y evidencia desconectada,Resultado de la ficha de familia y del paquete original; registro individual por código/ventana,"No duplicar padres, informes, ingeniería ni cobertura; no incluye horas de contraparte ni obras/adquisiciones del cliente",Criterio específico del diccionario T-14 del mismo código; evidencia sobre versión/periodo identificado,Ulysses Barreto,32,A:16;D:8;S:4;I:4,"Asignación y cuadrante integrado por código; entornos, usuarios y habilitaciones autorizados",BOY; CA-13; SD3 cubierta,2027-01-25,2027-01-27,H1,Recepción por etapa o control del periodo; no acredita ejecución,BOY; CA-13; SD3 cubierta
1.4.3.2.2,"Lógica, persistencia y contratos: Inspecciones de boyas y evidencia desconectada",1.4,E1 Desarrollo,"Lógica, persistencia y contratos: Inspecciones de boyas y evidencia desconectada",Resultado de la ficha de familia y del paquete original; registro individual por código/ventana,"No duplicar padres, informes, ingeniería ni cobertura; no incluye horas de contraparte ni obras/adquisiciones del cliente",Criterio específico del diccionario T-14 del mismo código; evidencia sobre versión/periodo identificado,Nikolai Navea,64,D:8;Q:4;V:48;I:4,"Asignación y cuadrante integrado por código; entornos, usuarios y habilitaciones autorizados",BOY; CA-13; SD3 cubierta,2027-07-21,2027-07-23,1.3.3.1;1.4.3.2.1;1.7.1.3;H2;H3,Recepción por etapa o control del periodo; no acredita ejecución,BOY; CA-13; SD3 cubierta
1.4.3.2.3,Vistas de tarea y comprobación: Inspecciones de boyas y evidencia desconectada,1.4,E1 Desarrollo,Vistas de tarea y comprobación: Inspecciones de boyas y evidencia desconectada,Resultado de la ficha de familia y del paquete original; registro individual por código/ventana,"No duplicar padres, informes, ingeniería ni cobertura; no incluye horas de contraparte ni obras/adquisiciones del cliente",Criterio específico del diccionario T-14 del mismo código; evidencia sobre versión/periodo identificado,Nikolai Navea,44,A:4;S:4;Q:4;V:32,"Asignación y cuadrante integrado por código; entornos, usuarios y habilitaciones autorizados",BOY; CA-13; SD3 cubierta,2027-08-02,2027-08-05,1.4.3.2.2;1.4.3.2.5.1;1.4.3.2.5.2;1.4.3.2.5.3;1.4.3.2.5.4;1.7.3.1;1.7.3.3,Recepción por etapa o control del periodo; no acredita ejecución,BOY; CA-13; SD3 cubierta
1.4.3.3.1,Especificación y protocolo: Asociaciones temporales de medidores e instalaciones,1.4,E1 Desarrollo,Especificación y protocolo: Asociaciones temporales de medidores e instalaciones,Resultado de la ficha de familia y del paquete original; registro individual por código/ventana,"No duplicar padres, informes, ingeniería ni cobertura; no incluye horas de contraparte ni obras/adquisiciones del cliente",Criterio específico del diccionario T-14 del mismo código; evidencia sobre versión/periodo identificado,Ulysses Barreto,32,A:16;D:8;S:4;I:4,"Asignación y cuadrante integrado por código; entornos, usuarios y habilitaciones autorizados",CON; SD5 Infraestructura,2027-01-27,2027-01-29,H1,Recepción por etapa o control del periodo; no acredita ejecución,CON; SD5 Infraestructura
1.4.3.3.2,"Lógica, persistencia y contratos: Asociaciones temporales de medidores e instalaciones",1.4,E1 Desarrollo,"Lógica, persistencia y contratos: Asociaciones temporales de medidores e instalaciones",Resultado de la ficha de familia y del paquete original; registro individual por código/ventana,"No duplicar padres, informes, ingeniería ni cobertura; no incluye horas de contraparte ni obras/adquisiciones del cliente",Criterio específico del diccionario T-14 del mismo código; evidencia sobre versión/periodo identificado,Nikolai Navea,64,D:8;Q:4;V:48;I:4,"Asignación y cuadrante integrado por código; entornos, usuarios y habilitaciones autorizados",CON; SD5 Infraestructura,2027-07-21,2027-07-23,1.3.3.1;1.4.3.3.1;1.7.1.3;H2;H3,Recepción por etapa o control del periodo; no acredita ejecución,CON; SD5 Infraestructura
1.4.3.3.3,Vistas de tarea y comprobación: Asociaciones temporales de medidores e instalaciones,1.4,E1 Desarrollo,Vistas de tarea y comprobación: Asociaciones temporales de medidores e instalaciones,Resultado de la ficha de familia y del paquete original; registro individual por código/ventana,"No duplicar padres, informes, ingeniería ni cobertura; no incluye horas de contraparte ni obras/adquisiciones del cliente",Criterio específico del diccionario T-14 del mismo código; evidencia sobre versión/periodo identificado,Nikolai Navea,44,A:4;S:4;Q:4;V:32,"Asignación y cuadrante integrado por código; entornos, usuarios y habilitaciones autorizados",CON; SD5 Infraestructura,2027-07-29,2027-08-03,1.4.3.3.2;1.4.3.3.5.1;1.7.3.1;1.7.3.3,Recepción por etapa o control del periodo; no acredita ejecución,CON; SD5 Infraestructura
1.5.1.1.1,Especificación y protocolo: Maestros de faena y habilitaciones de consulta inicial,1.5,E1 Desarrollo,Especificación y protocolo: Maestros de faena y habilitaciones de consulta inicial,Resultado de la ficha de familia y del paquete original; registro individual por código/ventana,"No duplicar padres, informes, ingeniería ni cobertura; no incluye horas de contraparte ni obras/adquisiciones del cliente",Criterio específico del diccionario T-14 del mismo código; evidencia sobre versión/periodo identificado,Ulysses Barreto,32,A:16;D:8;S:4;I:4,"Asignación y cuadrante integrado por código; entornos, usuarios y habilitaciones autorizados",VAR/CTR; reparto E1 SD3,2027-01-27,2027-01-29,H1,Recepción por etapa o control del periodo; no acredita ejecución,VAR/CTR; reparto E1 SD3
1.5.1.1.2,"Lógica, persistencia y contratos: Maestros de faena y habilitaciones de consulta inicial",1.5,E1 Desarrollo,"Lógica, persistencia y contratos: Maestros de faena y habilitaciones de consulta inicial",Resultado de la ficha de familia y del paquete original; registro individual por código/ventana,"No duplicar padres, informes, ingeniería ni cobertura; no incluye horas de contraparte ni obras/adquisiciones del cliente",Criterio específico del diccionario T-14 del mismo código; evidencia sobre versión/periodo identificado,Nikolai Navea,64,D:8;Q:4;V:48;I:4,"Asignación y cuadrante integrado por código; entornos, usuarios y habilitaciones autorizados",VAR/CTR; reparto E1 SD3,2027-07-21,2027-07-23,1.3.3.1;1.5.1.1.1;1.7.1.3;H2;H3,Recepción por etapa o control del periodo; no acredita ejecución,VAR/CTR; reparto E1 SD3
1.5.1.1.3,Vistas de tarea y comprobación: Maestros de faena y habilitaciones de consulta inicial,1.5,E1 Desarrollo,Vistas de tarea y comprobación: Maestros de faena y habilitaciones de consulta inicial,Resultado de la ficha de familia y del paquete original; registro individual por código/ventana,"No duplicar padres, informes, ingeniería ni cobertura; no incluye horas de contraparte ni obras/adquisiciones del cliente",Criterio específico del diccionario T-14 del mismo código; evidencia sobre versión/periodo identificado,Nikolai Navea,44,A:4;S:4;Q:4;V:32,"Asignación y cuadrante integrado por código; entornos, usuarios y habilitaciones autorizados",VAR/CTR; reparto E1 SD3,2027-08-03,2027-08-06,1.5.1.1.2;1.5.1.1.5.1;1.7.3.1;1.7.3.3,Recepción por etapa o control del periodo; no acredita ejecución,VAR/CTR; reparto E1 SD3
1.5.1.2.1,Especificación y protocolo: Agenda de varadero y posiciones compatibles,1.5,E2 Desarrollo,Especificación y protocolo: Agenda de varadero y posiciones compatibles,Resultado de la ficha de familia y del paquete original; registro individual por código/ventana,"No duplicar padres, informes, ingeniería ni cobertura; no incluye horas de contraparte ni obras/adquisiciones del cliente",Criterio específico del diccionario T-14 del mismo código; evidencia sobre versión/periodo identificado,Ulysses Barreto,32,A:16;D:8;S:4;I:4,"Asignación y cuadrante integrado por código; entornos, usuarios y habilitaciones autorizados",RF-VAR; 180 puestos SD3,2027-12-01,2027-12-03,BASE-E1,Recepción por etapa o control del periodo; no acredita ejecución,RF-VAR; 180 puestos SD3
1.5.1.2.2,"Lógica, persistencia y contratos: Agenda de varadero y posiciones compatibles",1.5,E2 Desarrollo,"Lógica, persistencia y contratos: Agenda de varadero y posiciones compatibles",Resultado de la ficha de familia y del paquete original; registro individual por código/ventana,"No duplicar padres, informes, ingeniería ni cobertura; no incluye horas de contraparte ni obras/adquisiciones del cliente",Criterio específico del diccionario T-14 del mismo código; evidencia sobre versión/periodo identificado,Nikolai Navea,64,D:8;Q:4;V:48;I:4,"Asignación y cuadrante integrado por código; entornos, usuarios y habilitaciones autorizados",RF-VAR; 180 puestos SD3,2028-01-17,2028-01-19,1.3.3.1;1.5.1.2.1;1.7.1.3;H2;H8,Recepción por etapa o control del periodo; no acredita ejecución,RF-VAR; 180 puestos SD3
1.5.1.2.3,Vistas de tarea y comprobación: Agenda de varadero y posiciones compatibles,1.5,E2 Desarrollo,Vistas de tarea y comprobación: Agenda de varadero y posiciones compatibles,Resultado de la ficha de familia y del paquete original; registro individual por código/ventana,"No duplicar padres, informes, ingeniería ni cobertura; no incluye horas de contraparte ni obras/adquisiciones del cliente",Criterio específico del diccionario T-14 del mismo código; evidencia sobre versión/periodo identificado,Nikolai Navea,44,A:4;S:4;Q:4;V:32,"Asignación y cuadrante integrado por código; entornos, usuarios y habilitaciones autorizados",RF-VAR; 180 puestos SD3,2028-02-03,2028-02-07,1.5.1.2.2;1.5.1.2.5.1;1.7.3.1;1.7.3.3,Recepción por etapa o control del periodo; no acredita ejecución,RF-VAR; 180 puestos SD3
1.5.1.3.1,"Especificación y protocolo: Plan de izaje, validación y suspensión de faena",1.5,E2 Desarrollo,"Especificación y protocolo: Plan de izaje, validación y suspensión de faena",Resultado de la ficha de familia y del paquete original; registro individual por código/ventana,"No duplicar padres, informes, ingeniería ni cobertura; no incluye horas de contraparte ni obras/adquisiciones del cliente",Criterio específico del diccionario T-14 del mismo código; evidencia sobre versión/periodo identificado,Ulysses Barreto,32,A:16;D:8;S:4;I:4,"Asignación y cuadrante integrado por código; entornos, usuarios y habilitaciones autorizados",RF-VAR-04--08; DEC-12/13; RN-15/16,2027-12-16,2027-12-20,BASE-E1,Recepción por etapa o control del periodo; no acredita ejecución,RF-VAR-04--08; DEC-12/13; RN-15/16
1.5.1.3.2,"Lógica, persistencia y contratos: Plan de izaje, validación y suspensión de faena",1.5,E2 Desarrollo,"Lógica, persistencia y contratos: Plan de izaje, validación y suspensión de faena",Resultado de la ficha de familia y del paquete original; registro individual por código/ventana,"No duplicar padres, informes, ingeniería ni cobertura; no incluye horas de contraparte ni obras/adquisiciones del cliente",Criterio específico del diccionario T-14 del mismo código; evidencia sobre versión/periodo identificado,Nikolai Navea,64,D:8;Q:4;V:48;I:4,"Asignación y cuadrante integrado por código; entornos, usuarios y habilitaciones autorizados",RF-VAR-04--08; DEC-12/13; RN-15/16,2028-01-21,2028-01-25,1.3.3.1;1.5.1.3.1;1.7.1.3;H2;H8,Recepción por etapa o control del periodo; no acredita ejecución,RF-VAR-04--08; DEC-12/13; RN-15/16
1.5.1.3.3,"Vistas de tarea y comprobación: Plan de izaje, validación y suspensión de faena",1.5,E2 Desarrollo,"Vistas de tarea y comprobación: Plan de izaje, validación y suspensión de faena",Resultado de la ficha de familia y del paquete original; registro individual por código/ventana,"No duplicar padres, informes, ingeniería ni cobertura; no incluye horas de contraparte ni obras/adquisiciones del cliente",Criterio específico del diccionario T-14 del mismo código; evidencia sobre versión/periodo identificado,Nikolai Navea,44,A:4;S:4;Q:4;V:32,"Asignación y cuadrante integrado por código; entornos, usuarios y habilitaciones autorizados",RF-VAR-04--08; DEC-12/13; RN-15/16,2028-02-16,2028-02-18,1.5.1.3.2;1.5.1.3.5.1;1.7.3.1;1.7.3.3,Recepción por etapa o control del periodo; no acredita ejecución,RF-VAR-04--08; DEC-12/13; RN-15/16
1.5.1.4.1,"Especificación y protocolo: Órdenes, ejecución y reprogramación de trabajos",1.5,E2 Desarrollo,"Especificación y protocolo: Órdenes, ejecución y reprogramación de trabajos",Resultado de la ficha de familia y del paquete original; registro individual por código/ventana,"No duplicar padres, informes, ingeniería ni cobertura; no incluye horas de contraparte ni obras/adquisiciones del cliente",Criterio específico del diccionario T-14 del mismo código; evidencia sobre versión/periodo identificado,Ulysses Barreto,32,A:16;D:8;S:4;I:4,"Asignación y cuadrante integrado por código; entornos, usuarios y habilitaciones autorizados",SD5 Varadero y contratistas,2027-12-01,2027-12-03,BASE-E1,Recepción por etapa o control del periodo; no acredita ejecución,SD5 Varadero y contratistas
1.5.1.4.2,"Lógica, persistencia y contratos: Órdenes, ejecución y reprogramación de trabajos",1.5,E2 Desarrollo,"Lógica, persistencia y contratos: Órdenes, ejecución y reprogramación de trabajos",Resultado de la ficha de familia y del paquete original; registro individual por código/ventana,"No duplicar padres, informes, ingeniería ni cobertura; no incluye horas de contraparte ni obras/adquisiciones del cliente",Criterio específico del diccionario T-14 del mismo código; evidencia sobre versión/periodo identificado,Nikolai Navea,64,D:8;Q:4;V:48;I:4,"Asignación y cuadrante integrado por código; entornos, usuarios y habilitaciones autorizados",SD5 Varadero y contratistas,2028-01-17,2028-01-19,1.3.3.1;1.5.1.4.1;1.7.1.3;H2;H8,Recepción por etapa o control del periodo; no acredita ejecución,SD5 Varadero y contratistas
1.5.1.4.3,"Vistas de tarea y comprobación: Órdenes, ejecución y reprogramación de trabajos",1.5,E2 Desarrollo,"Vistas de tarea y comprobación: Órdenes, ejecución y reprogramación de trabajos",Resultado de la ficha de familia y del paquete original; registro individual por código/ventana,"No duplicar padres, informes, ingeniería ni cobertura; no incluye horas de contraparte ni obras/adquisiciones del cliente",Criterio específico del diccionario T-14 del mismo código; evidencia sobre versión/periodo identificado,Nikolai Navea,44,A:4;S:4;Q:4;V:32,"Asignación y cuadrante integrado por código; entornos, usuarios y habilitaciones autorizados",SD5 Varadero y contratistas,2028-02-01,2028-02-03,1.5.1.4.2;1.5.1.4.5.1;1.7.3.1;1.7.3.3,Recepción por etapa o control del periodo; no acredita ejecución,SD5 Varadero y contratistas
1.5.1.5.1,"Especificación y protocolo: Acreditación, inducción y acceso a intervención",1.5,E2 Desarrollo,"Especificación y protocolo: Acreditación, inducción y acceso a intervención",Resultado de la ficha de familia y del paquete original; registro individual por código/ventana,"No duplicar padres, informes, ingeniería ni cobertura; no incluye horas de contraparte ni obras/adquisiciones del cliente",Criterio específico del diccionario T-14 del mismo código; evidencia sobre versión/periodo identificado,Ulysses Barreto,32,A:16;D:8;S:4;I:4,"Asignación y cuadrante integrado por código; entornos, usuarios y habilitaciones autorizados",RF-CTR; SD3 contratistas/portería,2027-12-16,2027-12-20,BASE-E1,Recepción por etapa o control del periodo; no acredita ejecución,RF-CTR; SD3 contratistas/portería
1.5.1.5.2,"Lógica, persistencia y contratos: Acreditación, inducción y acceso a intervención",1.5,E2 Desarrollo,"Lógica, persistencia y contratos: Acreditación, inducción y acceso a intervención",Resultado de la ficha de familia y del paquete original; registro individual por código/ventana,"No duplicar padres, informes, ingeniería ni cobertura; no incluye horas de contraparte ni obras/adquisiciones del cliente",Criterio específico del diccionario T-14 del mismo código; evidencia sobre versión/periodo identificado,Nikolai Navea,64,D:8;Q:4;V:48;I:4,"Asignación y cuadrante integrado por código; entornos, usuarios y habilitaciones autorizados",RF-CTR; SD3 contratistas/portería,2028-01-18,2028-01-20,1.3.3.1;1.5.1.5.1;1.7.1.3;H2;H8,Recepción por etapa o control del periodo; no acredita ejecución,RF-CTR; SD3 contratistas/portería
1.5.1.5.3,"Vistas de tarea y comprobación: Acreditación, inducción y acceso a intervención",1.5,E2 Desarrollo,"Vistas de tarea y comprobación: Acreditación, inducción y acceso a intervención",Resultado de la ficha de familia y del paquete original; registro individual por código/ventana,"No duplicar padres, informes, ingeniería ni cobertura; no incluye horas de contraparte ni obras/adquisiciones del cliente",Criterio específico del diccionario T-14 del mismo código; evidencia sobre versión/periodo identificado,Nikolai Navea,44,A:4;S:4;Q:4;V:32,"Asignación y cuadrante integrado por código; entornos, usuarios y habilitaciones autorizados",RF-CTR; SD3 contratistas/portería,2028-02-16,2028-02-18,1.5.1.5.2;1.5.1.5.5.1;1.7.3.1;1.7.3.3,Recepción por etapa o control del periodo; no acredita ejecución,RF-CTR; SD3 contratistas/portería
1.5.2.1.1,Especificación y protocolo: Despacho identificado y captura segura de combustible,1.5,E1 Desarrollo,Especificación y protocolo: Despacho identificado y captura segura de combustible,Resultado de la ficha de familia y del paquete original; registro individual por código/ventana,"No duplicar padres, informes, ingeniería ni cobertura; no incluye horas de contraparte ni obras/adquisiciones del cliente",Criterio específico del diccionario T-14 del mismo código; evidencia sobre versión/periodo identificado,Ulysses Barreto,32,A:16;D:8;S:4;I:4,"Asignación y cuadrante integrado por código; entornos, usuarios y habilitaciones autorizados",CON; C07 RT-03.10/RT-05.10,2027-01-25,2027-01-27,H1,Recepción por etapa o control del periodo; no acredita ejecución,CON; C07 RT-03.10/RT-05.10
1.5.2.1.2,"Lógica, persistencia y contratos: Despacho identificado y captura segura de combustible",1.5,E1 Desarrollo,"Lógica, persistencia y contratos: Despacho identificado y captura segura de combustible",Resultado de la ficha de familia y del paquete original; registro individual por código/ventana,"No duplicar padres, informes, ingeniería ni cobertura; no incluye horas de contraparte ni obras/adquisiciones del cliente",Criterio específico del diccionario T-14 del mismo código; evidencia sobre versión/periodo identificado,Nikolai Navea,64,D:8;Q:4;V:48;I:4,"Asignación y cuadrante integrado por código; entornos, usuarios y habilitaciones autorizados",CON; C07 RT-03.10/RT-05.10,2027-07-19,2027-07-21,1.3.3.1;1.5.2.1.1;1.7.1.3;H2;H3,Recepción por etapa o control del periodo; no acredita ejecución,CON; C07 RT-03.10/RT-05.10
1.5.2.1.3,Vistas de tarea y comprobación: Despacho identificado y captura segura de combustible,1.5,E1 Desarrollo,Vistas de tarea y comprobación: Despacho identificado y captura segura de combustible,Resultado de la ficha de familia y del paquete original; registro individual por código/ventana,"No duplicar padres, informes, ingeniería ni cobertura; no incluye horas de contraparte ni obras/adquisiciones del cliente",Criterio específico del diccionario T-14 del mismo código; evidencia sobre versión/periodo identificado,Nikolai Navea,44,A:4;S:4;Q:4;V:32,"Asignación y cuadrante integrado por código; entornos, usuarios y habilitaciones autorizados",CON; C07 RT-03.10/RT-05.10,2027-07-28,2027-07-30,1.5.2.1.2;1.5.2.1.5.1;1.7.3.1;1.7.3.3,Recepción por etapa o control del periodo; no acredita ejecución,CON; C07 RT-03.10/RT-05.10
1.5.2.2.1,Especificación y protocolo: Conciliación de tramos y rectificación de despachos,1.5,E1 Desarrollo,Especificación y protocolo: Conciliación de tramos y rectificación de despachos,Resultado de la ficha de familia y del paquete original; registro individual por código/ventana,"No duplicar padres, informes, ingeniería ni cobertura; no incluye horas de contraparte ni obras/adquisiciones del cliente",Criterio específico del diccionario T-14 del mismo código; evidencia sobre versión/periodo identificado,Ulysses Barreto,32,A:16;D:8;S:4;I:4,"Asignación y cuadrante integrado por código; entornos, usuarios y habilitaciones autorizados",SD5 Combustible,2027-01-25,2027-01-27,H1,Recepción por etapa o control del periodo; no acredita ejecución,SD5 Combustible
1.5.2.2.2,"Lógica, persistencia y contratos: Conciliación de tramos y rectificación de despachos",1.5,E1 Desarrollo,"Lógica, persistencia y contratos: Conciliación de tramos y rectificación de despachos",Resultado de la ficha de familia y del paquete original; registro individual por código/ventana,"No duplicar padres, informes, ingeniería ni cobertura; no incluye horas de contraparte ni obras/adquisiciones del cliente",Criterio específico del diccionario T-14 del mismo código; evidencia sobre versión/periodo identificado,Nikolai Navea,64,D:8;Q:4;V:48;I:4,"Asignación y cuadrante integrado por código; entornos, usuarios y habilitaciones autorizados",SD5 Combustible,2027-07-19,2027-07-21,1.3.3.1;1.5.2.2.1;1.7.1.3;H2;H3,Recepción por etapa o control del periodo; no acredita ejecución,SD5 Combustible
1.5.2.2.3,Vistas de tarea y comprobación: Conciliación de tramos y rectificación de despachos,1.5,E1 Desarrollo,Vistas de tarea y comprobación: Conciliación de tramos y rectificación de despachos,Resultado de la ficha de familia y del paquete original; registro individual por código/ventana,"No duplicar padres, informes, ingeniería ni cobertura; no incluye horas de contraparte ni obras/adquisiciones del cliente",Criterio específico del diccionario T-14 del mismo código; evidencia sobre versión/periodo identificado,Nikolai Navea,44,A:4;S:4;Q:4;V:32,"Asignación y cuadrante integrado por código; entornos, usuarios y habilitaciones autorizados",SD5 Combustible,2027-07-30,2027-08-03,1.5.2.2.2;1.5.2.2.5.1;1.7.3.1;1.7.3.3,Recepción por etapa o control del periodo; no acredita ejecución,SD5 Combustible
1.5.3.1.1,Especificación y protocolo: Intervalos y series conciliadas de agua y energía,1.5,E1 Desarrollo,Especificación y protocolo: Intervalos y series conciliadas de agua y energía,Resultado de la ficha de familia y del paquete original; registro individual por código/ventana,"No duplicar padres, informes, ingeniería ni cobertura; no incluye horas de contraparte ni obras/adquisiciones del cliente",Criterio específico del diccionario T-14 del mismo código; evidencia sobre versión/periodo identificado,Ulysses Barreto,32,A:16;D:8;S:4;I:4,"Asignación y cuadrante integrado por código; entornos, usuarios y habilitaciones autorizados",CON/AMB; CA-18/19,2027-01-27,2027-01-29,H1,Recepción por etapa o control del periodo; no acredita ejecución,CON/AMB; CA-18/19
1.5.3.1.2,"Lógica, persistencia y contratos: Intervalos y series conciliadas de agua y energía",1.5,E1 Desarrollo,"Lógica, persistencia y contratos: Intervalos y series conciliadas de agua y energía",Resultado de la ficha de familia y del paquete original; registro individual por código/ventana,"No duplicar padres, informes, ingeniería ni cobertura; no incluye horas de contraparte ni obras/adquisiciones del cliente",Criterio específico del diccionario T-14 del mismo código; evidencia sobre versión/periodo identificado,Nikolai Navea,64,D:8;Q:4;V:48;I:4,"Asignación y cuadrante integrado por código; entornos, usuarios y habilitaciones autorizados",CON/AMB; CA-18/19,2027-07-21,2027-07-23,1.3.3.1;1.5.3.1.1;1.7.1.3;H2;H3,Recepción por etapa o control del periodo; no acredita ejecución,CON/AMB; CA-18/19
1.5.3.1.3,Vistas de tarea y comprobación: Intervalos y series conciliadas de agua y energía,1.5,E1 Desarrollo,Vistas de tarea y comprobación: Intervalos y series conciliadas de agua y energía,Resultado de la ficha de familia y del paquete original; registro individual por código/ventana,"No duplicar padres, informes, ingeniería ni cobertura; no incluye horas de contraparte ni obras/adquisiciones del cliente",Criterio específico del diccionario T-14 del mismo código; evidencia sobre versión/periodo identificado,Nikolai Navea,44,A:4;S:4;Q:4;V:32,"Asignación y cuadrante integrado por código; entornos, usuarios y habilitaciones autorizados",CON/AMB; CA-18/19,2027-07-30,2027-08-04,1.5.3.1.2;1.5.3.1.5.1;1.7.3.1;1.7.3.3,Recepción por etapa o control del periodo; no acredita ejecución,CON/AMB; CA-18/19
1.5.3.2.1,Especificación y protocolo: Consultas de consumo y evidencia ambiental inicial,1.5,E1 Desarrollo,Especificación y protocolo: Consultas de consumo y evidencia ambiental inicial,Resultado de la ficha de familia y del paquete original; registro individual por código/ventana,"No duplicar padres, informes, ingeniería ni cobertura; no incluye horas de contraparte ni obras/adquisiciones del cliente",Criterio específico del diccionario T-14 del mismo código; evidencia sobre versión/periodo identificado,Ulysses Barreto,32,A:16;D:8;S:4;I:4,"Asignación y cuadrante integrado por código; entornos, usuarios y habilitaciones autorizados",AMB; CA-19; SD3 historia ambiental,2027-01-25,2027-01-27,H1,Recepción por etapa o control del periodo; no acredita ejecución,AMB; CA-19; SD3 historia ambiental
1.5.3.2.2,"Lógica, persistencia y contratos: Consultas de consumo y evidencia ambiental inicial",1.5,E1 Desarrollo,"Lógica, persistencia y contratos: Consultas de consumo y evidencia ambiental inicial",Resultado de la ficha de familia y del paquete original; registro individual por código/ventana,"No duplicar padres, informes, ingeniería ni cobertura; no incluye horas de contraparte ni obras/adquisiciones del cliente",Criterio específico del diccionario T-14 del mismo código; evidencia sobre versión/periodo identificado,Nikolai Navea,64,D:8;Q:4;V:48;I:4,"Asignación y cuadrante integrado por código; entornos, usuarios y habilitaciones autorizados",AMB; CA-19; SD3 historia ambiental,2027-07-19,2027-07-21,1.3.3.1;1.5.3.2.1;1.7.1.3;H2;H3,Recepción por etapa o control del periodo; no acredita ejecución,AMB; CA-19; SD3 historia ambiental
1.5.3.2.3,Vistas de tarea y comprobación: Consultas de consumo y evidencia ambiental inicial,1.5,E1 Desarrollo,Vistas de tarea y comprobación: Consultas de consumo y evidencia ambiental inicial,Resultado de la ficha de familia y del paquete original; registro individual por código/ventana,"No duplicar padres, informes, ingeniería ni cobertura; no incluye horas de contraparte ni obras/adquisiciones del cliente",Criterio específico del diccionario T-14 del mismo código; evidencia sobre versión/periodo identificado,Nikolai Navea,44,A:4;S:4;Q:4;V:32,"Asignación y cuadrante integrado por código; entornos, usuarios y habilitaciones autorizados",AMB; CA-19; SD3 historia ambiental,2027-07-23,2027-07-28,1.5.3.2.2;1.5.3.2.5.1;1.7.3.1;1.7.3.3,Recepción por etapa o control del periodo; no acredita ejecución,AMB; CA-19; SD3 historia ambiental
1.5.3.3.1,Especificación y protocolo: Recepción de residuos y discrepancias de origen,1.5,E2 Desarrollo,Especificación y protocolo: Recepción de residuos y discrepancias de origen,Resultado de la ficha de familia y del paquete original; registro individual por código/ventana,"No duplicar padres, informes, ingeniería ni cobertura; no incluye horas de contraparte ni obras/adquisiciones del cliente",Criterio específico del diccionario T-14 del mismo código; evidencia sobre versión/periodo identificado,Ulysses Barreto,32,A:16;D:8;S:4;I:4,"Asignación y cuadrante integrado por código; entornos, usuarios y habilitaciones autorizados",AMB; RN-19--21; SD5 residuos,2027-12-01,2027-12-03,BASE-E1,Recepción por etapa o control del periodo; no acredita ejecución,AMB; RN-19--21; SD5 residuos
1.5.3.3.2,"Lógica, persistencia y contratos: Recepción de residuos y discrepancias de origen",1.5,E2 Desarrollo,"Lógica, persistencia y contratos: Recepción de residuos y discrepancias de origen",Resultado de la ficha de familia y del paquete original; registro individual por código/ventana,"No duplicar padres, informes, ingeniería ni cobertura; no incluye horas de contraparte ni obras/adquisiciones del cliente",Criterio específico del diccionario T-14 del mismo código; evidencia sobre versión/periodo identificado,Nikolai Navea,64,D:8;Q:4;V:48;I:4,"Asignación y cuadrante integrado por código; entornos, usuarios y habilitaciones autorizados",AMB; RN-19--21; SD5 residuos,2028-01-19,2028-01-24,1.3.3.1;1.5.3.3.1;1.7.1.3;H2;H8,Recepción por etapa o control del periodo; no acredita ejecución,AMB; RN-19--21; SD5 residuos
1.5.3.3.3,Vistas de tarea y comprobación: Recepción de residuos y discrepancias de origen,1.5,E2 Desarrollo,Vistas de tarea y comprobación: Recepción de residuos y discrepancias de origen,Resultado de la ficha de familia y del paquete original; registro individual por código/ventana,"No duplicar padres, informes, ingeniería ni cobertura; no incluye horas de contraparte ni obras/adquisiciones del cliente",Criterio específico del diccionario T-14 del mismo código; evidencia sobre versión/periodo identificado,Nikolai Navea,44,A:4;S:4;Q:4;V:32,"Asignación y cuadrante integrado por código; entornos, usuarios y habilitaciones autorizados",AMB; RN-19--21; SD5 residuos,2028-02-01,2028-02-03,1.5.3.3.2;1.5.3.3.5.1;1.7.3.1;1.7.3.3,Recepción por etapa o control del periodo; no acredita ejecución,AMB; RN-19--21; SD5 residuos
1.5.3.4.1,Especificación y protocolo: Entregas RESPEL parciales y certificados vinculados,1.5,E2 Desarrollo,Especificación y protocolo: Entregas RESPEL parciales y certificados vinculados,Resultado de la ficha de familia y del paquete original; registro individual por código/ventana,"No duplicar padres, informes, ingeniería ni cobertura; no incluye horas de contraparte ni obras/adquisiciones del cliente",Criterio específico del diccionario T-14 del mismo código; evidencia sobre versión/periodo identificado,Ulysses Barreto,32,A:16;D:8;S:4;I:4,"Asignación y cuadrante integrado por código; entornos, usuarios y habilitaciones autorizados",AMB; SD5 Entrega a gestor,2027-12-16,2027-12-20,BASE-E1,Recepción por etapa o control del periodo; no acredita ejecución,AMB; SD5 Entrega a gestor
1.5.3.4.2,"Lógica, persistencia y contratos: Entregas RESPEL parciales y certificados vinculados",1.5,E2 Desarrollo,"Lógica, persistencia y contratos: Entregas RESPEL parciales y certificados vinculados",Resultado de la ficha de familia y del paquete original; registro individual por código/ventana,"No duplicar padres, informes, ingeniería ni cobertura; no incluye horas de contraparte ni obras/adquisiciones del cliente",Criterio específico del diccionario T-14 del mismo código; evidencia sobre versión/periodo identificado,Nikolai Navea,64,D:8;Q:4;V:48;I:4,"Asignación y cuadrante integrado por código; entornos, usuarios y habilitaciones autorizados",AMB; SD5 Entrega a gestor,2028-01-18,2028-01-20,1.3.3.1;1.5.3.4.1;1.7.1.3;H2;H8,Recepción por etapa o control del periodo; no acredita ejecución,AMB; SD5 Entrega a gestor
1.5.3.4.3,Vistas de tarea y comprobación: Entregas RESPEL parciales y certificados vinculados,1.5,E2 Desarrollo,Vistas de tarea y comprobación: Entregas RESPEL parciales y certificados vinculados,Resultado de la ficha de familia y del paquete original; registro individual por código/ventana,"No duplicar padres, informes, ingeniería ni cobertura; no incluye horas de contraparte ni obras/adquisiciones del cliente",Criterio específico del diccionario T-14 del mismo código; evidencia sobre versión/periodo identificado,Nikolai Navea,44,A:4;S:4;Q:4;V:32,"Asignación y cuadrante integrado por código; entornos, usuarios y habilitaciones autorizados",AMB; SD5 Entrega a gestor,2028-02-16,2028-02-18,1.5.3.4.2;1.5.3.4.5.1;1.5.3.4.5.2;1.5.3.4.5.3;1.5.3.4.5.4;1.7.3.1;1.7.3.3,Recepción por etapa o control del periodo; no acredita ejecución,AMB; SD5 Entrega a gestor
1.5.3.5.1,Especificación y protocolo: Indicadores ambientales e imputación comercial de consumo,1.5,E2 Desarrollo,Especificación y protocolo: Indicadores ambientales e imputación comercial de consumo,Resultado de la ficha de familia y del paquete original; registro individual por código/ventana,"No duplicar padres, informes, ingeniería ni cobertura; no incluye horas de contraparte ni obras/adquisiciones del cliente",Criterio específico del diccionario T-14 del mismo código; evidencia sobre versión/periodo identificado,Ulysses Barreto,32,A:16;D:8;S:4;I:4,"Asignación y cuadrante integrado por código; entornos, usuarios y habilitaciones autorizados",CA-18/19; SD5 MediciónConsolidada,2027-12-01,2027-12-03,BASE-E1,Recepción por etapa o control del periodo; no acredita ejecución,CA-18/19; SD5 MediciónConsolidada
1.5.3.5.2,"Lógica, persistencia y contratos: Indicadores ambientales e imputación comercial de consumo",1.5,E2 Desarrollo,"Lógica, persistencia y contratos: Indicadores ambientales e imputación comercial de consumo",Resultado de la ficha de familia y del paquete original; registro individual por código/ventana,"No duplicar padres, informes, ingeniería ni cobertura; no incluye horas de contraparte ni obras/adquisiciones del cliente",Criterio específico del diccionario T-14 del mismo código; evidencia sobre versión/periodo identificado,Nikolai Navea,64,D:8;Q:4;V:48;I:4,"Asignación y cuadrante integrado por código; entornos, usuarios y habilitaciones autorizados",CA-18/19; SD5 MediciónConsolidada,2028-01-17,2028-01-19,1.3.3.1;1.5.3.5.1;1.7.1.3;H2;H8,Recepción por etapa o control del periodo; no acredita ejecución,CA-18/19; SD5 MediciónConsolidada
1.5.3.5.3,Vistas de tarea y comprobación: Indicadores ambientales e imputación comercial de consumo,1.5,E2 Desarrollo,Vistas de tarea y comprobación: Indicadores ambientales e imputación comercial de consumo,Resultado de la ficha de familia y del paquete original; registro individual por código/ventana,"No duplicar padres, informes, ingeniería ni cobertura; no incluye horas de contraparte ni obras/adquisiciones del cliente",Criterio específico del diccionario T-14 del mismo código; evidencia sobre versión/periodo identificado,Nikolai Navea,44,A:4;S:4;Q:4;V:32,"Asignación y cuadrante integrado por código; entornos, usuarios y habilitaciones autorizados",CA-18/19; SD5 MediciónConsolidada,2028-02-03,2028-02-07,1.5.3.5.2;1.5.3.5.5.1;1.7.3.1;1.7.3.3,Recepción por etapa o control del periodo; no acredita ejecución,CA-18/19; SD5 MediciónConsolidada
1.6.1.1.1,"Especificación y protocolo: Maestros de personas, organizaciones y embarcaciones",1.6,E1 Desarrollo,"Especificación y protocolo: Maestros de personas, organizaciones y embarcaciones",Resultado de la ficha de familia y del paquete original; registro individual por código/ventana,"No duplicar padres, informes, ingeniería ni cobertura; no incluye horas de contraparte ni obras/adquisiciones del cliente",Criterio específico del diccionario T-14 del mismo código; evidencia sobre versión/periodo identificado,Ulysses Barreto,32,A:16;D:8;S:4;I:4,"Asignación y cuadrante integrado por código; entornos, usuarios y habilitaciones autorizados",ADM/AUT; SD5 Clientes y contratos,2027-01-25,2027-01-27,H1,Recepción por etapa o control del periodo; no acredita ejecución,ADM/AUT; SD5 Clientes y contratos
1.6.1.1.2,"Lógica, persistencia y contratos: Maestros de personas, organizaciones y embarcaciones",1.6,E1 Desarrollo,"Lógica, persistencia y contratos: Maestros de personas, organizaciones y embarcaciones",Resultado de la ficha de familia y del paquete original; registro individual por código/ventana,"No duplicar padres, informes, ingeniería ni cobertura; no incluye horas de contraparte ni obras/adquisiciones del cliente",Criterio específico del diccionario T-14 del mismo código; evidencia sobre versión/periodo identificado,Nikolai Navea,64,D:8;Q:4;V:48;I:4,"Asignación y cuadrante integrado por código; entornos, usuarios y habilitaciones autorizados",ADM/AUT; SD5 Clientes y contratos,2027-07-19,2027-07-21,1.3.3.1;1.6.1.1.1;1.7.1.3;H2;H3,Recepción por etapa o control del periodo; no acredita ejecución,ADM/AUT; SD5 Clientes y contratos
1.6.1.1.3,"Vistas de tarea y comprobación: Maestros de personas, organizaciones y embarcaciones",1.6,E1 Desarrollo,"Vistas de tarea y comprobación: Maestros de personas, organizaciones y embarcaciones",Resultado de la ficha de familia y del paquete original; registro individual por código/ventana,"No duplicar padres, informes, ingeniería ni cobertura; no incluye horas de contraparte ni obras/adquisiciones del cliente",Criterio específico del diccionario T-14 del mismo código; evidencia sobre versión/periodo identificado,Nikolai Navea,44,A:4;S:4;Q:4;V:32,"Asignación y cuadrante integrado por código; entornos, usuarios y habilitaciones autorizados",ADM/AUT; SD5 Clientes y contratos,2027-07-30,2027-08-04,1.6.1.1.2;1.6.1.1.5.1;1.7.3.1;1.7.3.3,Recepción por etapa o control del periodo; no acredita ejecución,ADM/AUT; SD5 Clientes y contratos
1.6.1.2.1,Especificación y protocolo: Contratos y documentos vigentes de consulta E1,1.6,E1 Desarrollo,Especificación y protocolo: Contratos y documentos vigentes de consulta E1,Resultado de la ficha de familia y del paquete original; registro individual por código/ventana,"No duplicar padres, informes, ingeniería ni cobertura; no incluye horas de contraparte ni obras/adquisiciones del cliente",Criterio específico del diccionario T-14 del mismo código; evidencia sobre versión/periodo identificado,Ulysses Barreto,32,A:16;D:8;S:4;I:4,"Asignación y cuadrante integrado por código; entornos, usuarios y habilitaciones autorizados",SD3 reparto E1; SD5 contratos,2027-01-25,2027-01-27,H1,Recepción por etapa o control del periodo; no acredita ejecución,SD3 reparto E1; SD5 contratos
1.6.1.2.2,"Lógica, persistencia y contratos: Contratos y documentos vigentes de consulta E1",1.6,E1 Desarrollo,"Lógica, persistencia y contratos: Contratos y documentos vigentes de consulta E1",Resultado de la ficha de familia y del paquete original; registro individual por código/ventana,"No duplicar padres, informes, ingeniería ni cobertura; no incluye horas de contraparte ni obras/adquisiciones del cliente",Criterio específico del diccionario T-14 del mismo código; evidencia sobre versión/periodo identificado,Nikolai Navea,64,D:8;Q:4;V:48;I:4,"Asignación y cuadrante integrado por código; entornos, usuarios y habilitaciones autorizados",SD3 reparto E1; SD5 contratos,2027-07-21,2027-07-23,1.3.3.1;1.6.1.2.1;1.7.1.3;H2;H3,Recepción por etapa o control del periodo; no acredita ejecución,SD3 reparto E1; SD5 contratos
1.6.1.2.3,Vistas de tarea y comprobación: Contratos y documentos vigentes de consulta E1,1.6,E1 Desarrollo,Vistas de tarea y comprobación: Contratos y documentos vigentes de consulta E1,Resultado de la ficha de familia y del paquete original; registro individual por código/ventana,"No duplicar padres, informes, ingeniería ni cobertura; no incluye horas de contraparte ni obras/adquisiciones del cliente",Criterio específico del diccionario T-14 del mismo código; evidencia sobre versión/periodo identificado,Nikolai Navea,44,A:4;S:4;Q:4;V:32,"Asignación y cuadrante integrado por código; entornos, usuarios y habilitaciones autorizados",SD3 reparto E1; SD5 contratos,2027-07-30,2027-08-03,1.6.1.2.2;1.6.1.2.5.1;1.7.3.1;1.7.3.3,Recepción por etapa o control del periodo; no acredita ejecución,SD3 reparto E1; SD5 contratos
1.6.1.3.1,Especificación y protocolo: Atención a visitas y asignación transitoria inicial,1.6,E1 Desarrollo,Especificación y protocolo: Atención a visitas y asignación transitoria inicial,Resultado de la ficha de familia y del paquete original; registro individual por código/ventana,"No duplicar padres, informes, ingeniería ni cobertura; no incluye horas de contraparte ni obras/adquisiciones del cliente",Criterio específico del diccionario T-14 del mismo código; evidencia sobre versión/periodo identificado,Ulysses Barreto,32,A:16;D:8;S:4;I:4,"Asignación y cuadrante integrado por código; entornos, usuarios y habilitaciones autorizados",AMA/AUT; SD3 atención náutica,2027-01-25,2027-01-27,H1,Recepción por etapa o control del periodo; no acredita ejecución,AMA/AUT; SD3 atención náutica
1.6.1.3.2,"Lógica, persistencia y contratos: Atención a visitas y asignación transitoria inicial",1.6,E1 Desarrollo,"Lógica, persistencia y contratos: Atención a visitas y asignación transitoria inicial",Resultado de la ficha de familia y del paquete original; registro individual por código/ventana,"No duplicar padres, informes, ingeniería ni cobertura; no incluye horas de contraparte ni obras/adquisiciones del cliente",Criterio específico del diccionario T-14 del mismo código; evidencia sobre versión/periodo identificado,Nikolai Navea,64,D:8;Q:4;V:48;I:4,"Asignación y cuadrante integrado por código; entornos, usuarios y habilitaciones autorizados",AMA/AUT; SD3 atención náutica,2027-07-19,2027-07-21,1.3.3.1;1.6.1.3.1;1.7.1.3;H2;H3,Recepción por etapa o control del periodo; no acredita ejecución,AMA/AUT; SD3 atención náutica
1.6.1.3.3,Vistas de tarea y comprobación: Atención a visitas y asignación transitoria inicial,1.6,E1 Desarrollo,Vistas de tarea y comprobación: Atención a visitas y asignación transitoria inicial,Resultado de la ficha de familia y del paquete original; registro individual por código/ventana,"No duplicar padres, informes, ingeniería ni cobertura; no incluye horas de contraparte ni obras/adquisiciones del cliente",Criterio específico del diccionario T-14 del mismo código; evidencia sobre versión/periodo identificado,Nikolai Navea,44,A:4;S:4;Q:4;V:32,"Asignación y cuadrante integrado por código; entornos, usuarios y habilitaciones autorizados",AMA/AUT; SD3 atención náutica,2027-07-23,2027-07-28,1.6.1.3.2;1.6.1.3.5.1;1.7.3.1;1.7.3.3,Recepción por etapa o control del periodo; no acredita ejecución,AMA/AUT; SD3 atención náutica
1.6.1.4.1,Especificación y protocolo: Espera y gestión contractual completa,1.6,E2 Desarrollo,Especificación y protocolo: Espera y gestión contractual completa,Resultado de la ficha de familia y del paquete original; registro individual por código/ventana,"No duplicar padres, informes, ingeniería ni cobertura; no incluye horas de contraparte ni obras/adquisiciones del cliente",Criterio específico del diccionario T-14 del mismo código; evidencia sobre versión/periodo identificado,Ulysses Barreto,32,A:16;D:8;S:4;I:4,"Asignación y cuadrante integrado por código; entornos, usuarios y habilitaciones autorizados",AMA/ADM; SD3 reparto E2,2027-12-16,2027-12-20,BASE-E1,Recepción por etapa o control del periodo; no acredita ejecución,AMA/ADM; SD3 reparto E2
1.6.1.4.2,"Lógica, persistencia y contratos: Espera y gestión contractual completa",1.6,E2 Desarrollo,"Lógica, persistencia y contratos: Espera y gestión contractual completa",Resultado de la ficha de familia y del paquete original; registro individual por código/ventana,"No duplicar padres, informes, ingeniería ni cobertura; no incluye horas de contraparte ni obras/adquisiciones del cliente",Criterio específico del diccionario T-14 del mismo código; evidencia sobre versión/periodo identificado,Nikolai Navea,64,D:8;Q:4;V:48;I:4,"Asignación y cuadrante integrado por código; entornos, usuarios y habilitaciones autorizados",AMA/ADM; SD3 reparto E2,2028-01-18,2028-01-20,1.3.3.1;1.6.1.4.1;1.7.1.3;H2;H8,Recepción por etapa o control del periodo; no acredita ejecución,AMA/ADM; SD3 reparto E2
1.6.1.4.3,Vistas de tarea y comprobación: Espera y gestión contractual completa,1.6,E2 Desarrollo,Vistas de tarea y comprobación: Espera y gestión contractual completa,Resultado de la ficha de familia y del paquete original; registro individual por código/ventana,"No duplicar padres, informes, ingeniería ni cobertura; no incluye horas de contraparte ni obras/adquisiciones del cliente",Criterio específico del diccionario T-14 del mismo código; evidencia sobre versión/periodo identificado,Nikolai Navea,44,A:4;S:4;Q:4;V:32,"Asignación y cuadrante integrado por código; entornos, usuarios y habilitaciones autorizados",AMA/ADM; SD3 reparto E2,2028-02-16,2028-02-18,1.6.1.4.2;1.6.1.4.5.1;1.6.1.4.5.2;1.6.1.4.5.3;1.6.1.4.5.4;1.7.3.1;1.7.3.3,Recepción por etapa o control del periodo; no acredita ejecución,AMA/ADM; SD3 reparto E2
1.6.2.1.1,"Especificación y protocolo: Hechos facturables, tarifas y lotes de envío",1.6,E2 Desarrollo,"Especificación y protocolo: Hechos facturables, tarifas y lotes de envío",Resultado de la ficha de familia y del paquete original; registro individual por código/ventana,"No duplicar padres, informes, ingeniería ni cobertura; no incluye horas de contraparte ni obras/adquisiciones del cliente",Criterio específico del diccionario T-14 del mismo código; evidencia sobre versión/periodo identificado,Ulysses Barreto,32,A:16;D:8;S:4;I:4,"Asignación y cuadrante integrado por código; entornos, usuarios y habilitaciones autorizados",FAC; SD5 Finanzas y cobranza,2027-12-01,2027-12-03,BASE-E1,Recepción por etapa o control del periodo; no acredita ejecución,FAC; SD5 Finanzas y cobranza
1.6.2.1.2,"Lógica, persistencia y contratos: Hechos facturables, tarifas y lotes de envío",1.6,E2 Desarrollo,"Lógica, persistencia y contratos: Hechos facturables, tarifas y lotes de envío",Resultado de la ficha de familia y del paquete original; registro individual por código/ventana,"No duplicar padres, informes, ingeniería ni cobertura; no incluye horas de contraparte ni obras/adquisiciones del cliente",Criterio específico del diccionario T-14 del mismo código; evidencia sobre versión/periodo identificado,Nikolai Navea,64,D:8;Q:4;V:48;I:4,"Asignación y cuadrante integrado por código; entornos, usuarios y habilitaciones autorizados",FAC; SD5 Finanzas y cobranza,2028-01-17,2028-01-19,1.3.3.1;1.6.2.1.1;1.7.1.3;H2;H8,Recepción por etapa o control del periodo; no acredita ejecución,FAC; SD5 Finanzas y cobranza
1.6.2.1.3,"Vistas de tarea y comprobación: Hechos facturables, tarifas y lotes de envío",1.6,E2 Desarrollo,"Vistas de tarea y comprobación: Hechos facturables, tarifas y lotes de envío",Resultado de la ficha de familia y del paquete original; registro individual por código/ventana,"No duplicar padres, informes, ingeniería ni cobertura; no incluye horas de contraparte ni obras/adquisiciones del cliente",Criterio específico del diccionario T-14 del mismo código; evidencia sobre versión/periodo identificado,Nikolai Navea,44,A:4;S:4;Q:4;V:32,"Asignación y cuadrante integrado por código; entornos, usuarios y habilitaciones autorizados",FAC; SD5 Finanzas y cobranza,2028-02-01,2028-02-03,1.6.2.1.2;1.6.2.1.5.1;1.7.3.1;1.7.3.3,Recepción por etapa o control del periodo; no acredita ejecución,FAC; SD5 Finanzas y cobranza
1.6.2.2.1,"Especificación y protocolo: Respuesta contable, pagos y saldos informados",1.6,E2 Desarrollo,"Especificación y protocolo: Respuesta contable, pagos y saldos informados",Resultado de la ficha de familia y del paquete original; registro individual por código/ventana,"No duplicar padres, informes, ingeniería ni cobertura; no incluye horas de contraparte ni obras/adquisiciones del cliente",Criterio específico del diccionario T-14 del mismo código; evidencia sobre versión/periodo identificado,Ulysses Barreto,32,A:16;D:8;S:4;I:4,"Asignación y cuadrante integrado por código; entornos, usuarios y habilitaciones autorizados",FAC; SD5 autoridad externa,2027-12-16,2027-12-20,BASE-E1,Recepción por etapa o control del periodo; no acredita ejecución,FAC; SD5 autoridad externa
1.6.2.2.2,"Lógica, persistencia y contratos: Respuesta contable, pagos y saldos informados",1.6,E2 Desarrollo,"Lógica, persistencia y contratos: Respuesta contable, pagos y saldos informados",Resultado de la ficha de familia y del paquete original; registro individual por código/ventana,"No duplicar padres, informes, ingeniería ni cobertura; no incluye horas de contraparte ni obras/adquisiciones del cliente",Criterio específico del diccionario T-14 del mismo código; evidencia sobre versión/periodo identificado,Nikolai Navea,64,D:8;Q:4;V:48;I:4,"Asignación y cuadrante integrado por código; entornos, usuarios y habilitaciones autorizados",FAC; SD5 autoridad externa,2028-01-18,2028-01-20,1.3.3.1;1.6.2.2.1;1.7.1.3;H2;H8,Recepción por etapa o control del periodo; no acredita ejecución,FAC; SD5 autoridad externa
1.6.2.2.3,"Vistas de tarea y comprobación: Respuesta contable, pagos y saldos informados",1.6,E2 Desarrollo,"Vistas de tarea y comprobación: Respuesta contable, pagos y saldos informados",Resultado de la ficha de familia y del paquete original; registro individual por código/ventana,"No duplicar padres, informes, ingeniería ni cobertura; no incluye horas de contraparte ni obras/adquisiciones del cliente",Criterio específico del diccionario T-14 del mismo código; evidencia sobre versión/periodo identificado,Nikolai Navea,44,A:4;S:4;Q:4;V:32,"Asignación y cuadrante integrado por código; entornos, usuarios y habilitaciones autorizados",FAC; SD5 autoridad externa,2028-02-16,2028-02-18,1.6.2.2.2;1.6.2.2.5.1;1.7.3.1;1.7.3.3,Recepción por etapa o control del periodo; no acredita ejecución,FAC; SD5 autoridad externa
1.6.2.3.1,Especificación y protocolo: Cobranza y medidas con decisión competente,1.6,E2 Desarrollo,Especificación y protocolo: Cobranza y medidas con decisión competente,Resultado de la ficha de familia y del paquete original; registro individual por código/ventana,"No duplicar padres, informes, ingeniería ni cobertura; no incluye horas de contraparte ni obras/adquisiciones del cliente",Criterio específico del diccionario T-14 del mismo código; evidencia sobre versión/periodo identificado,Ulysses Barreto,32,A:16;D:8;S:4;I:4,"Asignación y cuadrante integrado por código; entornos, usuarios y habilitaciones autorizados",FAC; DEC-17/18,2027-12-01,2027-12-03,BASE-E1,Recepción por etapa o control del periodo; no acredita ejecución,FAC; DEC-17/18
1.6.2.3.2,"Lógica, persistencia y contratos: Cobranza y medidas con decisión competente",1.6,E2 Desarrollo,"Lógica, persistencia y contratos: Cobranza y medidas con decisión competente",Resultado de la ficha de familia y del paquete original; registro individual por código/ventana,"No duplicar padres, informes, ingeniería ni cobertura; no incluye horas de contraparte ni obras/adquisiciones del cliente",Criterio específico del diccionario T-14 del mismo código; evidencia sobre versión/periodo identificado,Nikolai Navea,64,D:8;Q:4;V:48;I:4,"Asignación y cuadrante integrado por código; entornos, usuarios y habilitaciones autorizados",FAC; DEC-17/18,2028-01-19,2028-01-24,1.3.3.1;1.6.2.3.1;1.7.1.3;H2;H8,Recepción por etapa o control del periodo; no acredita ejecución,FAC; DEC-17/18
1.6.2.3.3,Vistas de tarea y comprobación: Cobranza y medidas con decisión competente,1.6,E2 Desarrollo,Vistas de tarea y comprobación: Cobranza y medidas con decisión competente,Resultado de la ficha de familia y del paquete original; registro individual por código/ventana,"No duplicar padres, informes, ingeniería ni cobertura; no incluye horas de contraparte ni obras/adquisiciones del cliente",Criterio específico del diccionario T-14 del mismo código; evidencia sobre versión/periodo identificado,Nikolai Navea,44,A:4;S:4;Q:4;V:32,"Asignación y cuadrante integrado por código; entornos, usuarios y habilitaciones autorizados",FAC; DEC-17/18,2028-02-03,2028-02-08,1.6.2.3.2;1.6.2.3.5.1;1.7.3.1;1.7.3.3,Recepción por etapa o control del periodo; no acredita ejecución,FAC; DEC-17/18
1.6.2.4.1,Especificación y protocolo: Expedientes de custodia y exportación íntegra,1.6,E2 Desarrollo,Especificación y protocolo: Expedientes de custodia y exportación íntegra,Resultado de la ficha de familia y del paquete original; registro individual por código/ventana,"No duplicar padres, informes, ingeniería ni cobertura; no incluye horas de contraparte ni obras/adquisiciones del cliente",Criterio específico del diccionario T-14 del mismo código; evidencia sobre versión/periodo identificado,Ulysses Barreto,32,A:16;D:8;S:4;I:4,"Asignación y cuadrante integrado por código; entornos, usuarios y habilitaciones autorizados",FAC; C07 RT-05.15; 14 abandonadas,2027-12-16,2027-12-20,BASE-E1,Recepción por etapa o control del periodo; no acredita ejecución,FAC; C07 RT-05.15; 14 abandonadas
1.6.2.4.2,"Lógica, persistencia y contratos: Expedientes de custodia y exportación íntegra",1.6,E2 Desarrollo,"Lógica, persistencia y contratos: Expedientes de custodia y exportación íntegra",Resultado de la ficha de familia y del paquete original; registro individual por código/ventana,"No duplicar padres, informes, ingeniería ni cobertura; no incluye horas de contraparte ni obras/adquisiciones del cliente",Criterio específico del diccionario T-14 del mismo código; evidencia sobre versión/periodo identificado,Nikolai Navea,64,D:8;Q:4;V:48;I:4,"Asignación y cuadrante integrado por código; entornos, usuarios y habilitaciones autorizados",FAC; C07 RT-05.15; 14 abandonadas,2028-01-20,2028-01-25,1.3.3.1;1.6.2.4.1;1.7.1.3;H2;H8,Recepción por etapa o control del periodo; no acredita ejecución,FAC; C07 RT-05.15; 14 abandonadas
1.6.2.4.3,Vistas de tarea y comprobación: Expedientes de custodia y exportación íntegra,1.6,E2 Desarrollo,Vistas de tarea y comprobación: Expedientes de custodia y exportación íntegra,Resultado de la ficha de familia y del paquete original; registro individual por código/ventana,"No duplicar padres, informes, ingeniería ni cobertura; no incluye horas de contraparte ni obras/adquisiciones del cliente",Criterio específico del diccionario T-14 del mismo código; evidencia sobre versión/periodo identificado,Nikolai Navea,44,A:4;S:4;Q:4;V:32,"Asignación y cuadrante integrado por código; entornos, usuarios y habilitaciones autorizados",FAC; C07 RT-05.15; 14 abandonadas,2028-02-16,2028-02-18,1.6.2.4.2;1.6.2.4.5.1;1.7.3.1;1.7.3.3,Recepción por etapa o control del periodo; no acredita ejecución,FAC; C07 RT-05.15; 14 abandonadas
1.2.1.1,Repositorio e infraestructura como código gobernados,1.2,E1 Desarrollo,Repositorio e infraestructura como código gobernados,Resultado de la ficha de familia y del paquete original; registro individual por código/ventana,"No duplicar padres, informes, ingeniería ni cobertura; no incluye horas de contraparte ni obras/adquisiciones del cliente","Titularidad, MFA, revisión independiente, estado recuperable y ausencia de secretos en Git quedan comprobados.",Fernando Guerrero,40,S:8;I:24;J:8,"Asignación y cuadrante integrado por código; entornos, usuarios y habilitaciones autorizados",SD4 gobierno de nube; RT-03.03,2027-02-04,2027-02-05,H1,Recepción por etapa o control del periodo; no acredita ejecución,SD4 gobierno de nube; RT-03.03
1.2.1.2,Red cloud primaria reproducible,1.2,E1 Desarrollo,Red cloud primaria reproducible,Resultado de la ficha de familia y del paquete original; registro individual por código/ventana,"No duplicar padres, informes, ingeniería ni cobertura; no incluye horas de contraparte ni obras/adquisiciones del cliente","Se reproduce la red y se comprueba acceso permitido, bloqueo de exposición de datos y diferencias del plan IaC.",Fernando Guerrero,48,S:8;I:24;O:16,"Asignación y cuadrante integrado por código; entornos, usuarios y habilitaciones autorizados",SD4 DA-01/04; RT-03.03,2027-03-01,2027-03-03,1.2.1.1,Recepción por etapa o control del periodo; no acredita ejecución,SD4 DA-01/04; RT-03.03
1.2.1.3,Servicios de persistencia y objetos habilitados,1.2,E1 Desarrollo,Servicios de persistencia y objetos habilitados,Resultado de la ficha de familia y del paquete original; registro individual por código/ventana,"No duplicar padres, informes, ingeniería ni cobertura; no incluye horas de contraparte ni obras/adquisiciones del cliente","Se identifican autoridades y recursos separados; conectividad TLS, políticas, respaldo y prohibición de acceso directo entre dominios se comprueban.",Nicolás Torfan,48,D:24;S:8;I:8;O:8,"Asignación y cuadrante integrado por código; entornos, usuarios y habilitaciones autorizados",SD4 DA-08; SD5 persistencia,2027-03-08,2027-03-09,1.2.1.2;H2,Recepción por etapa o control del periodo; no acredita ejecución,SD4 DA-08; SD5 persistencia
1.2.1.4,Plataforma de contenedores y exposición habilitada,1.2,E1 Desarrollo,Plataforma de contenedores y exposición habilitada,Resultado de la ficha de familia y del paquete original; registro individual por código/ventana,"No duplicar padres, informes, ingeniería ni cobertura; no incluye horas de contraparte ni obras/adquisiciones del cliente","Imagen de comprobación se ejecuta por despliegue reproducible, sin publicar subredes de aplicación/datos ni claves estáticas.",Fernando Guerrero,48,S:8;I:24;O:16,"Asignación y cuadrante integrado por código; entornos, usuarios y habilitaciones autorizados",SD4 arquitectura física; RT-03.03,2027-03-03,2027-03-05,1.2.1.2,Recepción por etapa o control del periodo; no acredita ejecución,SD4 arquitectura física; RT-03.03
1.2.1.5,Cadena de promoción y artefactos protegidos,1.2,E1 Desarrollo,Cadena de promoción y artefactos protegidos,Resultado de la ficha de familia y del paquete original; registro individual por código/ventana,"No duplicar padres, informes, ingeniería ni cobertura; no incluye horas de contraparte ni obras/adquisiciones del cliente",El mismo artefacto identificado se promueve sin recompilar por ambiente y una versión no autorizada queda bloqueada.,Fernando Guerrero,48,S:8;Q:8;I:16;O:16,"Asignación y cuadrante integrado por código; entornos, usuarios y habilitaciones autorizados",SD4 ambientes; BT capítulos 3/19,2027-03-05,2027-03-10,1.2.1.4,Recepción por etapa o control del periodo; no acredita ejecución,SD4 ambientes; BT capítulos 3/19
1.2.2.1,Ambiente DEV habilitado,1.2,E1 Desarrollo,Ambiente DEV habilitado,Resultado de la ficha de familia y del paquete original; registro individual por código/ventana,"No duplicar padres, informes, ingeniería ni cobertura; no incluye horas de contraparte ni obras/adquisiciones del cliente","DEV se reproduce, usa sólo datos permitidos y mantiene aislamiento y horario versionado.",Fernando Guerrero,24,Q:8;I:8;O:8,"Asignación y cuadrante integrado por código; entornos, usuarios y habilitaciones autorizados",RT-04.01; SD4 tabla 4-11,2027-03-10,2027-03-12,1.2.1.3;1.2.1.5,Recepción por etapa o control del periodo; no acredita ejecución,RT-04.01; SD4 tabla 4-11
1.2.2.2,Ambiente QA habilitado,1.2,E1 Desarrollo,Ambiente QA habilitado,Resultado de la ficha de familia y del paquete original; registro individual por código/ventana,"No duplicar padres, informes, ingeniería ni cobertura; no incluye horas de contraparte ni obras/adquisiciones del cliente","QA queda aislado de producción, identifica versiones y sólo usa datos sintéticos o anonimizados aprobados.",Davor Serey,24,Q:8;I:8;O:8,"Asignación y cuadrante integrado por código; entornos, usuarios y habilitaciones autorizados",RT-04.01; SD4 tabla 4-11,2027-03-11,2027-03-16,1.2.1.3;1.2.1.5,Recepción por etapa o control del periodo; no acredita ejecución,RT-04.01; SD4 tabla 4-11
1.2.2.3,Ambiente PREPROD habilitado,1.2,E1 Desarrollo,Ambiente PREPROD habilitado,Resultado de la ficha de familia y del paquete original; registro individual por código/ventana,"No duplicar padres, informes, ingeniería ni cobertura; no incluye horas de contraparte ni obras/adquisiciones del cliente","Se comprueban aislamiento, capacidad de restaurar configuración y control de copias excepcionales anonimizadas.",Fernando Guerrero,32,Q:8;I:8;O:16,"Asignación y cuadrante integrado por código; entornos, usuarios y habilitaciones autorizados",RT-04.01; SD4 tabla 4-11,2027-03-16,2027-03-19,1.2.2.2,Recepción por etapa o control del periodo; no acredita ejecución,RT-04.01; SD4 tabla 4-11
1.2.2.4,Ambiente PROD habilitado,1.2,E1 Desarrollo,Ambiente PROD habilitado,Resultado de la ficha de familia y del paquete original; registro individual por código/ventana,"No duplicar padres, informes, ingeniería ni cobertura; no incluye horas de contraparte ni obras/adquisiciones del cliente","Producción tiene configuración identificada, aislamiento, monitoreo y acceso nominativo; habilitar ambiente no acredita paso a producción E1.",José Lara Arce,40,S:8;Q:8;I:8;O:16,"Asignación y cuadrante integrado por código; entornos, usuarios y habilitaciones autorizados",RT-04.01; SD4 producción,2027-03-15,2027-03-18,1.2.1.3;1.2.1.4,Recepción por etapa o control del periodo; no acredita ejecución,RT-04.01; SD4 producción
1.2.2.5,Ambiente DR habilitado,1.2,E1 Desarrollo,Ambiente DR habilitado,Resultado de la ficha de familia y del paquete original; registro individual por código/ventana,"No duplicar padres, informes, ingeniería ni cobertura; no incluye horas de contraparte ni obras/adquisiciones del cliente","Se comprueban salud, replicación, permisos y restitución del entorno; capacidad de respaldo no se declara por una réplica sin evidencia.",José Lara Arce,56,D:8;S:8;Q:8;I:16;O:16,"Asignación y cuadrante integrado por código; entornos, usuarios y habilitaciones autorizados",RT-04.01; SD4 DA-17,2027-03-18,2027-03-23,1.2.2.4;1.3.1.1,Recepción por etapa o control del periodo; no acredita ejecución,RT-04.01; SD4 DA-17
1.2.3.1,Expediente de habilitación del recinto y recepción de activos,1.2,E1 Desarrollo,Expediente de habilitación del recinto y recepción de activos,Resultado de la ficha de familia y del paquete original; registro individual por código/ventana,"No duplicar padres, informes, ingeniería ni cobertura; no incluye horas de contraparte ni obras/adquisiciones del cliente","Cada habilitación tiene especificación, titular, fecha requerida y evidencia de recepción pendiente o conforme; ningún dato proyectado se atribuye al recinto existente.",Fernando Guerrero,40,S:8;I:16;O:8;J:8,"Asignación y cuadrante integrado por código; entornos, usuarios y habilitaciones autorizados",SD2 SUP-04; SD4 implantación del recinto; T-11,2027-03-17,2027-03-19,EXT-RECINTO;H2,Recepción por etapa o control del periodo; no acredita ejecución,SD2 SUP-04; SD4 implantación del recinto; T-11
1.2.3.2,Configuración de nodos locales y almacenamiento redundante,1.2,E1 Desarrollo,Configuración de nodos locales y almacenamiento redundante,Resultado de la ficha de familia y del paquete original; registro individual por código/ventana,"No duplicar padres, informes, ingeniería ni cobertura; no incluye horas de contraparte ni obras/adquisiciones del cliente","Inventario y firmware corresponden a activos recibidos; restauración de configuración, salud de discos y aislamiento se comprueban.",José Lara Arce,48,S:8;Q:8;I:8;O:24,"Asignación y cuadrante integrado por código; entornos, usuarios y habilitaciones autorizados",SD4 célula local; BT capítulo 8,2027-03-19,2027-03-24,1.2.3.1;EXT-EQUIPOS,Recepción por etapa o control del periodo; no acredita ejecución,SD4 célula local; BT capítulo 8
1.2.3.3,"Configuración de red local, segmentación y enlaces",1.2,E1 Desarrollo,"Configuración de red local, segmentación y enlaces",Resultado de la ficha de familia y del paquete original; registro individual por código/ventana,"No duplicar padres, informes, ingeniería ni cobertura; no incluye horas de contraparte ni obras/adquisiciones del cliente",Rutas autorizadas y segmentación se verifican; fallos de un enlace no abren acceso no autorizado ni exponen bases de datos.,Fernando Guerrero,56,S:8;Q:8;I:24;O:16,"Asignación y cuadrante integrado por código; entornos, usuarios y habilitaciones autorizados",SD4 DA-01 y enlaces WAN; SD2 habilitaciones,2027-03-25,2027-04-01,1.2.3.1;EXT-RED,Recepción por etapa o control del periodo; no acredita ejecución,SD4 DA-01 y enlaces WAN; SD2 habilitaciones
1.2.3.4,Gestión y protección de terminales de referencia,1.2,E1 Desarrollo,Gestión y protección de terminales de referencia,Resultado de la ficha de familia y del paquete original; registro individual por código/ventana,"No duplicar padres, informes, ingeniería ni cobertura; no incluye horas de contraparte ni obras/adquisiciones del cliente","Se verifican enrolamiento, bloqueo, pérdida, política, actualización y cobertura efectiva; la selección de una licencia no equivale a cobertura comprobada.",Bruno Toro,40,S:16;Q:8;O:16,"Asignación y cuadrante integrado por código; entornos, usuarios y habilitaciones autorizados",SD4 DA-10/19; T-11; BT capítulo 8,2027-04-01,2027-04-06,1.2.3.3;1.3.1.2;EXT-LICENCIAS,Recepción por etapa o control del periodo; no acredita ejecución,SD4 DA-10/19; T-11; BT capítulo 8
1.2.3.5,Configuración de concentradores y broker de borde,1.2,E1 Desarrollo,Configuración de concentradores y broker de borde,Resultado de la ficha de familia y del paquete original; registro individual por código/ventana,"No duplicar padres, informes, ingeniería ni cobertura; no incluye horas de contraparte ni obras/adquisiciones del cliente","Cada concentrador tiene activo, identidad, UTC, muestreo por minuto, agregado cada 15 minutos y cola de 24 horas comprobados con señales de prueba.",Fernando Guerrero,48,S:8;Q:8;I:16;O:16,"Asignación y cuadrante integrado por código; entornos, usuarios y habilitaciones autorizados",SD4 DA-09; diez concentradores,2027-04-01,2027-04-06,1.2.3.3;1.3.1.1;EXT-TELEMETRIA,Recepción por etapa o control del periodo; no acredita ejecución,SD4 DA-09; diez concentradores
1.2.4.1,Observabilidad técnica y alertas habilitadas,1.2,E1 Desarrollo,Observabilidad técnica y alertas habilitadas,Resultado de la ficha de familia y del paquete original; registro individual por código/ventana,"No duplicar padres, informes, ingeniería ni cobertura; no incluye horas de contraparte ni obras/adquisiciones del cliente","Las fallas simuladas generan alerta con activo, correlación y responsable; se comprueban cobertura y falta de agente.",José Lara Arce,48,S:8;Q:8;I:8;O:24,"Asignación y cuadrante integrado por código; entornos, usuarios y habilitaciones autorizados",SD4 observabilidad; E-25 H3,2027-03-24,2027-03-30,1.2.2.3;1.2.2.4;1.2.3.2,Recepción por etapa o control del periodo; no acredita ejecución,SD4 observabilidad; E-25 H3
1.2.4.2,Procedimientos de respaldo y restauración técnica,1.2,E1 Desarrollo,Procedimientos de respaldo y restauración técnica,Resultado de la ficha de familia y del paquete original; registro individual por código/ventana,"No duplicar padres, informes, ingeniería ni cobertura; no incluye horas de contraparte ni obras/adquisiciones del cliente","Una copia identificada se restaura con integridad, permisos y tiempos registrados; la existencia de backup no sustituye su restauración.",José Lara Arce,48,D:16;S:8;Q:8;O:16,"Asignación y cuadrante integrado por código; entornos, usuarios y habilitaciones autorizados",SD4 continuidad; BT capítulo 15,2027-03-23,2027-03-29,1.2.1.3;1.2.2.5,Recepción por etapa o control del periodo; no acredita ejecución,SD4 continuidad; BT capítulo 15
1.2.4.3,Expediente técnico de entrega de cinco ambientes,1.2,E1 Desarrollo,Expediente técnico de entrega de cinco ambientes,Resultado de la ficha de familia y del paquete original; registro individual por código/ventana,"No duplicar padres, informes, ingeniería ni cobertura; no incluye horas de contraparte ni obras/adquisiciones del cliente","DEV, QA, PREPROD, PROD y DR tienen evidencia y pendientes identificados; condiciones bloqueantes impiden recepción H3.",Fernando Guerrero,40,Q:16;I:8;O:8;J:8,"Asignación y cuadrante integrado por código; entornos, usuarios y habilitaciones autorizados",RT-04.01; E-25 H3,2027-04-14,2027-04-19,1.2.2.1;1.2.2.2;1.2.2.3;1.2.2.4;1.2.2.5;1.2.3.1;1.2.3.2;1.2.3.3;1.2.3.4;1.2.3.5;1.2.3.7.1;1.2.3.7.10;1.2.3.7.2;1.2.3.7.3;1.2.3.7.4;1.2.3.7.5;1.2.3.7.6;1.2.3.7.7;1.2.3.7.8;1.2.3.7.9;1.2.4.1;1.2.4.2,Recepción por etapa o control del periodo; no acredita ejecución,RT-04.01; E-25 H3
1.3.1.1,"Gestión de claves, secretos y certificados",1.3,E1 Desarrollo,"Gestión de claves, secretos y certificados",Resultado de la ficha de familia y del paquete original; registro individual por código/ventana,"No duplicar padres, informes, ingeniería ni cobertura; no incluye horas de contraparte ni obras/adquisiciones del cliente","Credenciales temporales, alcance mínimo, revocación, rotación y lectura autorizada quedan comprobados sin secretos en repositorio.",Bruno Toro,40,S:24;I:8;O:8,"Asignación y cuadrante integrado por código; entornos, usuarios y habilitaciones autorizados",SD4 seguridad y DA-16; BT capítulos 3/18,2027-03-01,2027-03-02,1.2.1.1,Recepción por etapa o control del periodo; no acredita ejecución,SD4 seguridad y DA-16; BT capítulos 3/18
1.3.1.2,Identidad central y federación configuradas,1.3,E1 Desarrollo,Identidad central y federación configuradas,Resultado de la ficha de familia y del paquete original; registro individual por código/ventana,"No duplicar padres, informes, ingeniería ni cobertura; no incluye horas de contraparte ni obras/adquisiciones del cliente",Se rechazan cuentas compartidas y acceso sin factor exigido; recuperación DR no presupone replicación de contraseñas no soportada.,Bruno Toro,48,S:24;Q:8;I:8;O:8,"Asignación y cuadrante integrado por código; entornos, usuarios y habilitaciones autorizados",SD4 DA-16 y región secundaria,2027-03-04,2027-03-09,1.3.1.1;EXT-IDENTIDAD,Recepción por etapa o control del periodo; no acredita ejecución,SD4 DA-16 y región secundaria
1.3.1.3,Matriz de permisos y separación de funciones,1.3,E1 Desarrollo,Matriz de permisos y separación de funciones,Resultado de la ficha de familia y del paquete original; registro individual por código/ventana,"No duplicar padres, informes, ingeniería ni cobertura; no incluye horas de contraparte ni obras/adquisiciones del cliente","Cada operación tiene actor, ámbito y denegación; el cliente valida las decisiones y no quedan permisos globales implícitos.",Bruno Toro,40,A:16;S:16;I:8,"Asignación y cuadrante integrado por código; entornos, usuarios y habilitaciones autorizados",SD3 nueve dominios; SD4 DA-16,2027-01-25,2027-01-27,H1,Recepción por etapa o control del periodo; no acredita ejecución,SD3 nueve dominios; SD4 DA-16
1.3.2.1,Autoridad local de acceso implementada,1.3,E1 Desarrollo,Autoridad local de acceso implementada,Resultado de la ficha de familia y del paquete original; registro individual por código/ventana,"No duplicar padres, informes, ingeniería ni cobertura; no incluye horas de contraparte ni obras/adquisiciones del cliente","Se comprueban identidad nominativa, ámbito y vencimiento máximo de 24 horas desde emisión, con denegación de administración global.",Bruno Toro,64,S:16;Q:8;V:32;I:8,"Asignación y cuadrante integrado por código; entornos, usuarios y habilitaciones autorizados",SD4 DA-16; continuidad local,2027-07-01,2027-07-06,1.2.3.2;1.3.1.2;1.3.1.3,Recepción por etapa o control del periodo; no acredita ejecución,SD4 DA-16; continuidad local
1.3.2.2,Revocación y actualización de habilitación local,1.3,E1 Desarrollo,Revocación y actualización de habilitación local,Resultado de la ficha de familia y del paquete original; registro individual por código/ventana,"No duplicar padres, informes, ingeniería ni cobertura; no incluye horas de contraparte ni obras/adquisiciones del cliente",Bajas y cambios se aplican con trazabilidad y fallo de fuente visible; no se mantiene acceso por caché indefinida.,Bruno Toro,56,S:8;Q:8;V:32;I:8,"Asignación y cuadrante integrado por código; entornos, usuarios y habilitaciones autorizados",SD4 autoridad local; SD2 fuente laboral,2027-07-19,2027-07-22,1.3.2.1;EXT-IDENTIDAD,Recepción por etapa o control del periodo; no acredita ejecución,SD4 autoridad local; SD2 fuente laboral
1.3.3.1,Registro de auditoría protegido,1.3,E1 Desarrollo,Registro de auditoría protegido,Resultado de la ficha de familia y del paquete original; registro individual por código/ventana,"No duplicar padres, informes, ingeniería ni cobertura; no incluye horas de contraparte ni obras/adquisiciones del cliente","Actor, origen, instante y versión quedan preservados; alteración, acceso indebido y falta de envío se detectan.",Bruno Toro,64,S:16;Q:8;V:32;I:8,"Asignación y cuadrante integrado por código; entornos, usuarios y habilitaciones autorizados",SD4 auditoría; SD5 eventos,2027-07-05,2027-07-08,1.2.1.3;1.3.1.1,Recepción por etapa o control del periodo; no acredita ejecución,SD4 auditoría; SD5 eventos
1.3.3.2,Consentimiento y restricciones de finalidad implementados,1.3,E1 Desarrollo,Consentimiento y restricciones de finalidad implementados,Resultado de la ficha de familia y del paquete original; registro individual por código/ventana,"No duplicar padres, informes, ingeniería ni cobertura; no incluye horas de contraparte ni obras/adquisiciones del cliente","Alta, revocación, finalidad y conservación tienen decisión trazada; la revocación impide nuevos usos dependientes sin borrar evidencia obligatoria.",Bruno Toro,64,A:8;S:16;Q:8;V:32,"Asignación y cuadrante integrado por código; entornos, usuarios y habilitaciones autorizados",SD5 Auditoría y seguridad; SD13 reutilización,2027-08-04,2027-08-09,1.3.1.3;1.3.3.1;H2,Recepción por etapa o control del periodo; no acredita ejecución,SD5 Auditoría y seguridad; SD13 reutilización
1.3.4.1,Modelo de amenazas y plan de seguridad aprobables,1.3,E1 Desarrollo,Modelo de amenazas y plan de seguridad aprobables,Resultado de la ficha de familia y del paquete original; registro individual por código/ventana,"No duplicar padres, informes, ingeniería ni cobertura; no incluye horas de contraparte ni obras/adquisiciones del cliente","Cada amenaza relevante tiene control, cuenta de trabajo y método de verificación; se identifican pendientes antes de H2.",Bruno Toro,48,S:32;Q:8;I:8,"Asignación y cuadrante integrado por código; entornos, usuarios y habilitaciones autorizados",E-25 H2; SD4 seguridad,2027-01-27,2027-02-01,H1,Recepción por etapa o control del periodo; no acredita ejecución,E-25 H2; SD4 seguridad
1.3.4.2,"Detección, cobertura y respuesta técnica configuradas",1.3,E1 Desarrollo,"Detección, cobertura y respuesta técnica configuradas",Resultado de la ficha de familia y del paquete original; registro individual por código/ventana,"No duplicar padres, informes, ingeniería ni cobertura; no incluye horas de contraparte ni obras/adquisiciones del cliente","Se registra alcance efectivo por activo y fallo de agente; una alerta de prueba produce contención, evidencia y responsable identificados.",Bruno Toro,48,S:24;Q:8;O:16,"Asignación y cuadrante integrado por código; entornos, usuarios y habilitaciones autorizados",SD4 DA-10; GuardDuty y protección de terminales,2027-04-09,2027-04-15,1.2.3.4;1.2.4.1;EXT-LICENCIAS,Recepción por etapa o control del periodo; no acredita ejecución,SD4 DA-10; GuardDuty y protección de terminales
1.3.4.3,Expediente de privacidad y control de datos de prueba,1.3,E1 Desarrollo,Expediente de privacidad y control de datos de prueba,Resultado de la ficha de familia y del paquete original; registro individual por código/ventana,"No duplicar padres, informes, ingeniería ni cobertura; no incluye horas de contraparte ni obras/adquisiciones del cliente","Cada conjunto tiene finalidad, permiso y conservación; se impide uso productivo en DEV y uso de copia no aprobada en QA/PREPROD.",Bruno Toro,40,A:8;D:8;S:16;Q:8,"Asignación y cuadrante integrado por código; entornos, usuarios y habilitaciones autorizados",SD4 ambientes; SD5 sensibilidad,2027-03-17,2027-03-22,1.2.2.2;H2,Recepción por etapa o control del periodo; no acredita ejecución,SD4 ambientes; SD5 sensibilidad
1.7.1.1,Contratos de interfaces y eventos comunes,1.7,E1 Desarrollo,Contratos de interfaces y eventos comunes,Resultado de la ficha de familia y del paquete original; registro individual por código/ventana,"No duplicar padres, informes, ingeniería ni cobertura; no incluye horas de contraparte ni obras/adquisiciones del cliente",Contratos tienen versiones y ejemplos de rechazo y reintento y no conceden acceso directo a tablas de otro dominio.,Fernando Guerrero,40,A:8;S:8;I:24,"Asignación y cuadrante integrado por código; entornos, usuarios y habilitaciones autorizados",SD4 DA-05/06/07; SD5 contratos,2027-03-19,2027-03-23,H2,Recepción por etapa o control del periodo; no acredita ejecución,SD4 DA-05/06/07; SD5 contratos
1.7.1.2,Infraestructura de mensajería y DLQ configurada,1.7,E1 Desarrollo,Infraestructura de mensajería y DLQ configurada,Resultado de la ficha de familia y del paquete original; registro individual por código/ventana,"No duplicar padres, informes, ingeniería ni cobertura; no incluye horas de contraparte ni obras/adquisiciones del cliente","Permisos, entrega, reintento, DLQ y monitoreo se comprueban con mensajes de prueba sin duplicar hechos de negocio.",Fernando Guerrero,48,S:8;Q:8;I:16;O:16,"Asignación y cuadrante integrado por código; entornos, usuarios y habilitaciones autorizados",SD4 DA-07,2027-05-17,2027-05-20,1.2.1.2;1.3.1.1;1.7.1.1,Recepción por etapa o control del periodo; no acredita ejecución,SD4 DA-07
1.7.1.3,"Biblioteca de outbox, idempotencia y correlación",1.7,E1 Desarrollo,"Biblioteca de outbox, idempotencia y correlación",Resultado de la ficha de familia y del paquete original; registro individual por código/ventana,"No duplicar padres, informes, ingeniería ni cobertura; no incluye horas de contraparte ni obras/adquisiciones del cliente","Duplicados, reintentos y fallo entre escritura/emisión conservan un efecto y recuperación trazable.",Fernando Guerrero,56,Q:8;V:40;I:8,"Asignación y cuadrante integrado por código; entornos, usuarios y habilitaciones autorizados",SD4 DA-05/06; SD5 autoridad,2027-07-01,2027-07-05,1.7.1.1;1.7.1.2,Recepción por etapa o control del periodo; no acredita ejecución,SD4 DA-05/06; SD5 autoridad
1.7.2.1,Sincronizador de lotes y confirmaciones,1.7,E1 Desarrollo,Sincronizador de lotes y confirmaciones,Resultado de la ficha de familia y del paquete original; registro individual por código/ventana,"No duplicar padres, informes, ingeniería ni cobertura; no incluye horas de contraparte ni obras/adquisiciones del cliente",La cola sólo se elimina tras confirmación; interrupción y reintento preservan orden e integridad y muestran pendientes.,Fernando Guerrero,64,D:8;Q:8;V:40;I:8,"Asignación y cuadrante integrado por código; entornos, usuarios y habilitaciones autorizados",SD4 coordinador de sincronización; SD5,2027-07-21,2027-07-26,1.2.3.2;1.3.1.1;1.7.1.3,Recepción por etapa o control del periodo; no acredita ejecución,SD4 coordinador de sincronización; SD5
1.7.2.2,Conciliación de autoridad y conflictos implementada,1.7,E1 Desarrollo,Conciliación de autoridad y conflictos implementada,Resultado de la ficha de familia y del paquete original; registro individual por código/ventana,"No duplicar padres, informes, ingeniería ni cobertura; no incluye horas de contraparte ni obras/adquisiciones del cliente",Conflictos se conservan y escalan sin última escritura silenciosa; decisión y replay tienen evidencia.,Nicolás Torfan,64,D:16;Q:8;V:32;I:8,"Asignación y cuadrante integrado por código; entornos, usuarios y habilitaciones autorizados",SD4 DA-05; SD5 sincronización,2027-07-26,2027-07-29,1.7.2.1;H2,Recepción por etapa o control del periodo; no acredita ejecución,SD4 DA-05; SD5 sincronización
1.7.2.3,Ingesta y consolidación de telemetría implementadas,1.7,E1 Desarrollo,Ingesta y consolidación de telemetría implementadas,Resultado de la ficha de familia y del paquete original; registro individual por código/ventana,"No duplicar padres, informes, ingeniería ni cobertura; no incluye horas de contraparte ni obras/adquisiciones del cliente","Se validan secuencia, UTC, unidad, calidad y origen; no se suman totalizadores ni se habilita consumo directo del broker desde cloud.",Fernando Guerrero,64,D:8;Q:8;V:40;I:8,"Asignación y cuadrante integrado por código; entornos, usuarios y habilitaciones autorizados",SD4 DA-09; SD5 MediciónConsolidada,2027-07-19,2027-07-21,1.2.3.5;1.7.1.3;H2,Recepción por etapa o control del periodo; no acredita ejecución,SD4 DA-09; SD5 MediciónConsolidada
1.7.3.1,Base Android de operación en terreno,1.7,E1 Desarrollo,Base Android de operación en terreno,Resultado de la ficha de familia y del paquete original; registro individual por código/ventana,"No duplicar padres, informes, ingeniería ni cobertura; no incluye horas de contraparte ni obras/adquisiciones del cliente",La sesión limita rol y ámbito; reinicio conserva pendientes protegidos y el canal no accede directo a la base.,Nikolai Navea,56,S:8;Q:8;V:40,"Asignación y cuadrante integrado por código; entornos, usuarios y habilitaciones autorizados",SD4 DA-19; SD3 canal móvil,2027-07-19,2027-07-21,1.3.1.2;1.3.2.1;1.7.1.1,Recepción por etapa o control del periodo; no acredita ejecución,SD4 DA-19; SD3 canal móvil
1.7.3.2,"Cola móvil, evidencia y sincronización de canal",1.7,E1 Desarrollo,"Cola móvil, evidencia y sincronización de canal",Resultado de la ficha de familia y del paquete original; registro individual por código/ventana,"No duplicar padres, informes, ingeniería ni cobertura; no incluye horas de contraparte ni obras/adquisiciones del cliente","Desconexión, reinicio y ACK tardío no pierden fotos/hechos ni crean duplicados; permisos vencidos bloquean nuevas acciones.",Nikolai Navea,64,S:8;Q:8;V:40;I:8,"Asignación y cuadrante integrado por código; entornos, usuarios y habilitaciones autorizados",SD4 Android; SD5 evidencia offline,2027-07-28,2027-08-02,1.7.2.1;1.7.3.1,Recepción por etapa o control del periodo; no acredita ejecución,SD4 Android; SD5 evidencia offline
1.7.3.3,Base de portal y consola accesibles,1.7,E1 Desarrollo,Base de portal y consola accesibles,Resultado de la ficha de familia y del paquete original; registro individual por código/ventana,"No duplicar padres, informes, ingeniería ni cobertura; no incluye horas de contraparte ni obras/adquisiciones del cliente","Se comprueban teclado, foco, mensajes, aislamiento de sesión e idiomas previstos; la base no declara WCAG integral de toda aplicación.",Nikolai Navea,56,S:8;Q:8;V:40,"Asignación y cuadrante integrado por código; entornos, usuarios y habilitaciones autorizados",SD4 DA-19; BT accesibilidad,2027-07-02,2027-07-07,1.3.1.2;1.7.1.1,Recepción por etapa o control del periodo; no acredita ejecución,SD4 DA-19; BT accesibilidad
1.7.4.1,Servicio común de notificaciones y preferencias,1.7,E1 Desarrollo,Servicio común de notificaciones y preferencias,Resultado de la ficha de familia y del paquete original; registro individual por código/ventana,"No duplicar padres, informes, ingeniería ni cobertura; no incluye horas de contraparte ni obras/adquisiciones del cliente",Un fallo conserva estado y responsable; mensajes repetidos no duplican efectos y cada envío respeta autorización y finalidad.,Fernando Guerrero,56,S:8;Q:8;V:32;I:8,"Asignación y cuadrante integrado por código; entornos, usuarios y habilitaciones autorizados",SD3 notificaciones; SD4 SNS,2027-08-09,2027-08-12,1.3.3.2;1.7.1.2,Recepción por etapa o control del periodo; no acredita ejecución,SD3 notificaciones; SD4 SNS
1.7.4.2,Adaptador con sistema laboral y fuente de identidad,1.7,E1 Desarrollo,Adaptador con sistema laboral y fuente de identidad,Resultado de la ficha de familia y del paquete original; registro individual por código/ventana,"No duplicar padres, informes, ingeniería ni cobertura; no incluye horas de contraparte ni obras/adquisiciones del cliente","Cambios y fallos quedan visibles, se conserva persona-identidad y se rechaza tratar una respuesta vencida como habilitación actual.",Fernando Guerrero,56,S:8;Q:8;V:32;I:8,"Asignación y cuadrante integrado por código; entornos, usuarios y habilitaciones autorizados",SD4 autoridad local; SD3 frontera,2027-07-22,2027-07-27,1.3.2.2;1.7.1.1;EXT-IDENTIDAD,Recepción por etapa o control del periodo; no acredita ejecución,SD4 autoridad local; SD3 frontera
1.7.4.3,Adaptador contable y conciliación técnica,1.7,E2 Desarrollo,Adaptador contable y conciliación técnica,Resultado de la ficha de familia y del paquete original; registro individual por código/ventana,"No duplicar padres, informes, ingeniería ni cobertura; no incluye horas de contraparte ni obras/adquisiciones del cliente","Acuse, rechazo, reintentos e identificadores se conservan; no se emite un documento tributario desde un canal no autorizado.",Fernando Guerrero,56,D:8;Q:8;V:32;I:8,"Asignación y cuadrante integrado por código; entornos, usuarios y habilitaciones autorizados",SD3 Finanzas y cobranza; SD4 integración,2028-01-20,2028-01-25,1.7.1.1;BASE-ADM;EXT-CONTABLE,Recepción por etapa o control del periodo; no acredita ejecución,SD3 Finanzas y cobranza; SD4 integración
1.7.4.4,Adaptador de pagos y webhooks protegidos,1.7,E2 Desarrollo,Adaptador de pagos y webhooks protegidos,Resultado de la ficha de familia y del paquete original; registro individual por código/ventana,"No duplicar padres, informes, ingeniería ni cobertura; no incluye horas de contraparte ni obras/adquisiciones del cliente","Eventos repetidos o fuera de orden no crean otro pago; rechazo, conciliación pendiente y origen quedan trazados.",Fernando Guerrero,56,S:8;Q:8;V:32;I:8,"Asignación y cuadrante integrado por código; entornos, usuarios y habilitaciones autorizados",SD3 pagos; SD4 integraciones,2028-01-17,2028-01-20,1.7.1.1;BASE-ADM;EXT-PAGOS,Recepción por etapa o control del periodo; no acredita ejecución,SD3 pagos; SD4 integraciones
1.9.1.1.1,"Flujo, estados y matriz de roles revisados",1.9,E2 Desarrollo,"Flujo, estados y matriz de roles revisados",Resultado de la ficha de familia y del paquete original; registro individual por código/ventana,"No duplicar padres, informes, ingeniería ni cobertura; no incluye horas de contraparte ni obras/adquisiciones del cliente","Cada transición tiene actor, precondición, rechazo y autoridad identificados; se valida el aislamiento entre armadores y contratistas.",Fernando Guerrero,32,A:8;S:8;I:16,"Asignación y cuadrante integrado por código; entornos, usuarios y habilitaciones autorizados",,2027-12-01,2027-12-03,BASE-CTR,Recepción por etapa o control del periodo; no acredita ejecución,
1.9.1.1.2,Especificación de las interfaces,1.9,E2 Desarrollo,Especificación de las interfaces,Resultado de la ficha de familia y del paquete original; registro individual por código/ventana,"No duplicar padres, informes, ingeniería ni cobertura; no incluye horas de contraparte ni obras/adquisiciones del cliente","Contratos OpenAPI y eventos versionados identifican errores, idempotencia, correlación y pruebas de compatibilidad.",Fernando Guerrero,40,S:8;V:8;I:24,"Asignación y cuadrante integrado por código; entornos, usuarios y habilitaciones autorizados",,2027-12-16,2027-12-17,1.9.1.1.1,Recepción por etapa o control del periodo; no acredita ejecución,
1.9.1.1.3,Protocolo de medición y aceptación,1.9,E2 Desarrollo,Protocolo de medición y aceptación,Resultado de la ficha de familia y del paquete original; registro individual por código/ventana,"No duplicar padres, informes, ingeniería ni cobertura; no incluye horas de contraparte ni obras/adquisiciones del cliente","Quedan fijados cohorte, registro de primera respuesta, tratamiento de casos abiertos y criterio de aceptación antes de medir.",Davor Serey,24,A:8;Q:16,"Asignación y cuadrante integrado por código; entornos, usuarios y habilitaciones autorizados",,2028-01-05,2028-01-11,1.9.1.1.1,Recepción por etapa o control del periodo; no acredita ejecución,
1.9.1.2.1,Servicio de solicitudes y transiciones,1.9,E2 Desarrollo,Servicio de solicitudes y transiciones,Resultado de la ficha de familia y del paquete original; registro individual por código/ventana,"No duplicar padres, informes, ingeniería ni cobertura; no incluye horas de contraparte ni obras/adquisiciones del cliente",Casos válidos e inválidos y escrituras repetidas conservan una sola transición autorizada y su evidencia.,Nikolai Navea,56,Q:8;V:48,"Asignación y cuadrante integrado por código; entornos, usuarios y habilitaciones autorizados",,2028-01-06,2028-01-12,1.9.1.1.2,Recepción por etapa o control del periodo; no acredita ejecución,
1.9.1.2.2,Formularios y vistas en AUT,1.9,E2 Desarrollo,Formularios y vistas en AUT,Resultado de la ficha de familia y del paquete original; registro individual por código/ventana,"No duplicar padres, informes, ingeniería ni cobertura; no incluye horas de contraparte ni obras/adquisiciones del cliente",Armador y contratista sólo ven y modifican su ámbito; las vistas muestran estados y errores y admiten navegación accesible.,Nikolai Navea,48,Q:8;V:40,"Asignación y cuadrante integrado por código; entornos, usuarios y habilitaciones autorizados",,2028-01-17,2028-01-19,1.9.1.1.2,Recepción por etapa o control del periodo; no acredita ejecución,
1.9.1.2.3,Historial y registro asistido auditable,1.9,E2 Desarrollo,Historial y registro asistido auditable,Resultado de la ficha de familia y del paquete original; registro individual por código/ventana,"No duplicar padres, informes, ingeniería ni cobertura; no incluye horas de contraparte ni obras/adquisiciones del cliente","Cada cambio registra actor, fecha, estado anterior y nuevo; el ingreso asistido identifica quién lo realizó.",Nikolai Navea,48,S:8;Q:8;V:32,"Asignación y cuadrante integrado por código; entornos, usuarios y habilitaciones autorizados",,2028-02-01,2028-02-04,1.9.1.2.1,Recepción por etapa o control del periodo; no acredita ejecución,
1.9.1.3.1,Conexiones con CTR y VAR verificadas,1.9,E2 Desarrollo,Conexiones con CTR y VAR verificadas,Resultado de la ficha de familia y del paquete original; registro individual por código/ventana,"No duplicar padres, informes, ingeniería ni cobertura; no incluye horas de contraparte ni obras/adquisiciones del cliente",Solicitudes y faenas se vinculan por contrato sin escribir tablas de otro dominio y toleran reintentos.,Fernando Guerrero,48,Q:8;V:24;I:16,"Asignación y cuadrante integrado por código; entornos, usuarios y habilitaciones autorizados",,2028-02-03,2028-02-08,1.9.1.2.1,Recepción por etapa o control del periodo; no acredita ejecución,
1.9.1.3.2,Identidad y vínculo de armador integrados,1.9,E2 Desarrollo,Identidad y vínculo de armador integrados,Resultado de la ficha de familia y del paquete original; registro individual por código/ventana,"No duplicar padres, informes, ingeniería ni cobertura; no incluye horas de contraparte ni obras/adquisiciones del cliente",Los casos de suplantación y acceso cruzado se rechazan y los vínculos autorizados se comprueban.,Bruno Toro,40,S:16;Q:8;V:16,"Asignación y cuadrante integrado por código; entornos, usuarios y habilitaciones autorizados",,2028-02-17,2028-02-22,1.9.1.2.2,Recepción por etapa o control del periodo; no acredita ejecución,
1.9.1.3.3,Notificaciones y reintentos integrados,1.9,E2 Desarrollo,Notificaciones y reintentos integrados,Resultado de la ficha de familia y del paquete original; registro individual por código/ventana,"No duplicar padres, informes, ingeniería ni cobertura; no incluye horas de contraparte ni obras/adquisiciones del cliente",Avisos fallidos quedan visibles y los reintentos no duplican efectos ni conceden una habilitación.,Nikolai Navea,40,Q:8;V:24;I:8,"Asignación y cuadrante integrado por código; entornos, usuarios y habilitaciones autorizados",,2028-02-16,2028-02-18,1.9.1.3.1,Recepción por etapa o control del periodo; no acredita ejecución,
1.9.1.4.1,Informe de pruebas funcionales,1.9,E2 Desarrollo,Informe de pruebas funcionales,Resultado de la ficha de familia y del paquete original; registro individual por código/ventana,"No duplicar padres, informes, ingeniería ni cobertura; no incluye horas de contraparte ni obras/adquisiciones del cliente","Se comprueban estados, duplicados, concurrencia, habilitación y flujos completos; cada defecto queda trazado.",Davor Serey,32,A:8;Q:24,"Asignación y cuadrante integrado por código; entornos, usuarios y habilitaciones autorizados",,2028-03-01,2028-03-03,1.9.1.2.3;1.9.1.3.1;1.9.1.3.2;1.9.1.3.3,Recepción por etapa o control del periodo; no acredita ejecución,
1.9.1.4.2,Informe de seguridad y recuperación,1.9,E2 Desarrollo,Informe de seguridad y recuperación,Resultado de la ficha de familia y del paquete original; registro individual por código/ventana,"No duplicar padres, informes, ingeniería ni cobertura; no incluye horas de contraparte ni obras/adquisiciones del cliente",No quedan vulnerabilidades críticas o altas abiertas; aislamiento y recuperación se prueban sobre versión identificada.,Bruno Toro,40,S:16;Q:16;O:8,"Asignación y cuadrante integrado por código; entornos, usuarios y habilitaciones autorizados",,2028-03-21,2028-03-27,1.9.1.4.1,Recepción por etapa o control del periodo; no acredita ejecución,
1.9.1.5.1,Guía operativa y capacitación registrada,1.9,E2 Marcha blanca,Guía operativa y capacitación registrada,Resultado de la ficha de familia y del paquete original; registro individual por código/ventana,"No duplicar padres, informes, ingeniería ni cobertura; no incluye horas de contraparte ni obras/adquisiciones del cliente","Los participantes reproducen los flujos; quedan material, asistencia, evaluación y soporte identificados.",José Lara Arce,32,A:8;Q:8;L:16,"Asignación y cuadrante integrado por código; entornos, usuarios y habilitaciones autorizados",,2028-05-29,2028-05-31,1.9.1.4.2;1.9.1.5.3;OBS-IN1-BASE,Recepción por etapa o control del periodo; no acredita ejecución,
1.9.1.5.2,Registro base de la primera quincena,1.9,E2 Marcha blanca,Registro base de la primera quincena,Resultado de la ficha de familia y del paquete original; registro individual por código/ventana,"No duplicar padres, informes, ingeniería ni cobertura; no incluye horas de contraparte ni obras/adquisiciones del cliente","Las solicitudes de la base conservan apertura, respuesta y casos sin cerrar; el flujo adicional sigue desactivado para la cohorte.",Davor Serey,16,A:8;Q:8,"Asignación y cuadrante integrado por código; entornos, usuarios y habilitaciones autorizados",,2028-05-04,2028-05-08,1.9.1.1.3;1.9.1.4.2,Recepción por etapa o control del periodo; no acredita ejecución,
1.9.1.5.3,Registro base de la segunda quincena,1.9,E2 Marcha blanca,Registro base de la segunda quincena,Resultado de la ficha de familia y del paquete original; registro individual por código/ventana,"No duplicar padres, informes, ingeniería ni cobertura; no incluye horas de contraparte ni obras/adquisiciones del cliente","El segundo registro usa el mismo método y cohorte, identifica exclusiones y cierra el período base.",Davor Serey,16,A:8;Q:8,"Asignación y cuadrante integrado por código; entornos, usuarios y habilitaciones autorizados",,2028-05-16,2028-05-18,1.9.1.5.2,Recepción por etapa o control del periodo; no acredita ejecución,
1.9.1.5.4,Registro de piloto de la primera quincena,1.9,E2 Marcha blanca,Registro de piloto de la primera quincena,Resultado de la ficha de familia y del paquete original; registro individual por código/ventana,"No duplicar padres, informes, ingeniería ni cobertura; no incluye horas de contraparte ni obras/adquisiciones del cliente","Se conserva el universo de solicitudes y la primera respuesta de cada una, incluidos rechazos y casos abiertos.",José Lara Arce,24,A:8;Q:8;L:8,"Asignación y cuadrante integrado por código; entornos, usuarios y habilitaciones autorizados",,2028-06-05,2028-06-07,1.9.1.5.1,Recepción por etapa o control del periodo; no acredita ejecución,
1.9.1.5.5,Registro de piloto de la segunda quincena,1.9,E2 Marcha blanca,Registro de piloto de la segunda quincena,Resultado de la ficha de familia y del paquete original; registro individual por código/ventana,"No duplicar padres, informes, ingeniería ni cobertura; no incluye horas de contraparte ni obras/adquisiciones del cliente","El registro conserva método comparable, incidencias, cobertura y pérdidas de observación explicadas.",José Lara Arce,24,A:8;Q:8;L:8,"Asignación y cuadrante integrado por código; entornos, usuarios y habilitaciones autorizados",,2028-06-19,2028-06-22,1.9.1.5.4,Recepción por etapa o control del periodo; no acredita ejecución,
1.9.1.5.6,Informe comparativo y acta de evaluación,1.9,E2 Marcha blanca,Informe comparativo y acta de evaluación,Resultado de la ficha de familia y del paquete original; registro individual por código/ventana,"No duplicar padres, informes, ingeniería ni cobertura; no incluye horas de contraparte ni obras/adquisiciones del cliente",La mediana y la trazabilidad se comparan con la base sin inventar beneficio; la decisión y observaciones quedan registradas.,Davor Serey,32,A:8;Q:16;J:8,"Asignación y cuadrante integrado por código; entornos, usuarios y habilitaciones autorizados",,2028-06-29,2028-07-04,1.9.1.5.5;OBS-IN1-PILOTO,Recepción por etapa o control del periodo; no acredita ejecución,
1.9.1.6.1,Servicio desplegado y transferido a operación,1.9,Aceptación final de implementación,Servicio desplegado y transferido a operación,Resultado de la ficha de familia y del paquete original; registro individual por código/ventana,"No duplicar padres, informes, ingeniería ni cobertura; no incluye horas de contraparte ni obras/adquisiciones del cliente","Versión, permisos, procedimiento, soporte y decisión de habilitación quedan recibidos; no se presenta un piloto como aceptación.",José Lara Arce,32,Q:8;O:16;L:8,"Asignación y cuadrante integrado por código; entornos, usuarios y habilitaciones autorizados",,2028-08-04,2028-08-09,1.9.1.5.6;PILOTOS-SUB,Recepción por etapa o control del periodo; no acredita ejecución,
1.9.2.1.1,Catálogo de mantenimiento y reglas de planificación definidos,1.9,E2 Desarrollo,Catálogo de mantenimiento y reglas de planificación definidos,Resultado de la ficha de familia y del paquete original; registro individual por código/ventana,"No duplicar padres, informes, ingeniería ni cobertura; no incluye horas de contraparte ni obras/adquisiciones del cliente","Cada tarea tiene condición, frecuencia, antecedente, responsable y límite de recomendación; no se diagnostica una embarcación sin evidencia.",Ulysses Barreto,32,A:24;Q:8,"Asignación y cuadrante integrado por código; entornos, usuarios y habilitaciones autorizados",,2027-12-01,2027-12-03,BASE-VAR,Recepción por etapa o control del periodo; no acredita ejecución,
1.9.2.1.2,"Ficha, responsabilidades e interfaces especificadas",1.9,E2 Desarrollo,"Ficha, responsabilidades e interfaces especificadas",Resultado de la ficha de familia y del paquete original; registro individual por código/ventana,"No duplicar padres, informes, ingeniería ni cobertura; no incluye horas de contraparte ni obras/adquisiciones del cliente","Se distinguen recomendación, aceptación del armador y ejecución por contratista; cada interfaz y permiso tiene autoridad.",Fernando Guerrero,32,A:8;S:8;I:16,"Asignación y cuadrante integrado por código; entornos, usuarios y habilitaciones autorizados",,2028-01-06,2028-01-11,1.9.1.1.2;1.9.2.1.1,Recepción por etapa o control del periodo; no acredita ejecución,
1.9.2.2.1,Ficha de ingreso de antecedentes disponible en AUT,1.9,E2 Desarrollo,Ficha de ingreso de antecedentes disponible en AUT,Resultado de la ficha de familia y del paquete original; registro individual por código/ventana,"No duplicar padres, informes, ingeniería ni cobertura; no incluye horas de contraparte ni obras/adquisiciones del cliente",Campos ausentes se identifican y no se convierten en datos técnicos confirmados; acceso restringido al armador autorizado.,Nikolai Navea,48,Q:8;V:40,"Asignación y cuadrante integrado por código; entornos, usuarios y habilitaciones autorizados",,2028-01-11,2028-01-14,1.9.2.1.2,Recepción por etapa o control del periodo; no acredita ejecución,
1.9.2.2.2,Catálogo configurable y aceptación de propuestas implementados,1.9,E2 Desarrollo,Catálogo configurable y aceptación de propuestas implementados,Resultado de la ficha de familia y del paquete original; registro individual por código/ventana,"No duplicar padres, informes, ingeniería ni cobertura; no incluye horas de contraparte ni obras/adquisiciones del cliente",Cambios de catálogo se versionan y ninguna propuesta genera una orden sin aceptación explícita.,Nikolai Navea,56,A:8;Q:8;V:40,"Asignación y cuadrante integrado por código; entornos, usuarios y habilitaciones autorizados",,2028-02-04,2028-02-09,1.9.2.2.1,Recepción por etapa o control del periodo; no acredita ejecución,
1.9.2.3.1,"Calendario integrado con posiciones, botaduras y habilitación",1.9,E2 Desarrollo,"Calendario integrado con posiciones, botaduras y habilitación",Resultado de la ficha de familia y del paquete original; registro individual por código/ventana,"No duplicar padres, informes, ingeniería ni cobertura; no incluye horas de contraparte ni obras/adquisiciones del cliente","Se detectan incompatibilidades de posición, fecha y habilitación y las decisiones conservan su origen.",Fernando Guerrero,56,Q:8;V:40;I:8,"Asignación y cuadrante integrado por código; entornos, usuarios y habilitaciones autorizados",,2028-02-17,2028-02-22,1.9.2.2.2,Recepción por etapa o control del periodo; no acredita ejecución,
1.9.2.3.2,Trabajos aceptados vinculados a solicitudes IN1,1.9,E2 Desarrollo,Trabajos aceptados vinculados a solicitudes IN1,Resultado de la ficha de familia y del paquete original; registro individual por código/ventana,"No duplicar padres, informes, ingeniería ni cobertura; no incluye horas de contraparte ni obras/adquisiciones del cliente","Cada trabajo aceptado crea o vincula una solicitud una sola vez y conserva actor, consentimiento y correlación.",Nikolai Navea,48,Q:8;V:32;I:8,"Asignación y cuadrante integrado por código; entornos, usuarios y habilitaciones autorizados",,2028-03-01,2028-03-06,1.9.1.3.1;1.9.2.3.1,Recepción por etapa o control del periodo; no acredita ejecución,
1.9.2.3.3,Permisos y notificaciones configurados,1.9,E2 Desarrollo,Permisos y notificaciones configurados,Resultado de la ficha de familia y del paquete original; registro individual por código/ventana,"No duplicar padres, informes, ingeniería ni cobertura; no incluye horas de contraparte ni obras/adquisiciones del cliente",El contratista ve sólo su encargo y los avisos no equivalen a autorización ni duplican solicitudes.,Bruno Toro,40,S:8;Q:8;V:24,"Asignación y cuadrante integrado por código; entornos, usuarios y habilitaciones autorizados",,2028-03-20,2028-03-22,1.9.2.3.2,Recepción por etapa o control del periodo; no acredita ejecución,
1.9.2.4.1,Evidencias de pruebas funcionales y de integración,1.9,E2 Marcha blanca,Evidencias de pruebas funcionales y de integración,Resultado de la ficha de familia y del paquete original; registro individual por código/ventana,"No duplicar padres, informes, ingeniería ni cobertura; no incluye horas de contraparte ni obras/adquisiciones del cliente","Se prueban propuestas, rechazo, aceptación, cambio de fecha, contratista no habilitado y reintentos.",Davor Serey,32,A:8;Q:24,"Asignación y cuadrante integrado por código; entornos, usuarios y habilitaciones autorizados",,2028-03-23,2028-03-27,1.9.2.3.3,Recepción por etapa o control del periodo; no acredita ejecución,
1.9.2.4.2,"Seguridad, recuperación y aceptación técnica",1.9,E2 Marcha blanca,"Seguridad, recuperación y aceptación técnica",Resultado de la ficha de familia y del paquete original; registro individual por código/ventana,"No duplicar padres, informes, ingeniería ni cobertura; no incluye horas de contraparte ni obras/adquisiciones del cliente","Se comprueban aislamiento, continuidad y retorno; no quedan defectos críticos o altos abiertos y se registra decisión técnica.",Bruno Toro,40,S:16;Q:16;O:8,"Asignación y cuadrante integrado por código; entornos, usuarios y habilitaciones autorizados",,2028-03-27,2028-04-03,1.9.2.4.1,Recepción por etapa o control del periodo; no acredita ejecución,
1.9.2.5.1,"Participantes inscritos, fichas y capacitación registrada",1.9,Operación,"Participantes inscritos, fichas y capacitación registrada",Resultado de la ficha de familia y del paquete original; registro individual por código/ventana,"No duplicar padres, informes, ingeniería ni cobertura; no incluye horas de contraparte ni obras/adquisiciones del cliente","Participación autorizada, fichas completas o ausencias identificadas y evaluación de capacitación por participante.",José Lara Arce,32,A:8;Q:8;L:16,"Asignación y cuadrante integrado por código; entornos, usuarios y habilitaciones autorizados",,2029-05-04,2029-05-09,1.9.1.6.1;1.9.2.4.2,Recepción por etapa o control del periodo; no acredita ejecución,
1.9.2.5.2,Planes aceptados y calendario confirmado,1.9,Operación,Planes aceptados y calendario confirmado,Resultado de la ficha de familia y del paquete original; registro individual por código/ventana,"No duplicar padres, informes, ingeniería ni cobertura; no incluye horas de contraparte ni obras/adquisiciones del cliente","Cada trabajo tiene aceptación, contratista habilitado, fecha y vínculo de solicitud; el cliente confirma ventanas.",Ulysses Barreto,40,A:24;Q:8;L:8,"Asignación y cuadrante integrado por código; entornos, usuarios y habilitaciones autorizados",,2029-05-17,2029-05-23,1.9.2.5.1,Recepción por etapa o control del periodo; no acredita ejecución,
1.9.2.5.3.0.1,Informe quincenal del piloto invernal,1.9,Operación,Informe quincenal del piloto invernal,Resultado de la ficha de familia y del paquete original; registro individual por código/ventana,"No duplicar padres, informes, ingeniería ni cobertura; no incluye horas de contraparte ni obras/adquisiciones del cliente","El informe conserva planes, solicitudes, trabajos aceptados y pendientes, incidencias y cambios de calendario sin atribuir trabajos no realizados.",José Lara Arce,16,A:4;Q:4;L:8,"Asignación y cuadrante integrado por código; entornos, usuarios y habilitaciones autorizados",,2029-06-01,2029-06-05,1.9.2.5.2,Recepción por etapa o control del periodo; no acredita ejecución,
1.9.2.5.3.0.2,Informe quincenal del piloto invernal,1.9,Operación,Informe quincenal del piloto invernal,Resultado de la ficha de familia y del paquete original; registro individual por código/ventana,"No duplicar padres, informes, ingeniería ni cobertura; no incluye horas de contraparte ni obras/adquisiciones del cliente","El informe conserva planes, solicitudes, trabajos aceptados y pendientes, incidencias y cambios de calendario sin atribuir trabajos no realizados.",José Lara Arce,16,A:4;Q:4;L:8,"Asignación y cuadrante integrado por código; entornos, usuarios y habilitaciones autorizados",,2029-06-18,2029-06-19,1.9.2.5.2,Recepción por etapa o control del periodo; no acredita ejecución,
1.9.2.5.3.1.1,Informe quincenal del piloto invernal,1.9,Operación,Informe quincenal del piloto invernal,Resultado de la ficha de familia y del paquete original; registro individual por código/ventana,"No duplicar padres, informes, ingeniería ni cobertura; no incluye horas de contraparte ni obras/adquisiciones del cliente","El informe conserva planes, solicitudes, trabajos aceptados y pendientes, incidencias y cambios de calendario sin atribuir trabajos no realizados.",José Lara Arce,16,A:4;Q:4;L:8,"Asignación y cuadrante integrado por código; entornos, usuarios y habilitaciones autorizados",,2029-07-03,2029-07-05,1.9.2.5.2,Recepción por etapa o control del periodo; no acredita ejecución,
1.9.2.5.3.1.2,Informe quincenal del piloto invernal,1.9,Operación,Informe quincenal del piloto invernal,Resultado de la ficha de familia y del paquete original; registro individual por código/ventana,"No duplicar padres, informes, ingeniería ni cobertura; no incluye horas de contraparte ni obras/adquisiciones del cliente","El informe conserva planes, solicitudes, trabajos aceptados y pendientes, incidencias y cambios de calendario sin atribuir trabajos no realizados.",José Lara Arce,16,A:4;Q:4;L:8,"Asignación y cuadrante integrado por código; entornos, usuarios y habilitaciones autorizados",,2029-07-17,2029-07-18,1.9.2.5.2,Recepción por etapa o control del periodo; no acredita ejecución,
1.9.2.5.3.2.1,Informe quincenal del piloto invernal,1.9,Operación,Informe quincenal del piloto invernal,Resultado de la ficha de familia y del paquete original; registro individual por código/ventana,"No duplicar padres, informes, ingeniería ni cobertura; no incluye horas de contraparte ni obras/adquisiciones del cliente","El informe conserva planes, solicitudes, trabajos aceptados y pendientes, incidencias y cambios de calendario sin atribuir trabajos no realizados.",José Lara Arce,16,A:4;Q:4;L:8,"Asignación y cuadrante integrado por código; entornos, usuarios y habilitaciones autorizados",,2029-08-01,2029-08-03,1.9.2.5.2,Recepción por etapa o control del periodo; no acredita ejecución,
1.9.2.5.3.2.2,Informe quincenal del piloto invernal,1.9,Operación,Informe quincenal del piloto invernal,Resultado de la ficha de familia y del paquete original; registro individual por código/ventana,"No duplicar padres, informes, ingeniería ni cobertura; no incluye horas de contraparte ni obras/adquisiciones del cliente","El informe conserva planes, solicitudes, trabajos aceptados y pendientes, incidencias y cambios de calendario sin atribuir trabajos no realizados.",José Lara Arce,16,A:4;Q:4;L:8,"Asignación y cuadrante integrado por código; entornos, usuarios y habilitaciones autorizados",,2029-08-16,2029-08-20,1.9.2.5.2,Recepción por etapa o control del periodo; no acredita ejecución,
1.9.2.5.5.3.1,Registro quincenal de resultados de botaduras,1.9,Operación,Registro quincenal de resultados de botaduras,Resultado de la ficha de familia y del paquete original; registro individual por código/ventana,"No duplicar padres, informes, ingeniería ni cobertura; no incluye horas de contraparte ni obras/adquisiciones del cliente","Cada botadura observada se relaciona con el plan y su revisión previa; se registran resultados, ausencias y reprogramaciones.",Davor Serey,16,A:8;Q:8,"Asignación y cuadrante integrado por código; entornos, usuarios y habilitaciones autorizados",,2029-09-06,2029-09-11,1.9.2.5.2;1.9.2.5.4.1;1.9.2.5.4.2;1.9.2.5.4.3;1.9.2.5.4.4,Recepción por etapa o control del periodo; no acredita ejecución,
1.9.2.5.5.3.2,Registro quincenal de resultados de botaduras,1.9,Operación,Registro quincenal de resultados de botaduras,Resultado de la ficha de familia y del paquete original; registro individual por código/ventana,"No duplicar padres, informes, ingeniería ni cobertura; no incluye horas de contraparte ni obras/adquisiciones del cliente","Cada botadura observada se relaciona con el plan y su revisión previa; se registran resultados, ausencias y reprogramaciones.",Davor Serey,16,A:8;Q:8,"Asignación y cuadrante integrado por código; entornos, usuarios y habilitaciones autorizados",,2029-09-25,2029-09-27,1.9.2.5.2;1.9.2.5.4.1;1.9.2.5.4.2;1.9.2.5.4.3;1.9.2.5.4.4,Recepción por etapa o control del periodo; no acredita ejecución,
1.9.2.5.5.4.1,Registro quincenal de resultados de botaduras,1.9,Operación,Registro quincenal de resultados de botaduras,Resultado de la ficha de familia y del paquete original; registro individual por código/ventana,"No duplicar padres, informes, ingeniería ni cobertura; no incluye horas de contraparte ni obras/adquisiciones del cliente","Cada botadura observada se relaciona con el plan y su revisión previa; se registran resultados, ausencias y reprogramaciones.",Davor Serey,16,A:8;Q:8,"Asignación y cuadrante integrado por código; entornos, usuarios y habilitaciones autorizados",,2029-10-03,2029-10-05,1.9.2.5.2;1.9.2.5.4.1;1.9.2.5.4.2;1.9.2.5.4.3;1.9.2.5.4.4;1.9.2.5.4.5,Recepción por etapa o control del periodo; no acredita ejecución,
1.9.2.5.5.4.2,Registro quincenal de resultados de botaduras,1.9,Operación,Registro quincenal de resultados de botaduras,Resultado de la ficha de familia y del paquete original; registro individual por código/ventana,"No duplicar padres, informes, ingeniería ni cobertura; no incluye horas de contraparte ni obras/adquisiciones del cliente","Cada botadura observada se relaciona con el plan y su revisión previa; se registran resultados, ausencias y reprogramaciones.",Davor Serey,16,A:8;Q:8,"Asignación y cuadrante integrado por código; entornos, usuarios y habilitaciones autorizados",,2029-10-19,2029-10-23,1.9.2.5.2;1.9.2.5.4.1;1.9.2.5.4.2;1.9.2.5.4.3;1.9.2.5.4.4;1.9.2.5.4.5,Recepción por etapa o control del periodo; no acredita ejecución,
1.9.2.5.5.5.1,Registro quincenal de resultados de botaduras,1.9,Operación,Registro quincenal de resultados de botaduras,Resultado de la ficha de familia y del paquete original; registro individual por código/ventana,"No duplicar padres, informes, ingeniería ni cobertura; no incluye horas de contraparte ni obras/adquisiciones del cliente","Cada botadura observada se relaciona con el plan y su revisión previa; se registran resultados, ausencias y reprogramaciones.",Davor Serey,16,A:8;Q:8,"Asignación y cuadrante integrado por código; entornos, usuarios y habilitaciones autorizados",,2029-11-05,2029-11-07,1.9.2.5.2;1.9.2.5.4.1;1.9.2.5.4.2;1.9.2.5.4.3;1.9.2.5.4.4;1.9.2.5.4.5,Recepción por etapa o control del periodo; no acredita ejecución,
1.9.2.5.5.5.2,Registro quincenal de resultados de botaduras,1.9,Operación,Registro quincenal de resultados de botaduras,Resultado de la ficha de familia y del paquete original; registro individual por código/ventana,"No duplicar padres, informes, ingeniería ni cobertura; no incluye horas de contraparte ni obras/adquisiciones del cliente","Cada botadura observada se relaciona con el plan y su revisión previa; se registran resultados, ausencias y reprogramaciones.",Davor Serey,16,A:8;Q:8,"Asignación y cuadrante integrado por código; entornos, usuarios y habilitaciones autorizados",,2029-11-20,2029-11-22,1.9.2.5.2;1.9.2.5.4.1;1.9.2.5.4.2;1.9.2.5.4.3;1.9.2.5.4.4;1.9.2.5.4.5,Recepción por etapa o control del periodo; no acredita ejecución,
1.9.2.5.6,Informe comparativo de resultados y acta de evaluación,1.9,Operación,Informe comparativo de resultados y acta de evaluación,Resultado de la ficha de familia y del paquete original; registro individual por código/ventana,"No duplicar padres, informes, ingeniería ni cobertura; no incluye horas de contraparte ni obras/adquisiciones del cliente","Se comparan planes, cumplimiento y botaduras con casos pendientes incluidos; acta identifica límites y decisión.",Davor Serey,32,A:8;Q:24,"Asignación y cuadrante integrado por código; entornos, usuarios y habilitaciones autorizados",,2029-12-03,2029-12-06,1.9.2.5.3.0.1;1.9.2.5.3.0.2;1.9.2.5.3.1.1;1.9.2.5.3.1.2;1.9.2.5.3.2.1;1.9.2.5.3.2.2;1.9.2.5.4.1;1.9.2.5.4.2;1.9.2.5.4.3;1.9.2.5.4.4;1.9.2.5.4.5;1.9.2.5.5.3.1;1.9.2.5.5.3.2;1.9.2.5.5.4.1;1.9.2.5.5.4.2;1.9.2.5.5.5.1;1.9.2.5.5.5.2,Recepción por etapa o control del periodo; no acredita ejecución,
1.9.2.6.1,"Procedimiento, documentación y transferencia a operación",1.9,Operación,"Procedimiento, documentación y transferencia a operación",Resultado de la ficha de familia y del paquete original; registro individual por código/ventana,"No duplicar padres, informes, ingeniería ni cobertura; no incluye horas de contraparte ni obras/adquisiciones del cliente","Quedan versión del procedimiento, catálogo, responsables de actualización y decisión de transferencia.",José Lara Arce,32,Q:8;O:16;L:8,"Asignación y cuadrante integrado por código; entornos, usuarios y habilitaciones autorizados",,2029-12-06,2029-12-11,1.9.2.5.6,Recepción por etapa o control del periodo; no acredita ejecución,
1.9.3.1.1,"Inventario de formatos, volumen y campos requeridos",1.9,E2 Desarrollo,"Inventario de formatos, volumen y campos requeridos",Resultado de la ficha de familia y del paquete original; registro individual por código/ventana,"No duplicar padres, informes, ingeniería ni cobertura; no incluye horas de contraparte ni obras/adquisiciones del cliente","Se identifican formatos, campos obligatorios, volumen observado y casos ilegibles sin asumir una muestra representativa.",Nicolás Torfan,32,A:8;D:16;Q:8,"Asignación y cuadrante integrado por código; entornos, usuarios y habilitaciones autorizados",,2027-12-02,2027-12-07,BASE-NAV,Recepción por etapa o control del periodo; no acredita ejecución,
1.9.3.1.2,Interfaces y controles de IA especificados,1.9,E2 Desarrollo,Interfaces y controles de IA especificados,Resultado de la ficha de familia y del paquete original; registro individual por código/ventana,"No duplicar padres, informes, ingeniería ni cobertura; no incluye horas de contraparte ni obras/adquisiciones del cliente","Se define procesamiento, revisión humana, finalidades, errores, retención y frontera con SD4 y requisitos de IA.",Fernando Guerrero,40,D:8;S:16;I:16,"Asignación y cuadrante integrado por código; entornos, usuarios y habilitaciones autorizados",,2028-01-03,2028-01-05,1.9.3.1.1,Recepción por etapa o control del periodo; no acredita ejecución,
1.9.3.2.1,Adaptador del extractor y procesamiento asíncrono,1.9,E2 Desarrollo,Adaptador del extractor y procesamiento asíncrono,Resultado de la ficha de familia y del paquete original; registro individual por código/ventana,"No duplicar padres, informes, ingeniería ni cobertura; no incluye horas de contraparte ni obras/adquisiciones del cliente","Cada trabajo identifica versión, documento y respuesta; resultados tardíos y reintentos no alteran datos aceptados.",Nikolai Navea,64,Q:8;V:48;I:8,"Asignación y cuadrante integrado por código; entornos, usuarios y habilitaciones autorizados",,2028-01-11,2028-01-14,1.9.3.1.2,Recepción por etapa o control del periodo; no acredita ejecución,
1.9.3.2.2,"Reglas de campos, discrepancias y datos pendientes",1.9,E2 Desarrollo,"Reglas de campos, discrepancias y datos pendientes",Resultado de la ficha de familia y del paquete original; registro individual por código/ventana,"No duplicar padres, informes, ingeniería ni cobertura; no incluye horas de contraparte ni obras/adquisiciones del cliente",Campos faltantes o contradictorios quedan pendientes de revisión; no se completan como hechos del documento.,Nicolás Torfan,48,D:24;Q:8;V:16,"Asignación y cuadrante integrado por código; entornos, usuarios y habilitaciones autorizados",,2028-01-20,2028-01-25,1.9.3.1.2,Recepción por etapa o control del periodo; no acredita ejecución,
1.9.3.3.1,Formulario de revisión y aprobación humana,1.9,E2 Desarrollo,Formulario de revisión y aprobación humana,Resultado de la ficha de familia y del paquete original; registro individual por código/ventana,"No duplicar padres, informes, ingeniería ni cobertura; no incluye horas de contraparte ni obras/adquisiciones del cliente",El revisor compara fuente y campos y confirma o corrige antes de registrar; cada decisión queda atribuida.,Nikolai Navea,56,A:8;Q:8;V:40,"Asignación y cuadrante integrado por código; entornos, usuarios y habilitaciones autorizados",,2028-02-01,2028-02-03,1.9.3.2.1;1.9.3.2.2,Recepción por etapa o control del periodo; no acredita ejecución,
1.9.3.3.2,"Integración con expediente, NAV y auditoría",1.9,E2 Desarrollo,"Integración con expediente, NAV y auditoría",Resultado de la ficha de familia y del paquete original; registro individual por código/ventana,"No duplicar padres, informes, ingeniería ni cobertura; no incluye horas de contraparte ni obras/adquisiciones del cliente","El registro aprobado conserva documento, actor y versión, y accede a NAV por su contrato autorizado.",Fernando Guerrero,56,S:8;Q:8;V:32;I:8,"Asignación y cuadrante integrado por código; entornos, usuarios y habilitaciones autorizados",,2028-02-21,2028-02-24,1.9.3.3.1,Recepción por etapa o control del periodo; no acredita ejecución,
1.9.3.3.3,"Ingreso manual, reintentos y resultados tardíos",1.9,E2 Desarrollo,"Ingreso manual, reintentos y resultados tardíos",Resultado de la ficha de familia y del paquete original; registro individual por código/ventana,"No duplicar padres, informes, ingeniería ni cobertura; no incluye horas de contraparte ni obras/adquisiciones del cliente",El ingreso manual mantiene los mismos controles y un resultado tardío no sobrescribe una decisión humana.,Nikolai Navea,40,Q:8;V:32,"Asignación y cuadrante integrado por código; entornos, usuarios y habilitaciones autorizados",,2028-02-18,2028-02-24,1.9.3.3.1,Recepción por etapa o control del periodo; no acredita ejecución,
1.9.3.4.1,"Pruebas de extracción, integración y continuidad",1.9,E2 Desarrollo,"Pruebas de extracción, integración y continuidad",Resultado de la ficha de familia y del paquete original; registro individual por código/ventana,"No duplicar padres, informes, ingeniería ni cobertura; no incluye horas de contraparte ni obras/adquisiciones del cliente","Se comprueban legibilidad, discrepancias, duplicados, fallos del servicio, ingreso manual y recuperación.",Davor Serey,40,D:8;Q:24;O:8,"Asignación y cuadrante integrado por código; entornos, usuarios y habilitaciones autorizados",,2028-03-03,2028-03-07,1.9.3.3.2;1.9.3.3.3,Recepción por etapa o control del periodo; no acredita ejecución,
1.9.3.4.2,Matriz y evidencias de controles de IA,1.9,E2 Desarrollo,Matriz y evidencias de controles de IA,Resultado de la ficha de familia y del paquete original; registro individual por código/ventana,"No duplicar padres, informes, ingeniería ni cobertura; no incluye horas de contraparte ni obras/adquisiciones del cliente","Cada control aplicable se vincula con diseño y evidencia; se verifican aislamiento, revisión y trazabilidad sin declarar cumplimiento por usar IA.",Bruno Toro,32,S:16;Q:16,"Asignación y cuadrante integrado por código; entornos, usuarios y habilitaciones autorizados",,2028-03-17,2028-03-23,1.9.3.4.1,Recepción por etapa o control del periodo; no acredita ejecución,
1.9.3.5.1,"Muestra autorizada, protocolo y capacitación",1.9,E2 Desarrollo,"Muestra autorizada, protocolo y capacitación",Resultado de la ficha de familia y del paquete original; registro individual por código/ventana,"No duplicar padres, informes, ingeniería ni cobertura; no incluye horas de contraparte ni obras/adquisiciones del cliente","Muestra, autorizaciones, método manual/asistido y evaluación de usuarios están documentados antes de medir.",Nicolás Torfan,32,D:8;Q:8;L:16,"Asignación y cuadrante integrado por código; entornos, usuarios y habilitaciones autorizados",,2028-03-23,2028-03-28,1.9.3.4.2,Recepción por etapa o control del periodo; no acredita ejecución,
1.9.3.5.2.19.1,Registro quincenal de ejecución manual y asistida,1.9,E2 Marcha blanca,Registro quincenal de ejecución manual y asistida,Resultado de la ficha de familia y del paquete original; registro individual por código/ventana,"No duplicar padres, informes, ingeniería ni cobertura; no incluye horas de contraparte ni obras/adquisiciones del cliente","El registro conserva documentos autorizados, tiempos, errores, correcciones y costo de procesamiento; incluye casos no completados.",José Lara Arce,16,D:4;Q:4;L:8,"Asignación y cuadrante integrado por código; entornos, usuarios y habilitaciones autorizados",,2028-05-03,2028-05-05,1.9.3.5.1,Recepción por etapa o control del periodo; no acredita ejecución,
1.9.3.5.2.19.2,Registro quincenal de ejecución manual y asistida,1.9,E2 Marcha blanca,Registro quincenal de ejecución manual y asistida,Resultado de la ficha de familia y del paquete original; registro individual por código/ventana,"No duplicar padres, informes, ingeniería ni cobertura; no incluye horas de contraparte ni obras/adquisiciones del cliente","El registro conserva documentos autorizados, tiempos, errores, correcciones y costo de procesamiento; incluye casos no completados.",José Lara Arce,16,D:4;Q:4;L:8,"Asignación y cuadrante integrado por código; entornos, usuarios y habilitaciones autorizados",,2028-05-17,2028-05-18,1.9.3.5.2.19.1,Recepción por etapa o control del periodo; no acredita ejecución,
1.9.3.5.2.20.1,Registro quincenal de ejecución manual y asistida,1.9,E2 Marcha blanca,Registro quincenal de ejecución manual y asistida,Resultado de la ficha de familia y del paquete original; registro individual por código/ventana,"No duplicar padres, informes, ingeniería ni cobertura; no incluye horas de contraparte ni obras/adquisiciones del cliente","El registro conserva documentos autorizados, tiempos, errores, correcciones y costo de procesamiento; incluye casos no completados.",José Lara Arce,16,D:4;Q:4;L:8,"Asignación y cuadrante integrado por código; entornos, usuarios y habilitaciones autorizados",,2028-06-01,2028-06-02,1.9.3.5.2.19.2,Recepción por etapa o control del periodo; no acredita ejecución,
1.9.3.5.2.20.2,Registro quincenal de ejecución manual y asistida,1.9,E2 Marcha blanca,Registro quincenal de ejecución manual y asistida,Resultado de la ficha de familia y del paquete original; registro individual por código/ventana,"No duplicar padres, informes, ingeniería ni cobertura; no incluye horas de contraparte ni obras/adquisiciones del cliente","El registro conserva documentos autorizados, tiempos, errores, correcciones y costo de procesamiento; incluye casos no completados.",José Lara Arce,16,D:4;Q:4;L:8,"Asignación y cuadrante integrado por código; entornos, usuarios y habilitaciones autorizados",,2028-06-19,2028-06-21,1.9.3.5.2.20.1,Recepción por etapa o control del periodo; no acredita ejecución,
1.9.3.5.3,"Informe de tiempos, errores, costos y beneficio",1.9,E2 Marcha blanca,"Informe de tiempos, errores, costos y beneficio",Resultado de la ficha de familia y del paquete original; registro individual por código/ventana,"No duplicar padres, informes, ingeniería ni cobertura; no incluye horas de contraparte ni obras/adquisiciones del cliente","La comparación conserva errores, rechazos, revisión humana y costos; evidencia insuficiente no se transforma en mejora demostrada.",Davor Serey,32,A:8;D:8;Q:16,"Asignación y cuadrante integrado por código; entornos, usuarios y habilitaciones autorizados",,2028-06-29,2028-07-04,1.9.3.5.2.19.1;1.9.3.5.2.19.2;1.9.3.5.2.20.1;1.9.3.5.2.20.2;OBS-IN3-PILOTO,Recepción por etapa o control del periodo; no acredita ejecución,
1.9.3.6.1,"Configuración, manuales y transferencia",1.9,Aceptación final de implementación,"Configuración, manuales y transferencia",Resultado de la ficha de familia y del paquete original; registro individual por código/ventana,"No duplicar padres, informes, ingeniería ni cobertura; no incluye horas de contraparte ni obras/adquisiciones del cliente","Se reciben configuración, límites, ingreso manual, monitoreo de consumo y procedimiento de incidentes.",José Lara Arce,32,Q:8;O:16;L:8,"Asignación y cuadrante integrado por código; entornos, usuarios y habilitaciones autorizados",,2028-08-08,2028-08-14,1.9.3.5.3;PILOTOS-SUB,Recepción por etapa o control del periodo; no acredita ejecución,
1.9.4.1.1,Ficha de medición y atribución del resultado,1.9,E1 Desarrollo,Ficha de medición y atribución del resultado,Resultado de la ficha de familia y del paquete original; registro individual por código/ventana,"No duplicar padres, informes, ingeniería ni cobertura; no incluye horas de contraparte ni obras/adquisiciones del cliente","Se define tiempo activo, tareas comparables, calidad y exclusiones; las esperas y ahorros de otras innovaciones no se duplican.",Ulysses Barreto,24,A:16;Q:8,"Asignación y cuadrante integrado por código; entornos, usuarios y habilitaciones autorizados",,2027-01-29,2027-02-03,BASE-VAR,Recepción por etapa o control del periodo; no acredita ejecución,
1.9.4.1.2,Regla comercial y escenarios de incentivo,1.9,E1 Desarrollo,Regla comercial y escenarios de incentivo,Resultado de la ficha de familia y del paquete original; registro individual por código/ventana,"No duplicar padres, informes, ingeniería ni cobertura; no incluye horas de contraparte ni obras/adquisiciones del cliente","La fórmula, tope, rechazo y factor cero están documentados; no modifica las obligaciones ni los hitos E-25.",Ignacio Silva,32,A:16;Q:8;J:8,"Asignación y cuadrante integrado por código; entornos, usuarios y habilitaciones autorizados",,2027-03-02,2027-03-05,1.9.4.1.1,Recepción por etapa o control del periodo; no acredita ejecución,
1.9.4.2.1,Interfaces y expediente de medición especificados,1.9,E2 Desarrollo,Interfaces y expediente de medición especificados,Resultado de la ficha de familia y del paquete original; registro individual por código/ventana,"No duplicar padres, informes, ingeniería ni cobertura; no incluye horas de contraparte ni obras/adquisiciones del cliente","Se especifican captura de intervalos, solicitudes, autoridad, versiones y separación entre preparación y aprobación.",Fernando Guerrero,32,A:8;S:8;I:16,"Asignación y cuadrante integrado por código; entornos, usuarios y habilitaciones autorizados",,2027-12-03,2027-12-07,1.9.1.1.1;1.9.4.1.2,Recepción por etapa o control del periodo; no acredita ejecución,
1.9.4.2.2,Captura de intervalos y validaciones implementadas,1.9,E2 Desarrollo,Captura de intervalos y validaciones implementadas,Resultado de la ficha de familia y del paquete original; registro individual por código/ventana,"No duplicar padres, informes, ingeniería ni cobertura; no incluye horas de contraparte ni obras/adquisiciones del cliente","Cada intervalo tiene solicitud, persona, inicio, término y origen; se detectan superposiciones y datos incompletos.",Nikolai Navea,48,Q:8;V:40,"Asignación y cuadrante integrado por código; entornos, usuarios y habilitaciones autorizados",,2028-01-03,2028-01-05,1.9.4.2.1,Recepción por etapa o control del periodo; no acredita ejecución,
1.9.4.2.3,Cálculo versionado y expediente de conciliación,1.9,E2 Desarrollo,Cálculo versionado y expediente de conciliación,Resultado de la ficha de familia y del paquete original; registro individual por código/ventana,"No duplicar padres, informes, ingeniería ni cobertura; no incluye horas de contraparte ni obras/adquisiciones del cliente","El cálculo es reproducible, conserva sus entradas y versiones y no emite cobro automático.",Nikolai Navea,56,A:8;Q:8;V:40,"Asignación y cuadrante integrado por código; entornos, usuarios y habilitaciones autorizados",,2028-02-02,2028-02-07,1.9.4.2.2,Recepción por etapa o control del periodo; no acredita ejecución,
1.9.4.2.4,Evidencia de seguridad y cálculo del incentivo,1.9,E2 Desarrollo,Evidencia de seguridad y cálculo del incentivo,Resultado de la ficha de familia y del paquete original; registro individual por código/ventana,"No duplicar padres, informes, ingeniería ni cobertura; no incluye horas de contraparte ni obras/adquisiciones del cliente","Los casos sin evidencia, base cero, calidad fallida y muestra insuficiente producen factor cero; no hay cambios silenciosos.",Davor Serey,40,A:8;S:8;Q:24,"Asignación y cuadrante integrado por código; entornos, usuarios y habilitaciones autorizados",,2028-03-01,2028-03-03,1.9.4.2.3,Recepción por etapa o control del periodo; no acredita ejecución,
1.9.4.3.1.1,Registro base del tiempo activo,1.9,E2 Marcha blanca,Registro base del tiempo activo,Resultado de la ficha de familia y del paquete original; registro individual por código/ventana,"No duplicar padres, informes, ingeniería ni cobertura; no incluye horas de contraparte ni obras/adquisiciones del cliente","Cada intervalo identifica persona, solicitud y tarea; esperas y tiempos superpuestos quedan excluidos sin duplicar la medición de IN1.",Davor Serey,16,A:8;Q:8,"Asignación y cuadrante integrado por código; entornos, usuarios y habilitaciones autorizados",,2028-05-05,2028-05-09,1.9.4.2.4,Recepción por etapa o control del periodo; no acredita ejecución,
1.9.4.3.1.2,Registro base del tiempo activo,1.9,E2 Marcha blanca,Registro base del tiempo activo,Resultado de la ficha de familia y del paquete original; registro individual por código/ventana,"No duplicar padres, informes, ingeniería ni cobertura; no incluye horas de contraparte ni obras/adquisiciones del cliente","Cada intervalo identifica persona, solicitud y tarea; esperas y tiempos superpuestos quedan excluidos sin duplicar la medición de IN1.",Davor Serey,16,A:8;Q:8,"Asignación y cuadrante integrado por código; entornos, usuarios y habilitaciones autorizados",,2028-05-17,2028-05-19,1.9.4.3.1.1,Recepción por etapa o control del periodo; no acredita ejecución,
1.9.4.3.2.1,Registro de evaluación del tiempo activo,1.9,E2 Marcha blanca,Registro de evaluación del tiempo activo,Resultado de la ficha de familia y del paquete original; registro individual por código/ventana,"No duplicar padres, informes, ingeniería ni cobertura; no incluye horas de contraparte ni obras/adquisiciones del cliente","Cada intervalo identifica persona, solicitud y tarea; esperas y tiempos superpuestos quedan excluidos sin duplicar la medición de IN1.",Davor Serey,16,A:8;Q:8,"Asignación y cuadrante integrado por código; entornos, usuarios y habilitaciones autorizados",,2028-06-06,2028-06-08,1.9.4.3.1.2,Recepción por etapa o control del periodo; no acredita ejecución,
1.9.4.3.2.2,Registro de evaluación del tiempo activo,1.9,E2 Marcha blanca,Registro de evaluación del tiempo activo,Resultado de la ficha de familia y del paquete original; registro individual por código/ventana,"No duplicar padres, informes, ingeniería ni cobertura; no incluye horas de contraparte ni obras/adquisiciones del cliente","Cada intervalo identifica persona, solicitud y tarea; esperas y tiempos superpuestos quedan excluidos sin duplicar la medición de IN1.",Davor Serey,16,A:8;Q:8,"Asignación y cuadrante integrado por código; entornos, usuarios y habilitaciones autorizados",,2028-06-21,2028-06-23,1.9.4.3.2.1,Recepción por etapa o control del periodo; no acredita ejecución,
1.9.4.3.3,Evaluación del piloto sin efectos de pago,1.9,E2 Marcha blanca,Evaluación del piloto sin efectos de pago,Resultado de la ficha de familia y del paquete original; registro individual por código/ventana,"No duplicar padres, informes, ingeniería ni cobertura; no incluye horas de contraparte ni obras/adquisiciones del cliente",Se compara tiempo activo y calidad con la regla aprobada y se conserva decisión; el piloto no genera pagos variables.,Davor Serey,32,A:8;Q:16;J:8,"Asignación y cuadrante integrado por código; entornos, usuarios y habilitaciones autorizados",,2028-07-04,2028-07-07,1.9.4.3.1.1;1.9.4.3.1.2;1.9.4.3.2.1;1.9.4.3.2.2;OBS-IN4-PILOTO,Recepción por etapa o control del periodo; no acredita ejecución,
1.9.4.4.1,Procedimiento de conciliación contractual habilitado,1.9,Aceptación final de implementación,Procedimiento de conciliación contractual habilitado,Resultado de la ficha de familia y del paquete original; registro individual por código/ventana,"No duplicar padres, informes, ingeniería ni cobertura; no incluye horas de contraparte ni obras/adquisiciones del cliente","Cliente y Synaptix disponen de procedimiento, evidencia, reclamación y decisión registrada antes de habilitar el incentivo.",Ignacio Silva,24,A:8;O:8;J:8,"Asignación y cuadrante integrado por código; entornos, usuarios y habilitaciones autorizados",,2028-08-10,2028-08-11,1.9.1.6.1;1.9.4.3.3;PILOTOS-SUB,Recepción por etapa o control del periodo; no acredita ejecución,
1.9.5.1.1,Plan ambiental y protocolo de comparación,1.9,E2 Desarrollo,Plan ambiental y protocolo de comparación,Resultado de la ficha de familia y del paquete original; registro individual por código/ventana,"No duplicar padres, informes, ingeniería ni cobertura; no incluye horas de contraparte ni obras/adquisiciones del cliente","Se fijan indicador de consumo por permanencia, ventanas de 28 días, criterios de comparabilidad y evidencia de acciones.",Ulysses Barreto,24,A:16;Q:8,"Asignación y cuadrante integrado por código; entornos, usuarios y habilitaciones autorizados",,2027-12-03,2027-12-10,BASE-AMB,Recepción por etapa o control del periodo; no acredita ejecución,
1.9.5.1.2,"Consentimiento, modelo y contratos definidos",1.9,E2 Desarrollo,"Consentimiento, modelo y contratos definidos",Resultado de la ficha de familia y del paquete original; registro individual por código/ventana,"No duplicar padres, informes, ingeniería ni cobertura; no incluye horas de contraparte ni obras/adquisiciones del cliente","Adhesión, plan, acción y evaluación tienen estados, conservación y permisos; se especifica revocación y autoridad de lecturas.",Fernando Guerrero,40,D:8;S:16;I:16,"Asignación y cuadrante integrado por código; entornos, usuarios y habilitaciones autorizados",,2028-01-03,2028-01-05,1.9.5.1.1,Recepción por etapa o control del periodo; no acredita ejecución,
1.9.5.2.1,Historial validado y cálculo por permanencia,1.9,E2 Desarrollo,Historial validado y cálculo por permanencia,Resultado de la ficha de familia y del paquete original; registro individual por código/ventana,"No duplicar padres, informes, ingeniería ni cobertura; no incluye horas de contraparte ni obras/adquisiciones del cliente","El historial usa intervalos conciliados, conserva originales y no suma lecturas acumulativas ni períodos repetidos.",Nikolai Navea,56,D:8;Q:8;V:40,"Asignación y cuadrante integrado por código; entornos, usuarios y habilitaciones autorizados",,2028-01-05,2028-01-10,1.9.5.1.2,Recepción por etapa o control del periodo; no acredita ejecución,
1.9.5.2.2,"Adhesión, acciones y portal ambiental",1.9,E2 Desarrollo,"Adhesión, acciones y portal ambiental",Resultado de la ficha de familia y del paquete original; registro individual por código/ventana,"No duplicar padres, informes, ingeniería ni cobertura; no incluye horas de contraparte ni obras/adquisiciones del cliente","El armador acepta el plan y consulta sólo sus datos; cada acción tiene responsable, fechas y evidencia.",Nikolai Navea,56,A:8;Q:8;V:40,"Asignación y cuadrante integrado por código; entornos, usuarios y habilitaciones autorizados",,2028-02-04,2028-02-09,1.9.5.1.2,Recepción por etapa o control del periodo; no acredita ejecución,
1.9.5.2.3,"Integración, consentimiento y actualización de cortes",1.9,E2 Desarrollo,"Integración, consentimiento y actualización de cortes",Resultado de la ficha de familia y del paquete original; registro individual por código/ventana,"No duplicar padres, informes, ingeniería ni cobertura; no incluye horas de contraparte ni obras/adquisiciones del cliente",Revocación y correcciones propagan límites de uso; la vista identifica cobertura y último corte validado.,Fernando Guerrero,48,S:8;Q:8;V:24;I:8,"Asignación y cuadrante integrado por código; entornos, usuarios y habilitaciones autorizados",,2028-02-18,2028-02-22,1.9.5.2.1;1.9.5.2.2,Recepción por etapa o control del periodo; no acredita ejecución,
1.9.5.2.4,"Pruebas de medición, privacidad y accesibilidad",1.9,E2 Desarrollo,"Pruebas de medición, privacidad y accesibilidad",Resultado de la ficha de familia y del paquete original; registro individual por código/ventana,"No duplicar padres, informes, ingeniería ni cobertura; no incluye horas de contraparte ni obras/adquisiciones del cliente","Se prueban acceso entre flotas, exportaciones, revocación, diferencias de lectura, permanencia y vistas accesibles.",Davor Serey,40,D:8;S:8;Q:24,"Asignación y cuadrante integrado por código; entornos, usuarios y habilitaciones autorizados",,2028-03-02,2028-03-07,1.9.5.2.3,Recepción por etapa o control del periodo; no acredita ejecución,
1.9.5.3.1,Participantes y acciones preparados para el piloto,1.9,E2 Desarrollo,Participantes y acciones preparados para el piloto,Resultado de la ficha de familia y del paquete original; registro individual por código/ventana,"No duplicar padres, informes, ingeniería ni cobertura; no incluye horas de contraparte ni obras/adquisiciones del cliente","Hay adhesión voluntaria, medición validada, permanencias conciliadas y usuarios preparados; no se presume participación efectiva.",José Lara Arce,32,A:8;Q:8;L:16,"Asignación y cuadrante integrado por código; entornos, usuarios y habilitaciones autorizados",,2028-03-17,2028-03-22,1.9.5.2.4,Recepción por etapa o control del periodo; no acredita ejecución,
1.9.5.3.2.1,Registro base del consumo normalizado,1.9,E2 Marcha blanca,Registro base del consumo normalizado,Resultado de la ficha de familia y del paquete original; registro individual por código/ventana,"No duplicar padres, informes, ingeniería ni cobertura; no incluye horas de contraparte ni obras/adquisiciones del cliente",Se conservan intervalos de consumo conciliados y permanencia de la cohorte; no se afirma reducción con datos faltantes o acumulativos duplicados.,Davor Serey,16,D:8;Q:8,"Asignación y cuadrante integrado por código; entornos, usuarios y habilitaciones autorizados",,2028-05-04,2028-05-08,1.9.5.3.1,Recepción por etapa o control del periodo; no acredita ejecución,
1.9.5.3.2.2,Registro base del consumo normalizado,1.9,E2 Marcha blanca,Registro base del consumo normalizado,Resultado de la ficha de familia y del paquete original; registro individual por código/ventana,"No duplicar padres, informes, ingeniería ni cobertura; no incluye horas de contraparte ni obras/adquisiciones del cliente",Se conservan intervalos de consumo conciliados y permanencia de la cohorte; no se afirma reducción con datos faltantes o acumulativos duplicados.,Davor Serey,16,D:8;Q:8,"Asignación y cuadrante integrado por código; entornos, usuarios y habilitaciones autorizados",,2028-05-18,2028-05-22,1.9.5.3.2.1,Recepción por etapa o control del periodo; no acredita ejecución,
1.9.5.3.3.1,Registro de evaluación del consumo normalizado,1.9,E2 Marcha blanca,Registro de evaluación del consumo normalizado,Resultado de la ficha de familia y del paquete original; registro individual por código/ventana,"No duplicar padres, informes, ingeniería ni cobertura; no incluye horas de contraparte ni obras/adquisiciones del cliente",Se conservan intervalos de consumo conciliados y permanencia de la cohorte; no se afirma reducción con datos faltantes o acumulativos duplicados.,Davor Serey,16,D:8;Q:8,"Asignación y cuadrante integrado por código; entornos, usuarios y habilitaciones autorizados",,2028-06-01,2028-06-05,1.9.5.3.2.2,Recepción por etapa o control del periodo; no acredita ejecución,
1.9.5.3.3.2,Registro de evaluación del consumo normalizado,1.9,E2 Marcha blanca,Registro de evaluación del consumo normalizado,Resultado de la ficha de familia y del paquete original; registro individual por código/ventana,"No duplicar padres, informes, ingeniería ni cobertura; no incluye horas de contraparte ni obras/adquisiciones del cliente",Se conservan intervalos de consumo conciliados y permanencia de la cohorte; no se afirma reducción con datos faltantes o acumulativos duplicados.,Davor Serey,16,D:8;Q:8,"Asignación y cuadrante integrado por código; entornos, usuarios y habilitaciones autorizados",,2028-06-21,2028-06-23,1.9.5.3.3.1,Recepción por etapa o control del periodo; no acredita ejecución,
1.9.5.3.4,Evaluación ambiental y acta del piloto,1.9,E2 Marcha blanca,Evaluación ambiental y acta del piloto,Resultado de la ficha de familia y del paquete original; registro individual por código/ventana,"No duplicar padres, informes, ingeniería ni cobertura; no incluye horas de contraparte ni obras/adquisiciones del cliente",Se comparan ventanas equivalentes y acciones evidenciadas; faltantes o muestra insuficiente impiden afirmar reducción.,Davor Serey,32,A:8;D:8;Q:16,"Asignación y cuadrante integrado por código; entornos, usuarios y habilitaciones autorizados",,2028-06-29,2028-07-04,1.9.5.3.2.1;1.9.5.3.2.2;1.9.5.3.3.1;1.9.5.3.3.2;OBS-IN5-PILOTO,Recepción por etapa o control del periodo; no acredita ejecución,
1.9.5.4.1,Pasaporte y seguimiento transferidos a operación,1.9,Aceptación final de implementación,Pasaporte y seguimiento transferidos a operación,Resultado de la ficha de familia y del paquete original; registro individual por código/ventana,"No duplicar padres, informes, ingeniería ni cobertura; no incluye horas de contraparte ni obras/adquisiciones del cliente","Se reciben configuración, consentimiento, monitoreo de calidad de lecturas y responsables del informe previo a temporada 2029.",José Lara Arce,32,Q:8;O:16;L:8,"Asignación y cuadrante integrado por código; entornos, usuarios y habilitaciones autorizados",,2028-08-10,2028-08-16,1.9.5.3.4;PILOTOS-SUB,Recepción por etapa o control del periodo; no acredita ejecución,
1.8.1.1,Catálogo de fuentes y accesos,1.8,E1 Desarrollo,Catálogo de fuentes y accesos,Resultado de la ficha de familia y del paquete original; registro individual por código/ventana,"No duplicar padres, informes, ingeniería ni cobertura; no incluye horas de contraparte ni obras/adquisiciones del cliente",Criterio específico del diccionario T-14 del mismo código; evidencia sobre versión/periodo identificado,Nicolás Torfan,24,A:16;D:8,"Asignación y cuadrante integrado por código; entornos, usuarios y habilitaciones autorizados",,2026-12-21,2026-12-23,,Recepción por etapa o control del periodo; no acredita ejecución,
1.8.1.2,Extracción diagnóstica reproducible,1.8,E1 Desarrollo,Extracción diagnóstica reproducible,Resultado de la ficha de familia y del paquete original; registro individual por código/ventana,"No duplicar padres, informes, ingeniería ni cobertura; no incluye horas de contraparte ni obras/adquisiciones del cliente",Criterio específico del diccionario T-14 del mismo código; evidencia sobre versión/periodo identificado,Nicolás Torfan,40,D:32;S:8,"Asignación y cuadrante integrado por código; entornos, usuarios y habilitaciones autorizados",,2027-01-07,2027-01-11,,Recepción por etapa o control del periodo; no acredita ejecución,
1.8.1.3,Informe de calidad del origen,1.8,E1 Desarrollo,Informe de calidad del origen,Resultado de la ficha de familia y del paquete original; registro individual por código/ventana,"No duplicar padres, informes, ingeniería ni cobertura; no incluye horas de contraparte ni obras/adquisiciones del cliente",Criterio específico del diccionario T-14 del mismo código; evidencia sobre versión/periodo identificado,Nicolás Torfan,32,D:24;Q:8,"Asignación y cuadrante integrado por código; entornos, usuarios y habilitaciones autorizados",,2027-01-04,2027-01-06,,Recepción por etapa o control del periodo; no acredita ejecución,
1.8.1.4,Matriz de cobertura y decisiones,1.8,E1 Desarrollo,Matriz de cobertura y decisiones,Resultado de la ficha de familia y del paquete original; registro individual por código/ventana,"No duplicar padres, informes, ingeniería ni cobertura; no incluye horas de contraparte ni obras/adquisiciones del cliente",Criterio específico del diccionario T-14 del mismo código; evidencia sobre versión/periodo identificado,Nicolás Torfan,24,A:8;D:8;Q:8,"Asignación y cuadrante integrado por código; entornos, usuarios y habilitaciones autorizados",,2027-02-16,2027-02-18,,Recepción por etapa o control del periodo; no acredita ejecución,
1.8.2.1,Reglas: Socios y armadores,1.8,E1 Desarrollo,Reglas: Socios y armadores,Resultado de la ficha de familia y del paquete original; registro individual por código/ventana,"No duplicar padres, informes, ingeniería ni cobertura; no incluye horas de contraparte ni obras/adquisiciones del cliente",Criterio específico del diccionario T-14 del mismo código; evidencia sobre versión/periodo identificado,Nicolás Torfan,24,A:8;D:16,"Asignación y cuadrante integrado por código; entornos, usuarios y habilitaciones autorizados",,2027-01-25,2027-01-27,,Recepción por etapa o control del periodo; no acredita ejecución,
1.8.2.2,Reglas: Contratos vigentes y documentos,1.8,E1 Desarrollo,Reglas: Contratos vigentes y documentos,Resultado de la ficha de familia y del paquete original; registro individual por código/ventana,"No duplicar padres, informes, ingeniería ni cobertura; no incluye horas de contraparte ni obras/adquisiciones del cliente",Criterio específico del diccionario T-14 del mismo código; evidencia sobre versión/periodo identificado,Nicolás Torfan,24,A:8;D:16,"Asignación y cuadrante integrado por código; entornos, usuarios y habilitaciones autorizados",,2027-01-27,2027-01-29,,Recepción por etapa o control del periodo; no acredita ejecución,
1.8.2.3,Reglas: Seis años de pagos y saldos,1.8,E1 Desarrollo,Reglas: Seis años de pagos y saldos,Resultado de la ficha de familia y del paquete original; registro individual por código/ventana,"No duplicar padres, informes, ingeniería ni cobertura; no incluye horas de contraparte ni obras/adquisiciones del cliente",Criterio específico del diccionario T-14 del mismo código; evidencia sobre versión/periodo identificado,Nicolás Torfan,24,A:8;D:16,"Asignación y cuadrante integrado por código; entornos, usuarios y habilitaciones autorizados",,2027-01-25,2027-01-27,,Recepción por etapa o control del periodo; no acredita ejecución,
1.8.2.4,Reglas: Embarcaciones e invernadas,1.8,E1 Desarrollo,Reglas: Embarcaciones e invernadas,Resultado de la ficha de familia y del paquete original; registro individual por código/ventana,"No duplicar padres, informes, ingeniería ni cobertura; no incluye horas de contraparte ni obras/adquisiciones del cliente",Criterio específico del diccionario T-14 del mismo código; evidencia sobre versión/periodo identificado,Nicolás Torfan,24,A:8;D:16,"Asignación y cuadrante integrado por código; entornos, usuarios y habilitaciones autorizados",,2027-01-27,2027-01-29,,Recepción por etapa o control del periodo; no acredita ejecución,
1.8.2.5,Reglas: 14 expedientes de abandono,1.8,E1 Desarrollo,Reglas: 14 expedientes de abandono,Resultado de la ficha de familia y del paquete original; registro individual por código/ventana,"No duplicar padres, informes, ingeniería ni cobertura; no incluye horas de contraparte ni obras/adquisiciones del cliente",Criterio específico del diccionario T-14 del mismo código; evidencia sobre versión/periodo identificado,Nicolás Torfan,24,A:8;D:16,"Asignación y cuadrante integrado por código; entornos, usuarios y habilitaciones autorizados",,2027-01-25,2027-01-27,,Recepción por etapa o control del periodo; no acredita ejecución,
1.8.2.6,Reglas: Tres años de matrícula escolar,1.8,E1 Desarrollo,Reglas: Tres años de matrícula escolar,Resultado de la ficha de familia y del paquete original; registro individual por código/ventana,"No duplicar padres, informes, ingeniería ni cobertura; no incluye horas de contraparte ni obras/adquisiciones del cliente",Criterio específico del diccionario T-14 del mismo código; evidencia sobre versión/periodo identificado,Nicolás Torfan,24,A:8;D:16,"Asignación y cuadrante integrado por código; entornos, usuarios y habilitaciones autorizados",,2027-01-27,2027-01-29,,Recepción por etapa o control del periodo; no acredita ejecución,
1.8.3.1,Saneamiento automatizado: Socios y armadores,1.8,E1 Desarrollo,Saneamiento automatizado: Socios y armadores,Resultado de la ficha de familia y del paquete original; registro individual por código/ventana,"No duplicar padres, informes, ingeniería ni cobertura; no incluye horas de contraparte ni obras/adquisiciones del cliente",Criterio específico del diccionario T-14 del mismo código; evidencia sobre versión/periodo identificado,Nicolás Torfan,32,A:4;D:24;Q:4,"Asignación y cuadrante integrado por código; entornos, usuarios y habilitaciones autorizados",,2027-06-01,2027-06-03,,Recepción por etapa o control del periodo; no acredita ejecución,
1.8.3.2,Saneamiento automatizado: Contratos vigentes y documentos,1.8,E1 Desarrollo,Saneamiento automatizado: Contratos vigentes y documentos,Resultado de la ficha de familia y del paquete original; registro individual por código/ventana,"No duplicar padres, informes, ingeniería ni cobertura; no incluye horas de contraparte ni obras/adquisiciones del cliente",Criterio específico del diccionario T-14 del mismo código; evidencia sobre versión/periodo identificado,Nicolás Torfan,32,A:4;D:24;Q:4,"Asignación y cuadrante integrado por código; entornos, usuarios y habilitaciones autorizados",,2027-06-16,2027-06-18,,Recepción por etapa o control del periodo; no acredita ejecución,
1.8.3.3,Saneamiento automatizado: Seis años de pagos y saldos,1.8,E1 Desarrollo,Saneamiento automatizado: Seis años de pagos y saldos,Resultado de la ficha de familia y del paquete original; registro individual por código/ventana,"No duplicar padres, informes, ingeniería ni cobertura; no incluye horas de contraparte ni obras/adquisiciones del cliente",Criterio específico del diccionario T-14 del mismo código; evidencia sobre versión/periodo identificado,Nicolás Torfan,32,A:4;D:24;Q:4,"Asignación y cuadrante integrado por código; entornos, usuarios y habilitaciones autorizados",,2027-06-02,2027-06-04,,Recepción por etapa o control del periodo; no acredita ejecución,
1.8.3.4,Saneamiento automatizado: Embarcaciones e invernadas,1.8,E1 Desarrollo,Saneamiento automatizado: Embarcaciones e invernadas,Resultado de la ficha de familia y del paquete original; registro individual por código/ventana,"No duplicar padres, informes, ingeniería ni cobertura; no incluye horas de contraparte ni obras/adquisiciones del cliente",Criterio específico del diccionario T-14 del mismo código; evidencia sobre versión/periodo identificado,Nicolás Torfan,32,A:4;D:24;Q:4,"Asignación y cuadrante integrado por código; entornos, usuarios y habilitaciones autorizados",,2027-06-16,2027-06-18,,Recepción por etapa o control del periodo; no acredita ejecución,
1.8.3.5,Saneamiento automatizado: 14 expedientes de abandono,1.8,E1 Desarrollo,Saneamiento automatizado: 14 expedientes de abandono,Resultado de la ficha de familia y del paquete original; registro individual por código/ventana,"No duplicar padres, informes, ingeniería ni cobertura; no incluye horas de contraparte ni obras/adquisiciones del cliente",Criterio específico del diccionario T-14 del mismo código; evidencia sobre versión/periodo identificado,Nicolás Torfan,32,A:4;D:24;Q:4,"Asignación y cuadrante integrado por código; entornos, usuarios y habilitaciones autorizados",,2027-06-04,2027-06-08,,Recepción por etapa o control del periodo; no acredita ejecución,
1.8.3.6,Saneamiento automatizado: Tres años de matrícula escolar,1.8,E1 Desarrollo,Saneamiento automatizado: Tres años de matrícula escolar,Resultado de la ficha de familia y del paquete original; registro individual por código/ventana,"No duplicar padres, informes, ingeniería ni cobertura; no incluye horas de contraparte ni obras/adquisiciones del cliente",Criterio específico del diccionario T-14 del mismo código; evidencia sobre versión/periodo identificado,Nicolás Torfan,32,A:4;D:24;Q:4,"Asignación y cuadrante integrado por código; entornos, usuarios y habilitaciones autorizados",,2027-06-16,2027-06-18,,Recepción por etapa o control del periodo; no acredita ejecución,
1.8.4.1,Carga y conciliación: Socios y armadores,1.8,E1 Desarrollo,Carga y conciliación: Socios y armadores,Resultado de la ficha de familia y del paquete original; registro individual por código/ventana,"No duplicar padres, informes, ingeniería ni cobertura; no incluye horas de contraparte ni obras/adquisiciones del cliente",Criterio específico del diccionario T-14 del mismo código; evidencia sobre versión/periodo identificado,Nicolás Torfan,40,D:24;Q:8;V:8,"Asignación y cuadrante integrado por código; entornos, usuarios y habilitaciones autorizados",,2027-08-04,2027-08-09,,Recepción por etapa o control del periodo; no acredita ejecución,
1.8.4.2,Carga y conciliación: Contratos vigentes y documentos,1.8,E1 Desarrollo,Carga y conciliación: Contratos vigentes y documentos,Resultado de la ficha de familia y del paquete original; registro individual por código/ventana,"No duplicar padres, informes, ingeniería ni cobertura; no incluye horas de contraparte ni obras/adquisiciones del cliente",Criterio específico del diccionario T-14 del mismo código; evidencia sobre versión/periodo identificado,Nicolás Torfan,40,D:24;Q:8;V:8,"Asignación y cuadrante integrado por código; entornos, usuarios y habilitaciones autorizados",,2027-08-05,2027-08-10,,Recepción por etapa o control del periodo; no acredita ejecución,
1.8.4.3,Carga y conciliación: Seis años de pagos y saldos,1.8,E1 Desarrollo,Carga y conciliación: Seis años de pagos y saldos,Resultado de la ficha de familia y del paquete original; registro individual por código/ventana,"No duplicar padres, informes, ingeniería ni cobertura; no incluye horas de contraparte ni obras/adquisiciones del cliente",Criterio específico del diccionario T-14 del mismo código; evidencia sobre versión/periodo identificado,Nicolás Torfan,40,D:24;Q:8;V:8,"Asignación y cuadrante integrado por código; entornos, usuarios y habilitaciones autorizados",,2027-08-04,2027-08-09,,Recepción por etapa o control del periodo; no acredita ejecución,
1.8.4.4,Carga y conciliación: Embarcaciones e invernadas,1.8,E1 Desarrollo,Carga y conciliación: Embarcaciones e invernadas,Resultado de la ficha de familia y del paquete original; registro individual por código/ventana,"No duplicar padres, informes, ingeniería ni cobertura; no incluye horas de contraparte ni obras/adquisiciones del cliente",Criterio específico del diccionario T-14 del mismo código; evidencia sobre versión/periodo identificado,Nicolás Torfan,40,D:24;Q:8;V:8,"Asignación y cuadrante integrado por código; entornos, usuarios y habilitaciones autorizados",,2027-08-05,2027-08-10,,Recepción por etapa o control del periodo; no acredita ejecución,
1.8.4.5,Carga y conciliación: 14 expedientes de abandono,1.8,E1 Desarrollo,Carga y conciliación: 14 expedientes de abandono,Resultado de la ficha de familia y del paquete original; registro individual por código/ventana,"No duplicar padres, informes, ingeniería ni cobertura; no incluye horas de contraparte ni obras/adquisiciones del cliente",Criterio específico del diccionario T-14 del mismo código; evidencia sobre versión/periodo identificado,Nicolás Torfan,40,D:24;Q:8;V:8,"Asignación y cuadrante integrado por código; entornos, usuarios y habilitaciones autorizados",,2027-08-04,2027-08-09,,Recepción por etapa o control del periodo; no acredita ejecución,
1.8.4.6,Carga y conciliación: Tres años de matrícula escolar,1.8,E1 Desarrollo,Carga y conciliación: Tres años de matrícula escolar,Resultado de la ficha de familia y del paquete original; registro individual por código/ventana,"No duplicar padres, informes, ingeniería ni cobertura; no incluye horas de contraparte ni obras/adquisiciones del cliente",Criterio específico del diccionario T-14 del mismo código; evidencia sobre versión/periodo identificado,Nicolás Torfan,40,D:24;Q:8;V:8,"Asignación y cuadrante integrado por código; entornos, usuarios y habilitaciones autorizados",,2027-08-05,2027-08-10,,Recepción por etapa o control del periodo; no acredita ejecución,
1.8.5.1,Repositorio e índice histórico,1.8,E1 Desarrollo,Repositorio e índice histórico,Resultado de la ficha de familia y del paquete original; registro individual por código/ventana,"No duplicar padres, informes, ingeniería ni cobertura; no incluye horas de contraparte ni obras/adquisiciones del cliente",Criterio específico del diccionario T-14 del mismo código; evidencia sobre versión/periodo identificado,Nicolás Torfan,40,D:8;S:4;Q:4;V:24,"Asignación y cuadrante integrado por código; entornos, usuarios y habilitaciones autorizados",,2027-08-09,2027-08-11,,Recepción por etapa o control del periodo; no acredita ejecución,
1.8.5.2,Consulta histórica con permisos,1.8,E1 Desarrollo,Consulta histórica con permisos,Resultado de la ficha de familia y del paquete original; registro individual por código/ventana,"No duplicar padres, informes, ingeniería ni cobertura; no incluye horas de contraparte ni obras/adquisiciones del cliente",Criterio específico del diccionario T-14 del mismo código; evidencia sobre versión/periodo identificado,Nicolás Torfan,40,D:8;S:4;Q:4;V:24,"Asignación y cuadrante integrado por código; entornos, usuarios y habilitaciones autorizados",,2027-08-09,2027-08-11,,Recepción por etapa o control del periodo; no acredita ejecución,
1.8.5.3,Exportación y comprobación de integridad,1.8,E1 Desarrollo,Exportación y comprobación de integridad,Resultado de la ficha de familia y del paquete original; registro individual por código/ventana,"No duplicar padres, informes, ingeniería ni cobertura; no incluye horas de contraparte ni obras/adquisiciones del cliente",Criterio específico del diccionario T-14 del mismo código; evidencia sobre versión/periodo identificado,Nicolás Torfan,40,D:8;S:4;Q:4;V:24,"Asignación y cuadrante integrado por código; entornos, usuarios y habilitaciones autorizados",,2027-08-09,2027-08-11,,Recepción por etapa o control del periodo; no acredita ejecución,
1.8.6.1,Detección y carga idempotente de delta,1.8,E1 Desarrollo,Detección y carga idempotente de delta,Resultado de la ficha de familia y del paquete original; registro individual por código/ventana,"No duplicar padres, informes, ingeniería ni cobertura; no incluye horas de contraparte ni obras/adquisiciones del cliente",Criterio específico del diccionario T-14 del mismo código; evidencia sobre versión/periodo identificado,Nicolás Torfan,40,D:24;S:4;Q:4;V:8,"Asignación y cuadrante integrado por código; entornos, usuarios y habilitaciones autorizados",,2027-08-10,2027-08-12,,Recepción por etapa o control del periodo; no acredita ejecución,
1.8.6.2,Herramientas de retorno previo,1.8,E1 Desarrollo,Herramientas de retorno previo,Resultado de la ficha de familia y del paquete original; registro individual por código/ventana,"No duplicar padres, informes, ingeniería ni cobertura; no incluye horas de contraparte ni obras/adquisiciones del cliente",Criterio específico del diccionario T-14 del mismo código; evidencia sobre versión/periodo identificado,Nicolás Torfan,40,D:24;S:4;Q:4;V:8,"Asignación y cuadrante integrado por código; entornos, usuarios y habilitaciones autorizados",,2027-08-10,2027-08-12,,Recepción por etapa o control del periodo; no acredita ejecución,
1.8.6.3,Herramientas de retorno posterior y diario,1.8,E1 Desarrollo,Herramientas de retorno posterior y diario,Resultado de la ficha de familia y del paquete original; registro individual por código/ventana,"No duplicar padres, informes, ingeniería ni cobertura; no incluye horas de contraparte ni obras/adquisiciones del cliente",Criterio específico del diccionario T-14 del mismo código; evidencia sobre versión/periodo identificado,Nicolás Torfan,40,D:24;S:4;Q:4;V:8,"Asignación y cuadrante integrado por código; entornos, usuarios y habilitaciones autorizados",,2027-08-05,2027-08-09,,Recepción por etapa o control del periodo; no acredita ejecución,
1.10.1.1.1.1,Seguimiento de innovación ,1.10,E1 Desarrollo,Seguimiento de innovación ,Resultado de la ficha de familia y del paquete original; registro individual por código/ventana,"No duplicar padres, informes, ingeniería ni cobertura; no incluye horas de contraparte ni obras/adquisiciones del cliente",Criterio específico del diccionario T-14 del mismo código; evidencia sobre versión/periodo identificado,Davor Serey,16,D:4;S:4;Q:8,"Asignación y cuadrante integrado por código; entornos, usuarios y habilitaciones autorizados",,2027-08-12,2027-08-13,ENS-INI-1-1,Recepción por etapa o control del periodo; no acredita ejecución,
1.10.1.1.1.2,Seguimiento de innovación ,1.10,E1 Desarrollo,Seguimiento de innovación ,Resultado de la ficha de familia y del paquete original; registro individual por código/ventana,"No duplicar padres, informes, ingeniería ni cobertura; no incluye horas de contraparte ni obras/adquisiciones del cliente",Criterio específico del diccionario T-14 del mismo código; evidencia sobre versión/periodo identificado,Davor Serey,48,D:16;Q:16;I:8;O:8,"Asignación y cuadrante integrado por código; entornos, usuarios y habilitaciones autorizados",,2027-08-13,2027-08-16,1.10.1.1.1.1,Recepción por etapa o control del periodo; no acredita ejecución,
1.10.1.1.1.3,Seguimiento de innovación ,1.10,E1 Desarrollo,Seguimiento de innovación ,Resultado de la ficha de familia y del paquete original; registro individual por código/ventana,"No duplicar padres, informes, ingeniería ni cobertura; no incluye horas de contraparte ni obras/adquisiciones del cliente",Criterio específico del diccionario T-14 del mismo código; evidencia sobre versión/periodo identificado,Davor Serey,48,A:12;D:12;S:8;Q:16,"Asignación y cuadrante integrado por código; entornos, usuarios y habilitaciones autorizados",,2027-08-16,2027-08-17,1.10.1.1.1.2,Recepción por etapa o control del periodo; no acredita ejecución,
1.10.1.1.1.4,Seguimiento de innovación ,1.10,E1 Desarrollo,Seguimiento de innovación ,Resultado de la ficha de familia y del paquete original; registro individual por código/ventana,"No duplicar padres, informes, ingeniería ni cobertura; no incluye horas de contraparte ni obras/adquisiciones del cliente",Criterio específico del diccionario T-14 del mismo código; evidencia sobre versión/periodo identificado,Davor Serey,40,D:12;S:8;Q:12;O:8,"Asignación y cuadrante integrado por código; entornos, usuarios y habilitaciones autorizados",,2027-08-17,2027-08-18,1.10.1.1.1.3,Recepción por etapa o control del periodo; no acredita ejecución,
1.10.1.1.1.5,Seguimiento de innovación ,1.10,E1 Desarrollo,Seguimiento de innovación ,Resultado de la ficha de familia y del paquete original; registro individual por código/ventana,"No duplicar padres, informes, ingeniería ni cobertura; no incluye horas de contraparte ni obras/adquisiciones del cliente",Criterio específico del diccionario T-14 del mismo código; evidencia sobre versión/periodo identificado,Davor Serey,16,A:4;Q:8;J:4,"Asignación y cuadrante integrado por código; entornos, usuarios y habilitaciones autorizados",,2027-08-18,2027-08-20,1.10.1.1.1.4,Recepción por etapa o control del periodo; no acredita ejecución,
1.10.1.1.2.1,Seguimiento de innovación ,1.10,E1 Desarrollo,Seguimiento de innovación ,Resultado de la ficha de familia y del paquete original; registro individual por código/ventana,"No duplicar padres, informes, ingeniería ni cobertura; no incluye horas de contraparte ni obras/adquisiciones del cliente",Criterio específico del diccionario T-14 del mismo código; evidencia sobre versión/periodo identificado,Davor Serey,16,D:4;S:4;Q:8,"Asignación y cuadrante integrado por código; entornos, usuarios y habilitaciones autorizados",,2027-09-24,2027-09-27,ENS-INI-1-2,Recepción por etapa o control del periodo; no acredita ejecución,
1.10.1.1.2.2,Seguimiento de innovación ,1.10,E1 Desarrollo,Seguimiento de innovación ,Resultado de la ficha de familia y del paquete original; registro individual por código/ventana,"No duplicar padres, informes, ingeniería ni cobertura; no incluye horas de contraparte ni obras/adquisiciones del cliente",Criterio específico del diccionario T-14 del mismo código; evidencia sobre versión/periodo identificado,Davor Serey,48,D:16;Q:16;I:8;O:8,"Asignación y cuadrante integrado por código; entornos, usuarios y habilitaciones autorizados",,2027-09-27,2027-09-28,1.10.1.1.2.1,Recepción por etapa o control del periodo; no acredita ejecución,
1.10.1.1.2.3,Seguimiento de innovación ,1.10,E1 Desarrollo,Seguimiento de innovación ,Resultado de la ficha de familia y del paquete original; registro individual por código/ventana,"No duplicar padres, informes, ingeniería ni cobertura; no incluye horas de contraparte ni obras/adquisiciones del cliente",Criterio específico del diccionario T-14 del mismo código; evidencia sobre versión/periodo identificado,Davor Serey,48,A:12;D:12;S:8;Q:16,"Asignación y cuadrante integrado por código; entornos, usuarios y habilitaciones autorizados",,2027-09-28,2027-09-29,1.10.1.1.2.2,Recepción por etapa o control del periodo; no acredita ejecución,
1.10.1.1.2.4,Seguimiento de innovación ,1.10,E1 Desarrollo,Seguimiento de innovación ,Resultado de la ficha de familia y del paquete original; registro individual por código/ventana,"No duplicar padres, informes, ingeniería ni cobertura; no incluye horas de contraparte ni obras/adquisiciones del cliente",Criterio específico del diccionario T-14 del mismo código; evidencia sobre versión/periodo identificado,Davor Serey,40,D:12;S:8;Q:12;O:8,"Asignación y cuadrante integrado por código; entornos, usuarios y habilitaciones autorizados",,2027-09-29,2027-09-30,1.10.1.1.2.3,Recepción por etapa o control del periodo; no acredita ejecución,
1.10.1.1.2.5,Seguimiento de innovación ,1.10,E1 Desarrollo,Seguimiento de innovación ,Resultado de la ficha de familia y del paquete original; registro individual por código/ventana,"No duplicar padres, informes, ingeniería ni cobertura; no incluye horas de contraparte ni obras/adquisiciones del cliente",Criterio específico del diccionario T-14 del mismo código; evidencia sobre versión/periodo identificado,Davor Serey,16,A:4;Q:8;J:4,"Asignación y cuadrante integrado por código; entornos, usuarios y habilitaciones autorizados",,2027-09-30,2027-10-04,1.10.1.1.2.4,Recepción por etapa o control del periodo; no acredita ejecución,
1.10.1.2.1.1,Seguimiento de innovación ,1.10,E2 Desarrollo,Seguimiento de innovación ,Resultado de la ficha de familia y del paquete original; registro individual por código/ventana,"No duplicar padres, informes, ingeniería ni cobertura; no incluye horas de contraparte ni obras/adquisiciones del cliente",Criterio específico del diccionario T-14 del mismo código; evidencia sobre versión/periodo identificado,Davor Serey,16,D:4;S:4;Q:8,"Asignación y cuadrante integrado por código; entornos, usuarios y habilitaciones autorizados",,2028-01-24,2028-01-25,ENS-INI-2-1,Recepción por etapa o control del periodo; no acredita ejecución,
1.10.1.2.1.2,Seguimiento de innovación ,1.10,E2 Desarrollo,Seguimiento de innovación ,Resultado de la ficha de familia y del paquete original; registro individual por código/ventana,"No duplicar padres, informes, ingeniería ni cobertura; no incluye horas de contraparte ni obras/adquisiciones del cliente",Criterio específico del diccionario T-14 del mismo código; evidencia sobre versión/periodo identificado,Davor Serey,48,D:16;Q:16;I:8;O:8,"Asignación y cuadrante integrado por código; entornos, usuarios y habilitaciones autorizados",,2028-01-25,2028-01-26,1.10.1.2.1.1,Recepción por etapa o control del periodo; no acredita ejecución,
1.10.1.2.1.3,Seguimiento de innovación ,1.10,E2 Desarrollo,Seguimiento de innovación ,Resultado de la ficha de familia y del paquete original; registro individual por código/ventana,"No duplicar padres, informes, ingeniería ni cobertura; no incluye horas de contraparte ni obras/adquisiciones del cliente",Criterio específico del diccionario T-14 del mismo código; evidencia sobre versión/periodo identificado,Davor Serey,48,A:12;D:12;S:8;Q:16,"Asignación y cuadrante integrado por código; entornos, usuarios y habilitaciones autorizados",,2028-01-27,2028-01-28,1.10.1.2.1.2,Recepción por etapa o control del periodo; no acredita ejecución,
1.10.1.2.1.4,Seguimiento de innovación ,1.10,E2 Desarrollo,Seguimiento de innovación ,Resultado de la ficha de familia y del paquete original; registro individual por código/ventana,"No duplicar padres, informes, ingeniería ni cobertura; no incluye horas de contraparte ni obras/adquisiciones del cliente",Criterio específico del diccionario T-14 del mismo código; evidencia sobre versión/periodo identificado,Davor Serey,40,D:12;S:8;Q:12;O:8,"Asignación y cuadrante integrado por código; entornos, usuarios y habilitaciones autorizados",,2028-01-28,2028-01-31,1.10.1.2.1.3,Recepción por etapa o control del periodo; no acredita ejecución,
1.10.1.2.1.5,Seguimiento de innovación ,1.10,E2 Desarrollo,Seguimiento de innovación ,Resultado de la ficha de familia y del paquete original; registro individual por código/ventana,"No duplicar padres, informes, ingeniería ni cobertura; no incluye horas de contraparte ni obras/adquisiciones del cliente",Criterio específico del diccionario T-14 del mismo código; evidencia sobre versión/periodo identificado,Davor Serey,16,A:4;Q:8;J:4,"Asignación y cuadrante integrado por código; entornos, usuarios y habilitaciones autorizados",,2028-01-31,2028-02-01,1.10.1.2.1.4,Recepción por etapa o control del periodo; no acredita ejecución,
1.10.1.2.2.1,Seguimiento de innovación ,1.10,E2 Desarrollo,Seguimiento de innovación ,Resultado de la ficha de familia y del paquete original; registro individual por código/ventana,"No duplicar padres, informes, ingeniería ni cobertura; no incluye horas de contraparte ni obras/adquisiciones del cliente",Criterio específico del diccionario T-14 del mismo código; evidencia sobre versión/periodo identificado,Davor Serey,16,D:4;S:4;Q:8,"Asignación y cuadrante integrado por código; entornos, usuarios y habilitaciones autorizados",,2028-03-06,2028-03-07,ENS-INI-2-2,Recepción por etapa o control del periodo; no acredita ejecución,
1.10.1.2.2.2,Seguimiento de innovación ,1.10,E2 Desarrollo,Seguimiento de innovación ,Resultado de la ficha de familia y del paquete original; registro individual por código/ventana,"No duplicar padres, informes, ingeniería ni cobertura; no incluye horas de contraparte ni obras/adquisiciones del cliente",Criterio específico del diccionario T-14 del mismo código; evidencia sobre versión/periodo identificado,Davor Serey,48,D:16;Q:16;I:8;O:8,"Asignación y cuadrante integrado por código; entornos, usuarios y habilitaciones autorizados",,2028-03-07,2028-03-08,1.10.1.2.2.1,Recepción por etapa o control del periodo; no acredita ejecución,
1.10.1.2.2.3,Seguimiento de innovación ,1.10,E2 Desarrollo,Seguimiento de innovación ,Resultado de la ficha de familia y del paquete original; registro individual por código/ventana,"No duplicar padres, informes, ingeniería ni cobertura; no incluye horas de contraparte ni obras/adquisiciones del cliente",Criterio específico del diccionario T-14 del mismo código; evidencia sobre versión/periodo identificado,Davor Serey,48,A:12;D:12;S:8;Q:16,"Asignación y cuadrante integrado por código; entornos, usuarios y habilitaciones autorizados",,2028-03-09,2028-03-10,1.10.1.2.2.2,Recepción por etapa o control del periodo; no acredita ejecución,
1.10.1.2.2.4,Seguimiento de innovación ,1.10,E2 Desarrollo,Seguimiento de innovación ,Resultado de la ficha de familia y del paquete original; registro individual por código/ventana,"No duplicar padres, informes, ingeniería ni cobertura; no incluye horas de contraparte ni obras/adquisiciones del cliente",Criterio específico del diccionario T-14 del mismo código; evidencia sobre versión/periodo identificado,Davor Serey,40,D:12;S:8;Q:12;O:8,"Asignación y cuadrante integrado por código; entornos, usuarios y habilitaciones autorizados",,2028-03-10,2028-03-13,1.10.1.2.2.3,Recepción por etapa o control del periodo; no acredita ejecución,
1.10.1.2.2.5,Seguimiento de innovación ,1.10,E2 Desarrollo,Seguimiento de innovación ,Resultado de la ficha de familia y del paquete original; registro individual por código/ventana,"No duplicar padres, informes, ingeniería ni cobertura; no incluye horas de contraparte ni obras/adquisiciones del cliente",Criterio específico del diccionario T-14 del mismo código; evidencia sobre versión/periodo identificado,Davor Serey,16,A:4;Q:8;J:4,"Asignación y cuadrante integrado por código; entornos, usuarios y habilitaciones autorizados",,2028-03-13,2028-03-14,1.10.1.2.2.4,Recepción por etapa o control del periodo; no acredita ejecución,
1.11.1.1.1,Seguimiento de innovación ,1.11,E1 Desarrollo,Seguimiento de innovación ,Resultado de la ficha de familia y del paquete original; registro individual por código/ventana,"No duplicar padres, informes, ingeniería ni cobertura; no incluye horas de contraparte ni obras/adquisiciones del cliente",Criterio específico del diccionario T-14 del mismo código; evidencia sobre versión/periodo identificado,José Lara Arce,32,A:8;D:8;Q:8;L:8,"Asignación y cuadrante integrado por código; entornos, usuarios y habilitaciones autorizados",,2027-11-16,2027-11-18,,Recepción por etapa o control del periodo; no acredita ejecución,
1.11.1.1.2,Seguimiento de innovación ,1.11,E1 Marcha blanca,Seguimiento de innovación ,Resultado de la ficha de familia y del paquete original; registro individual por código/ventana,"No duplicar padres, informes, ingeniería ni cobertura; no incluye horas de contraparte ni obras/adquisiciones del cliente",Criterio específico del diccionario T-14 del mismo código; evidencia sobre versión/periodo identificado,José Lara Arce,36,D:12;S:4;Q:8;L:8;J:4,"Asignación y cuadrante integrado por código; entornos, usuarios y habilitaciones autorizados",,2027-12-02,2027-12-06,,Recepción por etapa o control del periodo; no acredita ejecución,
1.11.1.1.3,Seguimiento de innovación ,1.11,E1 Marcha blanca,Seguimiento de innovación ,Resultado de la ficha de familia y del paquete original; registro individual por código/ventana,"No duplicar padres, informes, ingeniería ni cobertura; no incluye horas de contraparte ni obras/adquisiciones del cliente",Criterio específico del diccionario T-14 del mismo código; evidencia sobre versión/periodo identificado,José Lara Arce,32,A:8;D:8;Q:8;L:8,"Asignación y cuadrante integrado por código; entornos, usuarios y habilitaciones autorizados",,2027-12-16,2027-12-20,,Recepción por etapa o control del periodo; no acredita ejecución,
1.11.1.2.1,Seguimiento de innovación ,1.11,E1 Desarrollo,Seguimiento de innovación ,Resultado de la ficha de familia y del paquete original; registro individual por código/ventana,"No duplicar padres, informes, ingeniería ni cobertura; no incluye horas de contraparte ni obras/adquisiciones del cliente",Criterio específico del diccionario T-14 del mismo código; evidencia sobre versión/periodo identificado,José Lara Arce,32,A:8;D:8;Q:8;L:8,"Asignación y cuadrante integrado por código; entornos, usuarios y habilitaciones autorizados",,2027-11-17,2027-11-19,,Recepción por etapa o control del periodo; no acredita ejecución,
1.11.1.2.2,Seguimiento de innovación ,1.11,E1 Marcha blanca,Seguimiento de innovación ,Resultado de la ficha de familia y del paquete original; registro individual por código/ventana,"No duplicar padres, informes, ingeniería ni cobertura; no incluye horas de contraparte ni obras/adquisiciones del cliente",Criterio específico del diccionario T-14 del mismo código; evidencia sobre versión/periodo identificado,José Lara Arce,36,D:12;S:4;Q:8;L:8;J:4,"Asignación y cuadrante integrado por código; entornos, usuarios y habilitaciones autorizados",,2027-12-17,2027-12-21,,Recepción por etapa o control del periodo; no acredita ejecución,
1.11.1.2.3,Seguimiento de innovación ,1.11,E1 Marcha blanca,Seguimiento de innovación ,Resultado de la ficha de familia y del paquete original; registro individual por código/ventana,"No duplicar padres, informes, ingeniería ni cobertura; no incluye horas de contraparte ni obras/adquisiciones del cliente",Criterio específico del diccionario T-14 del mismo código; evidencia sobre versión/periodo identificado,José Lara Arce,32,A:8;D:8;Q:8;L:8,"Asignación y cuadrante integrado por código; entornos, usuarios y habilitaciones autorizados",,2027-12-03,2027-12-07,,Recepción por etapa o control del periodo; no acredita ejecución,
1.11.1.3.1,Seguimiento de innovación ,1.11,E2 Desarrollo,Seguimiento de innovación ,Resultado de la ficha de familia y del paquete original; registro individual por código/ventana,"No duplicar padres, informes, ingeniería ni cobertura; no incluye horas de contraparte ni obras/adquisiciones del cliente",Criterio específico del diccionario T-14 del mismo código; evidencia sobre versión/periodo identificado,José Lara Arce,32,A:8;D:8;Q:8;L:8,"Asignación y cuadrante integrado por código; entornos, usuarios y habilitaciones autorizados",,2028-05-16,2028-05-18,,Recepción por etapa o control del periodo; no acredita ejecución,
1.11.1.3.2,Seguimiento de innovación ,1.11,E2 Marcha blanca,Seguimiento de innovación ,Resultado de la ficha de familia y del paquete original; registro individual por código/ventana,"No duplicar padres, informes, ingeniería ni cobertura; no incluye horas de contraparte ni obras/adquisiciones del cliente",Criterio específico del diccionario T-14 del mismo código; evidencia sobre versión/periodo identificado,José Lara Arce,36,D:12;S:4;Q:8;L:8;J:4,"Asignación y cuadrante integrado por código; entornos, usuarios y habilitaciones autorizados",,2028-06-02,2028-06-06,,Recepción por etapa o control del periodo; no acredita ejecución,
1.11.1.3.3,Seguimiento de innovación ,1.11,E2 Marcha blanca,Seguimiento de innovación ,Resultado de la ficha de familia y del paquete original; registro individual por código/ventana,"No duplicar padres, informes, ingeniería ni cobertura; no incluye horas de contraparte ni obras/adquisiciones del cliente",Criterio específico del diccionario T-14 del mismo código; evidencia sobre versión/periodo identificado,José Lara Arce,32,A:8;D:8;Q:8;L:8,"Asignación y cuadrante integrado por código; entornos, usuarios y habilitaciones autorizados",,2028-06-16,2028-06-21,,Recepción por etapa o control del periodo; no acredita ejecución,
1.11.1.MB.1.13.1,Seguimiento de innovación ,1.11,E1 Marcha blanca,Seguimiento de innovación ,Resultado de la ficha de familia y del paquete original; registro individual por código/ventana,"No duplicar padres, informes, ingeniería ni cobertura; no incluye horas de contraparte ni obras/adquisiciones del cliente",Criterio específico del diccionario T-14 del mismo código; evidencia sobre versión/periodo identificado,José Lara Arce,48,A:8;D:8;Q:8;O:24,"Asignación y cuadrante integrado por código; entornos, usuarios y habilitaciones autorizados",,2027-12-06,2027-12-10,,Recepción por etapa o control del periodo; no acredita ejecución,
1.11.1.MB.1.13.2,Seguimiento de innovación ,1.11,E1 Marcha blanca,Seguimiento de innovación ,Resultado de la ficha de familia y del paquete original; registro individual por código/ventana,"No duplicar padres, informes, ingeniería ni cobertura; no incluye horas de contraparte ni obras/adquisiciones del cliente",Criterio específico del diccionario T-14 del mismo código; evidencia sobre versión/periodo identificado,José Lara Arce,48,A:8;D:8;Q:8;O:24,"Asignación y cuadrante integrado por código; entornos, usuarios y habilitaciones autorizados",,2027-12-16,2027-12-20,,Recepción por etapa o control del periodo; no acredita ejecución,
1.11.1.MB.1.14.1,Seguimiento de innovación ,1.11,E1 Marcha blanca,Seguimiento de innovación ,Resultado de la ficha de familia y del paquete original; registro individual por código/ventana,"No duplicar padres, informes, ingeniería ni cobertura; no incluye horas de contraparte ni obras/adquisiciones del cliente",Criterio específico del diccionario T-14 del mismo código; evidencia sobre versión/periodo identificado,José Lara Arce,48,A:8;D:8;Q:8;O:24,"Asignación y cuadrante integrado por código; entornos, usuarios y habilitaciones autorizados",,2028-01-04,2028-01-06,,Recepción por etapa o control del periodo; no acredita ejecución,
1.11.1.MB.1.14.2,Seguimiento de innovación ,1.11,E1 Marcha blanca,Seguimiento de innovación ,Resultado de la ficha de familia y del paquete original; registro individual por código/ventana,"No duplicar padres, informes, ingeniería ni cobertura; no incluye horas de contraparte ni obras/adquisiciones del cliente",Criterio específico del diccionario T-14 del mismo código; evidencia sobre versión/periodo identificado,José Lara Arce,48,A:8;D:8;Q:8;O:24,"Asignación y cuadrante integrado por código; entornos, usuarios y habilitaciones autorizados",,2028-01-19,2028-01-24,,Recepción por etapa o control del periodo; no acredita ejecución,
1.11.1.MB.1.15.1,Seguimiento de innovación ,1.11,E1 Marcha blanca,Seguimiento de innovación ,Resultado de la ficha de familia y del paquete original; registro individual por código/ventana,"No duplicar padres, informes, ingeniería ni cobertura; no incluye horas de contraparte ni obras/adquisiciones del cliente",Criterio específico del diccionario T-14 del mismo código; evidencia sobre versión/periodo identificado,José Lara Arce,48,A:8;D:8;Q:8;O:24,"Asignación y cuadrante integrado por código; entornos, usuarios y habilitaciones autorizados",,2028-02-03,2028-02-07,,Recepción por etapa o control del periodo; no acredita ejecución,
1.11.1.MB.1.15.2,Seguimiento de innovación ,1.11,E1 Marcha blanca,Seguimiento de innovación ,Resultado de la ficha de familia y del paquete original; registro individual por código/ventana,"No duplicar padres, informes, ingeniería ni cobertura; no incluye horas de contraparte ni obras/adquisiciones del cliente",Criterio específico del diccionario T-14 del mismo código; evidencia sobre versión/periodo identificado,José Lara Arce,48,A:8;D:8;Q:8;O:24,"Asignación y cuadrante integrado por código; entornos, usuarios y habilitaciones autorizados",,2028-02-16,2028-02-18,,Recepción por etapa o control del periodo; no acredita ejecución,
1.11.1.MB.2.19.1,Seguimiento de innovación ,1.11,E2 Marcha blanca,Seguimiento de innovación ,Resultado de la ficha de familia y del paquete original; registro individual por código/ventana,"No duplicar padres, informes, ingeniería ni cobertura; no incluye horas de contraparte ni obras/adquisiciones del cliente",Criterio específico del diccionario T-14 del mismo código; evidencia sobre versión/periodo identificado,José Lara Arce,48,A:8;D:8;Q:8;O:24,"Asignación y cuadrante integrado por código; entornos, usuarios y habilitaciones autorizados",,2028-06-05,2028-06-08,,Recepción por etapa o control del periodo; no acredita ejecución,
1.11.1.MB.2.19.2,Seguimiento de innovación ,1.11,E2 Marcha blanca,Seguimiento de innovación ,Resultado de la ficha de familia y del paquete original; registro individual por código/ventana,"No duplicar padres, informes, ingeniería ni cobertura; no incluye horas de contraparte ni obras/adquisiciones del cliente",Criterio específico del diccionario T-14 del mismo código; evidencia sobre versión/periodo identificado,José Lara Arce,48,A:8;D:8;Q:8;O:24,"Asignación y cuadrante integrado por código; entornos, usuarios y habilitaciones autorizados",,2028-06-19,2028-06-22,,Recepción por etapa o control del periodo; no acredita ejecución,
1.11.1.MB.2.20.1,Seguimiento de innovación ,1.11,E2 Marcha blanca,Seguimiento de innovación ,Resultado de la ficha de familia y del paquete original; registro individual por código/ventana,"No duplicar padres, informes, ingeniería ni cobertura; no incluye horas de contraparte ni obras/adquisiciones del cliente",Criterio específico del diccionario T-14 del mismo código; evidencia sobre versión/periodo identificado,José Lara Arce,48,A:8;D:8;Q:8;O:24,"Asignación y cuadrante integrado por código; entornos, usuarios y habilitaciones autorizados",,2028-07-06,2028-07-11,,Recepción por etapa o control del periodo; no acredita ejecución,
1.11.1.MB.2.20.2,Seguimiento de innovación ,1.11,E2 Marcha blanca,Seguimiento de innovación ,Resultado de la ficha de familia y del paquete original; registro individual por código/ventana,"No duplicar padres, informes, ingeniería ni cobertura; no incluye horas de contraparte ni obras/adquisiciones del cliente",Criterio específico del diccionario T-14 del mismo código; evidencia sobre versión/periodo identificado,José Lara Arce,48,A:8;D:8;Q:8;O:24,"Asignación y cuadrante integrado por código; entornos, usuarios y habilitaciones autorizados",,2028-07-18,2028-07-20,,Recepción por etapa o control del periodo; no acredita ejecución,
1.11.1.EST.1.1,Seguimiento de innovación ,1.11,E1 Estabilización,Seguimiento de innovación ,Resultado de la ficha de familia y del paquete original; registro individual por código/ventana,"No duplicar padres, informes, ingeniería ni cobertura; no incluye horas de contraparte ni obras/adquisiciones del cliente",Criterio específico del diccionario T-14 del mismo código; evidencia sobre versión/periodo identificado,José Lara Arce,48,D:8;Q:8;O:32,"Asignación y cuadrante integrado por código; entornos, usuarios y habilitaciones autorizados",,2028-03-01,2028-03-06,,Recepción por etapa o control del periodo; no acredita ejecución,
1.11.1.EST.1.2,Seguimiento de innovación ,1.11,E1 Estabilización,Seguimiento de innovación ,Resultado de la ficha de familia y del paquete original; registro individual por código/ventana,"No duplicar padres, informes, ingeniería ni cobertura; no incluye horas de contraparte ni obras/adquisiciones del cliente",Criterio específico del diccionario T-14 del mismo código; evidencia sobre versión/periodo identificado,José Lara Arce,48,D:8;Q:8;O:32,"Asignación y cuadrante integrado por código; entornos, usuarios y habilitaciones autorizados",,2028-03-17,2028-03-22,,Recepción por etapa o control del periodo; no acredita ejecución,
1.11.1.EST.2.1,Seguimiento de innovación ,1.11,Operación,Seguimiento de innovación ,Resultado de la ficha de familia y del paquete original; registro individual por código/ventana,"No duplicar padres, informes, ingeniería ni cobertura; no incluye horas de contraparte ni obras/adquisiciones del cliente",Criterio específico del diccionario T-14 del mismo código; evidencia sobre versión/periodo identificado,José Lara Arce,48,D:8;Q:8;O:32,"Asignación y cuadrante integrado por código; entornos, usuarios y habilitaciones autorizados",,2028-08-01,2028-08-04,,Recepción por etapa o control del periodo; no acredita ejecución,
1.11.1.EST.2.2,Seguimiento de innovación ,1.11,Operación,Seguimiento de innovación ,Resultado de la ficha de familia y del paquete original; registro individual por código/ventana,"No duplicar padres, informes, ingeniería ni cobertura; no incluye horas de contraparte ni obras/adquisiciones del cliente",Criterio específico del diccionario T-14 del mismo código; evidencia sobre versión/periodo identificado,José Lara Arce,48,D:8;Q:8;O:32,"Asignación y cuadrante integrado por código; entornos, usuarios y habilitaciones autorizados",,2028-08-16,2028-08-21,,Recepción por etapa o control del periodo; no acredita ejecución,
1.12.2.1.21.1,Seguimiento de innovación IN1.7,1.12,Operación,Seguimiento de innovación IN1.7,Resultado de la ficha de familia y del paquete original; registro individual por código/ventana,"No duplicar padres, informes, ingeniería ni cobertura; no incluye horas de contraparte ni obras/adquisiciones del cliente",Criterio específico del diccionario T-14 del mismo código; evidencia sobre versión/periodo identificado,José Lara Arce,8,A:2;Q:2;O:4,"Asignación y cuadrante integrado por código; entornos, usuarios y habilitaciones autorizados",,2028-08-04,2028-08-07,,Recepción por etapa o control del periodo; no acredita ejecución,
1.12.2.1.21.2,Seguimiento de innovación IN1.7,1.12,Operación,Seguimiento de innovación IN1.7,Resultado de la ficha de familia y del paquete original; registro individual por código/ventana,"No duplicar padres, informes, ingeniería ni cobertura; no incluye horas de contraparte ni obras/adquisiciones del cliente",Criterio específico del diccionario T-14 del mismo código; evidencia sobre versión/periodo identificado,José Lara Arce,8,A:2;Q:2;O:4,"Asignación y cuadrante integrado por código; entornos, usuarios y habilitaciones autorizados",,2028-08-21,2028-08-22,,Recepción por etapa o control del periodo; no acredita ejecución,
1.12.2.3.21.1,Seguimiento de innovación IN3.7,1.12,Operación,Seguimiento de innovación IN3.7,Resultado de la ficha de familia y del paquete original; registro individual por código/ventana,"No duplicar padres, informes, ingeniería ni cobertura; no incluye horas de contraparte ni obras/adquisiciones del cliente",Criterio específico del diccionario T-14 del mismo código; evidencia sobre versión/periodo identificado,José Lara Arce,8,D:2;Q:2;O:4,"Asignación y cuadrante integrado por código; entornos, usuarios y habilitaciones autorizados",,2028-08-04,2028-08-07,,Recepción por etapa o control del periodo; no acredita ejecución,
1.12.2.3.21.2,Seguimiento de innovación IN3.7,1.12,Operación,Seguimiento de innovación IN3.7,Resultado de la ficha de familia y del paquete original; registro individual por código/ventana,"No duplicar padres, informes, ingeniería ni cobertura; no incluye horas de contraparte ni obras/adquisiciones del cliente",Criterio específico del diccionario T-14 del mismo código; evidencia sobre versión/periodo identificado,José Lara Arce,8,D:2;Q:2;O:4,"Asignación y cuadrante integrado por código; entornos, usuarios y habilitaciones autorizados",,2028-08-16,2028-08-16,,Recepción por etapa o control del periodo; no acredita ejecución,
1.12.2.4.21,Seguimiento de innovación IN4.4,1.12,Operación,Seguimiento de innovación IN4.4,Resultado de la ficha de familia y del paquete original; registro individual por código/ventana,"No duplicar padres, informes, ingeniería ni cobertura; no incluye horas de contraparte ni obras/adquisiciones del cliente",Criterio específico del diccionario T-14 del mismo código; evidencia sobre versión/periodo identificado,José Lara Arce,16,A:8;Q:4;J:4,"Asignación y cuadrante integrado por código; entornos, usuarios y habilitaciones autorizados",,2028-08-16,2028-08-17,,Recepción por etapa o control del periodo; no acredita ejecución,
1.12.2.5.21,Seguimiento de innovación IN5.4,1.12,Operación,Seguimiento de innovación IN5.4,Resultado de la ficha de familia y del paquete original; registro individual por código/ventana,"No duplicar padres, informes, ingeniería ni cobertura; no incluye horas de contraparte ni obras/adquisiciones del cliente",Criterio específico del diccionario T-14 del mismo código; evidencia sobre versión/periodo identificado,José Lara Arce,16,D:8;Q:4;O:4,"Asignación y cuadrante integrado por código; entornos, usuarios y habilitaciones autorizados",,2028-08-18,2028-08-21,,Recepción por etapa o control del periodo; no acredita ejecución,
1.12.2.1.22.1,Seguimiento de innovación IN1.7,1.12,Operación,Seguimiento de innovación IN1.7,Resultado de la ficha de familia y del paquete original; registro individual por código/ventana,"No duplicar padres, informes, ingeniería ni cobertura; no incluye horas de contraparte ni obras/adquisiciones del cliente",Criterio específico del diccionario T-14 del mismo código; evidencia sobre versión/periodo identificado,José Lara Arce,8,A:2;Q:2;O:4,"Asignación y cuadrante integrado por código; entornos, usuarios y habilitaciones autorizados",,2028-09-01,2028-09-01,,Recepción por etapa o control del periodo; no acredita ejecución,
1.12.2.1.22.2,Seguimiento de innovación IN1.7,1.12,Operación,Seguimiento de innovación IN1.7,Resultado de la ficha de familia y del paquete original; registro individual por código/ventana,"No duplicar padres, informes, ingeniería ni cobertura; no incluye horas de contraparte ni obras/adquisiciones del cliente",Criterio específico del diccionario T-14 del mismo código; evidencia sobre versión/periodo identificado,José Lara Arce,8,A:2;Q:2;O:4,"Asignación y cuadrante integrado por código; entornos, usuarios y habilitaciones autorizados",,2028-09-20,2028-09-20,,Recepción por etapa o control del periodo; no acredita ejecución,
1.12.2.3.22.1,Seguimiento de innovación IN3.7,1.12,Operación,Seguimiento de innovación IN3.7,Resultado de la ficha de familia y del paquete original; registro individual por código/ventana,"No duplicar padres, informes, ingeniería ni cobertura; no incluye horas de contraparte ni obras/adquisiciones del cliente",Criterio específico del diccionario T-14 del mismo código; evidencia sobre versión/periodo identificado,José Lara Arce,8,D:2;Q:2;O:4,"Asignación y cuadrante integrado por código; entornos, usuarios y habilitaciones autorizados",,2028-09-01,2028-09-04,,Recepción por etapa o control del periodo; no acredita ejecución,
1.12.2.3.22.2,Seguimiento de innovación IN3.7,1.12,Operación,Seguimiento de innovación IN3.7,Resultado de la ficha de familia y del paquete original; registro individual por código/ventana,"No duplicar padres, informes, ingeniería ni cobertura; no incluye horas de contraparte ni obras/adquisiciones del cliente",Criterio específico del diccionario T-14 del mismo código; evidencia sobre versión/periodo identificado,José Lara Arce,8,D:2;Q:2;O:4,"Asignación y cuadrante integrado por código; entornos, usuarios y habilitaciones autorizados",,2028-09-20,2028-09-21,,Recepción por etapa o control del periodo; no acredita ejecución,
1.12.2.4.22,Seguimiento de innovación IN4.4,1.12,Operación,Seguimiento de innovación IN4.4,Resultado de la ficha de familia y del paquete original; registro individual por código/ventana,"No duplicar padres, informes, ingeniería ni cobertura; no incluye horas de contraparte ni obras/adquisiciones del cliente",Criterio específico del diccionario T-14 del mismo código; evidencia sobre versión/periodo identificado,José Lara Arce,16,A:8;Q:4;J:4,"Asignación y cuadrante integrado por código; entornos, usuarios y habilitaciones autorizados",,2028-09-20,2028-09-22,,Recepción por etapa o control del periodo; no acredita ejecución,
1.12.2.5.22,Seguimiento de innovación IN5.4,1.12,Operación,Seguimiento de innovación IN5.4,Resultado de la ficha de familia y del paquete original; registro individual por código/ventana,"No duplicar padres, informes, ingeniería ni cobertura; no incluye horas de contraparte ni obras/adquisiciones del cliente",Criterio específico del diccionario T-14 del mismo código; evidencia sobre versión/periodo identificado,José Lara Arce,16,D:8;Q:4;O:4,"Asignación y cuadrante integrado por código; entornos, usuarios y habilitaciones autorizados",,2028-09-21,2028-09-25,,Recepción por etapa o control del periodo; no acredita ejecución,
1.12.2.1.23.1,Seguimiento de innovación IN1.7,1.12,Operación,Seguimiento de innovación IN1.7,Resultado de la ficha de familia y del paquete original; registro individual por código/ventana,"No duplicar padres, informes, ingeniería ni cobertura; no incluye horas de contraparte ni obras/adquisiciones del cliente",Criterio específico del diccionario T-14 del mismo código; evidencia sobre versión/periodo identificado,José Lara Arce,8,A:2;Q:2;O:4,"Asignación y cuadrante integrado por código; entornos, usuarios y habilitaciones autorizados",,2028-10-02,2028-10-02,,Recepción por etapa o control del periodo; no acredita ejecución,
1.12.2.1.23.2,Seguimiento de innovación IN1.7,1.12,Operación,Seguimiento de innovación IN1.7,Resultado de la ficha de familia y del paquete original; registro individual por código/ventana,"No duplicar padres, informes, ingeniería ni cobertura; no incluye horas de contraparte ni obras/adquisiciones del cliente",Criterio específico del diccionario T-14 del mismo código; evidencia sobre versión/periodo identificado,José Lara Arce,8,A:2;Q:2;O:4,"Asignación y cuadrante integrado por código; entornos, usuarios y habilitaciones autorizados",,2028-10-16,2028-10-16,,Recepción por etapa o control del periodo; no acredita ejecución,
1.12.2.3.23.1,Seguimiento de innovación IN3.7,1.12,Operación,Seguimiento de innovación IN3.7,Resultado de la ficha de familia y del paquete original; registro individual por código/ventana,"No duplicar padres, informes, ingeniería ni cobertura; no incluye horas de contraparte ni obras/adquisiciones del cliente",Criterio específico del diccionario T-14 del mismo código; evidencia sobre versión/periodo identificado,José Lara Arce,8,D:2;Q:2;O:4,"Asignación y cuadrante integrado por código; entornos, usuarios y habilitaciones autorizados",,2028-10-02,2028-10-03,,Recepción por etapa o control del periodo; no acredita ejecución,
1.12.2.3.23.2,Seguimiento de innovación IN3.7,1.12,Operación,Seguimiento de innovación IN3.7,Resultado de la ficha de familia y del paquete original; registro individual por código/ventana,"No duplicar padres, informes, ingeniería ni cobertura; no incluye horas de contraparte ni obras/adquisiciones del cliente",Criterio específico del diccionario T-14 del mismo código; evidencia sobre versión/periodo identificado,José Lara Arce,8,D:2;Q:2;O:4,"Asignación y cuadrante integrado por código; entornos, usuarios y habilitaciones autorizados",,2028-10-16,2028-10-17,,Recepción por etapa o control del periodo; no acredita ejecución,
1.12.2.4.23,Seguimiento de innovación IN4.4,1.12,Operación,Seguimiento de innovación IN4.4,Resultado de la ficha de familia y del paquete original; registro individual por código/ventana,"No duplicar padres, informes, ingeniería ni cobertura; no incluye horas de contraparte ni obras/adquisiciones del cliente",Criterio específico del diccionario T-14 del mismo código; evidencia sobre versión/periodo identificado,José Lara Arce,16,A:8;Q:4;J:4,"Asignación y cuadrante integrado por código; entornos, usuarios y habilitaciones autorizados",,2028-10-16,2028-10-18,,Recepción por etapa o control del periodo; no acredita ejecución,
1.12.2.5.23,Seguimiento de innovación IN5.4,1.12,Operación,Seguimiento de innovación IN5.4,Resultado de la ficha de familia y del paquete original; registro individual por código/ventana,"No duplicar padres, informes, ingeniería ni cobertura; no incluye horas de contraparte ni obras/adquisiciones del cliente",Criterio específico del diccionario T-14 del mismo código; evidencia sobre versión/periodo identificado,José Lara Arce,16,D:8;Q:4;O:4,"Asignación y cuadrante integrado por código; entornos, usuarios y habilitaciones autorizados",,2028-10-17,2028-10-19,,Recepción por etapa o control del periodo; no acredita ejecución,
1.12.2.1.24.1,Seguimiento de innovación IN1.7,1.12,Operación,Seguimiento de innovación IN1.7,Resultado de la ficha de familia y del paquete original; registro individual por código/ventana,"No duplicar padres, informes, ingeniería ni cobertura; no incluye horas de contraparte ni obras/adquisiciones del cliente",Criterio específico del diccionario T-14 del mismo código; evidencia sobre versión/periodo identificado,José Lara Arce,8,A:2;Q:2;O:4,"Asignación y cuadrante integrado por código; entornos, usuarios y habilitaciones autorizados",,2028-11-02,2028-11-02,,Recepción por etapa o control del periodo; no acredita ejecución,
1.12.2.1.24.2,Seguimiento de innovación IN1.7,1.12,Operación,Seguimiento de innovación IN1.7,Resultado de la ficha de familia y del paquete original; registro individual por código/ventana,"No duplicar padres, informes, ingeniería ni cobertura; no incluye horas de contraparte ni obras/adquisiciones del cliente",Criterio específico del diccionario T-14 del mismo código; evidencia sobre versión/periodo identificado,José Lara Arce,8,A:2;Q:2;O:4,"Asignación y cuadrante integrado por código; entornos, usuarios y habilitaciones autorizados",,2028-11-16,2028-11-16,,Recepción por etapa o control del periodo; no acredita ejecución,
1.12.2.3.24.1,Seguimiento de innovación IN3.7,1.12,Operación,Seguimiento de innovación IN3.7,Resultado de la ficha de familia y del paquete original; registro individual por código/ventana,"No duplicar padres, informes, ingeniería ni cobertura; no incluye horas de contraparte ni obras/adquisiciones del cliente",Criterio específico del diccionario T-14 del mismo código; evidencia sobre versión/periodo identificado,José Lara Arce,8,D:2;Q:2;O:4,"Asignación y cuadrante integrado por código; entornos, usuarios y habilitaciones autorizados",,2028-11-02,2028-11-03,,Recepción por etapa o control del periodo; no acredita ejecución,
1.12.2.3.24.2,Seguimiento de innovación IN3.7,1.12,Operación,Seguimiento de innovación IN3.7,Resultado de la ficha de familia y del paquete original; registro individual por código/ventana,"No duplicar padres, informes, ingeniería ni cobertura; no incluye horas de contraparte ni obras/adquisiciones del cliente",Criterio específico del diccionario T-14 del mismo código; evidencia sobre versión/periodo identificado,José Lara Arce,8,D:2;Q:2;O:4,"Asignación y cuadrante integrado por código; entornos, usuarios y habilitaciones autorizados",,2028-11-16,2028-11-16,,Recepción por etapa o control del periodo; no acredita ejecución,
1.12.2.4.24,Seguimiento de innovación IN4.4,1.12,Operación,Seguimiento de innovación IN4.4,Resultado de la ficha de familia y del paquete original; registro individual por código/ventana,"No duplicar padres, informes, ingeniería ni cobertura; no incluye horas de contraparte ni obras/adquisiciones del cliente",Criterio específico del diccionario T-14 del mismo código; evidencia sobre versión/periodo identificado,José Lara Arce,16,A:8;Q:4;J:4,"Asignación y cuadrante integrado por código; entornos, usuarios y habilitaciones autorizados",,2028-11-16,2028-11-17,,Recepción por etapa o control del periodo; no acredita ejecución,
1.12.2.5.24,Seguimiento de innovación IN5.4,1.12,Operación,Seguimiento de innovación IN5.4,Resultado de la ficha de familia y del paquete original; registro individual por código/ventana,"No duplicar padres, informes, ingeniería ni cobertura; no incluye horas de contraparte ni obras/adquisiciones del cliente",Criterio específico del diccionario T-14 del mismo código; evidencia sobre versión/periodo identificado,José Lara Arce,16,D:8;Q:4;O:4,"Asignación y cuadrante integrado por código; entornos, usuarios y habilitaciones autorizados",,2028-11-16,2028-11-20,,Recepción por etapa o control del periodo; no acredita ejecución,
1.12.2.1.25.1,Seguimiento de innovación IN1.7,1.12,Operación,Seguimiento de innovación IN1.7,Resultado de la ficha de familia y del paquete original; registro individual por código/ventana,"No duplicar padres, informes, ingeniería ni cobertura; no incluye horas de contraparte ni obras/adquisiciones del cliente",Criterio específico del diccionario T-14 del mismo código; evidencia sobre versión/periodo identificado,José Lara Arce,8,A:2;Q:2;O:4,"Asignación y cuadrante integrado por código; entornos, usuarios y habilitaciones autorizados",,2028-12-01,2028-12-01,,Recepción por etapa o control del periodo; no acredita ejecución,
1.12.2.1.25.2,Seguimiento de innovación IN1.7,1.12,Operación,Seguimiento de innovación IN1.7,Resultado de la ficha de familia y del paquete original; registro individual por código/ventana,"No duplicar padres, informes, ingeniería ni cobertura; no incluye horas de contraparte ni obras/adquisiciones del cliente",Criterio específico del diccionario T-14 del mismo código; evidencia sobre versión/periodo identificado,José Lara Arce,8,A:2;Q:2;O:4,"Asignación y cuadrante integrado por código; entornos, usuarios y habilitaciones autorizados",,2028-12-18,2028-12-18,,Recepción por etapa o control del periodo; no acredita ejecución,
1.12.2.3.25.1,Seguimiento de innovación IN3.7,1.12,Operación,Seguimiento de innovación IN3.7,Resultado de la ficha de familia y del paquete original; registro individual por código/ventana,"No duplicar padres, informes, ingeniería ni cobertura; no incluye horas de contraparte ni obras/adquisiciones del cliente",Criterio específico del diccionario T-14 del mismo código; evidencia sobre versión/periodo identificado,José Lara Arce,8,D:2;Q:2;O:4,"Asignación y cuadrante integrado por código; entornos, usuarios y habilitaciones autorizados",,2028-12-01,2028-12-04,,Recepción por etapa o control del periodo; no acredita ejecución,
1.12.2.3.25.2,Seguimiento de innovación IN3.7,1.12,Operación,Seguimiento de innovación IN3.7,Resultado de la ficha de familia y del paquete original; registro individual por código/ventana,"No duplicar padres, informes, ingeniería ni cobertura; no incluye horas de contraparte ni obras/adquisiciones del cliente",Criterio específico del diccionario T-14 del mismo código; evidencia sobre versión/periodo identificado,José Lara Arce,8,D:2;Q:2;O:4,"Asignación y cuadrante integrado por código; entornos, usuarios y habilitaciones autorizados",,2028-12-18,2028-12-19,,Recepción por etapa o control del periodo; no acredita ejecución,
1.12.2.4.25,Seguimiento de innovación IN4.4,1.12,Operación,Seguimiento de innovación IN4.4,Resultado de la ficha de familia y del paquete original; registro individual por código/ventana,"No duplicar padres, informes, ingeniería ni cobertura; no incluye horas de contraparte ni obras/adquisiciones del cliente",Criterio específico del diccionario T-14 del mismo código; evidencia sobre versión/periodo identificado,José Lara Arce,16,A:8;Q:4;J:4,"Asignación y cuadrante integrado por código; entornos, usuarios y habilitaciones autorizados",,2028-12-18,2028-12-20,,Recepción por etapa o control del periodo; no acredita ejecución,
1.12.2.5.25,Seguimiento de innovación IN5.4,1.12,Operación,Seguimiento de innovación IN5.4,Resultado de la ficha de familia y del paquete original; registro individual por código/ventana,"No duplicar padres, informes, ingeniería ni cobertura; no incluye horas de contraparte ni obras/adquisiciones del cliente",Criterio específico del diccionario T-14 del mismo código; evidencia sobre versión/periodo identificado,José Lara Arce,16,D:8;Q:4;O:4,"Asignación y cuadrante integrado por código; entornos, usuarios y habilitaciones autorizados",,2028-12-19,2028-12-21,,Recepción por etapa o control del periodo; no acredita ejecución,
1.12.2.1.26.1,Seguimiento de innovación IN1.7,1.12,Operación,Seguimiento de innovación IN1.7,Resultado de la ficha de familia y del paquete original; registro individual por código/ventana,"No duplicar padres, informes, ingeniería ni cobertura; no incluye horas de contraparte ni obras/adquisiciones del cliente",Criterio específico del diccionario T-14 del mismo código; evidencia sobre versión/periodo identificado,José Lara Arce,8,A:2;Q:2;O:4,"Asignación y cuadrante integrado por código; entornos, usuarios y habilitaciones autorizados",,2029-01-02,2029-01-02,,Recepción por etapa o control del periodo; no acredita ejecución,
1.12.2.1.26.2,Seguimiento de innovación IN1.7,1.12,Operación,Seguimiento de innovación IN1.7,Resultado de la ficha de familia y del paquete original; registro individual por código/ventana,"No duplicar padres, informes, ingeniería ni cobertura; no incluye horas de contraparte ni obras/adquisiciones del cliente",Criterio específico del diccionario T-14 del mismo código; evidencia sobre versión/periodo identificado,José Lara Arce,8,A:2;Q:2;O:4,"Asignación y cuadrante integrado por código; entornos, usuarios y habilitaciones autorizados",,2029-01-16,2029-01-16,,Recepción por etapa o control del periodo; no acredita ejecución,
1.12.2.3.26.1,Seguimiento de innovación IN3.7,1.12,Operación,Seguimiento de innovación IN3.7,Resultado de la ficha de familia y del paquete original; registro individual por código/ventana,"No duplicar padres, informes, ingeniería ni cobertura; no incluye horas de contraparte ni obras/adquisiciones del cliente",Criterio específico del diccionario T-14 del mismo código; evidencia sobre versión/periodo identificado,José Lara Arce,8,D:2;Q:2;O:4,"Asignación y cuadrante integrado por código; entornos, usuarios y habilitaciones autorizados",,2029-01-02,2029-01-03,,Recepción por etapa o control del periodo; no acredita ejecución,
1.12.2.3.26.2,Seguimiento de innovación IN3.7,1.12,Operación,Seguimiento de innovación IN3.7,Resultado de la ficha de familia y del paquete original; registro individual por código/ventana,"No duplicar padres, informes, ingeniería ni cobertura; no incluye horas de contraparte ni obras/adquisiciones del cliente",Criterio específico del diccionario T-14 del mismo código; evidencia sobre versión/periodo identificado,José Lara Arce,8,D:2;Q:2;O:4,"Asignación y cuadrante integrado por código; entornos, usuarios y habilitaciones autorizados",,2029-01-16,2029-01-17,,Recepción por etapa o control del periodo; no acredita ejecución,
1.12.2.4.26,Seguimiento de innovación IN4.4,1.12,Operación,Seguimiento de innovación IN4.4,Resultado de la ficha de familia y del paquete original; registro individual por código/ventana,"No duplicar padres, informes, ingeniería ni cobertura; no incluye horas de contraparte ni obras/adquisiciones del cliente",Criterio específico del diccionario T-14 del mismo código; evidencia sobre versión/periodo identificado,José Lara Arce,16,A:8;Q:4;J:4,"Asignación y cuadrante integrado por código; entornos, usuarios y habilitaciones autorizados",,2029-01-16,2029-01-18,,Recepción por etapa o control del periodo; no acredita ejecución,
1.12.2.5.26,Seguimiento de innovación IN5.4,1.12,Operación,Seguimiento de innovación IN5.4,Resultado de la ficha de familia y del paquete original; registro individual por código/ventana,"No duplicar padres, informes, ingeniería ni cobertura; no incluye horas de contraparte ni obras/adquisiciones del cliente",Criterio específico del diccionario T-14 del mismo código; evidencia sobre versión/periodo identificado,José Lara Arce,16,D:8;Q:4;O:4,"Asignación y cuadrante integrado por código; entornos, usuarios y habilitaciones autorizados",,2029-01-17,2029-01-19,,Recepción por etapa o control del periodo; no acredita ejecución,
1.12.2.1.27.1,Seguimiento de innovación IN1.7,1.12,Operación,Seguimiento de innovación IN1.7,Resultado de la ficha de familia y del paquete original; registro individual por código/ventana,"No duplicar padres, informes, ingeniería ni cobertura; no incluye horas de contraparte ni obras/adquisiciones del cliente",Criterio específico del diccionario T-14 del mismo código; evidencia sobre versión/periodo identificado,José Lara Arce,8,A:2;Q:2;O:4,"Asignación y cuadrante integrado por código; entornos, usuarios y habilitaciones autorizados",,2029-02-01,2029-02-01,,Recepción por etapa o control del periodo; no acredita ejecución,
1.12.2.1.27.2,Seguimiento de innovación IN1.7,1.12,Operación,Seguimiento de innovación IN1.7,Resultado de la ficha de familia y del paquete original; registro individual por código/ventana,"No duplicar padres, informes, ingeniería ni cobertura; no incluye horas de contraparte ni obras/adquisiciones del cliente",Criterio específico del diccionario T-14 del mismo código; evidencia sobre versión/periodo identificado,José Lara Arce,8,A:2;Q:2;O:4,"Asignación y cuadrante integrado por código; entornos, usuarios y habilitaciones autorizados",,2029-02-16,2029-02-16,,Recepción por etapa o control del periodo; no acredita ejecución,
1.12.2.3.27.1,Seguimiento de innovación IN3.7,1.12,Operación,Seguimiento de innovación IN3.7,Resultado de la ficha de familia y del paquete original; registro individual por código/ventana,"No duplicar padres, informes, ingeniería ni cobertura; no incluye horas de contraparte ni obras/adquisiciones del cliente",Criterio específico del diccionario T-14 del mismo código; evidencia sobre versión/periodo identificado,José Lara Arce,8,D:2;Q:2;O:4,"Asignación y cuadrante integrado por código; entornos, usuarios y habilitaciones autorizados",,2029-02-01,2029-02-02,,Recepción por etapa o control del periodo; no acredita ejecución,
1.12.2.3.27.2,Seguimiento de innovación IN3.7,1.12,Operación,Seguimiento de innovación IN3.7,Resultado de la ficha de familia y del paquete original; registro individual por código/ventana,"No duplicar padres, informes, ingeniería ni cobertura; no incluye horas de contraparte ni obras/adquisiciones del cliente",Criterio específico del diccionario T-14 del mismo código; evidencia sobre versión/periodo identificado,José Lara Arce,8,D:2;Q:2;O:4,"Asignación y cuadrante integrado por código; entornos, usuarios y habilitaciones autorizados",,2029-02-16,2029-02-19,,Recepción por etapa o control del periodo; no acredita ejecución,
1.12.2.4.27,Seguimiento de innovación IN4.4,1.12,Operación,Seguimiento de innovación IN4.4,Resultado de la ficha de familia y del paquete original; registro individual por código/ventana,"No duplicar padres, informes, ingeniería ni cobertura; no incluye horas de contraparte ni obras/adquisiciones del cliente",Criterio específico del diccionario T-14 del mismo código; evidencia sobre versión/periodo identificado,José Lara Arce,16,A:8;Q:4;J:4,"Asignación y cuadrante integrado por código; entornos, usuarios y habilitaciones autorizados",,2029-02-16,2029-02-20,,Recepción por etapa o control del periodo; no acredita ejecución,
1.12.2.5.27,Seguimiento de innovación IN5.4,1.12,Operación,Seguimiento de innovación IN5.4,Resultado de la ficha de familia y del paquete original; registro individual por código/ventana,"No duplicar padres, informes, ingeniería ni cobertura; no incluye horas de contraparte ni obras/adquisiciones del cliente",Criterio específico del diccionario T-14 del mismo código; evidencia sobre versión/periodo identificado,José Lara Arce,16,D:8;Q:4;O:4,"Asignación y cuadrante integrado por código; entornos, usuarios y habilitaciones autorizados",,2029-02-19,2029-02-21,,Recepción por etapa o control del periodo; no acredita ejecución,
1.12.2.1.28.1,Seguimiento de innovación IN1.7,1.12,Operación,Seguimiento de innovación IN1.7,Resultado de la ficha de familia y del paquete original; registro individual por código/ventana,"No duplicar padres, informes, ingeniería ni cobertura; no incluye horas de contraparte ni obras/adquisiciones del cliente",Criterio específico del diccionario T-14 del mismo código; evidencia sobre versión/periodo identificado,José Lara Arce,8,A:2;Q:2;O:4,"Asignación y cuadrante integrado por código; entornos, usuarios y habilitaciones autorizados",,2029-03-01,2029-03-01,,Recepción por etapa o control del periodo; no acredita ejecución,
1.12.2.1.28.2,Seguimiento de innovación IN1.7,1.12,Operación,Seguimiento de innovación IN1.7,Resultado de la ficha de familia y del paquete original; registro individual por código/ventana,"No duplicar padres, informes, ingeniería ni cobertura; no incluye horas de contraparte ni obras/adquisiciones del cliente",Criterio específico del diccionario T-14 del mismo código; evidencia sobre versión/periodo identificado,José Lara Arce,8,A:2;Q:2;O:4,"Asignación y cuadrante integrado por código; entornos, usuarios y habilitaciones autorizados",,2029-03-16,2029-03-16,,Recepción por etapa o control del periodo; no acredita ejecución,
1.12.2.3.28.1,Seguimiento de innovación IN3.7,1.12,Operación,Seguimiento de innovación IN3.7,Resultado de la ficha de familia y del paquete original; registro individual por código/ventana,"No duplicar padres, informes, ingeniería ni cobertura; no incluye horas de contraparte ni obras/adquisiciones del cliente",Criterio específico del diccionario T-14 del mismo código; evidencia sobre versión/periodo identificado,José Lara Arce,8,D:2;Q:2;O:4,"Asignación y cuadrante integrado por código; entornos, usuarios y habilitaciones autorizados",,2029-03-01,2029-03-02,,Recepción por etapa o control del periodo; no acredita ejecución,
1.12.2.3.28.2,Seguimiento de innovación IN3.7,1.12,Operación,Seguimiento de innovación IN3.7,Resultado de la ficha de familia y del paquete original; registro individual por código/ventana,"No duplicar padres, informes, ingeniería ni cobertura; no incluye horas de contraparte ni obras/adquisiciones del cliente",Criterio específico del diccionario T-14 del mismo código; evidencia sobre versión/periodo identificado,José Lara Arce,8,D:2;Q:2;O:4,"Asignación y cuadrante integrado por código; entornos, usuarios y habilitaciones autorizados",,2029-03-16,2029-03-19,,Recepción por etapa o control del periodo; no acredita ejecución,
1.12.2.4.28,Seguimiento de innovación IN4.4,1.12,Operación,Seguimiento de innovación IN4.4,Resultado de la ficha de familia y del paquete original; registro individual por código/ventana,"No duplicar padres, informes, ingeniería ni cobertura; no incluye horas de contraparte ni obras/adquisiciones del cliente",Criterio específico del diccionario T-14 del mismo código; evidencia sobre versión/periodo identificado,José Lara Arce,16,A:8;Q:4;J:4,"Asignación y cuadrante integrado por código; entornos, usuarios y habilitaciones autorizados",,2029-03-16,2029-03-20,,Recepción por etapa o control del periodo; no acredita ejecución,
1.12.2.5.28,Seguimiento de innovación IN5.4,1.12,Operación,Seguimiento de innovación IN5.4,Resultado de la ficha de familia y del paquete original; registro individual por código/ventana,"No duplicar padres, informes, ingeniería ni cobertura; no incluye horas de contraparte ni obras/adquisiciones del cliente",Criterio específico del diccionario T-14 del mismo código; evidencia sobre versión/periodo identificado,José Lara Arce,16,D:8;Q:4;O:4,"Asignación y cuadrante integrado por código; entornos, usuarios y habilitaciones autorizados",,2029-03-19,2029-03-21,,Recepción por etapa o control del periodo; no acredita ejecución,
1.12.2.1.29.1,Seguimiento de innovación IN1.7,1.12,Operación,Seguimiento de innovación IN1.7,Resultado de la ficha de familia y del paquete original; registro individual por código/ventana,"No duplicar padres, informes, ingeniería ni cobertura; no incluye horas de contraparte ni obras/adquisiciones del cliente",Criterio específico del diccionario T-14 del mismo código; evidencia sobre versión/periodo identificado,José Lara Arce,8,A:2;Q:2;O:4,"Asignación y cuadrante integrado por código; entornos, usuarios y habilitaciones autorizados",,2029-04-02,2029-04-02,,Recepción por etapa o control del periodo; no acredita ejecución,
1.12.2.1.29.2,Seguimiento de innovación IN1.7,1.12,Operación,Seguimiento de innovación IN1.7,Resultado de la ficha de familia y del paquete original; registro individual por código/ventana,"No duplicar padres, informes, ingeniería ni cobertura; no incluye horas de contraparte ni obras/adquisiciones del cliente",Criterio específico del diccionario T-14 del mismo código; evidencia sobre versión/periodo identificado,José Lara Arce,8,A:2;Q:2;O:4,"Asignación y cuadrante integrado por código; entornos, usuarios y habilitaciones autorizados",,2029-04-16,2029-04-16,,Recepción por etapa o control del periodo; no acredita ejecución,
1.12.2.3.29.1,Seguimiento de innovación IN3.7,1.12,Operación,Seguimiento de innovación IN3.7,Resultado de la ficha de familia y del paquete original; registro individual por código/ventana,"No duplicar padres, informes, ingeniería ni cobertura; no incluye horas de contraparte ni obras/adquisiciones del cliente",Criterio específico del diccionario T-14 del mismo código; evidencia sobre versión/periodo identificado,José Lara Arce,8,D:2;Q:2;O:4,"Asignación y cuadrante integrado por código; entornos, usuarios y habilitaciones autorizados",,2029-04-02,2029-04-03,,Recepción por etapa o control del periodo; no acredita ejecución,
1.12.2.3.29.2,Seguimiento de innovación IN3.7,1.12,Operación,Seguimiento de innovación IN3.7,Resultado de la ficha de familia y del paquete original; registro individual por código/ventana,"No duplicar padres, informes, ingeniería ni cobertura; no incluye horas de contraparte ni obras/adquisiciones del cliente",Criterio específico del diccionario T-14 del mismo código; evidencia sobre versión/periodo identificado,José Lara Arce,8,D:2;Q:2;O:4,"Asignación y cuadrante integrado por código; entornos, usuarios y habilitaciones autorizados",,2029-04-16,2029-04-17,,Recepción por etapa o control del periodo; no acredita ejecución,
1.12.2.4.29,Seguimiento de innovación IN4.4,1.12,Operación,Seguimiento de innovación IN4.4,Resultado de la ficha de familia y del paquete original; registro individual por código/ventana,"No duplicar padres, informes, ingeniería ni cobertura; no incluye horas de contraparte ni obras/adquisiciones del cliente",Criterio específico del diccionario T-14 del mismo código; evidencia sobre versión/periodo identificado,José Lara Arce,16,A:8;Q:4;J:4,"Asignación y cuadrante integrado por código; entornos, usuarios y habilitaciones autorizados",,2029-04-16,2029-04-18,,Recepción por etapa o control del periodo; no acredita ejecución,
1.12.2.5.29,Seguimiento de innovación IN5.4,1.12,Operación,Seguimiento de innovación IN5.4,Resultado de la ficha de familia y del paquete original; registro individual por código/ventana,"No duplicar padres, informes, ingeniería ni cobertura; no incluye horas de contraparte ni obras/adquisiciones del cliente",Criterio específico del diccionario T-14 del mismo código; evidencia sobre versión/periodo identificado,José Lara Arce,16,D:8;Q:4;O:4,"Asignación y cuadrante integrado por código; entornos, usuarios y habilitaciones autorizados",,2029-04-17,2029-04-19,,Recepción por etapa o control del periodo; no acredita ejecución,
1.12.2.1.30.1,Seguimiento de innovación IN1.7,1.12,Operación,Seguimiento de innovación IN1.7,Resultado de la ficha de familia y del paquete original; registro individual por código/ventana,"No duplicar padres, informes, ingeniería ni cobertura; no incluye horas de contraparte ni obras/adquisiciones del cliente",Criterio específico del diccionario T-14 del mismo código; evidencia sobre versión/periodo identificado,José Lara Arce,8,A:2;Q:2;O:4,"Asignación y cuadrante integrado por código; entornos, usuarios y habilitaciones autorizados",,2029-05-02,2029-05-02,,Recepción por etapa o control del periodo; no acredita ejecución,
1.12.2.1.30.2,Seguimiento de innovación IN1.7,1.12,Operación,Seguimiento de innovación IN1.7,Resultado de la ficha de familia y del paquete original; registro individual por código/ventana,"No duplicar padres, informes, ingeniería ni cobertura; no incluye horas de contraparte ni obras/adquisiciones del cliente",Criterio específico del diccionario T-14 del mismo código; evidencia sobre versión/periodo identificado,José Lara Arce,8,A:2;Q:2;O:4,"Asignación y cuadrante integrado por código; entornos, usuarios y habilitaciones autorizados",,2029-05-16,2029-05-16,,Recepción por etapa o control del periodo; no acredita ejecución,
1.12.2.3.30.1,Seguimiento de innovación IN3.7,1.12,Operación,Seguimiento de innovación IN3.7,Resultado de la ficha de familia y del paquete original; registro individual por código/ventana,"No duplicar padres, informes, ingeniería ni cobertura; no incluye horas de contraparte ni obras/adquisiciones del cliente",Criterio específico del diccionario T-14 del mismo código; evidencia sobre versión/periodo identificado,José Lara Arce,8,D:2;Q:2;O:4,"Asignación y cuadrante integrado por código; entornos, usuarios y habilitaciones autorizados",,2029-05-02,2029-05-03,,Recepción por etapa o control del periodo; no acredita ejecución,
1.12.2.3.30.2,Seguimiento de innovación IN3.7,1.12,Operación,Seguimiento de innovación IN3.7,Resultado de la ficha de familia y del paquete original; registro individual por código/ventana,"No duplicar padres, informes, ingeniería ni cobertura; no incluye horas de contraparte ni obras/adquisiciones del cliente",Criterio específico del diccionario T-14 del mismo código; evidencia sobre versión/periodo identificado,José Lara Arce,8,D:2;Q:2;O:4,"Asignación y cuadrante integrado por código; entornos, usuarios y habilitaciones autorizados",,2029-05-16,2029-05-17,,Recepción por etapa o control del periodo; no acredita ejecución,
1.12.2.4.30,Seguimiento de innovación IN4.4,1.12,Operación,Seguimiento de innovación IN4.4,Resultado de la ficha de familia y del paquete original; registro individual por código/ventana,"No duplicar padres, informes, ingeniería ni cobertura; no incluye horas de contraparte ni obras/adquisiciones del cliente",Criterio específico del diccionario T-14 del mismo código; evidencia sobre versión/periodo identificado,José Lara Arce,16,A:8;Q:4;J:4,"Asignación y cuadrante integrado por código; entornos, usuarios y habilitaciones autorizados",,2029-05-16,2029-05-18,,Recepción por etapa o control del periodo; no acredita ejecución,
1.12.2.5.30,Seguimiento de innovación IN5.4,1.12,Operación,Seguimiento de innovación IN5.4,Resultado de la ficha de familia y del paquete original; registro individual por código/ventana,"No duplicar padres, informes, ingeniería ni cobertura; no incluye horas de contraparte ni obras/adquisiciones del cliente",Criterio específico del diccionario T-14 del mismo código; evidencia sobre versión/periodo identificado,José Lara Arce,16,D:8;Q:4;O:4,"Asignación y cuadrante integrado por código; entornos, usuarios y habilitaciones autorizados",,2029-05-17,2029-05-22,,Recepción por etapa o control del periodo; no acredita ejecución,
1.12.2.1.31.1,Seguimiento de innovación IN1.7,1.12,Operación,Seguimiento de innovación IN1.7,Resultado de la ficha de familia y del paquete original; registro individual por código/ventana,"No duplicar padres, informes, ingeniería ni cobertura; no incluye horas de contraparte ni obras/adquisiciones del cliente",Criterio específico del diccionario T-14 del mismo código; evidencia sobre versión/periodo identificado,José Lara Arce,8,A:2;Q:2;O:4,"Asignación y cuadrante integrado por código; entornos, usuarios y habilitaciones autorizados",,2029-06-01,2029-06-01,,Recepción por etapa o control del periodo; no acredita ejecución,
1.12.2.1.31.2,Seguimiento de innovación IN1.7,1.12,Operación,Seguimiento de innovación IN1.7,Resultado de la ficha de familia y del paquete original; registro individual por código/ventana,"No duplicar padres, informes, ingeniería ni cobertura; no incluye horas de contraparte ni obras/adquisiciones del cliente",Criterio específico del diccionario T-14 del mismo código; evidencia sobre versión/periodo identificado,José Lara Arce,8,A:2;Q:2;O:4,"Asignación y cuadrante integrado por código; entornos, usuarios y habilitaciones autorizados",,2029-06-18,2029-06-18,,Recepción por etapa o control del periodo; no acredita ejecución,
1.12.2.3.31.1,Seguimiento de innovación IN3.7,1.12,Operación,Seguimiento de innovación IN3.7,Resultado de la ficha de familia y del paquete original; registro individual por código/ventana,"No duplicar padres, informes, ingeniería ni cobertura; no incluye horas de contraparte ni obras/adquisiciones del cliente",Criterio específico del diccionario T-14 del mismo código; evidencia sobre versión/periodo identificado,José Lara Arce,8,D:2;Q:2;O:4,"Asignación y cuadrante integrado por código; entornos, usuarios y habilitaciones autorizados",,2029-06-01,2029-06-04,,Recepción por etapa o control del periodo; no acredita ejecución,
1.12.2.3.31.2,Seguimiento de innovación IN3.7,1.12,Operación,Seguimiento de innovación IN3.7,Resultado de la ficha de familia y del paquete original; registro individual por código/ventana,"No duplicar padres, informes, ingeniería ni cobertura; no incluye horas de contraparte ni obras/adquisiciones del cliente",Criterio específico del diccionario T-14 del mismo código; evidencia sobre versión/periodo identificado,José Lara Arce,8,D:2;Q:2;O:4,"Asignación y cuadrante integrado por código; entornos, usuarios y habilitaciones autorizados",,2029-06-21,2029-06-22,,Recepción por etapa o control del periodo; no acredita ejecución,
1.12.2.4.31,Seguimiento de innovación IN4.4,1.12,Operación,Seguimiento de innovación IN4.4,Resultado de la ficha de familia y del paquete original; registro individual por código/ventana,"No duplicar padres, informes, ingeniería ni cobertura; no incluye horas de contraparte ni obras/adquisiciones del cliente",Criterio específico del diccionario T-14 del mismo código; evidencia sobre versión/periodo identificado,José Lara Arce,16,A:8;Q:4;J:4,"Asignación y cuadrante integrado por código; entornos, usuarios y habilitaciones autorizados",,2029-06-21,2029-06-22,,Recepción por etapa o control del periodo; no acredita ejecución,
1.12.2.5.31,Seguimiento de innovación IN5.4,1.12,Operación,Seguimiento de innovación IN5.4,Resultado de la ficha de familia y del paquete original; registro individual por código/ventana,"No duplicar padres, informes, ingeniería ni cobertura; no incluye horas de contraparte ni obras/adquisiciones del cliente",Criterio específico del diccionario T-14 del mismo código; evidencia sobre versión/periodo identificado,José Lara Arce,16,D:8;Q:4;O:4,"Asignación y cuadrante integrado por código; entornos, usuarios y habilitaciones autorizados",,2029-06-21,2029-06-25,,Recepción por etapa o control del periodo; no acredita ejecución,
1.12.2.1.32.1,Seguimiento de innovación IN1.7,1.12,Operación,Seguimiento de innovación IN1.7,Resultado de la ficha de familia y del paquete original; registro individual por código/ventana,"No duplicar padres, informes, ingeniería ni cobertura; no incluye horas de contraparte ni obras/adquisiciones del cliente",Criterio específico del diccionario T-14 del mismo código; evidencia sobre versión/periodo identificado,José Lara Arce,8,A:2;Q:2;O:4,"Asignación y cuadrante integrado por código; entornos, usuarios y habilitaciones autorizados",,2029-07-03,2029-07-03,,Recepción por etapa o control del periodo; no acredita ejecución,
1.12.2.1.32.2,Seguimiento de innovación IN1.7,1.12,Operación,Seguimiento de innovación IN1.7,Resultado de la ficha de familia y del paquete original; registro individual por código/ventana,"No duplicar padres, informes, ingeniería ni cobertura; no incluye horas de contraparte ni obras/adquisiciones del cliente",Criterio específico del diccionario T-14 del mismo código; evidencia sobre versión/periodo identificado,José Lara Arce,8,A:2;Q:2;O:4,"Asignación y cuadrante integrado por código; entornos, usuarios y habilitaciones autorizados",,2029-07-17,2029-07-17,,Recepción por etapa o control del periodo; no acredita ejecución,
1.12.2.3.32.1,Seguimiento de innovación IN3.7,1.12,Operación,Seguimiento de innovación IN3.7,Resultado de la ficha de familia y del paquete original; registro individual por código/ventana,"No duplicar padres, informes, ingeniería ni cobertura; no incluye horas de contraparte ni obras/adquisiciones del cliente",Criterio específico del diccionario T-14 del mismo código; evidencia sobre versión/periodo identificado,José Lara Arce,8,D:2;Q:2;O:4,"Asignación y cuadrante integrado por código; entornos, usuarios y habilitaciones autorizados",,2029-07-03,2029-07-04,,Recepción por etapa o control del periodo; no acredita ejecución,
1.12.2.3.32.2,Seguimiento de innovación IN3.7,1.12,Operación,Seguimiento de innovación IN3.7,Resultado de la ficha de familia y del paquete original; registro individual por código/ventana,"No duplicar padres, informes, ingeniería ni cobertura; no incluye horas de contraparte ni obras/adquisiciones del cliente",Criterio específico del diccionario T-14 del mismo código; evidencia sobre versión/periodo identificado,José Lara Arce,8,D:2;Q:2;O:4,"Asignación y cuadrante integrado por código; entornos, usuarios y habilitaciones autorizados",,2029-07-19,2029-07-20,,Recepción por etapa o control del periodo; no acredita ejecución,
1.12.2.4.32,Seguimiento de innovación IN4.4,1.12,Operación,Seguimiento de innovación IN4.4,Resultado de la ficha de familia y del paquete original; registro individual por código/ventana,"No duplicar padres, informes, ingeniería ni cobertura; no incluye horas de contraparte ni obras/adquisiciones del cliente",Criterio específico del diccionario T-14 del mismo código; evidencia sobre versión/periodo identificado,José Lara Arce,16,A:8;Q:4;J:4,"Asignación y cuadrante integrado por código; entornos, usuarios y habilitaciones autorizados",,2029-07-19,2029-07-20,,Recepción por etapa o control del periodo; no acredita ejecución,
1.12.2.5.32,Seguimiento de innovación IN5.4,1.12,Operación,Seguimiento de innovación IN5.4,Resultado de la ficha de familia y del paquete original; registro individual por código/ventana,"No duplicar padres, informes, ingeniería ni cobertura; no incluye horas de contraparte ni obras/adquisiciones del cliente",Criterio específico del diccionario T-14 del mismo código; evidencia sobre versión/periodo identificado,José Lara Arce,16,D:8;Q:4;O:4,"Asignación y cuadrante integrado por código; entornos, usuarios y habilitaciones autorizados",,2029-07-19,2029-07-23,,Recepción por etapa o control del periodo; no acredita ejecución,
1.12.2.1.33.1,Seguimiento de innovación IN1.7,1.12,Operación,Seguimiento de innovación IN1.7,Resultado de la ficha de familia y del paquete original; registro individual por código/ventana,"No duplicar padres, informes, ingeniería ni cobertura; no incluye horas de contraparte ni obras/adquisiciones del cliente",Criterio específico del diccionario T-14 del mismo código; evidencia sobre versión/periodo identificado,José Lara Arce,8,A:2;Q:2;O:4,"Asignación y cuadrante integrado por código; entornos, usuarios y habilitaciones autorizados",,2029-08-01,2029-08-01,,Recepción por etapa o control del periodo; no acredita ejecución,
1.12.2.1.33.2,Seguimiento de innovación IN1.7,1.12,Operación,Seguimiento de innovación IN1.7,Resultado de la ficha de familia y del paquete original; registro individual por código/ventana,"No duplicar padres, informes, ingeniería ni cobertura; no incluye horas de contraparte ni obras/adquisiciones del cliente",Criterio específico del diccionario T-14 del mismo código; evidencia sobre versión/periodo identificado,José Lara Arce,8,A:2;Q:2;O:4,"Asignación y cuadrante integrado por código; entornos, usuarios y habilitaciones autorizados",,2029-08-16,2029-08-16,,Recepción por etapa o control del periodo; no acredita ejecución,
1.12.2.3.33.1,Seguimiento de innovación IN3.7,1.12,Operación,Seguimiento de innovación IN3.7,Resultado de la ficha de familia y del paquete original; registro individual por código/ventana,"No duplicar padres, informes, ingeniería ni cobertura; no incluye horas de contraparte ni obras/adquisiciones del cliente",Criterio específico del diccionario T-14 del mismo código; evidencia sobre versión/periodo identificado,José Lara Arce,8,D:2;Q:2;O:4,"Asignación y cuadrante integrado por código; entornos, usuarios y habilitaciones autorizados",,2029-08-01,2029-08-02,,Recepción por etapa o control del periodo; no acredita ejecución,
1.12.2.3.33.2,Seguimiento de innovación IN3.7,1.12,Operación,Seguimiento de innovación IN3.7,Resultado de la ficha de familia y del paquete original; registro individual por código/ventana,"No duplicar padres, informes, ingeniería ni cobertura; no incluye horas de contraparte ni obras/adquisiciones del cliente",Criterio específico del diccionario T-14 del mismo código; evidencia sobre versión/periodo identificado,José Lara Arce,8,D:2;Q:2;O:4,"Asignación y cuadrante integrado por código; entornos, usuarios y habilitaciones autorizados",,2029-08-16,2029-08-17,,Recepción por etapa o control del periodo; no acredita ejecución,
1.12.2.4.33,Seguimiento de innovación IN4.4,1.12,Operación,Seguimiento de innovación IN4.4,Resultado de la ficha de familia y del paquete original; registro individual por código/ventana,"No duplicar padres, informes, ingeniería ni cobertura; no incluye horas de contraparte ni obras/adquisiciones del cliente",Criterio específico del diccionario T-14 del mismo código; evidencia sobre versión/periodo identificado,José Lara Arce,16,A:8;Q:4;J:4,"Asignación y cuadrante integrado por código; entornos, usuarios y habilitaciones autorizados",,2029-08-17,2029-08-21,,Recepción por etapa o control del periodo; no acredita ejecución,
1.12.2.5.33,Seguimiento de innovación IN5.4,1.12,Operación,Seguimiento de innovación IN5.4,Resultado de la ficha de familia y del paquete original; registro individual por código/ventana,"No duplicar padres, informes, ingeniería ni cobertura; no incluye horas de contraparte ni obras/adquisiciones del cliente",Criterio específico del diccionario T-14 del mismo código; evidencia sobre versión/periodo identificado,José Lara Arce,16,D:8;Q:4;O:4,"Asignación y cuadrante integrado por código; entornos, usuarios y habilitaciones autorizados",,2029-08-20,2029-08-21,,Recepción por etapa o control del periodo; no acredita ejecución,
1.12.2.1.34.1,Seguimiento de innovación IN1.7,1.12,Operación,Seguimiento de innovación IN1.7,Resultado de la ficha de familia y del paquete original; registro individual por código/ventana,"No duplicar padres, informes, ingeniería ni cobertura; no incluye horas de contraparte ni obras/adquisiciones del cliente",Criterio específico del diccionario T-14 del mismo código; evidencia sobre versión/periodo identificado,José Lara Arce,8,A:2;Q:2;O:4,"Asignación y cuadrante integrado por código; entornos, usuarios y habilitaciones autorizados",,2029-09-03,2029-09-03,,Recepción por etapa o control del periodo; no acredita ejecución,
1.12.2.1.34.2,Seguimiento de innovación IN1.7,1.12,Operación,Seguimiento de innovación IN1.7,Resultado de la ficha de familia y del paquete original; registro individual por código/ventana,"No duplicar padres, informes, ingeniería ni cobertura; no incluye horas de contraparte ni obras/adquisiciones del cliente",Criterio específico del diccionario T-14 del mismo código; evidencia sobre versión/periodo identificado,José Lara Arce,8,A:2;Q:2;O:4,"Asignación y cuadrante integrado por código; entornos, usuarios y habilitaciones autorizados",,2029-09-20,2029-09-20,,Recepción por etapa o control del periodo; no acredita ejecución,
1.12.2.3.34.1,Seguimiento de innovación IN3.7,1.12,Operación,Seguimiento de innovación IN3.7,Resultado de la ficha de familia y del paquete original; registro individual por código/ventana,"No duplicar padres, informes, ingeniería ni cobertura; no incluye horas de contraparte ni obras/adquisiciones del cliente",Criterio específico del diccionario T-14 del mismo código; evidencia sobre versión/periodo identificado,José Lara Arce,8,D:2;Q:2;O:4,"Asignación y cuadrante integrado por código; entornos, usuarios y habilitaciones autorizados",,2029-09-03,2029-09-04,,Recepción por etapa o control del periodo; no acredita ejecución,
1.12.2.3.34.2,Seguimiento de innovación IN3.7,1.12,Operación,Seguimiento de innovación IN3.7,Resultado de la ficha de familia y del paquete original; registro individual por código/ventana,"No duplicar padres, informes, ingeniería ni cobertura; no incluye horas de contraparte ni obras/adquisiciones del cliente",Criterio específico del diccionario T-14 del mismo código; evidencia sobre versión/periodo identificado,José Lara Arce,8,D:2;Q:2;O:4,"Asignación y cuadrante integrado por código; entornos, usuarios y habilitaciones autorizados",,2029-09-24,2029-09-25,,Recepción por etapa o control del periodo; no acredita ejecución,
1.12.2.4.34,Seguimiento de innovación IN4.4,1.12,Operación,Seguimiento de innovación IN4.4,Resultado de la ficha de familia y del paquete original; registro individual por código/ventana,"No duplicar padres, informes, ingeniería ni cobertura; no incluye horas de contraparte ni obras/adquisiciones del cliente",Criterio específico del diccionario T-14 del mismo código; evidencia sobre versión/periodo identificado,José Lara Arce,16,A:8;Q:4;J:4,"Asignación y cuadrante integrado por código; entornos, usuarios y habilitaciones autorizados",,2029-09-24,2029-09-25,,Recepción por etapa o control del periodo; no acredita ejecución,
1.12.2.5.34,Seguimiento de innovación IN5.4,1.12,Operación,Seguimiento de innovación IN5.4,Resultado de la ficha de familia y del paquete original; registro individual por código/ventana,"No duplicar padres, informes, ingeniería ni cobertura; no incluye horas de contraparte ni obras/adquisiciones del cliente",Criterio específico del diccionario T-14 del mismo código; evidencia sobre versión/periodo identificado,José Lara Arce,16,D:8;Q:4;O:4,"Asignación y cuadrante integrado por código; entornos, usuarios y habilitaciones autorizados",,2029-09-24,2029-09-26,,Recepción por etapa o control del periodo; no acredita ejecución,
1.12.2.1.35.1,Seguimiento de innovación IN1.7,1.12,Operación,Seguimiento de innovación IN1.7,Resultado de la ficha de familia y del paquete original; registro individual por código/ventana,"No duplicar padres, informes, ingeniería ni cobertura; no incluye horas de contraparte ni obras/adquisiciones del cliente",Criterio específico del diccionario T-14 del mismo código; evidencia sobre versión/periodo identificado,José Lara Arce,8,A:2;Q:2;O:4,"Asignación y cuadrante integrado por código; entornos, usuarios y habilitaciones autorizados",,2029-10-01,2029-10-01,,Recepción por etapa o control del periodo; no acredita ejecución,
1.12.2.1.35.2,Seguimiento de innovación IN1.7,1.12,Operación,Seguimiento de innovación IN1.7,Resultado de la ficha de familia y del paquete original; registro individual por código/ventana,"No duplicar padres, informes, ingeniería ni cobertura; no incluye horas de contraparte ni obras/adquisiciones del cliente",Criterio específico del diccionario T-14 del mismo código; evidencia sobre versión/periodo identificado,José Lara Arce,8,A:2;Q:2;O:4,"Asignación y cuadrante integrado por código; entornos, usuarios y habilitaciones autorizados",,2029-10-16,2029-10-16,,Recepción por etapa o control del periodo; no acredita ejecución,
1.12.2.3.35.1,Seguimiento de innovación IN3.7,1.12,Operación,Seguimiento de innovación IN3.7,Resultado de la ficha de familia y del paquete original; registro individual por código/ventana,"No duplicar padres, informes, ingeniería ni cobertura; no incluye horas de contraparte ni obras/adquisiciones del cliente",Criterio específico del diccionario T-14 del mismo código; evidencia sobre versión/periodo identificado,José Lara Arce,8,D:2;Q:2;O:4,"Asignación y cuadrante integrado por código; entornos, usuarios y habilitaciones autorizados",,2029-10-01,2029-10-02,,Recepción por etapa o control del periodo; no acredita ejecución,
1.12.2.3.35.2,Seguimiento de innovación IN3.7,1.12,Operación,Seguimiento de innovación IN3.7,Resultado de la ficha de familia y del paquete original; registro individual por código/ventana,"No duplicar padres, informes, ingeniería ni cobertura; no incluye horas de contraparte ni obras/adquisiciones del cliente",Criterio específico del diccionario T-14 del mismo código; evidencia sobre versión/periodo identificado,José Lara Arce,8,D:2;Q:2;O:4,"Asignación y cuadrante integrado por código; entornos, usuarios y habilitaciones autorizados",,2029-10-18,2029-10-19,,Recepción por etapa o control del periodo; no acredita ejecución,
1.12.2.4.35,Seguimiento de innovación IN4.4,1.12,Operación,Seguimiento de innovación IN4.4,Resultado de la ficha de familia y del paquete original; registro individual por código/ventana,"No duplicar padres, informes, ingeniería ni cobertura; no incluye horas de contraparte ni obras/adquisiciones del cliente",Criterio específico del diccionario T-14 del mismo código; evidencia sobre versión/periodo identificado,José Lara Arce,16,A:8;Q:4;J:4,"Asignación y cuadrante integrado por código; entornos, usuarios y habilitaciones autorizados",,2029-10-18,2029-10-19,,Recepción por etapa o control del periodo; no acredita ejecución,
1.12.2.5.35,Seguimiento de innovación IN5.4,1.12,Operación,Seguimiento de innovación IN5.4,Resultado de la ficha de familia y del paquete original; registro individual por código/ventana,"No duplicar padres, informes, ingeniería ni cobertura; no incluye horas de contraparte ni obras/adquisiciones del cliente",Criterio específico del diccionario T-14 del mismo código; evidencia sobre versión/periodo identificado,José Lara Arce,16,D:8;Q:4;O:4,"Asignación y cuadrante integrado por código; entornos, usuarios y habilitaciones autorizados",,2029-10-18,2029-10-22,,Recepción por etapa o control del periodo; no acredita ejecución,
1.12.2.1.36.1,Seguimiento de innovación IN1.7,1.12,Operación,Seguimiento de innovación IN1.7,Resultado de la ficha de familia y del paquete original; registro individual por código/ventana,"No duplicar padres, informes, ingeniería ni cobertura; no incluye horas de contraparte ni obras/adquisiciones del cliente",Criterio específico del diccionario T-14 del mismo código; evidencia sobre versión/periodo identificado,José Lara Arce,8,A:2;Q:2;O:4,"Asignación y cuadrante integrado por código; entornos, usuarios y habilitaciones autorizados",,2029-11-05,2029-11-05,,Recepción por etapa o control del periodo; no acredita ejecución,
1.12.2.1.36.2,Seguimiento de innovación IN1.7,1.12,Operación,Seguimiento de innovación IN1.7,Resultado de la ficha de familia y del paquete original; registro individual por código/ventana,"No duplicar padres, informes, ingeniería ni cobertura; no incluye horas de contraparte ni obras/adquisiciones del cliente",Criterio específico del diccionario T-14 del mismo código; evidencia sobre versión/periodo identificado,José Lara Arce,8,A:2;Q:2;O:4,"Asignación y cuadrante integrado por código; entornos, usuarios y habilitaciones autorizados",,2029-11-16,2029-11-16,,Recepción por etapa o control del periodo; no acredita ejecución,
1.12.2.3.36.1,Seguimiento de innovación IN3.7,1.12,Operación,Seguimiento de innovación IN3.7,Resultado de la ficha de familia y del paquete original; registro individual por código/ventana,"No duplicar padres, informes, ingeniería ni cobertura; no incluye horas de contraparte ni obras/adquisiciones del cliente",Criterio específico del diccionario T-14 del mismo código; evidencia sobre versión/periodo identificado,José Lara Arce,8,D:2;Q:2;O:4,"Asignación y cuadrante integrado por código; entornos, usuarios y habilitaciones autorizados",,2029-11-05,2029-11-06,,Recepción por etapa o control del periodo; no acredita ejecución,
1.12.2.3.36.2,Seguimiento de innovación IN3.7,1.12,Operación,Seguimiento de innovación IN3.7,Resultado de la ficha de familia y del paquete original; registro individual por código/ventana,"No duplicar padres, informes, ingeniería ni cobertura; no incluye horas de contraparte ni obras/adquisiciones del cliente",Criterio específico del diccionario T-14 del mismo código; evidencia sobre versión/periodo identificado,José Lara Arce,8,D:2;Q:2;O:4,"Asignación y cuadrante integrado por código; entornos, usuarios y habilitaciones autorizados",,2029-11-16,2029-11-19,,Recepción por etapa o control del periodo; no acredita ejecución,
1.12.2.4.36,Seguimiento de innovación IN4.4,1.12,Operación,Seguimiento de innovación IN4.4,Resultado de la ficha de familia y del paquete original; registro individual por código/ventana,"No duplicar padres, informes, ingeniería ni cobertura; no incluye horas de contraparte ni obras/adquisiciones del cliente",Criterio específico del diccionario T-14 del mismo código; evidencia sobre versión/periodo identificado,José Lara Arce,16,A:8;Q:4;J:4,"Asignación y cuadrante integrado por código; entornos, usuarios y habilitaciones autorizados",,2029-11-19,2029-11-21,,Recepción por etapa o control del periodo; no acredita ejecución,
1.12.2.5.36,Seguimiento de innovación IN5.4,1.12,Operación,Seguimiento de innovación IN5.4,Resultado de la ficha de familia y del paquete original; registro individual por código/ventana,"No duplicar padres, informes, ingeniería ni cobertura; no incluye horas de contraparte ni obras/adquisiciones del cliente",Criterio específico del diccionario T-14 del mismo código; evidencia sobre versión/periodo identificado,José Lara Arce,16,D:8;Q:4;O:4,"Asignación y cuadrante integrado por código; entornos, usuarios y habilitaciones autorizados",,2029-11-20,2029-11-21,,Recepción por etapa o control del periodo; no acredita ejecución,
1.12.2.1.37.1,Seguimiento de innovación IN1.7,1.12,Operación,Seguimiento de innovación IN1.7,Resultado de la ficha de familia y del paquete original; registro individual por código/ventana,"No duplicar padres, informes, ingeniería ni cobertura; no incluye horas de contraparte ni obras/adquisiciones del cliente",Criterio específico del diccionario T-14 del mismo código; evidencia sobre versión/periodo identificado,José Lara Arce,8,A:2;Q:2;O:4,"Asignación y cuadrante integrado por código; entornos, usuarios y habilitaciones autorizados",,2029-12-03,2029-12-03,,Recepción por etapa o control del periodo; no acredita ejecución,
1.12.2.1.37.2,Seguimiento de innovación IN1.7,1.12,Operación,Seguimiento de innovación IN1.7,Resultado de la ficha de familia y del paquete original; registro individual por código/ventana,"No duplicar padres, informes, ingeniería ni cobertura; no incluye horas de contraparte ni obras/adquisiciones del cliente",Criterio específico del diccionario T-14 del mismo código; evidencia sobre versión/periodo identificado,José Lara Arce,8,A:2;Q:2;O:4,"Asignación y cuadrante integrado por código; entornos, usuarios y habilitaciones autorizados",,2029-12-17,2029-12-17,,Recepción por etapa o control del periodo; no acredita ejecución,
1.12.2.3.37.1,Seguimiento de innovación IN3.7,1.12,Operación,Seguimiento de innovación IN3.7,Resultado de la ficha de familia y del paquete original; registro individual por código/ventana,"No duplicar padres, informes, ingeniería ni cobertura; no incluye horas de contraparte ni obras/adquisiciones del cliente",Criterio específico del diccionario T-14 del mismo código; evidencia sobre versión/periodo identificado,José Lara Arce,8,D:2;Q:2;O:4,"Asignación y cuadrante integrado por código; entornos, usuarios y habilitaciones autorizados",,2029-12-03,2029-12-04,,Recepción por etapa o control del periodo; no acredita ejecución,
1.12.2.3.37.2,Seguimiento de innovación IN3.7,1.12,Operación,Seguimiento de innovación IN3.7,Resultado de la ficha de familia y del paquete original; registro individual por código/ventana,"No duplicar padres, informes, ingeniería ni cobertura; no incluye horas de contraparte ni obras/adquisiciones del cliente",Criterio específico del diccionario T-14 del mismo código; evidencia sobre versión/periodo identificado,José Lara Arce,8,D:2;Q:2;O:4,"Asignación y cuadrante integrado por código; entornos, usuarios y habilitaciones autorizados",,2029-12-19,2029-12-20,,Recepción por etapa o control del periodo; no acredita ejecución,
1.12.2.4.37,Seguimiento de innovación IN4.4,1.12,Operación,Seguimiento de innovación IN4.4,Resultado de la ficha de familia y del paquete original; registro individual por código/ventana,"No duplicar padres, informes, ingeniería ni cobertura; no incluye horas de contraparte ni obras/adquisiciones del cliente",Criterio específico del diccionario T-14 del mismo código; evidencia sobre versión/periodo identificado,José Lara Arce,16,A:8;Q:4;J:4,"Asignación y cuadrante integrado por código; entornos, usuarios y habilitaciones autorizados",,2029-12-19,2029-12-20,,Recepción por etapa o control del periodo; no acredita ejecución,
1.12.2.5.37,Seguimiento de innovación IN5.4,1.12,Operación,Seguimiento de innovación IN5.4,Resultado de la ficha de familia y del paquete original; registro individual por código/ventana,"No duplicar padres, informes, ingeniería ni cobertura; no incluye horas de contraparte ni obras/adquisiciones del cliente",Criterio específico del diccionario T-14 del mismo código; evidencia sobre versión/periodo identificado,José Lara Arce,16,D:8;Q:4;O:4,"Asignación y cuadrante integrado por código; entornos, usuarios y habilitaciones autorizados",,2029-12-19,2029-12-21,,Recepción por etapa o control del periodo; no acredita ejecución,
1.12.2.1.38.1,Seguimiento de innovación IN1.7,1.12,Operación,Seguimiento de innovación IN1.7,Resultado de la ficha de familia y del paquete original; registro individual por código/ventana,"No duplicar padres, informes, ingeniería ni cobertura; no incluye horas de contraparte ni obras/adquisiciones del cliente",Criterio específico del diccionario T-14 del mismo código; evidencia sobre versión/periodo identificado,José Lara Arce,8,A:2;Q:2;O:4,"Asignación y cuadrante integrado por código; entornos, usuarios y habilitaciones autorizados",,2030-01-02,2030-01-02,,Recepción por etapa o control del periodo; no acredita ejecución,
1.12.2.1.38.2,Seguimiento de innovación IN1.7,1.12,Operación,Seguimiento de innovación IN1.7,Resultado de la ficha de familia y del paquete original; registro individual por código/ventana,"No duplicar padres, informes, ingeniería ni cobertura; no incluye horas de contraparte ni obras/adquisiciones del cliente",Criterio específico del diccionario T-14 del mismo código; evidencia sobre versión/periodo identificado,José Lara Arce,8,A:2;Q:2;O:4,"Asignación y cuadrante integrado por código; entornos, usuarios y habilitaciones autorizados",,2030-01-16,2030-01-16,,Recepción por etapa o control del periodo; no acredita ejecución,
1.12.2.3.38.1,Seguimiento de innovación IN3.7,1.12,Operación,Seguimiento de innovación IN3.7,Resultado de la ficha de familia y del paquete original; registro individual por código/ventana,"No duplicar padres, informes, ingeniería ni cobertura; no incluye horas de contraparte ni obras/adquisiciones del cliente",Criterio específico del diccionario T-14 del mismo código; evidencia sobre versión/periodo identificado,José Lara Arce,8,D:2;Q:2;O:4,"Asignación y cuadrante integrado por código; entornos, usuarios y habilitaciones autorizados",,2030-01-02,2030-01-03,,Recepción por etapa o control del periodo; no acredita ejecución,
1.12.2.3.38.2,Seguimiento de innovación IN3.7,1.12,Operación,Seguimiento de innovación IN3.7,Resultado de la ficha de familia y del paquete original; registro individual por código/ventana,"No duplicar padres, informes, ingeniería ni cobertura; no incluye horas de contraparte ni obras/adquisiciones del cliente",Criterio específico del diccionario T-14 del mismo código; evidencia sobre versión/periodo identificado,José Lara Arce,8,D:2;Q:2;O:4,"Asignación y cuadrante integrado por código; entornos, usuarios y habilitaciones autorizados",,2030-01-18,2030-01-21,,Recepción por etapa o control del periodo; no acredita ejecución,
1.12.2.4.38,Seguimiento de innovación IN4.4,1.12,Operación,Seguimiento de innovación IN4.4,Resultado de la ficha de familia y del paquete original; registro individual por código/ventana,"No duplicar padres, informes, ingeniería ni cobertura; no incluye horas de contraparte ni obras/adquisiciones del cliente",Criterio específico del diccionario T-14 del mismo código; evidencia sobre versión/periodo identificado,José Lara Arce,16,A:8;Q:4;J:4,"Asignación y cuadrante integrado por código; entornos, usuarios y habilitaciones autorizados",,2030-01-18,2030-01-21,,Recepción por etapa o control del periodo; no acredita ejecución,
1.12.2.5.38,Seguimiento de innovación IN5.4,1.12,Operación,Seguimiento de innovación IN5.4,Resultado de la ficha de familia y del paquete original; registro individual por código/ventana,"No duplicar padres, informes, ingeniería ni cobertura; no incluye horas de contraparte ni obras/adquisiciones del cliente",Criterio específico del diccionario T-14 del mismo código; evidencia sobre versión/periodo identificado,José Lara Arce,16,D:8;Q:4;O:4,"Asignación y cuadrante integrado por código; entornos, usuarios y habilitaciones autorizados",,2030-01-18,2030-01-22,,Recepción por etapa o control del periodo; no acredita ejecución,
1.12.2.1.39.1,Seguimiento de innovación IN1.7,1.12,Operación,Seguimiento de innovación IN1.7,Resultado de la ficha de familia y del paquete original; registro individual por código/ventana,"No duplicar padres, informes, ingeniería ni cobertura; no incluye horas de contraparte ni obras/adquisiciones del cliente",Criterio específico del diccionario T-14 del mismo código; evidencia sobre versión/periodo identificado,José Lara Arce,8,A:2;Q:2;O:4,"Asignación y cuadrante integrado por código; entornos, usuarios y habilitaciones autorizados",,2030-02-01,2030-02-01,,Recepción por etapa o control del periodo; no acredita ejecución,
1.12.2.1.39.2,Seguimiento de innovación IN1.7,1.12,Operación,Seguimiento de innovación IN1.7,Resultado de la ficha de familia y del paquete original; registro individual por código/ventana,"No duplicar padres, informes, ingeniería ni cobertura; no incluye horas de contraparte ni obras/adquisiciones del cliente",Criterio específico del diccionario T-14 del mismo código; evidencia sobre versión/periodo identificado,José Lara Arce,8,A:2;Q:2;O:4,"Asignación y cuadrante integrado por código; entornos, usuarios y habilitaciones autorizados",,2030-02-18,2030-02-18,,Recepción por etapa o control del periodo; no acredita ejecución,
1.12.2.3.39.1,Seguimiento de innovación IN3.7,1.12,Operación,Seguimiento de innovación IN3.7,Resultado de la ficha de familia y del paquete original; registro individual por código/ventana,"No duplicar padres, informes, ingeniería ni cobertura; no incluye horas de contraparte ni obras/adquisiciones del cliente",Criterio específico del diccionario T-14 del mismo código; evidencia sobre versión/periodo identificado,José Lara Arce,8,D:2;Q:2;O:4,"Asignación y cuadrante integrado por código; entornos, usuarios y habilitaciones autorizados",,2030-02-01,2030-02-04,,Recepción por etapa o control del periodo; no acredita ejecución,
1.12.2.3.39.2,Seguimiento de innovación IN3.7,1.12,Operación,Seguimiento de innovación IN3.7,Resultado de la ficha de familia y del paquete original; registro individual por código/ventana,"No duplicar padres, informes, ingeniería ni cobertura; no incluye horas de contraparte ni obras/adquisiciones del cliente",Criterio específico del diccionario T-14 del mismo código; evidencia sobre versión/periodo identificado,José Lara Arce,8,D:2;Q:2;O:4,"Asignación y cuadrante integrado por código; entornos, usuarios y habilitaciones autorizados",,2030-02-20,2030-02-21,,Recepción por etapa o control del periodo; no acredita ejecución,
1.12.2.4.39,Seguimiento de innovación IN4.4,1.12,Operación,Seguimiento de innovación IN4.4,Resultado de la ficha de familia y del paquete original; registro individual por código/ventana,"No duplicar padres, informes, ingeniería ni cobertura; no incluye horas de contraparte ni obras/adquisiciones del cliente",Criterio específico del diccionario T-14 del mismo código; evidencia sobre versión/periodo identificado,José Lara Arce,16,A:8;Q:4;J:4,"Asignación y cuadrante integrado por código; entornos, usuarios y habilitaciones autorizados",,2030-02-20,2030-02-21,,Recepción por etapa o control del periodo; no acredita ejecución,
1.12.2.5.39,Seguimiento de innovación IN5.4,1.12,Operación,Seguimiento de innovación IN5.4,Resultado de la ficha de familia y del paquete original; registro individual por código/ventana,"No duplicar padres, informes, ingeniería ni cobertura; no incluye horas de contraparte ni obras/adquisiciones del cliente",Criterio específico del diccionario T-14 del mismo código; evidencia sobre versión/periodo identificado,José Lara Arce,16,D:8;Q:4;O:4,"Asignación y cuadrante integrado por código; entornos, usuarios y habilitaciones autorizados",,2030-02-20,2030-02-22,,Recepción por etapa o control del periodo; no acredita ejecución,
1.12.2.1.40.1,Seguimiento de innovación IN1.7,1.12,Operación,Seguimiento de innovación IN1.7,Resultado de la ficha de familia y del paquete original; registro individual por código/ventana,"No duplicar padres, informes, ingeniería ni cobertura; no incluye horas de contraparte ni obras/adquisiciones del cliente",Criterio específico del diccionario T-14 del mismo código; evidencia sobre versión/periodo identificado,José Lara Arce,8,A:2;Q:2;O:4,"Asignación y cuadrante integrado por código; entornos, usuarios y habilitaciones autorizados",,2030-03-01,2030-03-01,,Recepción por etapa o control del periodo; no acredita ejecución,
1.12.2.1.40.2,Seguimiento de innovación IN1.7,1.12,Operación,Seguimiento de innovación IN1.7,Resultado de la ficha de familia y del paquete original; registro individual por código/ventana,"No duplicar padres, informes, ingeniería ni cobertura; no incluye horas de contraparte ni obras/adquisiciones del cliente",Criterio específico del diccionario T-14 del mismo código; evidencia sobre versión/periodo identificado,José Lara Arce,8,A:2;Q:2;O:4,"Asignación y cuadrante integrado por código; entornos, usuarios y habilitaciones autorizados",,2030-03-18,2030-03-18,,Recepción por etapa o control del periodo; no acredita ejecución,
1.12.2.3.40.1,Seguimiento de innovación IN3.7,1.12,Operación,Seguimiento de innovación IN3.7,Resultado de la ficha de familia y del paquete original; registro individual por código/ventana,"No duplicar padres, informes, ingeniería ni cobertura; no incluye horas de contraparte ni obras/adquisiciones del cliente",Criterio específico del diccionario T-14 del mismo código; evidencia sobre versión/periodo identificado,José Lara Arce,8,D:2;Q:2;O:4,"Asignación y cuadrante integrado por código; entornos, usuarios y habilitaciones autorizados",,2030-03-01,2030-03-04,,Recepción por etapa o control del periodo; no acredita ejecución,
1.12.2.3.40.2,Seguimiento de innovación IN3.7,1.12,Operación,Seguimiento de innovación IN3.7,Resultado de la ficha de familia y del paquete original; registro individual por código/ventana,"No duplicar padres, informes, ingeniería ni cobertura; no incluye horas de contraparte ni obras/adquisiciones del cliente",Criterio específico del diccionario T-14 del mismo código; evidencia sobre versión/periodo identificado,José Lara Arce,8,D:2;Q:2;O:4,"Asignación y cuadrante integrado por código; entornos, usuarios y habilitaciones autorizados",,2030-03-20,2030-03-21,,Recepción por etapa o control del periodo; no acredita ejecución,
1.12.2.4.40,Seguimiento de innovación IN4.4,1.12,Operación,Seguimiento de innovación IN4.4,Resultado de la ficha de familia y del paquete original; registro individual por código/ventana,"No duplicar padres, informes, ingeniería ni cobertura; no incluye horas de contraparte ni obras/adquisiciones del cliente",Criterio específico del diccionario T-14 del mismo código; evidencia sobre versión/periodo identificado,José Lara Arce,16,A:8;Q:4;J:4,"Asignación y cuadrante integrado por código; entornos, usuarios y habilitaciones autorizados",,2030-03-20,2030-03-21,,Recepción por etapa o control del periodo; no acredita ejecución,
1.12.2.5.40,Seguimiento de innovación IN5.4,1.12,Operación,Seguimiento de innovación IN5.4,Resultado de la ficha de familia y del paquete original; registro individual por código/ventana,"No duplicar padres, informes, ingeniería ni cobertura; no incluye horas de contraparte ni obras/adquisiciones del cliente",Criterio específico del diccionario T-14 del mismo código; evidencia sobre versión/periodo identificado,José Lara Arce,16,D:8;Q:4;O:4,"Asignación y cuadrante integrado por código; entornos, usuarios y habilitaciones autorizados",,2030-03-20,2030-03-22,,Recepción por etapa o control del periodo; no acredita ejecución,
1.12.2.1.41.1,Seguimiento de innovación IN1.7,1.12,Operación,Seguimiento de innovación IN1.7,Resultado de la ficha de familia y del paquete original; registro individual por código/ventana,"No duplicar padres, informes, ingeniería ni cobertura; no incluye horas de contraparte ni obras/adquisiciones del cliente",Criterio específico del diccionario T-14 del mismo código; evidencia sobre versión/periodo identificado,José Lara Arce,8,A:2;Q:2;O:4,"Asignación y cuadrante integrado por código; entornos, usuarios y habilitaciones autorizados",,2030-04-01,2030-04-01,,Recepción por etapa o control del periodo; no acredita ejecución,
1.12.2.1.41.2,Seguimiento de innovación IN1.7,1.12,Operación,Seguimiento de innovación IN1.7,Resultado de la ficha de familia y del paquete original; registro individual por código/ventana,"No duplicar padres, informes, ingeniería ni cobertura; no incluye horas de contraparte ni obras/adquisiciones del cliente",Criterio específico del diccionario T-14 del mismo código; evidencia sobre versión/periodo identificado,José Lara Arce,8,A:2;Q:2;O:4,"Asignación y cuadrante integrado por código; entornos, usuarios y habilitaciones autorizados",,2030-04-16,2030-04-16,,Recepción por etapa o control del periodo; no acredita ejecución,
1.12.2.3.41.1,Seguimiento de innovación IN3.7,1.12,Operación,Seguimiento de innovación IN3.7,Resultado de la ficha de familia y del paquete original; registro individual por código/ventana,"No duplicar padres, informes, ingeniería ni cobertura; no incluye horas de contraparte ni obras/adquisiciones del cliente",Criterio específico del diccionario T-14 del mismo código; evidencia sobre versión/periodo identificado,José Lara Arce,8,D:2;Q:2;O:4,"Asignación y cuadrante integrado por código; entornos, usuarios y habilitaciones autorizados",,2030-04-01,2030-04-02,,Recepción por etapa o control del periodo; no acredita ejecución,
1.12.2.3.41.2,Seguimiento de innovación IN3.7,1.12,Operación,Seguimiento de innovación IN3.7,Resultado de la ficha de familia y del paquete original; registro individual por código/ventana,"No duplicar padres, informes, ingeniería ni cobertura; no incluye horas de contraparte ni obras/adquisiciones del cliente",Criterio específico del diccionario T-14 del mismo código; evidencia sobre versión/periodo identificado,José Lara Arce,8,D:2;Q:2;O:4,"Asignación y cuadrante integrado por código; entornos, usuarios y habilitaciones autorizados",,2030-04-18,2030-04-22,,Recepción por etapa o control del periodo; no acredita ejecución,
1.12.2.4.41,Seguimiento de innovación IN4.4,1.12,Operación,Seguimiento de innovación IN4.4,Resultado de la ficha de familia y del paquete original; registro individual por código/ventana,"No duplicar padres, informes, ingeniería ni cobertura; no incluye horas de contraparte ni obras/adquisiciones del cliente",Criterio específico del diccionario T-14 del mismo código; evidencia sobre versión/periodo identificado,José Lara Arce,16,A:8;Q:4;J:4,"Asignación y cuadrante integrado por código; entornos, usuarios y habilitaciones autorizados",,2030-04-18,2030-04-22,,Recepción por etapa o control del periodo; no acredita ejecución,
1.12.2.5.41,Seguimiento de innovación IN5.4,1.12,Operación,Seguimiento de innovación IN5.4,Resultado de la ficha de familia y del paquete original; registro individual por código/ventana,"No duplicar padres, informes, ingeniería ni cobertura; no incluye horas de contraparte ni obras/adquisiciones del cliente",Criterio específico del diccionario T-14 del mismo código; evidencia sobre versión/periodo identificado,José Lara Arce,16,D:8;Q:4;O:4,"Asignación y cuadrante integrado por código; entornos, usuarios y habilitaciones autorizados",,2030-04-18,2030-04-23,,Recepción por etapa o control del periodo; no acredita ejecución,
1.12.2.1.42.1,Seguimiento de innovación IN1.7,1.12,Operación,Seguimiento de innovación IN1.7,Resultado de la ficha de familia y del paquete original; registro individual por código/ventana,"No duplicar padres, informes, ingeniería ni cobertura; no incluye horas de contraparte ni obras/adquisiciones del cliente",Criterio específico del diccionario T-14 del mismo código; evidencia sobre versión/periodo identificado,José Lara Arce,8,A:2;Q:2;O:4,"Asignación y cuadrante integrado por código; entornos, usuarios y habilitaciones autorizados",,2030-05-02,2030-05-02,,Recepción por etapa o control del periodo; no acredita ejecución,
1.12.2.1.42.2,Seguimiento de innovación IN1.7,1.12,Operación,Seguimiento de innovación IN1.7,Resultado de la ficha de familia y del paquete original; registro individual por código/ventana,"No duplicar padres, informes, ingeniería ni cobertura; no incluye horas de contraparte ni obras/adquisiciones del cliente",Criterio específico del diccionario T-14 del mismo código; evidencia sobre versión/periodo identificado,José Lara Arce,8,A:2;Q:2;O:4,"Asignación y cuadrante integrado por código; entornos, usuarios y habilitaciones autorizados",,2030-05-16,2030-05-16,,Recepción por etapa o control del periodo; no acredita ejecución,
1.12.2.3.42.1,Seguimiento de innovación IN3.7,1.12,Operación,Seguimiento de innovación IN3.7,Resultado de la ficha de familia y del paquete original; registro individual por código/ventana,"No duplicar padres, informes, ingeniería ni cobertura; no incluye horas de contraparte ni obras/adquisiciones del cliente",Criterio específico del diccionario T-14 del mismo código; evidencia sobre versión/periodo identificado,José Lara Arce,8,D:2;Q:2;O:4,"Asignación y cuadrante integrado por código; entornos, usuarios y habilitaciones autorizados",,2030-05-02,2030-05-03,,Recepción por etapa o control del periodo; no acredita ejecución,
1.12.2.3.42.2,Seguimiento de innovación IN3.7,1.12,Operación,Seguimiento de innovación IN3.7,Resultado de la ficha de familia y del paquete original; registro individual por código/ventana,"No duplicar padres, informes, ingeniería ni cobertura; no incluye horas de contraparte ni obras/adquisiciones del cliente",Criterio específico del diccionario T-14 del mismo código; evidencia sobre versión/periodo identificado,José Lara Arce,8,D:2;Q:2;O:4,"Asignación y cuadrante integrado por código; entornos, usuarios y habilitaciones autorizados",,2030-05-20,2030-05-22,,Recepción por etapa o control del periodo; no acredita ejecución,
1.12.2.4.42,Seguimiento de innovación IN4.4,1.12,Operación,Seguimiento de innovación IN4.4,Resultado de la ficha de familia y del paquete original; registro individual por código/ventana,"No duplicar padres, informes, ingeniería ni cobertura; no incluye horas de contraparte ni obras/adquisiciones del cliente",Criterio específico del diccionario T-14 del mismo código; evidencia sobre versión/periodo identificado,José Lara Arce,16,A:8;Q:4;J:4,"Asignación y cuadrante integrado por código; entornos, usuarios y habilitaciones autorizados",,2030-05-20,2030-05-22,,Recepción por etapa o control del periodo; no acredita ejecución,
1.12.2.5.42,Seguimiento de innovación IN5.4,1.12,Operación,Seguimiento de innovación IN5.4,Resultado de la ficha de familia y del paquete original; registro individual por código/ventana,"No duplicar padres, informes, ingeniería ni cobertura; no incluye horas de contraparte ni obras/adquisiciones del cliente",Criterio específico del diccionario T-14 del mismo código; evidencia sobre versión/periodo identificado,José Lara Arce,16,D:8;Q:4;O:4,"Asignación y cuadrante integrado por código; entornos, usuarios y habilitaciones autorizados",,2030-05-20,2030-05-23,,Recepción por etapa o control del periodo; no acredita ejecución,
1.12.2.1.43.1,Seguimiento de innovación IN1.7,1.12,Operación,Seguimiento de innovación IN1.7,Resultado de la ficha de familia y del paquete original; registro individual por código/ventana,"No duplicar padres, informes, ingeniería ni cobertura; no incluye horas de contraparte ni obras/adquisiciones del cliente",Criterio específico del diccionario T-14 del mismo código; evidencia sobre versión/periodo identificado,José Lara Arce,8,A:2;Q:2;O:4,"Asignación y cuadrante integrado por código; entornos, usuarios y habilitaciones autorizados",,2030-06-03,2030-06-03,,Recepción por etapa o control del periodo; no acredita ejecución,
1.12.2.1.43.2,Seguimiento de innovación IN1.7,1.12,Operación,Seguimiento de innovación IN1.7,Resultado de la ficha de familia y del paquete original; registro individual por código/ventana,"No duplicar padres, informes, ingeniería ni cobertura; no incluye horas de contraparte ni obras/adquisiciones del cliente",Criterio específico del diccionario T-14 del mismo código; evidencia sobre versión/periodo identificado,José Lara Arce,8,A:2;Q:2;O:4,"Asignación y cuadrante integrado por código; entornos, usuarios y habilitaciones autorizados",,2030-06-17,2030-06-17,,Recepción por etapa o control del periodo; no acredita ejecución,
1.12.2.3.43.1,Seguimiento de innovación IN3.7,1.12,Operación,Seguimiento de innovación IN3.7,Resultado de la ficha de familia y del paquete original; registro individual por código/ventana,"No duplicar padres, informes, ingeniería ni cobertura; no incluye horas de contraparte ni obras/adquisiciones del cliente",Criterio específico del diccionario T-14 del mismo código; evidencia sobre versión/periodo identificado,José Lara Arce,8,D:2;Q:2;O:4,"Asignación y cuadrante integrado por código; entornos, usuarios y habilitaciones autorizados",,2030-06-03,2030-06-04,,Recepción por etapa o control del periodo; no acredita ejecución,
1.12.2.3.43.2,Seguimiento de innovación IN3.7,1.12,Operación,Seguimiento de innovación IN3.7,Resultado de la ficha de familia y del paquete original; registro individual por código/ventana,"No duplicar padres, informes, ingeniería ni cobertura; no incluye horas de contraparte ni obras/adquisiciones del cliente",Criterio específico del diccionario T-14 del mismo código; evidencia sobre versión/periodo identificado,José Lara Arce,8,D:2;Q:2;O:4,"Asignación y cuadrante integrado por código; entornos, usuarios y habilitaciones autorizados",,2030-06-19,2030-06-20,,Recepción por etapa o control del periodo; no acredita ejecución,
1.12.2.4.43,Seguimiento de innovación IN4.4,1.12,Operación,Seguimiento de innovación IN4.4,Resultado de la ficha de familia y del paquete original; registro individual por código/ventana,"No duplicar padres, informes, ingeniería ni cobertura; no incluye horas de contraparte ni obras/adquisiciones del cliente",Criterio específico del diccionario T-14 del mismo código; evidencia sobre versión/periodo identificado,José Lara Arce,16,A:8;Q:4;J:4,"Asignación y cuadrante integrado por código; entornos, usuarios y habilitaciones autorizados",,2030-06-19,2030-06-20,,Recepción por etapa o control del periodo; no acredita ejecución,
1.12.2.5.43,Seguimiento de innovación IN5.4,1.12,Operación,Seguimiento de innovación IN5.4,Resultado de la ficha de familia y del paquete original; registro individual por código/ventana,"No duplicar padres, informes, ingeniería ni cobertura; no incluye horas de contraparte ni obras/adquisiciones del cliente",Criterio específico del diccionario T-14 del mismo código; evidencia sobre versión/periodo identificado,José Lara Arce,16,D:8;Q:4;O:4,"Asignación y cuadrante integrado por código; entornos, usuarios y habilitaciones autorizados",,2030-06-19,2030-06-24,,Recepción por etapa o control del periodo; no acredita ejecución,
1.12.2.1.44.1,Seguimiento de innovación IN1.7,1.12,Operación,Seguimiento de innovación IN1.7,Resultado de la ficha de familia y del paquete original; registro individual por código/ventana,"No duplicar padres, informes, ingeniería ni cobertura; no incluye horas de contraparte ni obras/adquisiciones del cliente",Criterio específico del diccionario T-14 del mismo código; evidencia sobre versión/periodo identificado,José Lara Arce,8,A:2;Q:2;O:4,"Asignación y cuadrante integrado por código; entornos, usuarios y habilitaciones autorizados",,2030-07-01,2030-07-01,,Recepción por etapa o control del periodo; no acredita ejecución,
1.12.2.1.44.2,Seguimiento de innovación IN1.7,1.12,Operación,Seguimiento de innovación IN1.7,Resultado de la ficha de familia y del paquete original; registro individual por código/ventana,"No duplicar padres, informes, ingeniería ni cobertura; no incluye horas de contraparte ni obras/adquisiciones del cliente",Criterio específico del diccionario T-14 del mismo código; evidencia sobre versión/periodo identificado,José Lara Arce,8,A:2;Q:2;O:4,"Asignación y cuadrante integrado por código; entornos, usuarios y habilitaciones autorizados",,2030-07-17,2030-07-17,,Recepción por etapa o control del periodo; no acredita ejecución,
1.12.2.3.44.1,Seguimiento de innovación IN3.7,1.12,Operación,Seguimiento de innovación IN3.7,Resultado de la ficha de familia y del paquete original; registro individual por código/ventana,"No duplicar padres, informes, ingeniería ni cobertura; no incluye horas de contraparte ni obras/adquisiciones del cliente",Criterio específico del diccionario T-14 del mismo código; evidencia sobre versión/periodo identificado,José Lara Arce,8,D:2;Q:2;O:4,"Asignación y cuadrante integrado por código; entornos, usuarios y habilitaciones autorizados",,2030-07-01,2030-07-02,,Recepción por etapa o control del periodo; no acredita ejecución,
1.12.2.3.44.2,Seguimiento de innovación IN3.7,1.12,Operación,Seguimiento de innovación IN3.7,Resultado de la ficha de familia y del paquete original; registro individual por código/ventana,"No duplicar padres, informes, ingeniería ni cobertura; no incluye horas de contraparte ni obras/adquisiciones del cliente",Criterio específico del diccionario T-14 del mismo código; evidencia sobre versión/periodo identificado,José Lara Arce,8,D:2;Q:2;O:4,"Asignación y cuadrante integrado por código; entornos, usuarios y habilitaciones autorizados",,2030-07-19,2030-07-22,,Recepción por etapa o control del periodo; no acredita ejecución,
1.12.2.4.44,Seguimiento de innovación IN4.4,1.12,Operación,Seguimiento de innovación IN4.4,Resultado de la ficha de familia y del paquete original; registro individual por código/ventana,"No duplicar padres, informes, ingeniería ni cobertura; no incluye horas de contraparte ni obras/adquisiciones del cliente",Criterio específico del diccionario T-14 del mismo código; evidencia sobre versión/periodo identificado,José Lara Arce,16,A:8;Q:4;J:4,"Asignación y cuadrante integrado por código; entornos, usuarios y habilitaciones autorizados",,2030-07-19,2030-07-22,,Recepción por etapa o control del periodo; no acredita ejecución,
1.12.2.5.44,Seguimiento de innovación IN5.4,1.12,Operación,Seguimiento de innovación IN5.4,Resultado de la ficha de familia y del paquete original; registro individual por código/ventana,"No duplicar padres, informes, ingeniería ni cobertura; no incluye horas de contraparte ni obras/adquisiciones del cliente",Criterio específico del diccionario T-14 del mismo código; evidencia sobre versión/periodo identificado,José Lara Arce,16,D:8;Q:4;O:4,"Asignación y cuadrante integrado por código; entornos, usuarios y habilitaciones autorizados",,2030-07-19,2030-07-23,,Recepción por etapa o control del periodo; no acredita ejecución,
1.12.2.1.45.1,Seguimiento de innovación IN1.7,1.12,Operación,Seguimiento de innovación IN1.7,Resultado de la ficha de familia y del paquete original; registro individual por código/ventana,"No duplicar padres, informes, ingeniería ni cobertura; no incluye horas de contraparte ni obras/adquisiciones del cliente",Criterio específico del diccionario T-14 del mismo código; evidencia sobre versión/periodo identificado,José Lara Arce,8,A:2;Q:2;O:4,"Asignación y cuadrante integrado por código; entornos, usuarios y habilitaciones autorizados",,2030-08-01,2030-08-01,,Recepción por etapa o control del periodo; no acredita ejecución,
1.12.2.1.45.2,Seguimiento de innovación IN1.7,1.12,Operación,Seguimiento de innovación IN1.7,Resultado de la ficha de familia y del paquete original; registro individual por código/ventana,"No duplicar padres, informes, ingeniería ni cobertura; no incluye horas de contraparte ni obras/adquisiciones del cliente",Criterio específico del diccionario T-14 del mismo código; evidencia sobre versión/periodo identificado,José Lara Arce,8,A:2;Q:2;O:4,"Asignación y cuadrante integrado por código; entornos, usuarios y habilitaciones autorizados",,2030-08-16,2030-08-16,,Recepción por etapa o control del periodo; no acredita ejecución,
1.12.2.3.45.1,Seguimiento de innovación IN3.7,1.12,Operación,Seguimiento de innovación IN3.7,Resultado de la ficha de familia y del paquete original; registro individual por código/ventana,"No duplicar padres, informes, ingeniería ni cobertura; no incluye horas de contraparte ni obras/adquisiciones del cliente",Criterio específico del diccionario T-14 del mismo código; evidencia sobre versión/periodo identificado,José Lara Arce,8,D:2;Q:2;O:4,"Asignación y cuadrante integrado por código; entornos, usuarios y habilitaciones autorizados",,2030-08-01,2030-08-02,,Recepción por etapa o control del periodo; no acredita ejecución,
1.12.2.3.45.2,Seguimiento de innovación IN3.7,1.12,Operación,Seguimiento de innovación IN3.7,Resultado de la ficha de familia y del paquete original; registro individual por código/ventana,"No duplicar padres, informes, ingeniería ni cobertura; no incluye horas de contraparte ni obras/adquisiciones del cliente",Criterio específico del diccionario T-14 del mismo código; evidencia sobre versión/periodo identificado,José Lara Arce,8,D:2;Q:2;O:4,"Asignación y cuadrante integrado por código; entornos, usuarios y habilitaciones autorizados",,2030-08-16,2030-08-19,,Recepción por etapa o control del periodo; no acredita ejecución,
1.12.2.4.45,Seguimiento de innovación IN4.4,1.12,Operación,Seguimiento de innovación IN4.4,Resultado de la ficha de familia y del paquete original; registro individual por código/ventana,"No duplicar padres, informes, ingeniería ni cobertura; no incluye horas de contraparte ni obras/adquisiciones del cliente",Criterio específico del diccionario T-14 del mismo código; evidencia sobre versión/periodo identificado,José Lara Arce,16,A:8;Q:4;J:4,"Asignación y cuadrante integrado por código; entornos, usuarios y habilitaciones autorizados",,2030-08-19,2030-08-21,,Recepción por etapa o control del periodo; no acredita ejecución,
1.12.2.5.45,Seguimiento de innovación IN5.4,1.12,Operación,Seguimiento de innovación IN5.4,Resultado de la ficha de familia y del paquete original; registro individual por código/ventana,"No duplicar padres, informes, ingeniería ni cobertura; no incluye horas de contraparte ni obras/adquisiciones del cliente",Criterio específico del diccionario T-14 del mismo código; evidencia sobre versión/periodo identificado,José Lara Arce,16,D:8;Q:4;O:4,"Asignación y cuadrante integrado por código; entornos, usuarios y habilitaciones autorizados",,2030-08-20,2030-08-21,,Recepción por etapa o control del periodo; no acredita ejecución,
1.12.2.1.46.1,Seguimiento de innovación IN1.7,1.12,Operación,Seguimiento de innovación IN1.7,Resultado de la ficha de familia y del paquete original; registro individual por código/ventana,"No duplicar padres, informes, ingeniería ni cobertura; no incluye horas de contraparte ni obras/adquisiciones del cliente",Criterio específico del diccionario T-14 del mismo código; evidencia sobre versión/periodo identificado,José Lara Arce,8,A:2;Q:2;O:4,"Asignación y cuadrante integrado por código; entornos, usuarios y habilitaciones autorizados",,2030-09-02,2030-09-02,,Recepción por etapa o control del periodo; no acredita ejecución,
1.12.2.1.46.2,Seguimiento de innovación IN1.7,1.12,Operación,Seguimiento de innovación IN1.7,Resultado de la ficha de familia y del paquete original; registro individual por código/ventana,"No duplicar padres, informes, ingeniería ni cobertura; no incluye horas de contraparte ni obras/adquisiciones del cliente",Criterio específico del diccionario T-14 del mismo código; evidencia sobre versión/periodo identificado,José Lara Arce,8,A:2;Q:2;O:4,"Asignación y cuadrante integrado por código; entornos, usuarios y habilitaciones autorizados",,2030-09-16,2030-09-16,,Recepción por etapa o control del periodo; no acredita ejecución,
1.12.2.3.46.1,Seguimiento de innovación IN3.7,1.12,Operación,Seguimiento de innovación IN3.7,Resultado de la ficha de familia y del paquete original; registro individual por código/ventana,"No duplicar padres, informes, ingeniería ni cobertura; no incluye horas de contraparte ni obras/adquisiciones del cliente",Criterio específico del diccionario T-14 del mismo código; evidencia sobre versión/periodo identificado,José Lara Arce,8,D:2;Q:2;O:4,"Asignación y cuadrante integrado por código; entornos, usuarios y habilitaciones autorizados",,2030-09-02,2030-09-03,,Recepción por etapa o control del periodo; no acredita ejecución,
1.12.2.3.46.2,Seguimiento de innovación IN3.7,1.12,Operación,Seguimiento de innovación IN3.7,Resultado de la ficha de familia y del paquete original; registro individual por código/ventana,"No duplicar padres, informes, ingeniería ni cobertura; no incluye horas de contraparte ni obras/adquisiciones del cliente",Criterio específico del diccionario T-14 del mismo código; evidencia sobre versión/periodo identificado,José Lara Arce,8,D:2;Q:2;O:4,"Asignación y cuadrante integrado por código; entornos, usuarios y habilitaciones autorizados",,2030-09-23,2030-09-24,,Recepción por etapa o control del periodo; no acredita ejecución,
1.12.2.4.46,Seguimiento de innovación IN4.4,1.12,Operación,Seguimiento de innovación IN4.4,Resultado de la ficha de familia y del paquete original; registro individual por código/ventana,"No duplicar padres, informes, ingeniería ni cobertura; no incluye horas de contraparte ni obras/adquisiciones del cliente",Criterio específico del diccionario T-14 del mismo código; evidencia sobre versión/periodo identificado,José Lara Arce,16,A:8;Q:4;J:4,"Asignación y cuadrante integrado por código; entornos, usuarios y habilitaciones autorizados",,2030-09-23,2030-09-24,,Recepción por etapa o control del periodo; no acredita ejecución,
1.12.2.5.46,Seguimiento de innovación IN5.4,1.12,Operación,Seguimiento de innovación IN5.4,Resultado de la ficha de familia y del paquete original; registro individual por código/ventana,"No duplicar padres, informes, ingeniería ni cobertura; no incluye horas de contraparte ni obras/adquisiciones del cliente",Criterio específico del diccionario T-14 del mismo código; evidencia sobre versión/periodo identificado,José Lara Arce,16,D:8;Q:4;O:4,"Asignación y cuadrante integrado por código; entornos, usuarios y habilitaciones autorizados",,2030-09-23,2030-09-25,,Recepción por etapa o control del periodo; no acredita ejecución,
1.12.2.1.47.1,Seguimiento de innovación IN1.7,1.12,Operación,Seguimiento de innovación IN1.7,Resultado de la ficha de familia y del paquete original; registro individual por código/ventana,"No duplicar padres, informes, ingeniería ni cobertura; no incluye horas de contraparte ni obras/adquisiciones del cliente",Criterio específico del diccionario T-14 del mismo código; evidencia sobre versión/periodo identificado,José Lara Arce,8,A:2;Q:2;O:4,"Asignación y cuadrante integrado por código; entornos, usuarios y habilitaciones autorizados",,2030-10-01,2030-10-01,,Recepción por etapa o control del periodo; no acredita ejecución,
1.12.2.1.47.2,Seguimiento de innovación IN1.7,1.12,Operación,Seguimiento de innovación IN1.7,Resultado de la ficha de familia y del paquete original; registro individual por código/ventana,"No duplicar padres, informes, ingeniería ni cobertura; no incluye horas de contraparte ni obras/adquisiciones del cliente",Criterio específico del diccionario T-14 del mismo código; evidencia sobre versión/periodo identificado,José Lara Arce,8,A:2;Q:2;O:4,"Asignación y cuadrante integrado por código; entornos, usuarios y habilitaciones autorizados",,2030-10-16,2030-10-16,,Recepción por etapa o control del periodo; no acredita ejecución,
1.12.2.3.47.1,Seguimiento de innovación IN3.7,1.12,Operación,Seguimiento de innovación IN3.7,Resultado de la ficha de familia y del paquete original; registro individual por código/ventana,"No duplicar padres, informes, ingeniería ni cobertura; no incluye horas de contraparte ni obras/adquisiciones del cliente",Criterio específico del diccionario T-14 del mismo código; evidencia sobre versión/periodo identificado,José Lara Arce,8,D:2;Q:2;O:4,"Asignación y cuadrante integrado por código; entornos, usuarios y habilitaciones autorizados",,2030-10-01,2030-10-02,,Recepción por etapa o control del periodo; no acredita ejecución,
1.12.2.3.47.2,Seguimiento de innovación IN3.7,1.12,Operación,Seguimiento de innovación IN3.7,Resultado de la ficha de familia y del paquete original; registro individual por código/ventana,"No duplicar padres, informes, ingeniería ni cobertura; no incluye horas de contraparte ni obras/adquisiciones del cliente",Criterio específico del diccionario T-14 del mismo código; evidencia sobre versión/periodo identificado,José Lara Arce,8,D:2;Q:2;O:4,"Asignación y cuadrante integrado por código; entornos, usuarios y habilitaciones autorizados",,2030-10-18,2030-10-21,,Recepción por etapa o control del periodo; no acredita ejecución,
1.12.2.4.47,Seguimiento de innovación IN4.4,1.12,Operación,Seguimiento de innovación IN4.4,Resultado de la ficha de familia y del paquete original; registro individual por código/ventana,"No duplicar padres, informes, ingeniería ni cobertura; no incluye horas de contraparte ni obras/adquisiciones del cliente",Criterio específico del diccionario T-14 del mismo código; evidencia sobre versión/periodo identificado,José Lara Arce,16,A:8;Q:4;J:4,"Asignación y cuadrante integrado por código; entornos, usuarios y habilitaciones autorizados",,2030-10-18,2030-10-21,,Recepción por etapa o control del periodo; no acredita ejecución,
1.12.2.5.47,Seguimiento de innovación IN5.4,1.12,Operación,Seguimiento de innovación IN5.4,Resultado de la ficha de familia y del paquete original; registro individual por código/ventana,"No duplicar padres, informes, ingeniería ni cobertura; no incluye horas de contraparte ni obras/adquisiciones del cliente",Criterio específico del diccionario T-14 del mismo código; evidencia sobre versión/periodo identificado,José Lara Arce,16,D:8;Q:4;O:4,"Asignación y cuadrante integrado por código; entornos, usuarios y habilitaciones autorizados",,2030-10-18,2030-10-22,,Recepción por etapa o control del periodo; no acredita ejecución,
1.12.2.1.48.1,Seguimiento de innovación IN1.7,1.12,Operación,Seguimiento de innovación IN1.7,Resultado de la ficha de familia y del paquete original; registro individual por código/ventana,"No duplicar padres, informes, ingeniería ni cobertura; no incluye horas de contraparte ni obras/adquisiciones del cliente",Criterio específico del diccionario T-14 del mismo código; evidencia sobre versión/periodo identificado,José Lara Arce,8,A:2;Q:2;O:4,"Asignación y cuadrante integrado por código; entornos, usuarios y habilitaciones autorizados",,2030-11-04,2030-11-04,,Recepción por etapa o control del periodo; no acredita ejecución,
1.12.2.1.48.2,Seguimiento de innovación IN1.7,1.12,Operación,Seguimiento de innovación IN1.7,Resultado de la ficha de familia y del paquete original; registro individual por código/ventana,"No duplicar padres, informes, ingeniería ni cobertura; no incluye horas de contraparte ni obras/adquisiciones del cliente",Criterio específico del diccionario T-14 del mismo código; evidencia sobre versión/periodo identificado,José Lara Arce,8,A:2;Q:2;O:4,"Asignación y cuadrante integrado por código; entornos, usuarios y habilitaciones autorizados",,2030-11-18,2030-11-18,,Recepción por etapa o control del periodo; no acredita ejecución,
1.12.2.3.48.1,Seguimiento de innovación IN3.7,1.12,Operación,Seguimiento de innovación IN3.7,Resultado de la ficha de familia y del paquete original; registro individual por código/ventana,"No duplicar padres, informes, ingeniería ni cobertura; no incluye horas de contraparte ni obras/adquisiciones del cliente",Criterio específico del diccionario T-14 del mismo código; evidencia sobre versión/periodo identificado,José Lara Arce,8,D:2;Q:2;O:4,"Asignación y cuadrante integrado por código; entornos, usuarios y habilitaciones autorizados",,2030-11-04,2030-11-05,,Recepción por etapa o control del periodo; no acredita ejecución,
1.12.2.3.48.2,Seguimiento de innovación IN3.7,1.12,Operación,Seguimiento de innovación IN3.7,Resultado de la ficha de familia y del paquete original; registro individual por código/ventana,"No duplicar padres, informes, ingeniería ni cobertura; no incluye horas de contraparte ni obras/adquisiciones del cliente",Criterio específico del diccionario T-14 del mismo código; evidencia sobre versión/periodo identificado,José Lara Arce,8,D:2;Q:2;O:4,"Asignación y cuadrante integrado por código; entornos, usuarios y habilitaciones autorizados",,2030-11-18,2030-11-18,,Recepción por etapa o control del periodo; no acredita ejecución,
1.12.2.4.48,Seguimiento de innovación IN4.4,1.12,Operación,Seguimiento de innovación IN4.4,Resultado de la ficha de familia y del paquete original; registro individual por código/ventana,"No duplicar padres, informes, ingeniería ni cobertura; no incluye horas de contraparte ni obras/adquisiciones del cliente",Criterio específico del diccionario T-14 del mismo código; evidencia sobre versión/periodo identificado,José Lara Arce,16,A:8;Q:4;J:4,"Asignación y cuadrante integrado por código; entornos, usuarios y habilitaciones autorizados",,2030-11-18,2030-11-19,,Recepción por etapa o control del periodo; no acredita ejecución,
1.12.2.5.48,Seguimiento de innovación IN5.4,1.12,Operación,Seguimiento de innovación IN5.4,Resultado de la ficha de familia y del paquete original; registro individual por código/ventana,"No duplicar padres, informes, ingeniería ni cobertura; no incluye horas de contraparte ni obras/adquisiciones del cliente",Criterio específico del diccionario T-14 del mismo código; evidencia sobre versión/periodo identificado,José Lara Arce,16,D:8;Q:4;O:4,"Asignación y cuadrante integrado por código; entornos, usuarios y habilitaciones autorizados",,2030-11-19,2030-11-21,,Recepción por etapa o control del periodo; no acredita ejecución,
1.12.2.1.49.1,Seguimiento de innovación IN1.7,1.12,Operación,Seguimiento de innovación IN1.7,Resultado de la ficha de familia y del paquete original; registro individual por código/ventana,"No duplicar padres, informes, ingeniería ni cobertura; no incluye horas de contraparte ni obras/adquisiciones del cliente",Criterio específico del diccionario T-14 del mismo código; evidencia sobre versión/periodo identificado,José Lara Arce,8,A:2;Q:2;O:4,"Asignación y cuadrante integrado por código; entornos, usuarios y habilitaciones autorizados",,2030-12-02,2030-12-02,,Recepción por etapa o control del periodo; no acredita ejecución,
1.12.2.1.49.2,Seguimiento de innovación IN1.7,1.12,Operación,Seguimiento de innovación IN1.7,Resultado de la ficha de familia y del paquete original; registro individual por código/ventana,"No duplicar padres, informes, ingeniería ni cobertura; no incluye horas de contraparte ni obras/adquisiciones del cliente",Criterio específico del diccionario T-14 del mismo código; evidencia sobre versión/periodo identificado,José Lara Arce,8,A:2;Q:2;O:4,"Asignación y cuadrante integrado por código; entornos, usuarios y habilitaciones autorizados",,2030-12-16,2030-12-16,,Recepción por etapa o control del periodo; no acredita ejecución,
1.12.2.3.49.1,Seguimiento de innovación IN3.7,1.12,Operación,Seguimiento de innovación IN3.7,Resultado de la ficha de familia y del paquete original; registro individual por código/ventana,"No duplicar padres, informes, ingeniería ni cobertura; no incluye horas de contraparte ni obras/adquisiciones del cliente",Criterio específico del diccionario T-14 del mismo código; evidencia sobre versión/periodo identificado,José Lara Arce,8,D:2;Q:2;O:4,"Asignación y cuadrante integrado por código; entornos, usuarios y habilitaciones autorizados",,2030-12-02,2030-12-03,,Recepción por etapa o control del periodo; no acredita ejecución,
1.12.2.3.49.2,Seguimiento de innovación IN3.7,1.12,Operación,Seguimiento de innovación IN3.7,Resultado de la ficha de familia y del paquete original; registro individual por código/ventana,"No duplicar padres, informes, ingeniería ni cobertura; no incluye horas de contraparte ni obras/adquisiciones del cliente",Criterio específico del diccionario T-14 del mismo código; evidencia sobre versión/periodo identificado,José Lara Arce,8,D:2;Q:2;O:4,"Asignación y cuadrante integrado por código; entornos, usuarios y habilitaciones autorizados",,2030-12-18,2030-12-19,,Recepción por etapa o control del periodo; no acredita ejecución,
1.12.2.4.49,Seguimiento de innovación IN4.4,1.12,Operación,Seguimiento de innovación IN4.4,Resultado de la ficha de familia y del paquete original; registro individual por código/ventana,"No duplicar padres, informes, ingeniería ni cobertura; no incluye horas de contraparte ni obras/adquisiciones del cliente",Criterio específico del diccionario T-14 del mismo código; evidencia sobre versión/periodo identificado,José Lara Arce,16,A:8;Q:4;J:4,"Asignación y cuadrante integrado por código; entornos, usuarios y habilitaciones autorizados",,2030-12-18,2030-12-19,,Recepción por etapa o control del periodo; no acredita ejecución,
1.12.2.5.49,Seguimiento de innovación IN5.4,1.12,Operación,Seguimiento de innovación IN5.4,Resultado de la ficha de familia y del paquete original; registro individual por código/ventana,"No duplicar padres, informes, ingeniería ni cobertura; no incluye horas de contraparte ni obras/adquisiciones del cliente",Criterio específico del diccionario T-14 del mismo código; evidencia sobre versión/periodo identificado,José Lara Arce,16,D:8;Q:4;O:4,"Asignación y cuadrante integrado por código; entornos, usuarios y habilitaciones autorizados",,2030-12-18,2030-12-20,,Recepción por etapa o control del periodo; no acredita ejecución,
1.12.2.1.50.1,Seguimiento de innovación IN1.7,1.12,Operación,Seguimiento de innovación IN1.7,Resultado de la ficha de familia y del paquete original; registro individual por código/ventana,"No duplicar padres, informes, ingeniería ni cobertura; no incluye horas de contraparte ni obras/adquisiciones del cliente",Criterio específico del diccionario T-14 del mismo código; evidencia sobre versión/periodo identificado,José Lara Arce,8,A:2;Q:2;O:4,"Asignación y cuadrante integrado por código; entornos, usuarios y habilitaciones autorizados",,2031-01-02,2031-01-02,,Recepción por etapa o control del periodo; no acredita ejecución,
1.12.2.1.50.2,Seguimiento de innovación IN1.7,1.12,Operación,Seguimiento de innovación IN1.7,Resultado de la ficha de familia y del paquete original; registro individual por código/ventana,"No duplicar padres, informes, ingeniería ni cobertura; no incluye horas de contraparte ni obras/adquisiciones del cliente",Criterio específico del diccionario T-14 del mismo código; evidencia sobre versión/periodo identificado,José Lara Arce,8,A:2;Q:2;O:4,"Asignación y cuadrante integrado por código; entornos, usuarios y habilitaciones autorizados",,2031-01-16,2031-01-16,,Recepción por etapa o control del periodo; no acredita ejecución,
1.12.2.3.50.1,Seguimiento de innovación IN3.7,1.12,Operación,Seguimiento de innovación IN3.7,Resultado de la ficha de familia y del paquete original; registro individual por código/ventana,"No duplicar padres, informes, ingeniería ni cobertura; no incluye horas de contraparte ni obras/adquisiciones del cliente",Criterio específico del diccionario T-14 del mismo código; evidencia sobre versión/periodo identificado,José Lara Arce,8,D:2;Q:2;O:4,"Asignación y cuadrante integrado por código; entornos, usuarios y habilitaciones autorizados",,2031-01-02,2031-01-03,,Recepción por etapa o control del periodo; no acredita ejecución,
1.12.2.3.50.2,Seguimiento de innovación IN3.7,1.12,Operación,Seguimiento de innovación IN3.7,Resultado de la ficha de familia y del paquete original; registro individual por código/ventana,"No duplicar padres, informes, ingeniería ni cobertura; no incluye horas de contraparte ni obras/adquisiciones del cliente",Criterio específico del diccionario T-14 del mismo código; evidencia sobre versión/periodo identificado,José Lara Arce,8,D:2;Q:2;O:4,"Asignación y cuadrante integrado por código; entornos, usuarios y habilitaciones autorizados",,2031-01-20,2031-01-21,,Recepción por etapa o control del periodo; no acredita ejecución,
1.12.2.4.50,Seguimiento de innovación IN4.4,1.12,Operación,Seguimiento de innovación IN4.4,Resultado de la ficha de familia y del paquete original; registro individual por código/ventana,"No duplicar padres, informes, ingeniería ni cobertura; no incluye horas de contraparte ni obras/adquisiciones del cliente",Criterio específico del diccionario T-14 del mismo código; evidencia sobre versión/periodo identificado,José Lara Arce,16,A:8;Q:4;J:4,"Asignación y cuadrante integrado por código; entornos, usuarios y habilitaciones autorizados",,2031-01-20,2031-01-21,,Recepción por etapa o control del periodo; no acredita ejecución,
1.12.2.5.50,Seguimiento de innovación IN5.4,1.12,Operación,Seguimiento de innovación IN5.4,Resultado de la ficha de familia y del paquete original; registro individual por código/ventana,"No duplicar padres, informes, ingeniería ni cobertura; no incluye horas de contraparte ni obras/adquisiciones del cliente",Criterio específico del diccionario T-14 del mismo código; evidencia sobre versión/periodo identificado,José Lara Arce,16,D:8;Q:4;O:4,"Asignación y cuadrante integrado por código; entornos, usuarios y habilitaciones autorizados",,2031-01-20,2031-01-22,,Recepción por etapa o control del periodo; no acredita ejecución,
1.12.2.1.51.1,Seguimiento de innovación IN1.7,1.12,Operación,Seguimiento de innovación IN1.7,Resultado de la ficha de familia y del paquete original; registro individual por código/ventana,"No duplicar padres, informes, ingeniería ni cobertura; no incluye horas de contraparte ni obras/adquisiciones del cliente",Criterio específico del diccionario T-14 del mismo código; evidencia sobre versión/periodo identificado,José Lara Arce,8,A:2;Q:2;O:4,"Asignación y cuadrante integrado por código; entornos, usuarios y habilitaciones autorizados",,2031-02-03,2031-02-03,,Recepción por etapa o control del periodo; no acredita ejecución,
1.12.2.1.51.2,Seguimiento de innovación IN1.7,1.12,Operación,Seguimiento de innovación IN1.7,Resultado de la ficha de familia y del paquete original; registro individual por código/ventana,"No duplicar padres, informes, ingeniería ni cobertura; no incluye horas de contraparte ni obras/adquisiciones del cliente",Criterio específico del diccionario T-14 del mismo código; evidencia sobre versión/periodo identificado,José Lara Arce,8,A:2;Q:2;O:4,"Asignación y cuadrante integrado por código; entornos, usuarios y habilitaciones autorizados",,2031-02-17,2031-02-17,,Recepción por etapa o control del periodo; no acredita ejecución,
1.12.2.3.51.1,Seguimiento de innovación IN3.7,1.12,Operación,Seguimiento de innovación IN3.7,Resultado de la ficha de familia y del paquete original; registro individual por código/ventana,"No duplicar padres, informes, ingeniería ni cobertura; no incluye horas de contraparte ni obras/adquisiciones del cliente",Criterio específico del diccionario T-14 del mismo código; evidencia sobre versión/periodo identificado,José Lara Arce,8,D:2;Q:2;O:4,"Asignación y cuadrante integrado por código; entornos, usuarios y habilitaciones autorizados",,2031-02-03,2031-02-04,,Recepción por etapa o control del periodo; no acredita ejecución,
1.12.2.3.51.2,Seguimiento de innovación IN3.7,1.12,Operación,Seguimiento de innovación IN3.7,Resultado de la ficha de familia y del paquete original; registro individual por código/ventana,"No duplicar padres, informes, ingeniería ni cobertura; no incluye horas de contraparte ni obras/adquisiciones del cliente",Criterio específico del diccionario T-14 del mismo código; evidencia sobre versión/periodo identificado,José Lara Arce,8,D:2;Q:2;O:4,"Asignación y cuadrante integrado por código; entornos, usuarios y habilitaciones autorizados",,2031-02-19,2031-02-20,,Recepción por etapa o control del periodo; no acredita ejecución,
1.12.2.4.51,Seguimiento de innovación IN4.4,1.12,Operación,Seguimiento de innovación IN4.4,Resultado de la ficha de familia y del paquete original; registro individual por código/ventana,"No duplicar padres, informes, ingeniería ni cobertura; no incluye horas de contraparte ni obras/adquisiciones del cliente",Criterio específico del diccionario T-14 del mismo código; evidencia sobre versión/periodo identificado,José Lara Arce,16,A:8;Q:4;J:4,"Asignación y cuadrante integrado por código; entornos, usuarios y habilitaciones autorizados",,2031-02-19,2031-02-20,,Recepción por etapa o control del periodo; no acredita ejecución,
1.12.2.5.51,Seguimiento de innovación IN5.4,1.12,Operación,Seguimiento de innovación IN5.4,Resultado de la ficha de familia y del paquete original; registro individual por código/ventana,"No duplicar padres, informes, ingeniería ni cobertura; no incluye horas de contraparte ni obras/adquisiciones del cliente",Criterio específico del diccionario T-14 del mismo código; evidencia sobre versión/periodo identificado,José Lara Arce,16,D:8;Q:4;O:4,"Asignación y cuadrante integrado por código; entornos, usuarios y habilitaciones autorizados",,2031-02-19,2031-02-21,,Recepción por etapa o control del periodo; no acredita ejecución,
1.12.2.1.52.1,Seguimiento de innovación IN1.7,1.12,Operación,Seguimiento de innovación IN1.7,Resultado de la ficha de familia y del paquete original; registro individual por código/ventana,"No duplicar padres, informes, ingeniería ni cobertura; no incluye horas de contraparte ni obras/adquisiciones del cliente",Criterio específico del diccionario T-14 del mismo código; evidencia sobre versión/periodo identificado,José Lara Arce,8,A:2;Q:2;O:4,"Asignación y cuadrante integrado por código; entornos, usuarios y habilitaciones autorizados",,2031-03-03,2031-03-03,,Recepción por etapa o control del periodo; no acredita ejecución,
1.12.2.1.52.2,Seguimiento de innovación IN1.7,1.12,Operación,Seguimiento de innovación IN1.7,Resultado de la ficha de familia y del paquete original; registro individual por código/ventana,"No duplicar padres, informes, ingeniería ni cobertura; no incluye horas de contraparte ni obras/adquisiciones del cliente",Criterio específico del diccionario T-14 del mismo código; evidencia sobre versión/periodo identificado,José Lara Arce,8,A:2;Q:2;O:4,"Asignación y cuadrante integrado por código; entornos, usuarios y habilitaciones autorizados",,2031-03-17,2031-03-17,,Recepción por etapa o control del periodo; no acredita ejecución,
1.12.2.3.52.1,Seguimiento de innovación IN3.7,1.12,Operación,Seguimiento de innovación IN3.7,Resultado de la ficha de familia y del paquete original; registro individual por código/ventana,"No duplicar padres, informes, ingeniería ni cobertura; no incluye horas de contraparte ni obras/adquisiciones del cliente",Criterio específico del diccionario T-14 del mismo código; evidencia sobre versión/periodo identificado,José Lara Arce,8,D:2;Q:2;O:4,"Asignación y cuadrante integrado por código; entornos, usuarios y habilitaciones autorizados",,2031-03-03,2031-03-04,,Recepción por etapa o control del periodo; no acredita ejecución,
1.12.2.3.52.2,Seguimiento de innovación IN3.7,1.12,Operación,Seguimiento de innovación IN3.7,Resultado de la ficha de familia y del paquete original; registro individual por código/ventana,"No duplicar padres, informes, ingeniería ni cobertura; no incluye horas de contraparte ni obras/adquisiciones del cliente",Criterio específico del diccionario T-14 del mismo código; evidencia sobre versión/periodo identificado,José Lara Arce,8,D:2;Q:2;O:4,"Asignación y cuadrante integrado por código; entornos, usuarios y habilitaciones autorizados",,2031-03-19,2031-03-20,,Recepción por etapa o control del periodo; no acredita ejecución,
1.12.2.4.52,Seguimiento de innovación IN4.4,1.12,Operación,Seguimiento de innovación IN4.4,Resultado de la ficha de familia y del paquete original; registro individual por código/ventana,"No duplicar padres, informes, ingeniería ni cobertura; no incluye horas de contraparte ni obras/adquisiciones del cliente",Criterio específico del diccionario T-14 del mismo código; evidencia sobre versión/periodo identificado,José Lara Arce,16,A:8;Q:4;J:4,"Asignación y cuadrante integrado por código; entornos, usuarios y habilitaciones autorizados",,2031-03-19,2031-03-20,,Recepción por etapa o control del periodo; no acredita ejecución,
1.12.2.5.52,Seguimiento de innovación IN5.4,1.12,Operación,Seguimiento de innovación IN5.4,Resultado de la ficha de familia y del paquete original; registro individual por código/ventana,"No duplicar padres, informes, ingeniería ni cobertura; no incluye horas de contraparte ni obras/adquisiciones del cliente",Criterio específico del diccionario T-14 del mismo código; evidencia sobre versión/periodo identificado,José Lara Arce,16,D:8;Q:4;O:4,"Asignación y cuadrante integrado por código; entornos, usuarios y habilitaciones autorizados",,2031-03-19,2031-03-21,,Recepción por etapa o control del periodo; no acredita ejecución,
1.12.2.1.53.1,Seguimiento de innovación IN1.7,1.12,Operación,Seguimiento de innovación IN1.7,Resultado de la ficha de familia y del paquete original; registro individual por código/ventana,"No duplicar padres, informes, ingeniería ni cobertura; no incluye horas de contraparte ni obras/adquisiciones del cliente",Criterio específico del diccionario T-14 del mismo código; evidencia sobre versión/periodo identificado,José Lara Arce,8,A:2;Q:2;O:4,"Asignación y cuadrante integrado por código; entornos, usuarios y habilitaciones autorizados",,2031-04-01,2031-04-01,,Recepción por etapa o control del periodo; no acredita ejecución,
1.12.2.1.53.2,Seguimiento de innovación IN1.7,1.12,Operación,Seguimiento de innovación IN1.7,Resultado de la ficha de familia y del paquete original; registro individual por código/ventana,"No duplicar padres, informes, ingeniería ni cobertura; no incluye horas de contraparte ni obras/adquisiciones del cliente",Criterio específico del diccionario T-14 del mismo código; evidencia sobre versión/periodo identificado,José Lara Arce,8,A:2;Q:2;O:4,"Asignación y cuadrante integrado por código; entornos, usuarios y habilitaciones autorizados",,2031-04-16,2031-04-16,,Recepción por etapa o control del periodo; no acredita ejecución,
1.12.2.3.53.1,Seguimiento de innovación IN3.7,1.12,Operación,Seguimiento de innovación IN3.7,Resultado de la ficha de familia y del paquete original; registro individual por código/ventana,"No duplicar padres, informes, ingeniería ni cobertura; no incluye horas de contraparte ni obras/adquisiciones del cliente",Criterio específico del diccionario T-14 del mismo código; evidencia sobre versión/periodo identificado,José Lara Arce,8,D:2;Q:2;O:4,"Asignación y cuadrante integrado por código; entornos, usuarios y habilitaciones autorizados",,2031-04-01,2031-04-02,,Recepción por etapa o control del periodo; no acredita ejecución,
1.12.2.3.53.2,Seguimiento de innovación IN3.7,1.12,Operación,Seguimiento de innovación IN3.7,Resultado de la ficha de familia y del paquete original; registro individual por código/ventana,"No duplicar padres, informes, ingeniería ni cobertura; no incluye horas de contraparte ni obras/adquisiciones del cliente",Criterio específico del diccionario T-14 del mismo código; evidencia sobre versión/periodo identificado,José Lara Arce,8,D:2;Q:2;O:4,"Asignación y cuadrante integrado por código; entornos, usuarios y habilitaciones autorizados",,2031-04-18,2031-04-21,,Recepción por etapa o control del periodo; no acredita ejecución,
1.12.2.4.53,Seguimiento de innovación IN4.4,1.12,Operación,Seguimiento de innovación IN4.4,Resultado de la ficha de familia y del paquete original; registro individual por código/ventana,"No duplicar padres, informes, ingeniería ni cobertura; no incluye horas de contraparte ni obras/adquisiciones del cliente",Criterio específico del diccionario T-14 del mismo código; evidencia sobre versión/periodo identificado,José Lara Arce,16,A:8;Q:4;J:4,"Asignación y cuadrante integrado por código; entornos, usuarios y habilitaciones autorizados",,2031-04-18,2031-04-21,,Recepción por etapa o control del periodo; no acredita ejecución,
1.12.2.5.53,Seguimiento de innovación IN5.4,1.12,Operación,Seguimiento de innovación IN5.4,Resultado de la ficha de familia y del paquete original; registro individual por código/ventana,"No duplicar padres, informes, ingeniería ni cobertura; no incluye horas de contraparte ni obras/adquisiciones del cliente",Criterio específico del diccionario T-14 del mismo código; evidencia sobre versión/periodo identificado,José Lara Arce,16,D:8;Q:4;O:4,"Asignación y cuadrante integrado por código; entornos, usuarios y habilitaciones autorizados",,2031-04-18,2031-04-22,,Recepción por etapa o control del periodo; no acredita ejecución,
1.12.2.1.54.1,Seguimiento de innovación IN1.7,1.12,Operación,Seguimiento de innovación IN1.7,Resultado de la ficha de familia y del paquete original; registro individual por código/ventana,"No duplicar padres, informes, ingeniería ni cobertura; no incluye horas de contraparte ni obras/adquisiciones del cliente",Criterio específico del diccionario T-14 del mismo código; evidencia sobre versión/periodo identificado,José Lara Arce,8,A:2;Q:2;O:4,"Asignación y cuadrante integrado por código; entornos, usuarios y habilitaciones autorizados",,2031-05-02,2031-05-02,,Recepción por etapa o control del periodo; no acredita ejecución,
1.12.2.1.54.2,Seguimiento de innovación IN1.7,1.12,Operación,Seguimiento de innovación IN1.7,Resultado de la ficha de familia y del paquete original; registro individual por código/ventana,"No duplicar padres, informes, ingeniería ni cobertura; no incluye horas de contraparte ni obras/adquisiciones del cliente",Criterio específico del diccionario T-14 del mismo código; evidencia sobre versión/periodo identificado,José Lara Arce,8,A:2;Q:2;O:4,"Asignación y cuadrante integrado por código; entornos, usuarios y habilitaciones autorizados",,2031-05-16,2031-05-16,,Recepción por etapa o control del periodo; no acredita ejecución,
1.12.2.3.54.1,Seguimiento de innovación IN3.7,1.12,Operación,Seguimiento de innovación IN3.7,Resultado de la ficha de familia y del paquete original; registro individual por código/ventana,"No duplicar padres, informes, ingeniería ni cobertura; no incluye horas de contraparte ni obras/adquisiciones del cliente",Criterio específico del diccionario T-14 del mismo código; evidencia sobre versión/periodo identificado,José Lara Arce,8,D:2;Q:2;O:4,"Asignación y cuadrante integrado por código; entornos, usuarios y habilitaciones autorizados",,2031-05-02,2031-05-05,,Recepción por etapa o control del periodo; no acredita ejecución,
1.12.2.3.54.2,Seguimiento de innovación IN3.7,1.12,Operación,Seguimiento de innovación IN3.7,Resultado de la ficha de familia y del paquete original; registro individual por código/ventana,"No duplicar padres, informes, ingeniería ni cobertura; no incluye horas de contraparte ni obras/adquisiciones del cliente",Criterio específico del diccionario T-14 del mismo código; evidencia sobre versión/periodo identificado,José Lara Arce,8,D:2;Q:2;O:4,"Asignación y cuadrante integrado por código; entornos, usuarios y habilitaciones autorizados",,2031-05-16,2031-05-19,,Recepción por etapa o control del periodo; no acredita ejecución,
1.12.2.4.54,Seguimiento de innovación IN4.4,1.12,Operación,Seguimiento de innovación IN4.4,Resultado de la ficha de familia y del paquete original; registro individual por código/ventana,"No duplicar padres, informes, ingeniería ni cobertura; no incluye horas de contraparte ni obras/adquisiciones del cliente",Criterio específico del diccionario T-14 del mismo código; evidencia sobre versión/periodo identificado,José Lara Arce,16,A:8;Q:4;J:4,"Asignación y cuadrante integrado por código; entornos, usuarios y habilitaciones autorizados",,2031-05-19,2031-05-22,,Recepción por etapa o control del periodo; no acredita ejecución,
1.12.2.5.54,Seguimiento de innovación IN5.4,1.12,Operación,Seguimiento de innovación IN5.4,Resultado de la ficha de familia y del paquete original; registro individual por código/ventana,"No duplicar padres, informes, ingeniería ni cobertura; no incluye horas de contraparte ni obras/adquisiciones del cliente",Criterio específico del diccionario T-14 del mismo código; evidencia sobre versión/periodo identificado,José Lara Arce,16,D:8;Q:4;O:4,"Asignación y cuadrante integrado por código; entornos, usuarios y habilitaciones autorizados",,2031-05-20,2031-05-22,,Recepción por etapa o control del periodo; no acredita ejecución,
1.12.2.1.55.1,Seguimiento de innovación IN1.7,1.12,Operación,Seguimiento de innovación IN1.7,Resultado de la ficha de familia y del paquete original; registro individual por código/ventana,"No duplicar padres, informes, ingeniería ni cobertura; no incluye horas de contraparte ni obras/adquisiciones del cliente",Criterio específico del diccionario T-14 del mismo código; evidencia sobre versión/periodo identificado,José Lara Arce,8,A:2;Q:2;O:4,"Asignación y cuadrante integrado por código; entornos, usuarios y habilitaciones autorizados",,2031-06-02,2031-06-02,,Recepción por etapa o control del periodo; no acredita ejecución,
1.12.2.1.55.2,Seguimiento de innovación IN1.7,1.12,Operación,Seguimiento de innovación IN1.7,Resultado de la ficha de familia y del paquete original; registro individual por código/ventana,"No duplicar padres, informes, ingeniería ni cobertura; no incluye horas de contraparte ni obras/adquisiciones del cliente",Criterio específico del diccionario T-14 del mismo código; evidencia sobre versión/periodo identificado,José Lara Arce,8,A:2;Q:2;O:4,"Asignación y cuadrante integrado por código; entornos, usuarios y habilitaciones autorizados",,2031-06-16,2031-06-16,,Recepción por etapa o control del periodo; no acredita ejecución,
1.12.2.3.55.1,Seguimiento de innovación IN3.7,1.12,Operación,Seguimiento de innovación IN3.7,Resultado de la ficha de familia y del paquete original; registro individual por código/ventana,"No duplicar padres, informes, ingeniería ni cobertura; no incluye horas de contraparte ni obras/adquisiciones del cliente",Criterio específico del diccionario T-14 del mismo código; evidencia sobre versión/periodo identificado,José Lara Arce,8,D:2;Q:2;O:4,"Asignación y cuadrante integrado por código; entornos, usuarios y habilitaciones autorizados",,2031-06-02,2031-06-03,,Recepción por etapa o control del periodo; no acredita ejecución,
1.12.2.3.55.2,Seguimiento de innovación IN3.7,1.12,Operación,Seguimiento de innovación IN3.7,Resultado de la ficha de familia y del paquete original; registro individual por código/ventana,"No duplicar padres, informes, ingeniería ni cobertura; no incluye horas de contraparte ni obras/adquisiciones del cliente",Criterio específico del diccionario T-14 del mismo código; evidencia sobre versión/periodo identificado,José Lara Arce,8,D:2;Q:2;O:4,"Asignación y cuadrante integrado por código; entornos, usuarios y habilitaciones autorizados",,2031-06-18,2031-06-19,,Recepción por etapa o control del periodo; no acredita ejecución,
1.12.2.4.55,Seguimiento de innovación IN4.4,1.12,Operación,Seguimiento de innovación IN4.4,Resultado de la ficha de familia y del paquete original; registro individual por código/ventana,"No duplicar padres, informes, ingeniería ni cobertura; no incluye horas de contraparte ni obras/adquisiciones del cliente",Criterio específico del diccionario T-14 del mismo código; evidencia sobre versión/periodo identificado,José Lara Arce,16,A:8;Q:4;J:4,"Asignación y cuadrante integrado por código; entornos, usuarios y habilitaciones autorizados",,2031-06-18,2031-06-19,,Recepción por etapa o control del periodo; no acredita ejecución,
1.12.2.5.55,Seguimiento de innovación IN5.4,1.12,Operación,Seguimiento de innovación IN5.4,Resultado de la ficha de familia y del paquete original; registro individual por código/ventana,"No duplicar padres, informes, ingeniería ni cobertura; no incluye horas de contraparte ni obras/adquisiciones del cliente",Criterio específico del diccionario T-14 del mismo código; evidencia sobre versión/periodo identificado,José Lara Arce,16,D:8;Q:4;O:4,"Asignación y cuadrante integrado por código; entornos, usuarios y habilitaciones autorizados",,2031-06-18,2031-06-20,,Recepción por etapa o control del periodo; no acredita ejecución,
1.12.2.1.56.1,Seguimiento de innovación IN1.7,1.12,Operación,Seguimiento de innovación IN1.7,Resultado de la ficha de familia y del paquete original; registro individual por código/ventana,"No duplicar padres, informes, ingeniería ni cobertura; no incluye horas de contraparte ni obras/adquisiciones del cliente",Criterio específico del diccionario T-14 del mismo código; evidencia sobre versión/periodo identificado,José Lara Arce,8,A:2;Q:2;O:4,"Asignación y cuadrante integrado por código; entornos, usuarios y habilitaciones autorizados",,2031-07-01,2031-07-01,,Recepción por etapa o control del periodo; no acredita ejecución,
1.12.2.1.56.2,Seguimiento de innovación IN1.7,1.12,Operación,Seguimiento de innovación IN1.7,Resultado de la ficha de familia y del paquete original; registro individual por código/ventana,"No duplicar padres, informes, ingeniería ni cobertura; no incluye horas de contraparte ni obras/adquisiciones del cliente",Criterio específico del diccionario T-14 del mismo código; evidencia sobre versión/periodo identificado,José Lara Arce,8,A:2;Q:2;O:4,"Asignación y cuadrante integrado por código; entornos, usuarios y habilitaciones autorizados",,2031-07-17,2031-07-17,,Recepción por etapa o control del periodo; no acredita ejecución,
1.12.2.3.56.1,Seguimiento de innovación IN3.7,1.12,Operación,Seguimiento de innovación IN3.7,Resultado de la ficha de familia y del paquete original; registro individual por código/ventana,"No duplicar padres, informes, ingeniería ni cobertura; no incluye horas de contraparte ni obras/adquisiciones del cliente",Criterio específico del diccionario T-14 del mismo código; evidencia sobre versión/periodo identificado,José Lara Arce,8,D:2;Q:2;O:4,"Asignación y cuadrante integrado por código; entornos, usuarios y habilitaciones autorizados",,2031-07-01,2031-07-02,,Recepción por etapa o control del periodo; no acredita ejecución,
1.12.2.3.56.2,Seguimiento de innovación IN3.7,1.12,Operación,Seguimiento de innovación IN3.7,Resultado de la ficha de familia y del paquete original; registro individual por código/ventana,"No duplicar padres, informes, ingeniería ni cobertura; no incluye horas de contraparte ni obras/adquisiciones del cliente",Criterio específico del diccionario T-14 del mismo código; evidencia sobre versión/periodo identificado,José Lara Arce,8,D:2;Q:2;O:4,"Asignación y cuadrante integrado por código; entornos, usuarios y habilitaciones autorizados",,2031-07-17,2031-07-18,,Recepción por etapa o control del periodo; no acredita ejecución,
1.12.2.4.56,Seguimiento de innovación IN4.4,1.12,Operación,Seguimiento de innovación IN4.4,Resultado de la ficha de familia y del paquete original; registro individual por código/ventana,"No duplicar padres, informes, ingeniería ni cobertura; no incluye horas de contraparte ni obras/adquisiciones del cliente",Criterio específico del diccionario T-14 del mismo código; evidencia sobre versión/periodo identificado,José Lara Arce,16,A:8;Q:4;J:4,"Asignación y cuadrante integrado por código; entornos, usuarios y habilitaciones autorizados",,2031-07-18,2031-07-22,,Recepción por etapa o control del periodo; no acredita ejecución,
1.12.2.5.56,Seguimiento de innovación IN5.4,1.12,Operación,Seguimiento de innovación IN5.4,Resultado de la ficha de familia y del paquete original; registro individual por código/ventana,"No duplicar padres, informes, ingeniería ni cobertura; no incluye horas de contraparte ni obras/adquisiciones del cliente",Criterio específico del diccionario T-14 del mismo código; evidencia sobre versión/periodo identificado,José Lara Arce,16,D:8;Q:4;O:4,"Asignación y cuadrante integrado por código; entornos, usuarios y habilitaciones autorizados",,2031-07-21,2031-07-22,,Recepción por etapa o control del periodo; no acredita ejecución,
1.8.7.1.1,Expediente de abandono revisado y vinculado 1,1.8,E1 Desarrollo,Expediente de abandono revisado y vinculado 1,Resultado de la ficha de familia y del paquete original; registro individual por código/ventana,"No duplicar padres, informes, ingeniería ni cobertura; no incluye horas de contraparte ni obras/adquisiciones del cliente","Folio, origen, integridad y vínculos recibidos; faltantes y decisiones jurídicas identificados.",Nicolás Torfan,8,A:2;D:4;Q:2,"Asignación y cuadrante integrado por código; entornos, usuarios y habilitaciones autorizados",14 expedientes; SD5; revisión documental,2027-06-02,2027-06-03,1.8.1.2;1.8.2.5,Recepción por etapa o control del periodo; no acredita ejecución,14 expedientes; SD5; revisión documental
1.8.7.1.2,Expediente de abandono revisado y vinculado 2,1.8,E1 Desarrollo,Expediente de abandono revisado y vinculado 2,Resultado de la ficha de familia y del paquete original; registro individual por código/ventana,"No duplicar padres, informes, ingeniería ni cobertura; no incluye horas de contraparte ni obras/adquisiciones del cliente","Folio, origen, integridad y vínculos recibidos; faltantes y decisiones jurídicas identificados.",Nicolás Torfan,8,A:2;D:4;Q:2,"Asignación y cuadrante integrado por código; entornos, usuarios y habilitaciones autorizados",14 expedientes; SD5; revisión documental,2027-06-02,2027-06-02,1.8.1.2;1.8.2.5,Recepción por etapa o control del periodo; no acredita ejecución,14 expedientes; SD5; revisión documental
1.8.7.1.3,Expediente de abandono revisado y vinculado 3,1.8,E1 Desarrollo,Expediente de abandono revisado y vinculado 3,Resultado de la ficha de familia y del paquete original; registro individual por código/ventana,"No duplicar padres, informes, ingeniería ni cobertura; no incluye horas de contraparte ni obras/adquisiciones del cliente","Folio, origen, integridad y vínculos recibidos; faltantes y decisiones jurídicas identificados.",Nicolás Torfan,8,A:2;D:4;Q:2,"Asignación y cuadrante integrado por código; entornos, usuarios y habilitaciones autorizados",14 expedientes; SD5; revisión documental,2027-06-03,2027-06-04,1.8.1.2;1.8.2.5,Recepción por etapa o control del periodo; no acredita ejecución,14 expedientes; SD5; revisión documental
1.8.7.1.4,Expediente de abandono revisado y vinculado 4,1.8,E1 Desarrollo,Expediente de abandono revisado y vinculado 4,Resultado de la ficha de familia y del paquete original; registro individual por código/ventana,"No duplicar padres, informes, ingeniería ni cobertura; no incluye horas de contraparte ni obras/adquisiciones del cliente","Folio, origen, integridad y vínculos recibidos; faltantes y decisiones jurídicas identificados.",Nicolás Torfan,8,A:2;D:4;Q:2,"Asignación y cuadrante integrado por código; entornos, usuarios y habilitaciones autorizados",14 expedientes; SD5; revisión documental,2027-06-01,2027-06-01,1.8.1.2;1.8.2.5,Recepción por etapa o control del periodo; no acredita ejecución,14 expedientes; SD5; revisión documental
1.8.7.1.5,Expediente de abandono revisado y vinculado 5,1.8,E1 Desarrollo,Expediente de abandono revisado y vinculado 5,Resultado de la ficha de familia y del paquete original; registro individual por código/ventana,"No duplicar padres, informes, ingeniería ni cobertura; no incluye horas de contraparte ni obras/adquisiciones del cliente","Folio, origen, integridad y vínculos recibidos; faltantes y decisiones jurídicas identificados.",Nicolás Torfan,8,A:2;D:4;Q:2,"Asignación y cuadrante integrado por código; entornos, usuarios y habilitaciones autorizados",14 expedientes; SD5; revisión documental,2027-06-01,2027-06-02,1.8.1.2;1.8.2.5,Recepción por etapa o control del periodo; no acredita ejecución,14 expedientes; SD5; revisión documental
1.8.7.1.6,Expediente de abandono revisado y vinculado 6,1.8,E1 Desarrollo,Expediente de abandono revisado y vinculado 6,Resultado de la ficha de familia y del paquete original; registro individual por código/ventana,"No duplicar padres, informes, ingeniería ni cobertura; no incluye horas de contraparte ni obras/adquisiciones del cliente","Folio, origen, integridad y vínculos recibidos; faltantes y decisiones jurídicas identificados.",Nicolás Torfan,8,A:2;D:4;Q:2,"Asignación y cuadrante integrado por código; entornos, usuarios y habilitaciones autorizados",14 expedientes; SD5; revisión documental,2027-06-02,2027-06-03,1.8.1.2;1.8.2.5,Recepción por etapa o control del periodo; no acredita ejecución,14 expedientes; SD5; revisión documental
1.8.7.1.7,Expediente de abandono revisado y vinculado 7,1.8,E1 Desarrollo,Expediente de abandono revisado y vinculado 7,Resultado de la ficha de familia y del paquete original; registro individual por código/ventana,"No duplicar padres, informes, ingeniería ni cobertura; no incluye horas de contraparte ni obras/adquisiciones del cliente","Folio, origen, integridad y vínculos recibidos; faltantes y decisiones jurídicas identificados.",Nicolás Torfan,8,A:2;D:4;Q:2,"Asignación y cuadrante integrado por código; entornos, usuarios y habilitaciones autorizados",14 expedientes; SD5; revisión documental,2027-06-02,2027-06-03,1.8.1.2;1.8.2.5,Recepción por etapa o control del periodo; no acredita ejecución,14 expedientes; SD5; revisión documental
1.8.7.1.8,Expediente de abandono revisado y vinculado 8,1.8,E1 Desarrollo,Expediente de abandono revisado y vinculado 8,Resultado de la ficha de familia y del paquete original; registro individual por código/ventana,"No duplicar padres, informes, ingeniería ni cobertura; no incluye horas de contraparte ni obras/adquisiciones del cliente","Folio, origen, integridad y vínculos recibidos; faltantes y decisiones jurídicas identificados.",Nicolás Torfan,8,A:2;D:4;Q:2,"Asignación y cuadrante integrado por código; entornos, usuarios y habilitaciones autorizados",14 expedientes; SD5; revisión documental,2027-06-03,2027-06-04,1.8.1.2;1.8.2.5,Recepción por etapa o control del periodo; no acredita ejecución,14 expedientes; SD5; revisión documental
1.8.7.1.9,Expediente de abandono revisado y vinculado 9,1.8,E1 Desarrollo,Expediente de abandono revisado y vinculado 9,Resultado de la ficha de familia y del paquete original; registro individual por código/ventana,"No duplicar padres, informes, ingeniería ni cobertura; no incluye horas de contraparte ni obras/adquisiciones del cliente","Folio, origen, integridad y vínculos recibidos; faltantes y decisiones jurídicas identificados.",Nicolás Torfan,8,A:2;D:4;Q:2,"Asignación y cuadrante integrado por código; entornos, usuarios y habilitaciones autorizados",14 expedientes; SD5; revisión documental,2027-06-04,2027-06-04,1.8.1.2;1.8.2.5,Recepción por etapa o control del periodo; no acredita ejecución,14 expedientes; SD5; revisión documental
1.8.7.1.10,Expediente de abandono revisado y vinculado 10,1.8,E1 Desarrollo,Expediente de abandono revisado y vinculado 10,Resultado de la ficha de familia y del paquete original; registro individual por código/ventana,"No duplicar padres, informes, ingeniería ni cobertura; no incluye horas de contraparte ni obras/adquisiciones del cliente","Folio, origen, integridad y vínculos recibidos; faltantes y decisiones jurídicas identificados.",Nicolás Torfan,8,A:2;D:4;Q:2,"Asignación y cuadrante integrado por código; entornos, usuarios y habilitaciones autorizados",14 expedientes; SD5; revisión documental,2027-06-03,2027-06-04,1.8.1.2;1.8.2.5,Recepción por etapa o control del periodo; no acredita ejecución,14 expedientes; SD5; revisión documental
1.8.7.1.11,Expediente de abandono revisado y vinculado 11,1.8,E1 Desarrollo,Expediente de abandono revisado y vinculado 11,Resultado de la ficha de familia y del paquete original; registro individual por código/ventana,"No duplicar padres, informes, ingeniería ni cobertura; no incluye horas de contraparte ni obras/adquisiciones del cliente","Folio, origen, integridad y vínculos recibidos; faltantes y decisiones jurídicas identificados.",Nicolás Torfan,8,A:2;D:4;Q:2,"Asignación y cuadrante integrado por código; entornos, usuarios y habilitaciones autorizados",14 expedientes; SD5; revisión documental,2027-06-04,2027-06-07,1.8.1.2;1.8.2.5,Recepción por etapa o control del periodo; no acredita ejecución,14 expedientes; SD5; revisión documental
1.8.7.1.12,Expediente de abandono revisado y vinculado 12,1.8,E1 Desarrollo,Expediente de abandono revisado y vinculado 12,Resultado de la ficha de familia y del paquete original; registro individual por código/ventana,"No duplicar padres, informes, ingeniería ni cobertura; no incluye horas de contraparte ni obras/adquisiciones del cliente","Folio, origen, integridad y vínculos recibidos; faltantes y decisiones jurídicas identificados.",Nicolás Torfan,8,A:2;D:4;Q:2,"Asignación y cuadrante integrado por código; entornos, usuarios y habilitaciones autorizados",14 expedientes; SD5; revisión documental,2027-06-04,2027-06-07,1.8.1.2;1.8.2.5,Recepción por etapa o control del periodo; no acredita ejecución,14 expedientes; SD5; revisión documental
1.8.7.1.13,Expediente de abandono revisado y vinculado 13,1.8,E1 Desarrollo,Expediente de abandono revisado y vinculado 13,Resultado de la ficha de familia y del paquete original; registro individual por código/ventana,"No duplicar padres, informes, ingeniería ni cobertura; no incluye horas de contraparte ni obras/adquisiciones del cliente","Folio, origen, integridad y vínculos recibidos; faltantes y decisiones jurídicas identificados.",Nicolás Torfan,8,A:2;D:4;Q:2,"Asignación y cuadrante integrado por código; entornos, usuarios y habilitaciones autorizados",14 expedientes; SD5; revisión documental,2027-06-01,2027-06-01,1.8.1.2;1.8.2.5,Recepción por etapa o control del periodo; no acredita ejecución,14 expedientes; SD5; revisión documental
1.8.7.1.14,Expediente de abandono revisado y vinculado 14,1.8,E1 Desarrollo,Expediente de abandono revisado y vinculado 14,Resultado de la ficha de familia y del paquete original; registro individual por código/ventana,"No duplicar padres, informes, ingeniería ni cobertura; no incluye horas de contraparte ni obras/adquisiciones del cliente","Folio, origen, integridad y vínculos recibidos; faltantes y decisiones jurídicas identificados.",Nicolás Torfan,8,A:2;D:4;Q:2,"Asignación y cuadrante integrado por código; entornos, usuarios y habilitaciones autorizados",14 expedientes; SD5; revisión documental,2027-06-01,2027-06-02,1.8.1.2;1.8.2.5,Recepción por etapa o control del periodo; no acredita ejecución,14 expedientes; SD5; revisión documental
1.8.7.2.1,Lote de hasta 32 autorizaciones escolares 1,1.8,E1 Desarrollo,Lote de hasta 32 autorizaciones escolares 1,Resultado de la ficha de familia y del paquete original; registro individual por código/ventana,"No duplicar padres, informes, ingeniería ni cobertura; no incluye horas de contraparte ni obras/adquisiciones del cliente","Lectura humana, vigencia, menor/apoderado y evidencia; autorización ausente bloquea participación.",Nicolás Torfan,8,D:6;Q:2,"Asignación y cuadrante integrado por código; entornos, usuarios y habilitaciones autorizados","Tres años, reserva hasta 1.770 autorizaciones; RNF-MIG-01",2027-06-04,2027-06-07,1.8.2.6,Recepción por etapa o control del periodo; no acredita ejecución,"Tres años, reserva hasta 1.770 autorizaciones; RNF-MIG-01"
1.8.7.2.2,Lote de hasta 32 autorizaciones escolares 2,1.8,E1 Desarrollo,Lote de hasta 32 autorizaciones escolares 2,Resultado de la ficha de familia y del paquete original; registro individual por código/ventana,"No duplicar padres, informes, ingeniería ni cobertura; no incluye horas de contraparte ni obras/adquisiciones del cliente","Lectura humana, vigencia, menor/apoderado y evidencia; autorización ausente bloquea participación.",Nicolás Torfan,8,D:6;Q:2,"Asignación y cuadrante integrado por código; entornos, usuarios y habilitaciones autorizados","Tres años, reserva hasta 1.770 autorizaciones; RNF-MIG-01",2027-06-01,2027-06-02,1.8.2.6,Recepción por etapa o control del periodo; no acredita ejecución,"Tres años, reserva hasta 1.770 autorizaciones; RNF-MIG-01"
1.8.7.2.3,Lote de hasta 32 autorizaciones escolares 3,1.8,E1 Desarrollo,Lote de hasta 32 autorizaciones escolares 3,Resultado de la ficha de familia y del paquete original; registro individual por código/ventana,"No duplicar padres, informes, ingeniería ni cobertura; no incluye horas de contraparte ni obras/adquisiciones del cliente","Lectura humana, vigencia, menor/apoderado y evidencia; autorización ausente bloquea participación.",Nicolás Torfan,8,D:6;Q:2,"Asignación y cuadrante integrado por código; entornos, usuarios y habilitaciones autorizados","Tres años, reserva hasta 1.770 autorizaciones; RNF-MIG-01",2027-06-02,2027-06-03,1.8.2.6,Recepción por etapa o control del periodo; no acredita ejecución,"Tres años, reserva hasta 1.770 autorizaciones; RNF-MIG-01"
1.8.7.2.4,Lote de hasta 32 autorizaciones escolares 4,1.8,E1 Desarrollo,Lote de hasta 32 autorizaciones escolares 4,Resultado de la ficha de familia y del paquete original; registro individual por código/ventana,"No duplicar padres, informes, ingeniería ni cobertura; no incluye horas de contraparte ni obras/adquisiciones del cliente","Lectura humana, vigencia, menor/apoderado y evidencia; autorización ausente bloquea participación.",Nicolás Torfan,8,D:6;Q:2,"Asignación y cuadrante integrado por código; entornos, usuarios y habilitaciones autorizados","Tres años, reserva hasta 1.770 autorizaciones; RNF-MIG-01",2027-06-04,2027-06-07,1.8.2.6,Recepción por etapa o control del periodo; no acredita ejecución,"Tres años, reserva hasta 1.770 autorizaciones; RNF-MIG-01"
1.8.7.2.5,Lote de hasta 32 autorizaciones escolares 5,1.8,E1 Desarrollo,Lote de hasta 32 autorizaciones escolares 5,Resultado de la ficha de familia y del paquete original; registro individual por código/ventana,"No duplicar padres, informes, ingeniería ni cobertura; no incluye horas de contraparte ni obras/adquisiciones del cliente","Lectura humana, vigencia, menor/apoderado y evidencia; autorización ausente bloquea participación.",Nicolás Torfan,8,D:6;Q:2,"Asignación y cuadrante integrado por código; entornos, usuarios y habilitaciones autorizados","Tres años, reserva hasta 1.770 autorizaciones; RNF-MIG-01",2027-06-01,2027-06-02,1.8.2.6,Recepción por etapa o control del periodo; no acredita ejecución,"Tres años, reserva hasta 1.770 autorizaciones; RNF-MIG-01"
1.8.7.2.6,Lote de hasta 32 autorizaciones escolares 6,1.8,E1 Desarrollo,Lote de hasta 32 autorizaciones escolares 6,Resultado de la ficha de familia y del paquete original; registro individual por código/ventana,"No duplicar padres, informes, ingeniería ni cobertura; no incluye horas de contraparte ni obras/adquisiciones del cliente","Lectura humana, vigencia, menor/apoderado y evidencia; autorización ausente bloquea participación.",Nicolás Torfan,8,D:6;Q:2,"Asignación y cuadrante integrado por código; entornos, usuarios y habilitaciones autorizados","Tres años, reserva hasta 1.770 autorizaciones; RNF-MIG-01",2027-06-01,2027-06-02,1.8.2.6,Recepción por etapa o control del periodo; no acredita ejecución,"Tres años, reserva hasta 1.770 autorizaciones; RNF-MIG-01"
1.8.7.2.7,Lote de hasta 32 autorizaciones escolares 7,1.8,E1 Desarrollo,Lote de hasta 32 autorizaciones escolares 7,Resultado de la ficha de familia y del paquete original; registro individual por código/ventana,"No duplicar padres, informes, ingeniería ni cobertura; no incluye horas de contraparte ni obras/adquisiciones del cliente","Lectura humana, vigencia, menor/apoderado y evidencia; autorización ausente bloquea participación.",Nicolás Torfan,8,D:6;Q:2,"Asignación y cuadrante integrado por código; entornos, usuarios y habilitaciones autorizados","Tres años, reserva hasta 1.770 autorizaciones; RNF-MIG-01",2027-06-03,2027-06-04,1.8.2.6,Recepción por etapa o control del periodo; no acredita ejecución,"Tres años, reserva hasta 1.770 autorizaciones; RNF-MIG-01"
1.8.7.2.8,Lote de hasta 32 autorizaciones escolares 8,1.8,E1 Desarrollo,Lote de hasta 32 autorizaciones escolares 8,Resultado de la ficha de familia y del paquete original; registro individual por código/ventana,"No duplicar padres, informes, ingeniería ni cobertura; no incluye horas de contraparte ni obras/adquisiciones del cliente","Lectura humana, vigencia, menor/apoderado y evidencia; autorización ausente bloquea participación.",Nicolás Torfan,8,D:6;Q:2,"Asignación y cuadrante integrado por código; entornos, usuarios y habilitaciones autorizados","Tres años, reserva hasta 1.770 autorizaciones; RNF-MIG-01",2027-06-01,2027-06-02,1.8.2.6,Recepción por etapa o control del periodo; no acredita ejecución,"Tres años, reserva hasta 1.770 autorizaciones; RNF-MIG-01"
1.8.7.2.9,Lote de hasta 32 autorizaciones escolares 9,1.8,E1 Desarrollo,Lote de hasta 32 autorizaciones escolares 9,Resultado de la ficha de familia y del paquete original; registro individual por código/ventana,"No duplicar padres, informes, ingeniería ni cobertura; no incluye horas de contraparte ni obras/adquisiciones del cliente","Lectura humana, vigencia, menor/apoderado y evidencia; autorización ausente bloquea participación.",Nicolás Torfan,8,D:6;Q:2,"Asignación y cuadrante integrado por código; entornos, usuarios y habilitaciones autorizados","Tres años, reserva hasta 1.770 autorizaciones; RNF-MIG-01",2027-06-02,2027-06-03,1.8.2.6,Recepción por etapa o control del periodo; no acredita ejecución,"Tres años, reserva hasta 1.770 autorizaciones; RNF-MIG-01"
1.8.7.2.10,Lote de hasta 32 autorizaciones escolares 10,1.8,E1 Desarrollo,Lote de hasta 32 autorizaciones escolares 10,Resultado de la ficha de familia y del paquete original; registro individual por código/ventana,"No duplicar padres, informes, ingeniería ni cobertura; no incluye horas de contraparte ni obras/adquisiciones del cliente","Lectura humana, vigencia, menor/apoderado y evidencia; autorización ausente bloquea participación.",Nicolás Torfan,8,D:6;Q:2,"Asignación y cuadrante integrado por código; entornos, usuarios y habilitaciones autorizados","Tres años, reserva hasta 1.770 autorizaciones; RNF-MIG-01",2027-06-01,2027-06-02,1.8.2.6,Recepción por etapa o control del periodo; no acredita ejecución,"Tres años, reserva hasta 1.770 autorizaciones; RNF-MIG-01"
1.8.7.2.11,Lote de hasta 32 autorizaciones escolares 11,1.8,E1 Desarrollo,Lote de hasta 32 autorizaciones escolares 11,Resultado de la ficha de familia y del paquete original; registro individual por código/ventana,"No duplicar padres, informes, ingeniería ni cobertura; no incluye horas de contraparte ni obras/adquisiciones del cliente","Lectura humana, vigencia, menor/apoderado y evidencia; autorización ausente bloquea participación.",Nicolás Torfan,8,D:6;Q:2,"Asignación y cuadrante integrado por código; entornos, usuarios y habilitaciones autorizados","Tres años, reserva hasta 1.770 autorizaciones; RNF-MIG-01",2027-06-02,2027-06-03,1.8.2.6,Recepción por etapa o control del periodo; no acredita ejecución,"Tres años, reserva hasta 1.770 autorizaciones; RNF-MIG-01"
1.8.7.2.12,Lote de hasta 32 autorizaciones escolares 12,1.8,E1 Desarrollo,Lote de hasta 32 autorizaciones escolares 12,Resultado de la ficha de familia y del paquete original; registro individual por código/ventana,"No duplicar padres, informes, ingeniería ni cobertura; no incluye horas de contraparte ni obras/adquisiciones del cliente","Lectura humana, vigencia, menor/apoderado y evidencia; autorización ausente bloquea participación.",Nicolás Torfan,8,D:6;Q:2,"Asignación y cuadrante integrado por código; entornos, usuarios y habilitaciones autorizados","Tres años, reserva hasta 1.770 autorizaciones; RNF-MIG-01",2027-06-03,2027-06-04,1.8.2.6,Recepción por etapa o control del periodo; no acredita ejecución,"Tres años, reserva hasta 1.770 autorizaciones; RNF-MIG-01"
1.8.7.2.13,Lote de hasta 32 autorizaciones escolares 13,1.8,E1 Desarrollo,Lote de hasta 32 autorizaciones escolares 13,Resultado de la ficha de familia y del paquete original; registro individual por código/ventana,"No duplicar padres, informes, ingeniería ni cobertura; no incluye horas de contraparte ni obras/adquisiciones del cliente","Lectura humana, vigencia, menor/apoderado y evidencia; autorización ausente bloquea participación.",Nicolás Torfan,8,D:6;Q:2,"Asignación y cuadrante integrado por código; entornos, usuarios y habilitaciones autorizados","Tres años, reserva hasta 1.770 autorizaciones; RNF-MIG-01",2027-06-04,2027-06-07,1.8.2.6,Recepción por etapa o control del periodo; no acredita ejecución,"Tres años, reserva hasta 1.770 autorizaciones; RNF-MIG-01"
1.8.7.2.14,Lote de hasta 32 autorizaciones escolares 14,1.8,E1 Desarrollo,Lote de hasta 32 autorizaciones escolares 14,Resultado de la ficha de familia y del paquete original; registro individual por código/ventana,"No duplicar padres, informes, ingeniería ni cobertura; no incluye horas de contraparte ni obras/adquisiciones del cliente","Lectura humana, vigencia, menor/apoderado y evidencia; autorización ausente bloquea participación.",Nicolás Torfan,8,D:6;Q:2,"Asignación y cuadrante integrado por código; entornos, usuarios y habilitaciones autorizados","Tres años, reserva hasta 1.770 autorizaciones; RNF-MIG-01",2027-06-04,2027-06-07,1.8.2.6,Recepción por etapa o control del periodo; no acredita ejecución,"Tres años, reserva hasta 1.770 autorizaciones; RNF-MIG-01"
1.8.7.2.15,Lote de hasta 32 autorizaciones escolares 15,1.8,E1 Desarrollo,Lote de hasta 32 autorizaciones escolares 15,Resultado de la ficha de familia y del paquete original; registro individual por código/ventana,"No duplicar padres, informes, ingeniería ni cobertura; no incluye horas de contraparte ni obras/adquisiciones del cliente","Lectura humana, vigencia, menor/apoderado y evidencia; autorización ausente bloquea participación.",Nicolás Torfan,8,D:6;Q:2,"Asignación y cuadrante integrado por código; entornos, usuarios y habilitaciones autorizados","Tres años, reserva hasta 1.770 autorizaciones; RNF-MIG-01",2027-06-01,2027-06-02,1.8.2.6,Recepción por etapa o control del periodo; no acredita ejecución,"Tres años, reserva hasta 1.770 autorizaciones; RNF-MIG-01"
1.8.7.2.16,Lote de hasta 32 autorizaciones escolares 16,1.8,E1 Desarrollo,Lote de hasta 32 autorizaciones escolares 16,Resultado de la ficha de familia y del paquete original; registro individual por código/ventana,"No duplicar padres, informes, ingeniería ni cobertura; no incluye horas de contraparte ni obras/adquisiciones del cliente","Lectura humana, vigencia, menor/apoderado y evidencia; autorización ausente bloquea participación.",Nicolás Torfan,8,D:6;Q:2,"Asignación y cuadrante integrado por código; entornos, usuarios y habilitaciones autorizados","Tres años, reserva hasta 1.770 autorizaciones; RNF-MIG-01",2027-06-02,2027-06-03,1.8.2.6,Recepción por etapa o control del periodo; no acredita ejecución,"Tres años, reserva hasta 1.770 autorizaciones; RNF-MIG-01"
1.8.7.2.17,Lote de hasta 32 autorizaciones escolares 17,1.8,E1 Desarrollo,Lote de hasta 32 autorizaciones escolares 17,Resultado de la ficha de familia y del paquete original; registro individual por código/ventana,"No duplicar padres, informes, ingeniería ni cobertura; no incluye horas de contraparte ni obras/adquisiciones del cliente","Lectura humana, vigencia, menor/apoderado y evidencia; autorización ausente bloquea participación.",Nicolás Torfan,8,D:6;Q:2,"Asignación y cuadrante integrado por código; entornos, usuarios y habilitaciones autorizados","Tres años, reserva hasta 1.770 autorizaciones; RNF-MIG-01",2027-06-04,2027-06-07,1.8.2.6,Recepción por etapa o control del periodo; no acredita ejecución,"Tres años, reserva hasta 1.770 autorizaciones; RNF-MIG-01"
1.8.7.2.18,Lote de hasta 32 autorizaciones escolares 18,1.8,E1 Desarrollo,Lote de hasta 32 autorizaciones escolares 18,Resultado de la ficha de familia y del paquete original; registro individual por código/ventana,"No duplicar padres, informes, ingeniería ni cobertura; no incluye horas de contraparte ni obras/adquisiciones del cliente","Lectura humana, vigencia, menor/apoderado y evidencia; autorización ausente bloquea participación.",Nicolás Torfan,8,D:6;Q:2,"Asignación y cuadrante integrado por código; entornos, usuarios y habilitaciones autorizados","Tres años, reserva hasta 1.770 autorizaciones; RNF-MIG-01",2027-06-01,2027-06-02,1.8.2.6,Recepción por etapa o control del periodo; no acredita ejecución,"Tres años, reserva hasta 1.770 autorizaciones; RNF-MIG-01"
1.8.7.2.19,Lote de hasta 32 autorizaciones escolares 19,1.8,E1 Desarrollo,Lote de hasta 32 autorizaciones escolares 19,Resultado de la ficha de familia y del paquete original; registro individual por código/ventana,"No duplicar padres, informes, ingeniería ni cobertura; no incluye horas de contraparte ni obras/adquisiciones del cliente","Lectura humana, vigencia, menor/apoderado y evidencia; autorización ausente bloquea participación.",Nicolás Torfan,8,D:6;Q:2,"Asignación y cuadrante integrado por código; entornos, usuarios y habilitaciones autorizados","Tres años, reserva hasta 1.770 autorizaciones; RNF-MIG-01",2027-06-03,2027-06-04,1.8.2.6,Recepción por etapa o control del periodo; no acredita ejecución,"Tres años, reserva hasta 1.770 autorizaciones; RNF-MIG-01"
1.8.7.2.20,Lote de hasta 32 autorizaciones escolares 20,1.8,E1 Desarrollo,Lote de hasta 32 autorizaciones escolares 20,Resultado de la ficha de familia y del paquete original; registro individual por código/ventana,"No duplicar padres, informes, ingeniería ni cobertura; no incluye horas de contraparte ni obras/adquisiciones del cliente","Lectura humana, vigencia, menor/apoderado y evidencia; autorización ausente bloquea participación.",Nicolás Torfan,8,D:6;Q:2,"Asignación y cuadrante integrado por código; entornos, usuarios y habilitaciones autorizados","Tres años, reserva hasta 1.770 autorizaciones; RNF-MIG-01",2027-06-02,2027-06-03,1.8.2.6,Recepción por etapa o control del periodo; no acredita ejecución,"Tres años, reserva hasta 1.770 autorizaciones; RNF-MIG-01"
1.8.7.2.21,Lote de hasta 32 autorizaciones escolares 21,1.8,E1 Desarrollo,Lote de hasta 32 autorizaciones escolares 21,Resultado de la ficha de familia y del paquete original; registro individual por código/ventana,"No duplicar padres, informes, ingeniería ni cobertura; no incluye horas de contraparte ni obras/adquisiciones del cliente","Lectura humana, vigencia, menor/apoderado y evidencia; autorización ausente bloquea participación.",Nicolás Torfan,8,D:6;Q:2,"Asignación y cuadrante integrado por código; entornos, usuarios y habilitaciones autorizados","Tres años, reserva hasta 1.770 autorizaciones; RNF-MIG-01",2027-06-02,2027-06-04,1.8.2.6,Recepción por etapa o control del periodo; no acredita ejecución,"Tres años, reserva hasta 1.770 autorizaciones; RNF-MIG-01"
1.8.7.2.22,Lote de hasta 32 autorizaciones escolares 22,1.8,E1 Desarrollo,Lote de hasta 32 autorizaciones escolares 22,Resultado de la ficha de familia y del paquete original; registro individual por código/ventana,"No duplicar padres, informes, ingeniería ni cobertura; no incluye horas de contraparte ni obras/adquisiciones del cliente","Lectura humana, vigencia, menor/apoderado y evidencia; autorización ausente bloquea participación.",Nicolás Torfan,8,D:6;Q:2,"Asignación y cuadrante integrado por código; entornos, usuarios y habilitaciones autorizados","Tres años, reserva hasta 1.770 autorizaciones; RNF-MIG-01",2027-06-03,2027-06-04,1.8.2.6,Recepción por etapa o control del periodo; no acredita ejecución,"Tres años, reserva hasta 1.770 autorizaciones; RNF-MIG-01"
1.8.7.2.23,Lote de hasta 32 autorizaciones escolares 23,1.8,E1 Desarrollo,Lote de hasta 32 autorizaciones escolares 23,Resultado de la ficha de familia y del paquete original; registro individual por código/ventana,"No duplicar padres, informes, ingeniería ni cobertura; no incluye horas de contraparte ni obras/adquisiciones del cliente","Lectura humana, vigencia, menor/apoderado y evidencia; autorización ausente bloquea participación.",Nicolás Torfan,8,D:6;Q:2,"Asignación y cuadrante integrado por código; entornos, usuarios y habilitaciones autorizados","Tres años, reserva hasta 1.770 autorizaciones; RNF-MIG-01",2027-06-04,2027-06-07,1.8.2.6,Recepción por etapa o control del periodo; no acredita ejecución,"Tres años, reserva hasta 1.770 autorizaciones; RNF-MIG-01"
1.8.7.2.24,Lote de hasta 32 autorizaciones escolares 24,1.8,E1 Desarrollo,Lote de hasta 32 autorizaciones escolares 24,Resultado de la ficha de familia y del paquete original; registro individual por código/ventana,"No duplicar padres, informes, ingeniería ni cobertura; no incluye horas de contraparte ni obras/adquisiciones del cliente","Lectura humana, vigencia, menor/apoderado y evidencia; autorización ausente bloquea participación.",Nicolás Torfan,8,D:6;Q:2,"Asignación y cuadrante integrado por código; entornos, usuarios y habilitaciones autorizados","Tres años, reserva hasta 1.770 autorizaciones; RNF-MIG-01",2027-06-01,2027-06-02,1.8.2.6,Recepción por etapa o control del periodo; no acredita ejecución,"Tres años, reserva hasta 1.770 autorizaciones; RNF-MIG-01"
1.8.7.2.25,Lote de hasta 32 autorizaciones escolares 25,1.8,E1 Desarrollo,Lote de hasta 32 autorizaciones escolares 25,Resultado de la ficha de familia y del paquete original; registro individual por código/ventana,"No duplicar padres, informes, ingeniería ni cobertura; no incluye horas de contraparte ni obras/adquisiciones del cliente","Lectura humana, vigencia, menor/apoderado y evidencia; autorización ausente bloquea participación.",Nicolás Torfan,8,D:6;Q:2,"Asignación y cuadrante integrado por código; entornos, usuarios y habilitaciones autorizados","Tres años, reserva hasta 1.770 autorizaciones; RNF-MIG-01",2027-06-02,2027-06-03,1.8.2.6,Recepción por etapa o control del periodo; no acredita ejecución,"Tres años, reserva hasta 1.770 autorizaciones; RNF-MIG-01"
1.8.7.2.26,Lote de hasta 32 autorizaciones escolares 26,1.8,E1 Desarrollo,Lote de hasta 32 autorizaciones escolares 26,Resultado de la ficha de familia y del paquete original; registro individual por código/ventana,"No duplicar padres, informes, ingeniería ni cobertura; no incluye horas de contraparte ni obras/adquisiciones del cliente","Lectura humana, vigencia, menor/apoderado y evidencia; autorización ausente bloquea participación.",Nicolás Torfan,8,D:6;Q:2,"Asignación y cuadrante integrado por código; entornos, usuarios y habilitaciones autorizados","Tres años, reserva hasta 1.770 autorizaciones; RNF-MIG-01",2027-06-03,2027-06-04,1.8.2.6,Recepción por etapa o control del periodo; no acredita ejecución,"Tres años, reserva hasta 1.770 autorizaciones; RNF-MIG-01"
1.8.7.2.27,Lote de hasta 32 autorizaciones escolares 27,1.8,E1 Desarrollo,Lote de hasta 32 autorizaciones escolares 27,Resultado de la ficha de familia y del paquete original; registro individual por código/ventana,"No duplicar padres, informes, ingeniería ni cobertura; no incluye horas de contraparte ni obras/adquisiciones del cliente","Lectura humana, vigencia, menor/apoderado y evidencia; autorización ausente bloquea participación.",Nicolás Torfan,8,D:6;Q:2,"Asignación y cuadrante integrado por código; entornos, usuarios y habilitaciones autorizados","Tres años, reserva hasta 1.770 autorizaciones; RNF-MIG-01",2027-06-04,2027-06-07,1.8.2.6,Recepción por etapa o control del periodo; no acredita ejecución,"Tres años, reserva hasta 1.770 autorizaciones; RNF-MIG-01"
1.8.7.2.28,Lote de hasta 32 autorizaciones escolares 28,1.8,E1 Desarrollo,Lote de hasta 32 autorizaciones escolares 28,Resultado de la ficha de familia y del paquete original; registro individual por código/ventana,"No duplicar padres, informes, ingeniería ni cobertura; no incluye horas de contraparte ni obras/adquisiciones del cliente","Lectura humana, vigencia, menor/apoderado y evidencia; autorización ausente bloquea participación.",Nicolás Torfan,8,D:6;Q:2,"Asignación y cuadrante integrado por código; entornos, usuarios y habilitaciones autorizados","Tres años, reserva hasta 1.770 autorizaciones; RNF-MIG-01",2027-06-04,2027-06-07,1.8.2.6,Recepción por etapa o control del periodo; no acredita ejecución,"Tres años, reserva hasta 1.770 autorizaciones; RNF-MIG-01"
1.8.7.2.29,Lote de hasta 32 autorizaciones escolares 29,1.8,E1 Desarrollo,Lote de hasta 32 autorizaciones escolares 29,Resultado de la ficha de familia y del paquete original; registro individual por código/ventana,"No duplicar padres, informes, ingeniería ni cobertura; no incluye horas de contraparte ni obras/adquisiciones del cliente","Lectura humana, vigencia, menor/apoderado y evidencia; autorización ausente bloquea participación.",Nicolás Torfan,8,D:6;Q:2,"Asignación y cuadrante integrado por código; entornos, usuarios y habilitaciones autorizados","Tres años, reserva hasta 1.770 autorizaciones; RNF-MIG-01",2027-06-16,2027-06-17,1.8.2.6,Recepción por etapa o control del periodo; no acredita ejecución,"Tres años, reserva hasta 1.770 autorizaciones; RNF-MIG-01"
1.8.7.2.30,Lote de hasta 32 autorizaciones escolares 30,1.8,E1 Desarrollo,Lote de hasta 32 autorizaciones escolares 30,Resultado de la ficha de familia y del paquete original; registro individual por código/ventana,"No duplicar padres, informes, ingeniería ni cobertura; no incluye horas de contraparte ni obras/adquisiciones del cliente","Lectura humana, vigencia, menor/apoderado y evidencia; autorización ausente bloquea participación.",Nicolás Torfan,8,D:6;Q:2,"Asignación y cuadrante integrado por código; entornos, usuarios y habilitaciones autorizados","Tres años, reserva hasta 1.770 autorizaciones; RNF-MIG-01",2027-06-16,2027-06-17,1.8.2.6,Recepción por etapa o control del periodo; no acredita ejecución,"Tres años, reserva hasta 1.770 autorizaciones; RNF-MIG-01"
1.8.7.2.31,Lote de hasta 32 autorizaciones escolares 31,1.8,E1 Desarrollo,Lote de hasta 32 autorizaciones escolares 31,Resultado de la ficha de familia y del paquete original; registro individual por código/ventana,"No duplicar padres, informes, ingeniería ni cobertura; no incluye horas de contraparte ni obras/adquisiciones del cliente","Lectura humana, vigencia, menor/apoderado y evidencia; autorización ausente bloquea participación.",Nicolás Torfan,8,D:6;Q:2,"Asignación y cuadrante integrado por código; entornos, usuarios y habilitaciones autorizados","Tres años, reserva hasta 1.770 autorizaciones; RNF-MIG-01",2027-06-16,2027-06-17,1.8.2.6,Recepción por etapa o control del periodo; no acredita ejecución,"Tres años, reserva hasta 1.770 autorizaciones; RNF-MIG-01"
1.8.7.2.32,Lote de hasta 32 autorizaciones escolares 32,1.8,E1 Desarrollo,Lote de hasta 32 autorizaciones escolares 32,Resultado de la ficha de familia y del paquete original; registro individual por código/ventana,"No duplicar padres, informes, ingeniería ni cobertura; no incluye horas de contraparte ni obras/adquisiciones del cliente","Lectura humana, vigencia, menor/apoderado y evidencia; autorización ausente bloquea participación.",Nicolás Torfan,8,D:6;Q:2,"Asignación y cuadrante integrado por código; entornos, usuarios y habilitaciones autorizados","Tres años, reserva hasta 1.770 autorizaciones; RNF-MIG-01",2027-06-16,2027-06-17,1.8.2.6,Recepción por etapa o control del periodo; no acredita ejecución,"Tres años, reserva hasta 1.770 autorizaciones; RNF-MIG-01"
1.8.7.2.33,Lote de hasta 32 autorizaciones escolares 33,1.8,E1 Desarrollo,Lote de hasta 32 autorizaciones escolares 33,Resultado de la ficha de familia y del paquete original; registro individual por código/ventana,"No duplicar padres, informes, ingeniería ni cobertura; no incluye horas de contraparte ni obras/adquisiciones del cliente","Lectura humana, vigencia, menor/apoderado y evidencia; autorización ausente bloquea participación.",Nicolás Torfan,8,D:6;Q:2,"Asignación y cuadrante integrado por código; entornos, usuarios y habilitaciones autorizados","Tres años, reserva hasta 1.770 autorizaciones; RNF-MIG-01",2027-06-16,2027-06-17,1.8.2.6,Recepción por etapa o control del periodo; no acredita ejecución,"Tres años, reserva hasta 1.770 autorizaciones; RNF-MIG-01"
1.8.7.2.34,Lote de hasta 32 autorizaciones escolares 34,1.8,E1 Desarrollo,Lote de hasta 32 autorizaciones escolares 34,Resultado de la ficha de familia y del paquete original; registro individual por código/ventana,"No duplicar padres, informes, ingeniería ni cobertura; no incluye horas de contraparte ni obras/adquisiciones del cliente","Lectura humana, vigencia, menor/apoderado y evidencia; autorización ausente bloquea participación.",Nicolás Torfan,8,D:6;Q:2,"Asignación y cuadrante integrado por código; entornos, usuarios y habilitaciones autorizados","Tres años, reserva hasta 1.770 autorizaciones; RNF-MIG-01",2027-06-17,2027-06-18,1.8.2.6,Recepción por etapa o control del periodo; no acredita ejecución,"Tres años, reserva hasta 1.770 autorizaciones; RNF-MIG-01"
1.8.7.2.35,Lote de hasta 32 autorizaciones escolares 35,1.8,E1 Desarrollo,Lote de hasta 32 autorizaciones escolares 35,Resultado de la ficha de familia y del paquete original; registro individual por código/ventana,"No duplicar padres, informes, ingeniería ni cobertura; no incluye horas de contraparte ni obras/adquisiciones del cliente","Lectura humana, vigencia, menor/apoderado y evidencia; autorización ausente bloquea participación.",Nicolás Torfan,8,D:6;Q:2,"Asignación y cuadrante integrado por código; entornos, usuarios y habilitaciones autorizados","Tres años, reserva hasta 1.770 autorizaciones; RNF-MIG-01",2027-06-17,2027-06-18,1.8.2.6,Recepción por etapa o control del periodo; no acredita ejecución,"Tres años, reserva hasta 1.770 autorizaciones; RNF-MIG-01"
1.8.7.2.36,Lote de hasta 32 autorizaciones escolares 36,1.8,E1 Desarrollo,Lote de hasta 32 autorizaciones escolares 36,Resultado de la ficha de familia y del paquete original; registro individual por código/ventana,"No duplicar padres, informes, ingeniería ni cobertura; no incluye horas de contraparte ni obras/adquisiciones del cliente","Lectura humana, vigencia, menor/apoderado y evidencia; autorización ausente bloquea participación.",Nicolás Torfan,8,D:6;Q:2,"Asignación y cuadrante integrado por código; entornos, usuarios y habilitaciones autorizados","Tres años, reserva hasta 1.770 autorizaciones; RNF-MIG-01",2027-06-17,2027-06-18,1.8.2.6,Recepción por etapa o control del periodo; no acredita ejecución,"Tres años, reserva hasta 1.770 autorizaciones; RNF-MIG-01"
1.8.7.2.37,Lote de hasta 32 autorizaciones escolares 37,1.8,E1 Desarrollo,Lote de hasta 32 autorizaciones escolares 37,Resultado de la ficha de familia y del paquete original; registro individual por código/ventana,"No duplicar padres, informes, ingeniería ni cobertura; no incluye horas de contraparte ni obras/adquisiciones del cliente","Lectura humana, vigencia, menor/apoderado y evidencia; autorización ausente bloquea participación.",Nicolás Torfan,8,D:6;Q:2,"Asignación y cuadrante integrado por código; entornos, usuarios y habilitaciones autorizados","Tres años, reserva hasta 1.770 autorizaciones; RNF-MIG-01",2027-06-17,2027-06-18,1.8.2.6,Recepción por etapa o control del periodo; no acredita ejecución,"Tres años, reserva hasta 1.770 autorizaciones; RNF-MIG-01"
1.8.7.2.38,Lote de hasta 32 autorizaciones escolares 38,1.8,E1 Desarrollo,Lote de hasta 32 autorizaciones escolares 38,Resultado de la ficha de familia y del paquete original; registro individual por código/ventana,"No duplicar padres, informes, ingeniería ni cobertura; no incluye horas de contraparte ni obras/adquisiciones del cliente","Lectura humana, vigencia, menor/apoderado y evidencia; autorización ausente bloquea participación.",Nicolás Torfan,8,D:6;Q:2,"Asignación y cuadrante integrado por código; entornos, usuarios y habilitaciones autorizados","Tres años, reserva hasta 1.770 autorizaciones; RNF-MIG-01",2027-06-17,2027-06-18,1.8.2.6,Recepción por etapa o control del periodo; no acredita ejecución,"Tres años, reserva hasta 1.770 autorizaciones; RNF-MIG-01"
1.8.7.2.39,Lote de hasta 32 autorizaciones escolares 39,1.8,E1 Desarrollo,Lote de hasta 32 autorizaciones escolares 39,Resultado de la ficha de familia y del paquete original; registro individual por código/ventana,"No duplicar padres, informes, ingeniería ni cobertura; no incluye horas de contraparte ni obras/adquisiciones del cliente","Lectura humana, vigencia, menor/apoderado y evidencia; autorización ausente bloquea participación.",Nicolás Torfan,8,D:6;Q:2,"Asignación y cuadrante integrado por código; entornos, usuarios y habilitaciones autorizados","Tres años, reserva hasta 1.770 autorizaciones; RNF-MIG-01",2027-06-17,2027-06-22,1.8.2.6,Recepción por etapa o control del periodo; no acredita ejecución,"Tres años, reserva hasta 1.770 autorizaciones; RNF-MIG-01"
1.8.7.2.40,Lote de hasta 32 autorizaciones escolares 40,1.8,E1 Desarrollo,Lote de hasta 32 autorizaciones escolares 40,Resultado de la ficha de familia y del paquete original; registro individual por código/ventana,"No duplicar padres, informes, ingeniería ni cobertura; no incluye horas de contraparte ni obras/adquisiciones del cliente","Lectura humana, vigencia, menor/apoderado y evidencia; autorización ausente bloquea participación.",Nicolás Torfan,8,D:6;Q:2,"Asignación y cuadrante integrado por código; entornos, usuarios y habilitaciones autorizados","Tres años, reserva hasta 1.770 autorizaciones; RNF-MIG-01",2027-06-17,2027-06-22,1.8.2.6,Recepción por etapa o control del periodo; no acredita ejecución,"Tres años, reserva hasta 1.770 autorizaciones; RNF-MIG-01"
1.8.7.2.41,Lote de hasta 32 autorizaciones escolares 41,1.8,E1 Desarrollo,Lote de hasta 32 autorizaciones escolares 41,Resultado de la ficha de familia y del paquete original; registro individual por código/ventana,"No duplicar padres, informes, ingeniería ni cobertura; no incluye horas de contraparte ni obras/adquisiciones del cliente","Lectura humana, vigencia, menor/apoderado y evidencia; autorización ausente bloquea participación.",Nicolás Torfan,8,D:6;Q:2,"Asignación y cuadrante integrado por código; entornos, usuarios y habilitaciones autorizados","Tres años, reserva hasta 1.770 autorizaciones; RNF-MIG-01",2027-06-17,2027-06-22,1.8.2.6,Recepción por etapa o control del periodo; no acredita ejecución,"Tres años, reserva hasta 1.770 autorizaciones; RNF-MIG-01"
1.8.7.2.42,Lote de hasta 32 autorizaciones escolares 42,1.8,E1 Desarrollo,Lote de hasta 32 autorizaciones escolares 42,Resultado de la ficha de familia y del paquete original; registro individual por código/ventana,"No duplicar padres, informes, ingeniería ni cobertura; no incluye horas de contraparte ni obras/adquisiciones del cliente","Lectura humana, vigencia, menor/apoderado y evidencia; autorización ausente bloquea participación.",Nicolás Torfan,8,D:6;Q:2,"Asignación y cuadrante integrado por código; entornos, usuarios y habilitaciones autorizados","Tres años, reserva hasta 1.770 autorizaciones; RNF-MIG-01",2027-06-17,2027-06-22,1.8.2.6,Recepción por etapa o control del periodo; no acredita ejecución,"Tres años, reserva hasta 1.770 autorizaciones; RNF-MIG-01"
1.8.7.2.43,Lote de hasta 32 autorizaciones escolares 43,1.8,E1 Desarrollo,Lote de hasta 32 autorizaciones escolares 43,Resultado de la ficha de familia y del paquete original; registro individual por código/ventana,"No duplicar padres, informes, ingeniería ni cobertura; no incluye horas de contraparte ni obras/adquisiciones del cliente","Lectura humana, vigencia, menor/apoderado y evidencia; autorización ausente bloquea participación.",Nicolás Torfan,8,D:6;Q:2,"Asignación y cuadrante integrado por código; entornos, usuarios y habilitaciones autorizados","Tres años, reserva hasta 1.770 autorizaciones; RNF-MIG-01",2027-06-18,2027-06-22,1.8.2.6,Recepción por etapa o control del periodo; no acredita ejecución,"Tres años, reserva hasta 1.770 autorizaciones; RNF-MIG-01"
1.8.7.2.44,Lote de hasta 32 autorizaciones escolares 44,1.8,E1 Desarrollo,Lote de hasta 32 autorizaciones escolares 44,Resultado de la ficha de familia y del paquete original; registro individual por código/ventana,"No duplicar padres, informes, ingeniería ni cobertura; no incluye horas de contraparte ni obras/adquisiciones del cliente","Lectura humana, vigencia, menor/apoderado y evidencia; autorización ausente bloquea participación.",Nicolás Torfan,8,D:6;Q:2,"Asignación y cuadrante integrado por código; entornos, usuarios y habilitaciones autorizados","Tres años, reserva hasta 1.770 autorizaciones; RNF-MIG-01",2027-06-18,2027-06-22,1.8.2.6,Recepción por etapa o control del periodo; no acredita ejecución,"Tres años, reserva hasta 1.770 autorizaciones; RNF-MIG-01"
1.8.7.2.45,Lote de hasta 32 autorizaciones escolares 45,1.8,E1 Desarrollo,Lote de hasta 32 autorizaciones escolares 45,Resultado de la ficha de familia y del paquete original; registro individual por código/ventana,"No duplicar padres, informes, ingeniería ni cobertura; no incluye horas de contraparte ni obras/adquisiciones del cliente","Lectura humana, vigencia, menor/apoderado y evidencia; autorización ausente bloquea participación.",Nicolás Torfan,8,D:6;Q:2,"Asignación y cuadrante integrado por código; entornos, usuarios y habilitaciones autorizados","Tres años, reserva hasta 1.770 autorizaciones; RNF-MIG-01",2027-06-18,2027-06-22,1.8.2.6,Recepción por etapa o control del periodo; no acredita ejecución,"Tres años, reserva hasta 1.770 autorizaciones; RNF-MIG-01"
1.8.7.2.46,Lote de hasta 32 autorizaciones escolares 46,1.8,E1 Desarrollo,Lote de hasta 32 autorizaciones escolares 46,Resultado de la ficha de familia y del paquete original; registro individual por código/ventana,"No duplicar padres, informes, ingeniería ni cobertura; no incluye horas de contraparte ni obras/adquisiciones del cliente","Lectura humana, vigencia, menor/apoderado y evidencia; autorización ausente bloquea participación.",Nicolás Torfan,8,D:6;Q:2,"Asignación y cuadrante integrado por código; entornos, usuarios y habilitaciones autorizados","Tres años, reserva hasta 1.770 autorizaciones; RNF-MIG-01",2027-06-18,2027-06-22,1.8.2.6,Recepción por etapa o control del periodo; no acredita ejecución,"Tres años, reserva hasta 1.770 autorizaciones; RNF-MIG-01"
1.8.7.2.47,Lote de hasta 32 autorizaciones escolares 47,1.8,E1 Desarrollo,Lote de hasta 32 autorizaciones escolares 47,Resultado de la ficha de familia y del paquete original; registro individual por código/ventana,"No duplicar padres, informes, ingeniería ni cobertura; no incluye horas de contraparte ni obras/adquisiciones del cliente","Lectura humana, vigencia, menor/apoderado y evidencia; autorización ausente bloquea participación.",Nicolás Torfan,8,D:6;Q:2,"Asignación y cuadrante integrado por código; entornos, usuarios y habilitaciones autorizados","Tres años, reserva hasta 1.770 autorizaciones; RNF-MIG-01",2027-06-18,2027-06-22,1.8.2.6,Recepción por etapa o control del periodo; no acredita ejecución,"Tres años, reserva hasta 1.770 autorizaciones; RNF-MIG-01"
1.8.7.2.48,Lote de hasta 32 autorizaciones escolares 48,1.8,E1 Desarrollo,Lote de hasta 32 autorizaciones escolares 48,Resultado de la ficha de familia y del paquete original; registro individual por código/ventana,"No duplicar padres, informes, ingeniería ni cobertura; no incluye horas de contraparte ni obras/adquisiciones del cliente","Lectura humana, vigencia, menor/apoderado y evidencia; autorización ausente bloquea participación.",Nicolás Torfan,8,D:6;Q:2,"Asignación y cuadrante integrado por código; entornos, usuarios y habilitaciones autorizados","Tres años, reserva hasta 1.770 autorizaciones; RNF-MIG-01",2027-06-18,2027-06-22,1.8.2.6,Recepción por etapa o control del periodo; no acredita ejecución,"Tres años, reserva hasta 1.770 autorizaciones; RNF-MIG-01"
1.8.7.2.49,Lote de hasta 32 autorizaciones escolares 49,1.8,E1 Desarrollo,Lote de hasta 32 autorizaciones escolares 49,Resultado de la ficha de familia y del paquete original; registro individual por código/ventana,"No duplicar padres, informes, ingeniería ni cobertura; no incluye horas de contraparte ni obras/adquisiciones del cliente","Lectura humana, vigencia, menor/apoderado y evidencia; autorización ausente bloquea participación.",Nicolás Torfan,8,D:6;Q:2,"Asignación y cuadrante integrado por código; entornos, usuarios y habilitaciones autorizados","Tres años, reserva hasta 1.770 autorizaciones; RNF-MIG-01",2027-06-18,2027-06-22,1.8.2.6,Recepción por etapa o control del periodo; no acredita ejecución,"Tres años, reserva hasta 1.770 autorizaciones; RNF-MIG-01"
1.8.7.2.50,Lote de hasta 32 autorizaciones escolares 50,1.8,E1 Desarrollo,Lote de hasta 32 autorizaciones escolares 50,Resultado de la ficha de familia y del paquete original; registro individual por código/ventana,"No duplicar padres, informes, ingeniería ni cobertura; no incluye horas de contraparte ni obras/adquisiciones del cliente","Lectura humana, vigencia, menor/apoderado y evidencia; autorización ausente bloquea participación.",Nicolás Torfan,8,D:6;Q:2,"Asignación y cuadrante integrado por código; entornos, usuarios y habilitaciones autorizados","Tres años, reserva hasta 1.770 autorizaciones; RNF-MIG-01",2027-06-18,2027-06-22,1.8.2.6,Recepción por etapa o control del periodo; no acredita ejecución,"Tres años, reserva hasta 1.770 autorizaciones; RNF-MIG-01"
1.8.7.2.51,Lote de hasta 32 autorizaciones escolares 51,1.8,E1 Desarrollo,Lote de hasta 32 autorizaciones escolares 51,Resultado de la ficha de familia y del paquete original; registro individual por código/ventana,"No duplicar padres, informes, ingeniería ni cobertura; no incluye horas de contraparte ni obras/adquisiciones del cliente","Lectura humana, vigencia, menor/apoderado y evidencia; autorización ausente bloquea participación.",Nicolás Torfan,8,D:6;Q:2,"Asignación y cuadrante integrado por código; entornos, usuarios y habilitaciones autorizados","Tres años, reserva hasta 1.770 autorizaciones; RNF-MIG-01",2027-06-18,2027-06-22,1.8.2.6,Recepción por etapa o control del periodo; no acredita ejecución,"Tres años, reserva hasta 1.770 autorizaciones; RNF-MIG-01"
1.8.7.2.52,Lote de hasta 32 autorizaciones escolares 52,1.8,E1 Desarrollo,Lote de hasta 32 autorizaciones escolares 52,Resultado de la ficha de familia y del paquete original; registro individual por código/ventana,"No duplicar padres, informes, ingeniería ni cobertura; no incluye horas de contraparte ni obras/adquisiciones del cliente","Lectura humana, vigencia, menor/apoderado y evidencia; autorización ausente bloquea participación.",Nicolás Torfan,8,D:6;Q:2,"Asignación y cuadrante integrado por código; entornos, usuarios y habilitaciones autorizados","Tres años, reserva hasta 1.770 autorizaciones; RNF-MIG-01",2027-06-18,2027-06-22,1.8.2.6,Recepción por etapa o control del periodo; no acredita ejecución,"Tres años, reserva hasta 1.770 autorizaciones; RNF-MIG-01"
1.8.7.2.53,Lote de hasta 32 autorizaciones escolares 53,1.8,E1 Desarrollo,Lote de hasta 32 autorizaciones escolares 53,Resultado de la ficha de familia y del paquete original; registro individual por código/ventana,"No duplicar padres, informes, ingeniería ni cobertura; no incluye horas de contraparte ni obras/adquisiciones del cliente","Lectura humana, vigencia, menor/apoderado y evidencia; autorización ausente bloquea participación.",Nicolás Torfan,8,D:6;Q:2,"Asignación y cuadrante integrado por código; entornos, usuarios y habilitaciones autorizados","Tres años, reserva hasta 1.770 autorizaciones; RNF-MIG-01",2027-06-22,2027-06-23,1.8.2.6,Recepción por etapa o control del periodo; no acredita ejecución,"Tres años, reserva hasta 1.770 autorizaciones; RNF-MIG-01"
1.8.7.2.54,Lote de hasta 32 autorizaciones escolares 54,1.8,E1 Desarrollo,Lote de hasta 32 autorizaciones escolares 54,Resultado de la ficha de familia y del paquete original; registro individual por código/ventana,"No duplicar padres, informes, ingeniería ni cobertura; no incluye horas de contraparte ni obras/adquisiciones del cliente","Lectura humana, vigencia, menor/apoderado y evidencia; autorización ausente bloquea participación.",Nicolás Torfan,8,D:6;Q:2,"Asignación y cuadrante integrado por código; entornos, usuarios y habilitaciones autorizados","Tres años, reserva hasta 1.770 autorizaciones; RNF-MIG-01",2027-06-22,2027-06-23,1.8.2.6,Recepción por etapa o control del periodo; no acredita ejecución,"Tres años, reserva hasta 1.770 autorizaciones; RNF-MIG-01"
1.8.7.2.55,Lote de hasta 32 autorizaciones escolares 55,1.8,E1 Desarrollo,Lote de hasta 32 autorizaciones escolares 55,Resultado de la ficha de familia y del paquete original; registro individual por código/ventana,"No duplicar padres, informes, ingeniería ni cobertura; no incluye horas de contraparte ni obras/adquisiciones del cliente","Lectura humana, vigencia, menor/apoderado y evidencia; autorización ausente bloquea participación.",Nicolás Torfan,8,D:6;Q:2,"Asignación y cuadrante integrado por código; entornos, usuarios y habilitaciones autorizados","Tres años, reserva hasta 1.770 autorizaciones; RNF-MIG-01",2027-06-22,2027-06-23,1.8.2.6,Recepción por etapa o control del periodo; no acredita ejecución,"Tres años, reserva hasta 1.770 autorizaciones; RNF-MIG-01"
1.8.7.2.56,Lote de hasta 32 autorizaciones escolares 56,1.8,E1 Desarrollo,Lote de hasta 32 autorizaciones escolares 56,Resultado de la ficha de familia y del paquete original; registro individual por código/ventana,"No duplicar padres, informes, ingeniería ni cobertura; no incluye horas de contraparte ni obras/adquisiciones del cliente","Lectura humana, vigencia, menor/apoderado y evidencia; autorización ausente bloquea participación.",Nicolás Torfan,8,D:6;Q:2,"Asignación y cuadrante integrado por código; entornos, usuarios y habilitaciones autorizados","Tres años, reserva hasta 1.770 autorizaciones; RNF-MIG-01",2027-06-22,2027-06-23,1.8.2.6,Recepción por etapa o control del periodo; no acredita ejecución,"Tres años, reserva hasta 1.770 autorizaciones; RNF-MIG-01"
1.2.3.7.1,Lote de enrolamiento de hasta cuatro terminales 1,1.2,E1 Desarrollo,Lote de enrolamiento de hasta cuatro terminales 1,Resultado de la ficha de familia y del paquete original; registro individual por código/ventana,"No duplicar padres, informes, ingeniería ni cobertura; no incluye horas de contraparte ni obras/adquisiciones del cliente","Equipo nominal inscrito, cifrado, pérdida, protección, licencia y revisión de política comprobados.",José Lara Arce,16,S:4;Q:4;O:8,"Asignación y cuadrante integrado por código; entornos, usuarios y habilitaciones autorizados",16 Android + 21 PC; RT-08; SD4/T-11,2027-04-06,2027-04-08,1.2.3.4,Recepción por etapa o control del periodo; no acredita ejecución,16 Android + 21 PC; RT-08; SD4/T-11
1.2.3.7.2,Lote de enrolamiento de hasta cuatro terminales 2,1.2,E1 Desarrollo,Lote de enrolamiento de hasta cuatro terminales 2,Resultado de la ficha de familia y del paquete original; registro individual por código/ventana,"No duplicar padres, informes, ingeniería ni cobertura; no incluye horas de contraparte ni obras/adquisiciones del cliente","Equipo nominal inscrito, cifrado, pérdida, protección, licencia y revisión de política comprobados.",José Lara Arce,16,S:4;Q:4;O:8,"Asignación y cuadrante integrado por código; entornos, usuarios y habilitaciones autorizados",16 Android + 21 PC; RT-08; SD4/T-11,2027-04-08,2027-04-12,1.2.3.4,Recepción por etapa o control del periodo; no acredita ejecución,16 Android + 21 PC; RT-08; SD4/T-11
1.2.3.7.3,Lote de enrolamiento de hasta cuatro terminales 3,1.2,E1 Desarrollo,Lote de enrolamiento de hasta cuatro terminales 3,Resultado de la ficha de familia y del paquete original; registro individual por código/ventana,"No duplicar padres, informes, ingeniería ni cobertura; no incluye horas de contraparte ni obras/adquisiciones del cliente","Equipo nominal inscrito, cifrado, pérdida, protección, licencia y revisión de política comprobados.",José Lara Arce,16,S:4;Q:4;O:8,"Asignación y cuadrante integrado por código; entornos, usuarios y habilitaciones autorizados",16 Android + 21 PC; RT-08; SD4/T-11,2027-04-09,2027-04-13,1.2.3.4,Recepción por etapa o control del periodo; no acredita ejecución,16 Android + 21 PC; RT-08; SD4/T-11
1.2.3.7.4,Lote de enrolamiento de hasta cuatro terminales 4,1.2,E1 Desarrollo,Lote de enrolamiento de hasta cuatro terminales 4,Resultado de la ficha de familia y del paquete original; registro individual por código/ventana,"No duplicar padres, informes, ingeniería ni cobertura; no incluye horas de contraparte ni obras/adquisiciones del cliente","Equipo nominal inscrito, cifrado, pérdida, protección, licencia y revisión de política comprobados.",José Lara Arce,16,S:4;Q:4;O:8,"Asignación y cuadrante integrado por código; entornos, usuarios y habilitaciones autorizados",16 Android + 21 PC; RT-08; SD4/T-11,2027-04-08,2027-04-09,1.2.3.4,Recepción por etapa o control del periodo; no acredita ejecución,16 Android + 21 PC; RT-08; SD4/T-11
1.2.3.7.5,Lote de enrolamiento de hasta cuatro terminales 5,1.2,E1 Desarrollo,Lote de enrolamiento de hasta cuatro terminales 5,Resultado de la ficha de familia y del paquete original; registro individual por código/ventana,"No duplicar padres, informes, ingeniería ni cobertura; no incluye horas de contraparte ni obras/adquisiciones del cliente","Equipo nominal inscrito, cifrado, pérdida, protección, licencia y revisión de política comprobados.",José Lara Arce,16,S:4;Q:4;O:8,"Asignación y cuadrante integrado por código; entornos, usuarios y habilitaciones autorizados",16 Android + 21 PC; RT-08; SD4/T-11,2027-04-09,2027-04-12,1.2.3.4,Recepción por etapa o control del periodo; no acredita ejecución,16 Android + 21 PC; RT-08; SD4/T-11
1.2.3.7.6,Lote de enrolamiento de hasta cuatro terminales 6,1.2,E1 Desarrollo,Lote de enrolamiento de hasta cuatro terminales 6,Resultado de la ficha de familia y del paquete original; registro individual por código/ventana,"No duplicar padres, informes, ingeniería ni cobertura; no incluye horas de contraparte ni obras/adquisiciones del cliente","Equipo nominal inscrito, cifrado, pérdida, protección, licencia y revisión de política comprobados.",José Lara Arce,16,S:4;Q:4;O:8,"Asignación y cuadrante integrado por código; entornos, usuarios y habilitaciones autorizados",16 Android + 21 PC; RT-08; SD4/T-11,2027-04-12,2027-04-14,1.2.3.4,Recepción por etapa o control del periodo; no acredita ejecución,16 Android + 21 PC; RT-08; SD4/T-11
1.2.3.7.7,Lote de enrolamiento de hasta cuatro terminales 7,1.2,E1 Desarrollo,Lote de enrolamiento de hasta cuatro terminales 7,Resultado de la ficha de familia y del paquete original; registro individual por código/ventana,"No duplicar padres, informes, ingeniería ni cobertura; no incluye horas de contraparte ni obras/adquisiciones del cliente","Equipo nominal inscrito, cifrado, pérdida, protección, licencia y revisión de política comprobados.",José Lara Arce,16,S:4;Q:4;O:8,"Asignación y cuadrante integrado por código; entornos, usuarios y habilitaciones autorizados",16 Android + 21 PC; RT-08; SD4/T-11,2027-04-06,2027-04-08,1.2.3.4,Recepción por etapa o control del periodo; no acredita ejecución,16 Android + 21 PC; RT-08; SD4/T-11
1.2.3.7.8,Lote de enrolamiento de hasta cuatro terminales 8,1.2,E1 Desarrollo,Lote de enrolamiento de hasta cuatro terminales 8,Resultado de la ficha de familia y del paquete original; registro individual por código/ventana,"No duplicar padres, informes, ingeniería ni cobertura; no incluye horas de contraparte ni obras/adquisiciones del cliente","Equipo nominal inscrito, cifrado, pérdida, protección, licencia y revisión de política comprobados.",José Lara Arce,16,S:4;Q:4;O:8,"Asignación y cuadrante integrado por código; entornos, usuarios y habilitaciones autorizados",16 Android + 21 PC; RT-08; SD4/T-11,2027-04-07,2027-04-09,1.2.3.4,Recepción por etapa o control del periodo; no acredita ejecución,16 Android + 21 PC; RT-08; SD4/T-11
1.2.3.7.9,Lote de enrolamiento de hasta cuatro terminales 9,1.2,E1 Desarrollo,Lote de enrolamiento de hasta cuatro terminales 9,Resultado de la ficha de familia y del paquete original; registro individual por código/ventana,"No duplicar padres, informes, ingeniería ni cobertura; no incluye horas de contraparte ni obras/adquisiciones del cliente","Equipo nominal inscrito, cifrado, pérdida, protección, licencia y revisión de política comprobados.",José Lara Arce,16,S:4;Q:4;O:8,"Asignación y cuadrante integrado por código; entornos, usuarios y habilitaciones autorizados",16 Android + 21 PC; RT-08; SD4/T-11,2027-04-08,2027-04-12,1.2.3.4,Recepción por etapa o control del periodo; no acredita ejecución,16 Android + 21 PC; RT-08; SD4/T-11
1.2.3.7.10,Lote de enrolamiento de hasta cuatro terminales 10,1.2,E1 Desarrollo,Lote de enrolamiento de hasta cuatro terminales 10,Resultado de la ficha de familia y del paquete original; registro individual por código/ventana,"No duplicar padres, informes, ingeniería ni cobertura; no incluye horas de contraparte ni obras/adquisiciones del cliente","Equipo nominal inscrito, cifrado, pérdida, protección, licencia y revisión de política comprobados.",José Lara Arce,16,S:4;Q:4;O:8,"Asignación y cuadrante integrado por código; entornos, usuarios y habilitaciones autorizados",16 Android + 21 PC; RT-08; SD4/T-11,2027-04-07,2027-04-09,1.2.3.4,Recepción por etapa o control del periodo; no acredita ejecución,16 Android + 21 PC; RT-08; SD4/T-11
1.7.2.5.1,Recepción funcional de 40 puntos de medición 1,1.7,E1 Desarrollo,Recepción funcional de 40 puntos de medición 1,Resultado de la ficha de familia y del paquete original; registro individual por código/ventana,"No duplicar padres, informes, ingeniería ni cobertura; no incluye horas de contraparte ni obras/adquisiciones del cliente","640 puntos recibidos: identificación por servicio/amarra, calibración, error, flexión, tiempo, corte y lectura trazados; instalación eléctrica a cargo del cliente.",Fernando Guerrero,24,D:8;Q:8;I:8,"Asignación y cuadrante integrado por código; entornos, usuarios y habilitaciones autorizados",C07 13.3.7; RT-17.07; SD4 VAC-03,2027-04-09,2027-04-13,1.2.3.5;EXT-TELEMETRIA,Recepción por etapa o control del periodo; no acredita ejecución,C07 13.3.7; RT-17.07; SD4 VAC-03
1.7.2.5.2,Recepción funcional de 40 puntos de medición 2,1.7,E1 Desarrollo,Recepción funcional de 40 puntos de medición 2,Resultado de la ficha de familia y del paquete original; registro individual por código/ventana,"No duplicar padres, informes, ingeniería ni cobertura; no incluye horas de contraparte ni obras/adquisiciones del cliente","640 puntos recibidos: identificación por servicio/amarra, calibración, error, flexión, tiempo, corte y lectura trazados; instalación eléctrica a cargo del cliente.",Fernando Guerrero,24,D:8;Q:8;I:8,"Asignación y cuadrante integrado por código; entornos, usuarios y habilitaciones autorizados",C07 13.3.7; RT-17.07; SD4 VAC-03,2027-04-08,2027-04-12,1.2.3.5;EXT-TELEMETRIA,Recepción por etapa o control del periodo; no acredita ejecución,C07 13.3.7; RT-17.07; SD4 VAC-03
1.7.2.5.3,Recepción funcional de 40 puntos de medición 3,1.7,E1 Desarrollo,Recepción funcional de 40 puntos de medición 3,Resultado de la ficha de familia y del paquete original; registro individual por código/ventana,"No duplicar padres, informes, ingeniería ni cobertura; no incluye horas de contraparte ni obras/adquisiciones del cliente","640 puntos recibidos: identificación por servicio/amarra, calibración, error, flexión, tiempo, corte y lectura trazados; instalación eléctrica a cargo del cliente.",Fernando Guerrero,24,D:8;Q:8;I:8,"Asignación y cuadrante integrado por código; entornos, usuarios y habilitaciones autorizados",C07 13.3.7; RT-17.07; SD4 VAC-03,2027-04-09,2027-04-14,1.2.3.5;EXT-TELEMETRIA,Recepción por etapa o control del periodo; no acredita ejecución,C07 13.3.7; RT-17.07; SD4 VAC-03
1.7.2.5.4,Recepción funcional de 40 puntos de medición 4,1.7,E1 Desarrollo,Recepción funcional de 40 puntos de medición 4,Resultado de la ficha de familia y del paquete original; registro individual por código/ventana,"No duplicar padres, informes, ingeniería ni cobertura; no incluye horas de contraparte ni obras/adquisiciones del cliente","640 puntos recibidos: identificación por servicio/amarra, calibración, error, flexión, tiempo, corte y lectura trazados; instalación eléctrica a cargo del cliente.",Fernando Guerrero,24,D:8;Q:8;I:8,"Asignación y cuadrante integrado por código; entornos, usuarios y habilitaciones autorizados",C07 13.3.7; RT-17.07; SD4 VAC-03,2027-04-06,2027-04-08,1.2.3.5;EXT-TELEMETRIA,Recepción por etapa o control del periodo; no acredita ejecución,C07 13.3.7; RT-17.07; SD4 VAC-03
1.7.2.5.5,Recepción funcional de 40 puntos de medición 5,1.7,E1 Desarrollo,Recepción funcional de 40 puntos de medición 5,Resultado de la ficha de familia y del paquete original; registro individual por código/ventana,"No duplicar padres, informes, ingeniería ni cobertura; no incluye horas de contraparte ni obras/adquisiciones del cliente","640 puntos recibidos: identificación por servicio/amarra, calibración, error, flexión, tiempo, corte y lectura trazados; instalación eléctrica a cargo del cliente.",Fernando Guerrero,24,D:8;Q:8;I:8,"Asignación y cuadrante integrado por código; entornos, usuarios y habilitaciones autorizados",C07 13.3.7; RT-17.07; SD4 VAC-03,2027-04-07,2027-04-09,1.2.3.5;EXT-TELEMETRIA,Recepción por etapa o control del periodo; no acredita ejecución,C07 13.3.7; RT-17.07; SD4 VAC-03
1.7.2.5.6,Recepción funcional de 40 puntos de medición 6,1.7,E1 Desarrollo,Recepción funcional de 40 puntos de medición 6,Resultado de la ficha de familia y del paquete original; registro individual por código/ventana,"No duplicar padres, informes, ingeniería ni cobertura; no incluye horas de contraparte ni obras/adquisiciones del cliente","640 puntos recibidos: identificación por servicio/amarra, calibración, error, flexión, tiempo, corte y lectura trazados; instalación eléctrica a cargo del cliente.",Fernando Guerrero,24,D:8;Q:8;I:8,"Asignación y cuadrante integrado por código; entornos, usuarios y habilitaciones autorizados",C07 13.3.7; RT-17.07; SD4 VAC-03,2027-04-08,2027-04-12,1.2.3.5;EXT-TELEMETRIA,Recepción por etapa o control del periodo; no acredita ejecución,C07 13.3.7; RT-17.07; SD4 VAC-03
1.7.2.5.7,Recepción funcional de 40 puntos de medición 7,1.7,E1 Desarrollo,Recepción funcional de 40 puntos de medición 7,Resultado de la ficha de familia y del paquete original; registro individual por código/ventana,"No duplicar padres, informes, ingeniería ni cobertura; no incluye horas de contraparte ni obras/adquisiciones del cliente","640 puntos recibidos: identificación por servicio/amarra, calibración, error, flexión, tiempo, corte y lectura trazados; instalación eléctrica a cargo del cliente.",Fernando Guerrero,24,D:8;Q:8;I:8,"Asignación y cuadrante integrado por código; entornos, usuarios y habilitaciones autorizados",C07 13.3.7; RT-17.07; SD4 VAC-03,2027-04-09,2027-04-14,1.2.3.5;EXT-TELEMETRIA,Recepción por etapa o control del periodo; no acredita ejecución,C07 13.3.7; RT-17.07; SD4 VAC-03
1.7.2.5.8,Recepción funcional de 40 puntos de medición 8,1.7,E1 Desarrollo,Recepción funcional de 40 puntos de medición 8,Resultado de la ficha de familia y del paquete original; registro individual por código/ventana,"No duplicar padres, informes, ingeniería ni cobertura; no incluye horas de contraparte ni obras/adquisiciones del cliente","640 puntos recibidos: identificación por servicio/amarra, calibración, error, flexión, tiempo, corte y lectura trazados; instalación eléctrica a cargo del cliente.",Fernando Guerrero,24,D:8;Q:8;I:8,"Asignación y cuadrante integrado por código; entornos, usuarios y habilitaciones autorizados",C07 13.3.7; RT-17.07; SD4 VAC-03,2027-04-06,2027-04-08,1.2.3.5;EXT-TELEMETRIA,Recepción por etapa o control del periodo; no acredita ejecución,C07 13.3.7; RT-17.07; SD4 VAC-03
1.7.2.5.9,Recepción funcional de 40 puntos de medición 9,1.7,E1 Desarrollo,Recepción funcional de 40 puntos de medición 9,Resultado de la ficha de familia y del paquete original; registro individual por código/ventana,"No duplicar padres, informes, ingeniería ni cobertura; no incluye horas de contraparte ni obras/adquisiciones del cliente","640 puntos recibidos: identificación por servicio/amarra, calibración, error, flexión, tiempo, corte y lectura trazados; instalación eléctrica a cargo del cliente.",Fernando Guerrero,24,D:8;Q:8;I:8,"Asignación y cuadrante integrado por código; entornos, usuarios y habilitaciones autorizados",C07 13.3.7; RT-17.07; SD4 VAC-03,2027-04-07,2027-04-09,1.2.3.5;EXT-TELEMETRIA,Recepción por etapa o control del periodo; no acredita ejecución,C07 13.3.7; RT-17.07; SD4 VAC-03
1.7.2.5.10,Recepción funcional de 40 puntos de medición 10,1.7,E1 Desarrollo,Recepción funcional de 40 puntos de medición 10,Resultado de la ficha de familia y del paquete original; registro individual por código/ventana,"No duplicar padres, informes, ingeniería ni cobertura; no incluye horas de contraparte ni obras/adquisiciones del cliente","640 puntos recibidos: identificación por servicio/amarra, calibración, error, flexión, tiempo, corte y lectura trazados; instalación eléctrica a cargo del cliente.",Fernando Guerrero,24,D:8;Q:8;I:8,"Asignación y cuadrante integrado por código; entornos, usuarios y habilitaciones autorizados",C07 13.3.7; RT-17.07; SD4 VAC-03,2027-04-12,2027-04-14,1.2.3.5;EXT-TELEMETRIA,Recepción por etapa o control del periodo; no acredita ejecución,C07 13.3.7; RT-17.07; SD4 VAC-03
1.7.2.5.11,Recepción funcional de 40 puntos de medición 11,1.7,E1 Desarrollo,Recepción funcional de 40 puntos de medición 11,Resultado de la ficha de familia y del paquete original; registro individual por código/ventana,"No duplicar padres, informes, ingeniería ni cobertura; no incluye horas de contraparte ni obras/adquisiciones del cliente","640 puntos recibidos: identificación por servicio/amarra, calibración, error, flexión, tiempo, corte y lectura trazados; instalación eléctrica a cargo del cliente.",Fernando Guerrero,24,D:8;Q:8;I:8,"Asignación y cuadrante integrado por código; entornos, usuarios y habilitaciones autorizados",C07 13.3.7; RT-17.07; SD4 VAC-03,2027-04-06,2027-04-08,1.2.3.5;EXT-TELEMETRIA,Recepción por etapa o control del periodo; no acredita ejecución,C07 13.3.7; RT-17.07; SD4 VAC-03
1.7.2.5.12,Recepción funcional de 40 puntos de medición 12,1.7,E1 Desarrollo,Recepción funcional de 40 puntos de medición 12,Resultado de la ficha de familia y del paquete original; registro individual por código/ventana,"No duplicar padres, informes, ingeniería ni cobertura; no incluye horas de contraparte ni obras/adquisiciones del cliente","640 puntos recibidos: identificación por servicio/amarra, calibración, error, flexión, tiempo, corte y lectura trazados; instalación eléctrica a cargo del cliente.",Fernando Guerrero,24,D:8;Q:8;I:8,"Asignación y cuadrante integrado por código; entornos, usuarios y habilitaciones autorizados",C07 13.3.7; RT-17.07; SD4 VAC-03,2027-04-07,2027-04-09,1.2.3.5;EXT-TELEMETRIA,Recepción por etapa o control del periodo; no acredita ejecución,C07 13.3.7; RT-17.07; SD4 VAC-03
1.7.2.5.13,Recepción funcional de 40 puntos de medición 13,1.7,E1 Desarrollo,Recepción funcional de 40 puntos de medición 13,Resultado de la ficha de familia y del paquete original; registro individual por código/ventana,"No duplicar padres, informes, ingeniería ni cobertura; no incluye horas de contraparte ni obras/adquisiciones del cliente","640 puntos recibidos: identificación por servicio/amarra, calibración, error, flexión, tiempo, corte y lectura trazados; instalación eléctrica a cargo del cliente.",Fernando Guerrero,24,D:8;Q:8;I:8,"Asignación y cuadrante integrado por código; entornos, usuarios y habilitaciones autorizados",C07 13.3.7; RT-17.07; SD4 VAC-03,2027-04-08,2027-04-12,1.2.3.5;EXT-TELEMETRIA,Recepción por etapa o control del periodo; no acredita ejecución,C07 13.3.7; RT-17.07; SD4 VAC-03
1.7.2.5.14,Recepción funcional de 40 puntos de medición 14,1.7,E1 Desarrollo,Recepción funcional de 40 puntos de medición 14,Resultado de la ficha de familia y del paquete original; registro individual por código/ventana,"No duplicar padres, informes, ingeniería ni cobertura; no incluye horas de contraparte ni obras/adquisiciones del cliente","640 puntos recibidos: identificación por servicio/amarra, calibración, error, flexión, tiempo, corte y lectura trazados; instalación eléctrica a cargo del cliente.",Fernando Guerrero,24,D:8;Q:8;I:8,"Asignación y cuadrante integrado por código; entornos, usuarios y habilitaciones autorizados",C07 13.3.7; RT-17.07; SD4 VAC-03,2027-04-09,2027-04-14,1.2.3.5;EXT-TELEMETRIA,Recepción por etapa o control del periodo; no acredita ejecución,C07 13.3.7; RT-17.07; SD4 VAC-03
1.7.2.5.15,Recepción funcional de 40 puntos de medición 15,1.7,E1 Desarrollo,Recepción funcional de 40 puntos de medición 15,Resultado de la ficha de familia y del paquete original; registro individual por código/ventana,"No duplicar padres, informes, ingeniería ni cobertura; no incluye horas de contraparte ni obras/adquisiciones del cliente","640 puntos recibidos: identificación por servicio/amarra, calibración, error, flexión, tiempo, corte y lectura trazados; instalación eléctrica a cargo del cliente.",Fernando Guerrero,24,D:8;Q:8;I:8,"Asignación y cuadrante integrado por código; entornos, usuarios y habilitaciones autorizados",C07 13.3.7; RT-17.07; SD4 VAC-03,2027-04-06,2027-04-08,1.2.3.5;EXT-TELEMETRIA,Recepción por etapa o control del periodo; no acredita ejecución,C07 13.3.7; RT-17.07; SD4 VAC-03
1.7.2.5.16,Recepción funcional de 40 puntos de medición 16,1.7,E1 Desarrollo,Recepción funcional de 40 puntos de medición 16,Resultado de la ficha de familia y del paquete original; registro individual por código/ventana,"No duplicar padres, informes, ingeniería ni cobertura; no incluye horas de contraparte ni obras/adquisiciones del cliente","640 puntos recibidos: identificación por servicio/amarra, calibración, error, flexión, tiempo, corte y lectura trazados; instalación eléctrica a cargo del cliente.",Fernando Guerrero,24,D:8;Q:8;I:8,"Asignación y cuadrante integrado por código; entornos, usuarios y habilitaciones autorizados",C07 13.3.7; RT-17.07; SD4 VAC-03,2027-04-07,2027-04-09,1.2.3.5;EXT-TELEMETRIA,Recepción por etapa o control del periodo; no acredita ejecución,C07 13.3.7; RT-17.07; SD4 VAC-03
1.8.8.1,Adaptación de ensayo al universo E2 1,1.8,E2 Desarrollo,Adaptación de ensayo al universo E2 1,Resultado de la ficha de familia y del paquete original; registro individual por código/ventana,"No duplicar padres, informes, ingeniería ni cobertura; no incluye horas de contraparte ni obras/adquisiciones del cliente","Manifiesto E2 identifica esquemas/contratos, transformaciones y universos incluidos, sin usar vistas como modelo.",Nicolás Torfan,56,D:24;Q:8;V:16;I:8,"Asignación y cuadrante integrado por código; entornos, usuarios y habilitaciones autorizados",RT-05.13; VM-E2,2028-01-19,2028-01-24,H8,Recepción por etapa o control del periodo; no acredita ejecución,RT-05.13; VM-E2
1.8.8.2,Adaptación de ensayo al universo E2 2,1.8,E2 Desarrollo,Adaptación de ensayo al universo E2 2,Resultado de la ficha de familia y del paquete original; registro individual por código/ventana,"No duplicar padres, informes, ingeniería ni cobertura; no incluye horas de contraparte ni obras/adquisiciones del cliente","Manifiesto E2 identifica esquemas/contratos, transformaciones y universos incluidos, sin usar vistas como modelo.",Nicolás Torfan,56,D:24;Q:8;V:16;I:8,"Asignación y cuadrante integrado por código; entornos, usuarios y habilitaciones autorizados",RT-05.13; VM-E2,2028-01-17,2028-01-20,H8,Recepción por etapa o control del periodo; no acredita ejecución,RT-05.13; VM-E2
1.8.8.3,Adaptación de ensayo al universo E2 3,1.8,E2 Desarrollo,Adaptación de ensayo al universo E2 3,Resultado de la ficha de familia y del paquete original; registro individual por código/ventana,"No duplicar padres, informes, ingeniería ni cobertura; no incluye horas de contraparte ni obras/adquisiciones del cliente","Manifiesto E2 identifica esquemas/contratos, transformaciones y universos incluidos, sin usar vistas como modelo.",Nicolás Torfan,56,D:24;Q:8;V:16;I:8,"Asignación y cuadrante integrado por código; entornos, usuarios y habilitaciones autorizados",RT-05.13; VM-E2,2028-01-19,2028-01-24,H8,Recepción por etapa o control del periodo; no acredita ejecución,RT-05.13; VM-E2
1.8.8.4,Adaptación de ensayo al universo E2 4,1.8,E2 Desarrollo,Adaptación de ensayo al universo E2 4,Resultado de la ficha de familia y del paquete original; registro individual por código/ventana,"No duplicar padres, informes, ingeniería ni cobertura; no incluye horas de contraparte ni obras/adquisiciones del cliente","Manifiesto E2 identifica esquemas/contratos, transformaciones y universos incluidos, sin usar vistas como modelo.",Nicolás Torfan,56,D:24;Q:8;V:16;I:8,"Asignación y cuadrante integrado por código; entornos, usuarios y habilitaciones autorizados",RT-05.13; VM-E2,2028-01-17,2028-01-20,H8,Recepción por etapa o control del periodo; no acredita ejecución,RT-05.13; VM-E2
1.11.7.1.1.1.1,"Sesión y certificación E1, perfil 1, cohorte 1",1.11,E1 Desarrollo,"Sesión y certificación E1, perfil 1, cohorte 1",Resultado de la ficha de familia y del paquete original; registro individual por código/ventana,"No duplicar padres, informes, ingeniería ni cobertura; no incluye horas de contraparte ni obras/adquisiciones del cliente","Dos sesiones de dos horas, ejercicio, registro individual y recuperación; máximo doce asistentes y sin interrumpir turnos.",José Lara Arce,12,A:2;Q:2;L:8,"Asignación y cuadrante integrado por código; entornos, usuarios y habilitaciones autorizados",RT-22.01--05; aforo propuesto,2027-11-03,2027-11-04,1.11.2.1.1;VERSION-E1,Recepción por etapa o control del periodo; no acredita ejecución,RT-22.01--05; aforo propuesto
1.11.7.1.1.1.2,"Sesión y certificación E1, perfil 1, cohorte 2",1.11,E1 Desarrollo,"Sesión y certificación E1, perfil 1, cohorte 2",Resultado de la ficha de familia y del paquete original; registro individual por código/ventana,"No duplicar padres, informes, ingeniería ni cobertura; no incluye horas de contraparte ni obras/adquisiciones del cliente","Dos sesiones de dos horas, ejercicio, registro individual y recuperación; máximo doce asistentes y sin interrumpir turnos.",José Lara Arce,12,A:2;Q:2;L:8,"Asignación y cuadrante integrado por código; entornos, usuarios y habilitaciones autorizados",RT-22.01--05; aforo propuesto,2027-11-09,2027-11-10,1.11.2.1.1;VERSION-E1,Recepción por etapa o control del periodo; no acredita ejecución,RT-22.01--05; aforo propuesto
1.11.7.1.1.1.3,"Sesión y certificación E1, perfil 1, cohorte 3",1.11,E1 Desarrollo,"Sesión y certificación E1, perfil 1, cohorte 3",Resultado de la ficha de familia y del paquete original; registro individual por código/ventana,"No duplicar padres, informes, ingeniería ni cobertura; no incluye horas de contraparte ni obras/adquisiciones del cliente","Dos sesiones de dos horas, ejercicio, registro individual y recuperación; máximo doce asistentes y sin interrumpir turnos.",José Lara Arce,12,A:2;Q:2;L:8,"Asignación y cuadrante integrado por código; entornos, usuarios y habilitaciones autorizados",RT-22.01--05; aforo propuesto,2027-11-04,2027-11-08,1.11.2.1.1;VERSION-E1,Recepción por etapa o control del periodo; no acredita ejecución,RT-22.01--05; aforo propuesto
1.11.7.1.1.1.4,"Sesión y certificación E1, perfil 1, cohorte 4",1.11,E1 Desarrollo,"Sesión y certificación E1, perfil 1, cohorte 4",Resultado de la ficha de familia y del paquete original; registro individual por código/ventana,"No duplicar padres, informes, ingeniería ni cobertura; no incluye horas de contraparte ni obras/adquisiciones del cliente","Dos sesiones de dos horas, ejercicio, registro individual y recuperación; máximo doce asistentes y sin interrumpir turnos.",José Lara Arce,12,A:2;Q:2;L:8,"Asignación y cuadrante integrado por código; entornos, usuarios y habilitaciones autorizados",RT-22.01--05; aforo propuesto,2027-11-17,2027-11-18,1.11.2.1.1;VERSION-E1,Recepción por etapa o control del periodo; no acredita ejecución,RT-22.01--05; aforo propuesto
1.11.7.1.1.1.5,"Sesión y certificación E1, perfil 1, cohorte 5",1.11,E1 Desarrollo,"Sesión y certificación E1, perfil 1, cohorte 5",Resultado de la ficha de familia y del paquete original; registro individual por código/ventana,"No duplicar padres, informes, ingeniería ni cobertura; no incluye horas de contraparte ni obras/adquisiciones del cliente","Dos sesiones de dos horas, ejercicio, registro individual y recuperación; máximo doce asistentes y sin interrumpir turnos.",José Lara Arce,12,A:2;Q:2;L:8,"Asignación y cuadrante integrado por código; entornos, usuarios y habilitaciones autorizados",RT-22.01--05; aforo propuesto,2027-11-22,2027-11-23,1.11.2.1.1;VERSION-E1,Recepción por etapa o control del periodo; no acredita ejecución,RT-22.01--05; aforo propuesto
1.11.7.1.1.1.6,"Sesión y certificación E1, perfil 1, cohorte 6",1.11,E1 Desarrollo,"Sesión y certificación E1, perfil 1, cohorte 6",Resultado de la ficha de familia y del paquete original; registro individual por código/ventana,"No duplicar padres, informes, ingeniería ni cobertura; no incluye horas de contraparte ni obras/adquisiciones del cliente","Dos sesiones de dos horas, ejercicio, registro individual y recuperación; máximo doce asistentes y sin interrumpir turnos.",José Lara Arce,12,A:2;Q:2;L:8,"Asignación y cuadrante integrado por código; entornos, usuarios y habilitaciones autorizados",RT-22.01--05; aforo propuesto,2027-11-17,2027-11-18,1.11.2.1.1;VERSION-E1,Recepción por etapa o control del periodo; no acredita ejecución,RT-22.01--05; aforo propuesto
1.11.7.1.1.1.7,"Sesión y certificación E1, perfil 1, cohorte 7",1.11,E1 Desarrollo,"Sesión y certificación E1, perfil 1, cohorte 7",Resultado de la ficha de familia y del paquete original; registro individual por código/ventana,"No duplicar padres, informes, ingeniería ni cobertura; no incluye horas de contraparte ni obras/adquisiciones del cliente","Dos sesiones de dos horas, ejercicio, registro individual y recuperación; máximo doce asistentes y sin interrumpir turnos.",José Lara Arce,12,A:2;Q:2;L:8,"Asignación y cuadrante integrado por código; entornos, usuarios y habilitaciones autorizados",RT-22.01--05; aforo propuesto,2027-11-18,2027-11-19,1.11.2.1.1;VERSION-E1,Recepción por etapa o control del periodo; no acredita ejecución,RT-22.01--05; aforo propuesto
1.11.7.1.1.1.8,"Sesión y certificación E1, perfil 1, cohorte 8",1.11,E1 Desarrollo,"Sesión y certificación E1, perfil 1, cohorte 8",Resultado de la ficha de familia y del paquete original; registro individual por código/ventana,"No duplicar padres, informes, ingeniería ni cobertura; no incluye horas de contraparte ni obras/adquisiciones del cliente","Dos sesiones de dos horas, ejercicio, registro individual y recuperación; máximo doce asistentes y sin interrumpir turnos.",José Lara Arce,12,A:2;Q:2;L:8,"Asignación y cuadrante integrado por código; entornos, usuarios y habilitaciones autorizados",RT-22.01--05; aforo propuesto,2027-11-17,2027-11-18,1.11.2.1.1;VERSION-E1,Recepción por etapa o control del periodo; no acredita ejecución,RT-22.01--05; aforo propuesto
1.11.7.1.1.1.9,"Sesión y certificación E1, perfil 1, cohorte 9",1.11,E1 Desarrollo,"Sesión y certificación E1, perfil 1, cohorte 9",Resultado de la ficha de familia y del paquete original; registro individual por código/ventana,"No duplicar padres, informes, ingeniería ni cobertura; no incluye horas de contraparte ni obras/adquisiciones del cliente","Dos sesiones de dos horas, ejercicio, registro individual y recuperación; máximo doce asistentes y sin interrumpir turnos.",José Lara Arce,12,A:2;Q:2;L:8,"Asignación y cuadrante integrado por código; entornos, usuarios y habilitaciones autorizados",RT-22.01--05; aforo propuesto,2027-11-17,2027-11-18,1.11.2.1.1;VERSION-E1,Recepción por etapa o control del periodo; no acredita ejecución,RT-22.01--05; aforo propuesto
1.11.7.1.1.1.10,"Sesión y certificación E1, perfil 1, cohorte 10",1.11,E1 Desarrollo,"Sesión y certificación E1, perfil 1, cohorte 10",Resultado de la ficha de familia y del paquete original; registro individual por código/ventana,"No duplicar padres, informes, ingeniería ni cobertura; no incluye horas de contraparte ni obras/adquisiciones del cliente","Dos sesiones de dos horas, ejercicio, registro individual y recuperación; máximo doce asistentes y sin interrumpir turnos.",José Lara Arce,12,A:2;Q:2;L:8,"Asignación y cuadrante integrado por código; entornos, usuarios y habilitaciones autorizados",RT-22.01--05; aforo propuesto,2027-11-04,2027-11-05,1.11.2.1.1;VERSION-E1,Recepción por etapa o control del periodo; no acredita ejecución,RT-22.01--05; aforo propuesto
1.11.7.1.1.1.11,"Sesión y certificación E1, perfil 1, cohorte 11",1.11,E1 Desarrollo,"Sesión y certificación E1, perfil 1, cohorte 11",Resultado de la ficha de familia y del paquete original; registro individual por código/ventana,"No duplicar padres, informes, ingeniería ni cobertura; no incluye horas de contraparte ni obras/adquisiciones del cliente","Dos sesiones de dos horas, ejercicio, registro individual y recuperación; máximo doce asistentes y sin interrumpir turnos.",José Lara Arce,12,A:2;Q:2;L:8,"Asignación y cuadrante integrado por código; entornos, usuarios y habilitaciones autorizados",RT-22.01--05; aforo propuesto,2027-11-03,2027-11-05,1.11.2.1.1;VERSION-E1,Recepción por etapa o control del periodo; no acredita ejecución,RT-22.01--05; aforo propuesto
1.11.7.1.1.1.12,"Sesión y certificación E1, perfil 1, cohorte 12",1.11,E1 Desarrollo,"Sesión y certificación E1, perfil 1, cohorte 12",Resultado de la ficha de familia y del paquete original; registro individual por código/ventana,"No duplicar padres, informes, ingeniería ni cobertura; no incluye horas de contraparte ni obras/adquisiciones del cliente","Dos sesiones de dos horas, ejercicio, registro individual y recuperación; máximo doce asistentes y sin interrumpir turnos.",José Lara Arce,12,A:2;Q:2;L:8,"Asignación y cuadrante integrado por código; entornos, usuarios y habilitaciones autorizados",RT-22.01--05; aforo propuesto,2027-11-04,2027-11-08,1.11.2.1.1;VERSION-E1,Recepción por etapa o control del periodo; no acredita ejecución,RT-22.01--05; aforo propuesto
1.11.7.1.1.1.13,"Sesión y certificación E1, perfil 1, cohorte 13",1.11,E1 Desarrollo,"Sesión y certificación E1, perfil 1, cohorte 13",Resultado de la ficha de familia y del paquete original; registro individual por código/ventana,"No duplicar padres, informes, ingeniería ni cobertura; no incluye horas de contraparte ni obras/adquisiciones del cliente","Dos sesiones de dos horas, ejercicio, registro individual y recuperación; máximo doce asistentes y sin interrumpir turnos.",José Lara Arce,12,A:2;Q:2;L:8,"Asignación y cuadrante integrado por código; entornos, usuarios y habilitaciones autorizados",RT-22.01--05; aforo propuesto,2027-11-05,2027-11-09,1.11.2.1.1;VERSION-E1,Recepción por etapa o control del periodo; no acredita ejecución,RT-22.01--05; aforo propuesto
1.11.7.1.1.1.14,"Sesión y certificación E1, perfil 1, cohorte 14",1.11,E1 Desarrollo,"Sesión y certificación E1, perfil 1, cohorte 14",Resultado de la ficha de familia y del paquete original; registro individual por código/ventana,"No duplicar padres, informes, ingeniería ni cobertura; no incluye horas de contraparte ni obras/adquisiciones del cliente","Dos sesiones de dos horas, ejercicio, registro individual y recuperación; máximo doce asistentes y sin interrumpir turnos.",José Lara Arce,12,A:2;Q:2;L:8,"Asignación y cuadrante integrado por código; entornos, usuarios y habilitaciones autorizados",RT-22.01--05; aforo propuesto,2027-11-08,2027-11-10,1.11.2.1.1;VERSION-E1,Recepción por etapa o control del periodo; no acredita ejecución,RT-22.01--05; aforo propuesto
1.11.7.1.1.1.15,"Sesión y certificación E1, perfil 1, cohorte 15",1.11,E1 Desarrollo,"Sesión y certificación E1, perfil 1, cohorte 15",Resultado de la ficha de familia y del paquete original; registro individual por código/ventana,"No duplicar padres, informes, ingeniería ni cobertura; no incluye horas de contraparte ni obras/adquisiciones del cliente","Dos sesiones de dos horas, ejercicio, registro individual y recuperación; máximo doce asistentes y sin interrumpir turnos.",José Lara Arce,12,A:2;Q:2;L:8,"Asignación y cuadrante integrado por código; entornos, usuarios y habilitaciones autorizados",RT-22.01--05; aforo propuesto,2027-11-10,2027-11-11,1.11.2.1.1;VERSION-E1,Recepción por etapa o control del periodo; no acredita ejecución,RT-22.01--05; aforo propuesto
1.11.7.1.1.1.16,"Sesión y certificación E1, perfil 1, cohorte 16",1.11,E1 Desarrollo,"Sesión y certificación E1, perfil 1, cohorte 16",Resultado de la ficha de familia y del paquete original; registro individual por código/ventana,"No duplicar padres, informes, ingeniería ni cobertura; no incluye horas de contraparte ni obras/adquisiciones del cliente","Dos sesiones de dos horas, ejercicio, registro individual y recuperación; máximo doce asistentes y sin interrumpir turnos.",José Lara Arce,12,A:2;Q:2;L:8,"Asignación y cuadrante integrado por código; entornos, usuarios y habilitaciones autorizados",RT-22.01--05; aforo propuesto,2027-11-11,2027-11-12,1.11.2.1.1;VERSION-E1,Recepción por etapa o control del periodo; no acredita ejecución,RT-22.01--05; aforo propuesto
1.11.7.1.1.1.17,"Sesión y certificación E1, perfil 1, cohorte 17",1.11,E1 Desarrollo,"Sesión y certificación E1, perfil 1, cohorte 17",Resultado de la ficha de familia y del paquete original; registro individual por código/ventana,"No duplicar padres, informes, ingeniería ni cobertura; no incluye horas de contraparte ni obras/adquisiciones del cliente","Dos sesiones de dos horas, ejercicio, registro individual y recuperación; máximo doce asistentes y sin interrumpir turnos.",José Lara Arce,12,A:2;Q:2;L:8,"Asignación y cuadrante integrado por código; entornos, usuarios y habilitaciones autorizados",RT-22.01--05; aforo propuesto,2027-11-04,2027-11-05,1.11.2.1.1;VERSION-E1,Recepción por etapa o control del periodo; no acredita ejecución,RT-22.01--05; aforo propuesto
1.11.7.1.1.1.18,"Sesión y certificación E1, perfil 1, cohorte 18",1.11,E1 Desarrollo,"Sesión y certificación E1, perfil 1, cohorte 18",Resultado de la ficha de familia y del paquete original; registro individual por código/ventana,"No duplicar padres, informes, ingeniería ni cobertura; no incluye horas de contraparte ni obras/adquisiciones del cliente","Dos sesiones de dos horas, ejercicio, registro individual y recuperación; máximo doce asistentes y sin interrumpir turnos.",José Lara Arce,12,A:2;Q:2;L:8,"Asignación y cuadrante integrado por código; entornos, usuarios y habilitaciones autorizados",RT-22.01--05; aforo propuesto,2027-11-05,2027-11-08,1.11.2.1.1;VERSION-E1,Recepción por etapa o control del periodo; no acredita ejecución,RT-22.01--05; aforo propuesto
1.11.7.1.1.1.19,"Sesión y certificación E1, perfil 1, cohorte 19",1.11,E1 Desarrollo,"Sesión y certificación E1, perfil 1, cohorte 19",Resultado de la ficha de familia y del paquete original; registro individual por código/ventana,"No duplicar padres, informes, ingeniería ni cobertura; no incluye horas de contraparte ni obras/adquisiciones del cliente","Dos sesiones de dos horas, ejercicio, registro individual y recuperación; máximo doce asistentes y sin interrumpir turnos.",José Lara Arce,12,A:2;Q:2;L:8,"Asignación y cuadrante integrado por código; entornos, usuarios y habilitaciones autorizados",RT-22.01--05; aforo propuesto,2027-11-08,2027-11-09,1.11.2.1.1;VERSION-E1,Recepción por etapa o control del periodo; no acredita ejecución,RT-22.01--05; aforo propuesto
1.11.7.1.1.1.20,"Sesión y certificación E1, perfil 1, cohorte 20",1.11,E1 Desarrollo,"Sesión y certificación E1, perfil 1, cohorte 20",Resultado de la ficha de familia y del paquete original; registro individual por código/ventana,"No duplicar padres, informes, ingeniería ni cobertura; no incluye horas de contraparte ni obras/adquisiciones del cliente","Dos sesiones de dos horas, ejercicio, registro individual y recuperación; máximo doce asistentes y sin interrumpir turnos.",José Lara Arce,12,A:2;Q:2;L:8,"Asignación y cuadrante integrado por código; entornos, usuarios y habilitaciones autorizados",RT-22.01--05; aforo propuesto,2027-11-10,2027-11-12,1.11.2.1.1;VERSION-E1,Recepción por etapa o control del periodo; no acredita ejecución,RT-22.01--05; aforo propuesto
1.11.7.1.1.1.21,"Sesión y certificación E1, perfil 1, cohorte 21",1.11,E1 Desarrollo,"Sesión y certificación E1, perfil 1, cohorte 21",Resultado de la ficha de familia y del paquete original; registro individual por código/ventana,"No duplicar padres, informes, ingeniería ni cobertura; no incluye horas de contraparte ni obras/adquisiciones del cliente","Dos sesiones de dos horas, ejercicio, registro individual y recuperación; máximo doce asistentes y sin interrumpir turnos.",José Lara Arce,12,A:2;Q:2;L:8,"Asignación y cuadrante integrado por código; entornos, usuarios y habilitaciones autorizados",RT-22.01--05; aforo propuesto,2027-11-11,2027-11-15,1.11.2.1.1;VERSION-E1,Recepción por etapa o control del periodo; no acredita ejecución,RT-22.01--05; aforo propuesto
1.11.7.1.1.1.22,"Sesión y certificación E1, perfil 1, cohorte 22",1.11,E1 Desarrollo,"Sesión y certificación E1, perfil 1, cohorte 22",Resultado de la ficha de familia y del paquete original; registro individual por código/ventana,"No duplicar padres, informes, ingeniería ni cobertura; no incluye horas de contraparte ni obras/adquisiciones del cliente","Dos sesiones de dos horas, ejercicio, registro individual y recuperación; máximo doce asistentes y sin interrumpir turnos.",José Lara Arce,12,A:2;Q:2;L:8,"Asignación y cuadrante integrado por código; entornos, usuarios y habilitaciones autorizados",RT-22.01--05; aforo propuesto,2027-11-04,2027-11-05,1.11.2.1.1;VERSION-E1,Recepción por etapa o control del periodo; no acredita ejecución,RT-22.01--05; aforo propuesto
1.11.7.1.1.1.23,"Sesión y certificación E1, perfil 1, cohorte 23",1.11,E1 Desarrollo,"Sesión y certificación E1, perfil 1, cohorte 23",Resultado de la ficha de familia y del paquete original; registro individual por código/ventana,"No duplicar padres, informes, ingeniería ni cobertura; no incluye horas de contraparte ni obras/adquisiciones del cliente","Dos sesiones de dos horas, ejercicio, registro individual y recuperación; máximo doce asistentes y sin interrumpir turnos.",José Lara Arce,12,A:2;Q:2;L:8,"Asignación y cuadrante integrado por código; entornos, usuarios y habilitaciones autorizados",RT-22.01--05; aforo propuesto,2027-11-05,2027-11-08,1.11.2.1.1;VERSION-E1,Recepción por etapa o control del periodo; no acredita ejecución,RT-22.01--05; aforo propuesto
1.11.7.1.1.1.24,"Sesión y certificación E1, perfil 1, cohorte 24",1.11,E1 Desarrollo,"Sesión y certificación E1, perfil 1, cohorte 24",Resultado de la ficha de familia y del paquete original; registro individual por código/ventana,"No duplicar padres, informes, ingeniería ni cobertura; no incluye horas de contraparte ni obras/adquisiciones del cliente","Dos sesiones de dos horas, ejercicio, registro individual y recuperación; máximo doce asistentes y sin interrumpir turnos.",José Lara Arce,12,A:2;Q:2;L:8,"Asignación y cuadrante integrado por código; entornos, usuarios y habilitaciones autorizados",RT-22.01--05; aforo propuesto,2027-11-08,2027-11-10,1.11.2.1.1;VERSION-E1,Recepción por etapa o control del periodo; no acredita ejecución,RT-22.01--05; aforo propuesto
1.11.7.1.1.1.25,"Sesión y certificación E1, perfil 1, cohorte 25",1.11,E1 Desarrollo,"Sesión y certificación E1, perfil 1, cohorte 25",Resultado de la ficha de familia y del paquete original; registro individual por código/ventana,"No duplicar padres, informes, ingeniería ni cobertura; no incluye horas de contraparte ni obras/adquisiciones del cliente","Dos sesiones de dos horas, ejercicio, registro individual y recuperación; máximo doce asistentes y sin interrumpir turnos.",José Lara Arce,12,A:2;Q:2;L:8,"Asignación y cuadrante integrado por código; entornos, usuarios y habilitaciones autorizados",RT-22.01--05; aforo propuesto,2027-11-09,2027-11-11,1.11.2.1.1;VERSION-E1,Recepción por etapa o control del periodo; no acredita ejecución,RT-22.01--05; aforo propuesto
1.11.7.1.1.1.26,"Sesión y certificación E1, perfil 1, cohorte 26",1.11,E1 Desarrollo,"Sesión y certificación E1, perfil 1, cohorte 26",Resultado de la ficha de familia y del paquete original; registro individual por código/ventana,"No duplicar padres, informes, ingeniería ni cobertura; no incluye horas de contraparte ni obras/adquisiciones del cliente","Dos sesiones de dos horas, ejercicio, registro individual y recuperación; máximo doce asistentes y sin interrumpir turnos.",José Lara Arce,12,A:2;Q:2;L:8,"Asignación y cuadrante integrado por código; entornos, usuarios y habilitaciones autorizados",RT-22.01--05; aforo propuesto,2027-11-10,2027-11-12,1.11.2.1.1;VERSION-E1,Recepción por etapa o control del periodo; no acredita ejecución,RT-22.01--05; aforo propuesto
1.11.7.1.1.1.27,"Sesión y certificación E1, perfil 1, cohorte 27",1.11,E1 Desarrollo,"Sesión y certificación E1, perfil 1, cohorte 27",Resultado de la ficha de familia y del paquete original; registro individual por código/ventana,"No duplicar padres, informes, ingeniería ni cobertura; no incluye horas de contraparte ni obras/adquisiciones del cliente","Dos sesiones de dos horas, ejercicio, registro individual y recuperación; máximo doce asistentes y sin interrumpir turnos.",José Lara Arce,12,A:2;Q:2;L:8,"Asignación y cuadrante integrado por código; entornos, usuarios y habilitaciones autorizados",RT-22.01--05; aforo propuesto,2027-11-12,2027-11-15,1.11.2.1.1;VERSION-E1,Recepción por etapa o control del periodo; no acredita ejecución,RT-22.01--05; aforo propuesto
1.11.7.1.1.1.28,"Sesión y certificación E1, perfil 1, cohorte 28",1.11,E1 Desarrollo,"Sesión y certificación E1, perfil 1, cohorte 28",Resultado de la ficha de familia y del paquete original; registro individual por código/ventana,"No duplicar padres, informes, ingeniería ni cobertura; no incluye horas de contraparte ni obras/adquisiciones del cliente","Dos sesiones de dos horas, ejercicio, registro individual y recuperación; máximo doce asistentes y sin interrumpir turnos.",José Lara Arce,12,A:2;Q:2;L:8,"Asignación y cuadrante integrado por código; entornos, usuarios y habilitaciones autorizados",RT-22.01--05; aforo propuesto,2027-11-08,2027-11-09,1.11.2.1.1;VERSION-E1,Recepción por etapa o control del periodo; no acredita ejecución,RT-22.01--05; aforo propuesto
1.11.7.1.1.1.29,"Sesión y certificación E1, perfil 1, cohorte 29",1.11,E1 Desarrollo,"Sesión y certificación E1, perfil 1, cohorte 29",Resultado de la ficha de familia y del paquete original; registro individual por código/ventana,"No duplicar padres, informes, ingeniería ni cobertura; no incluye horas de contraparte ni obras/adquisiciones del cliente","Dos sesiones de dos horas, ejercicio, registro individual y recuperación; máximo doce asistentes y sin interrumpir turnos.",José Lara Arce,12,A:2;Q:2;L:8,"Asignación y cuadrante integrado por código; entornos, usuarios y habilitaciones autorizados",RT-22.01--05; aforo propuesto,2027-11-09,2027-11-10,1.11.2.1.1;VERSION-E1,Recepción por etapa o control del periodo; no acredita ejecución,RT-22.01--05; aforo propuesto
1.11.7.1.1.1.30,"Sesión y certificación E1, perfil 1, cohorte 30",1.11,E1 Desarrollo,"Sesión y certificación E1, perfil 1, cohorte 30",Resultado de la ficha de familia y del paquete original; registro individual por código/ventana,"No duplicar padres, informes, ingeniería ni cobertura; no incluye horas de contraparte ni obras/adquisiciones del cliente","Dos sesiones de dos horas, ejercicio, registro individual y recuperación; máximo doce asistentes y sin interrumpir turnos.",José Lara Arce,12,A:2;Q:2;L:8,"Asignación y cuadrante integrado por código; entornos, usuarios y habilitaciones autorizados",RT-22.01--05; aforo propuesto,2027-11-10,2027-11-12,1.11.2.1.1;VERSION-E1,Recepción por etapa o control del periodo; no acredita ejecución,RT-22.01--05; aforo propuesto
1.11.7.1.1.1.31,"Sesión y certificación E1, perfil 1, cohorte 31",1.11,E1 Desarrollo,"Sesión y certificación E1, perfil 1, cohorte 31",Resultado de la ficha de familia y del paquete original; registro individual por código/ventana,"No duplicar padres, informes, ingeniería ni cobertura; no incluye horas de contraparte ni obras/adquisiciones del cliente","Dos sesiones de dos horas, ejercicio, registro individual y recuperación; máximo doce asistentes y sin interrumpir turnos.",José Lara Arce,12,A:2;Q:2;L:8,"Asignación y cuadrante integrado por código; entornos, usuarios y habilitaciones autorizados",RT-22.01--05; aforo propuesto,2027-11-11,2027-11-15,1.11.2.1.1;VERSION-E1,Recepción por etapa o control del periodo; no acredita ejecución,RT-22.01--05; aforo propuesto
1.11.7.1.1.1.32,"Sesión y certificación E1, perfil 1, cohorte 32",1.11,E1 Desarrollo,"Sesión y certificación E1, perfil 1, cohorte 32",Resultado de la ficha de familia y del paquete original; registro individual por código/ventana,"No duplicar padres, informes, ingeniería ni cobertura; no incluye horas de contraparte ni obras/adquisiciones del cliente","Dos sesiones de dos horas, ejercicio, registro individual y recuperación; máximo doce asistentes y sin interrumpir turnos.",José Lara Arce,12,A:2;Q:2;L:8,"Asignación y cuadrante integrado por código; entornos, usuarios y habilitaciones autorizados",RT-22.01--05; aforo propuesto,2027-11-12,2027-11-16,1.11.2.1.1;VERSION-E1,Recepción por etapa o control del periodo; no acredita ejecución,RT-22.01--05; aforo propuesto
1.11.7.1.1.1.33,"Sesión y certificación E1, perfil 1, cohorte 33",1.11,E1 Desarrollo,"Sesión y certificación E1, perfil 1, cohorte 33",Resultado de la ficha de familia y del paquete original; registro individual por código/ventana,"No duplicar padres, informes, ingeniería ni cobertura; no incluye horas de contraparte ni obras/adquisiciones del cliente","Dos sesiones de dos horas, ejercicio, registro individual y recuperación; máximo doce asistentes y sin interrumpir turnos.",José Lara Arce,12,A:2;Q:2;L:8,"Asignación y cuadrante integrado por código; entornos, usuarios y habilitaciones autorizados",RT-22.01--05; aforo propuesto,2027-11-16,2027-11-17,1.11.2.1.1;VERSION-E1,Recepción por etapa o control del periodo; no acredita ejecución,RT-22.01--05; aforo propuesto
1.11.7.1.1.1.34,"Sesión y certificación E1, perfil 1, cohorte 34",1.11,E1 Desarrollo,"Sesión y certificación E1, perfil 1, cohorte 34",Resultado de la ficha de familia y del paquete original; registro individual por código/ventana,"No duplicar padres, informes, ingeniería ni cobertura; no incluye horas de contraparte ni obras/adquisiciones del cliente","Dos sesiones de dos horas, ejercicio, registro individual y recuperación; máximo doce asistentes y sin interrumpir turnos.",José Lara Arce,12,A:2;Q:2;L:8,"Asignación y cuadrante integrado por código; entornos, usuarios y habilitaciones autorizados",RT-22.01--05; aforo propuesto,2027-11-16,2027-11-17,1.11.2.1.1;VERSION-E1,Recepción por etapa o control del periodo; no acredita ejecución,RT-22.01--05; aforo propuesto
1.11.7.1.1.1.35,"Sesión y certificación E1, perfil 1, cohorte 35",1.11,E1 Desarrollo,"Sesión y certificación E1, perfil 1, cohorte 35",Resultado de la ficha de familia y del paquete original; registro individual por código/ventana,"No duplicar padres, informes, ingeniería ni cobertura; no incluye horas de contraparte ni obras/adquisiciones del cliente","Dos sesiones de dos horas, ejercicio, registro individual y recuperación; máximo doce asistentes y sin interrumpir turnos.",José Lara Arce,12,A:2;Q:2;L:8,"Asignación y cuadrante integrado por código; entornos, usuarios y habilitaciones autorizados",RT-22.01--05; aforo propuesto,2027-11-16,2027-11-17,1.11.2.1.1;VERSION-E1,Recepción por etapa o control del periodo; no acredita ejecución,RT-22.01--05; aforo propuesto
1.11.7.1.1.1.36,"Sesión y certificación E1, perfil 1, cohorte 36",1.11,E1 Desarrollo,"Sesión y certificación E1, perfil 1, cohorte 36",Resultado de la ficha de familia y del paquete original; registro individual por código/ventana,"No duplicar padres, informes, ingeniería ni cobertura; no incluye horas de contraparte ni obras/adquisiciones del cliente","Dos sesiones de dos horas, ejercicio, registro individual y recuperación; máximo doce asistentes y sin interrumpir turnos.",José Lara Arce,12,A:2;Q:2;L:8,"Asignación y cuadrante integrado por código; entornos, usuarios y habilitaciones autorizados",RT-22.01--05; aforo propuesto,2027-11-16,2027-11-17,1.11.2.1.1;VERSION-E1,Recepción por etapa o control del periodo; no acredita ejecución,RT-22.01--05; aforo propuesto
1.11.7.1.1.1.37,"Sesión y certificación E1, perfil 1, cohorte 37",1.11,E1 Desarrollo,"Sesión y certificación E1, perfil 1, cohorte 37",Resultado de la ficha de familia y del paquete original; registro individual por código/ventana,"No duplicar padres, informes, ingeniería ni cobertura; no incluye horas de contraparte ni obras/adquisiciones del cliente","Dos sesiones de dos horas, ejercicio, registro individual y recuperación; máximo doce asistentes y sin interrumpir turnos.",José Lara Arce,12,A:2;Q:2;L:8,"Asignación y cuadrante integrado por código; entornos, usuarios y habilitaciones autorizados",RT-22.01--05; aforo propuesto,2027-11-17,2027-11-18,1.11.2.1.1;VERSION-E1,Recepción por etapa o control del periodo; no acredita ejecución,RT-22.01--05; aforo propuesto
1.11.7.1.1.1.38,"Sesión y certificación E1, perfil 1, cohorte 38",1.11,E1 Desarrollo,"Sesión y certificación E1, perfil 1, cohorte 38",Resultado de la ficha de familia y del paquete original; registro individual por código/ventana,"No duplicar padres, informes, ingeniería ni cobertura; no incluye horas de contraparte ni obras/adquisiciones del cliente","Dos sesiones de dos horas, ejercicio, registro individual y recuperación; máximo doce asistentes y sin interrumpir turnos.",José Lara Arce,12,A:2;Q:2;L:8,"Asignación y cuadrante integrado por código; entornos, usuarios y habilitaciones autorizados",RT-22.01--05; aforo propuesto,2027-11-17,2027-11-18,1.11.2.1.1;VERSION-E1,Recepción por etapa o control del periodo; no acredita ejecución,RT-22.01--05; aforo propuesto
1.11.7.1.1.1.39,"Sesión y certificación E1, perfil 1, cohorte 39",1.11,E1 Desarrollo,"Sesión y certificación E1, perfil 1, cohorte 39",Resultado de la ficha de familia y del paquete original; registro individual por código/ventana,"No duplicar padres, informes, ingeniería ni cobertura; no incluye horas de contraparte ni obras/adquisiciones del cliente","Dos sesiones de dos horas, ejercicio, registro individual y recuperación; máximo doce asistentes y sin interrumpir turnos.",José Lara Arce,12,A:2;Q:2;L:8,"Asignación y cuadrante integrado por código; entornos, usuarios y habilitaciones autorizados",RT-22.01--05; aforo propuesto,2027-11-17,2027-11-18,1.11.2.1.1;VERSION-E1,Recepción por etapa o control del periodo; no acredita ejecución,RT-22.01--05; aforo propuesto
1.11.7.1.1.1.40,"Sesión y certificación E1, perfil 1, cohorte 40",1.11,E1 Desarrollo,"Sesión y certificación E1, perfil 1, cohorte 40",Resultado de la ficha de familia y del paquete original; registro individual por código/ventana,"No duplicar padres, informes, ingeniería ni cobertura; no incluye horas de contraparte ni obras/adquisiciones del cliente","Dos sesiones de dos horas, ejercicio, registro individual y recuperación; máximo doce asistentes y sin interrumpir turnos.",José Lara Arce,12,A:2;Q:2;L:8,"Asignación y cuadrante integrado por código; entornos, usuarios y habilitaciones autorizados",RT-22.01--05; aforo propuesto,2027-11-17,2027-11-19,1.11.2.1.1;VERSION-E1,Recepción por etapa o control del periodo; no acredita ejecución,RT-22.01--05; aforo propuesto
1.11.7.1.1.1.41,"Sesión y certificación E1, perfil 1, cohorte 41",1.11,E1 Desarrollo,"Sesión y certificación E1, perfil 1, cohorte 41",Resultado de la ficha de familia y del paquete original; registro individual por código/ventana,"No duplicar padres, informes, ingeniería ni cobertura; no incluye horas de contraparte ni obras/adquisiciones del cliente","Dos sesiones de dos horas, ejercicio, registro individual y recuperación; máximo doce asistentes y sin interrumpir turnos.",José Lara Arce,12,A:2;Q:2;L:8,"Asignación y cuadrante integrado por código; entornos, usuarios y habilitaciones autorizados",RT-22.01--05; aforo propuesto,2027-11-18,2027-11-19,1.11.2.1.1;VERSION-E1,Recepción por etapa o control del periodo; no acredita ejecución,RT-22.01--05; aforo propuesto
1.11.7.1.1.1.42,"Sesión y certificación E1, perfil 1, cohorte 42",1.11,E1 Desarrollo,"Sesión y certificación E1, perfil 1, cohorte 42",Resultado de la ficha de familia y del paquete original; registro individual por código/ventana,"No duplicar padres, informes, ingeniería ni cobertura; no incluye horas de contraparte ni obras/adquisiciones del cliente","Dos sesiones de dos horas, ejercicio, registro individual y recuperación; máximo doce asistentes y sin interrumpir turnos.",José Lara Arce,12,A:2;Q:2;L:8,"Asignación y cuadrante integrado por código; entornos, usuarios y habilitaciones autorizados",RT-22.01--05; aforo propuesto,2027-11-18,2027-11-19,1.11.2.1.1;VERSION-E1,Recepción por etapa o control del periodo; no acredita ejecución,RT-22.01--05; aforo propuesto
1.11.7.1.1.1.43,"Sesión y certificación E1, perfil 1, cohorte 43",1.11,E1 Desarrollo,"Sesión y certificación E1, perfil 1, cohorte 43",Resultado de la ficha de familia y del paquete original; registro individual por código/ventana,"No duplicar padres, informes, ingeniería ni cobertura; no incluye horas de contraparte ni obras/adquisiciones del cliente","Dos sesiones de dos horas, ejercicio, registro individual y recuperación; máximo doce asistentes y sin interrumpir turnos.",José Lara Arce,12,A:2;Q:2;L:8,"Asignación y cuadrante integrado por código; entornos, usuarios y habilitaciones autorizados",RT-22.01--05; aforo propuesto,2027-11-18,2027-11-19,1.11.2.1.1;VERSION-E1,Recepción por etapa o control del periodo; no acredita ejecución,RT-22.01--05; aforo propuesto
1.11.7.1.1.1.44,"Sesión y certificación E1, perfil 1, cohorte 44",1.11,E1 Desarrollo,"Sesión y certificación E1, perfil 1, cohorte 44",Resultado de la ficha de familia y del paquete original; registro individual por código/ventana,"No duplicar padres, informes, ingeniería ni cobertura; no incluye horas de contraparte ni obras/adquisiciones del cliente","Dos sesiones de dos horas, ejercicio, registro individual y recuperación; máximo doce asistentes y sin interrumpir turnos.",José Lara Arce,12,A:2;Q:2;L:8,"Asignación y cuadrante integrado por código; entornos, usuarios y habilitaciones autorizados",RT-22.01--05; aforo propuesto,2027-11-18,2027-11-19,1.11.2.1.1;VERSION-E1,Recepción por etapa o control del periodo; no acredita ejecución,RT-22.01--05; aforo propuesto
1.11.7.1.1.1.45,"Sesión y certificación E1, perfil 1, cohorte 45",1.11,E1 Desarrollo,"Sesión y certificación E1, perfil 1, cohorte 45",Resultado de la ficha de familia y del paquete original; registro individual por código/ventana,"No duplicar padres, informes, ingeniería ni cobertura; no incluye horas de contraparte ni obras/adquisiciones del cliente","Dos sesiones de dos horas, ejercicio, registro individual y recuperación; máximo doce asistentes y sin interrumpir turnos.",José Lara Arce,12,A:2;Q:2;L:8,"Asignación y cuadrante integrado por código; entornos, usuarios y habilitaciones autorizados",RT-22.01--05; aforo propuesto,2027-11-18,2027-11-22,1.11.2.1.1;VERSION-E1,Recepción por etapa o control del periodo; no acredita ejecución,RT-22.01--05; aforo propuesto
1.11.7.1.1.1.46,"Sesión y certificación E1, perfil 1, cohorte 46",1.11,E1 Desarrollo,"Sesión y certificación E1, perfil 1, cohorte 46",Resultado de la ficha de familia y del paquete original; registro individual por código/ventana,"No duplicar padres, informes, ingeniería ni cobertura; no incluye horas de contraparte ni obras/adquisiciones del cliente","Dos sesiones de dos horas, ejercicio, registro individual y recuperación; máximo doce asistentes y sin interrumpir turnos.",José Lara Arce,12,A:2;Q:2;L:8,"Asignación y cuadrante integrado por código; entornos, usuarios y habilitaciones autorizados",RT-22.01--05; aforo propuesto,2027-11-19,2027-11-22,1.11.2.1.1;VERSION-E1,Recepción por etapa o control del periodo; no acredita ejecución,RT-22.01--05; aforo propuesto
1.11.7.1.1.1.47,"Sesión y certificación E1, perfil 1, cohorte 47",1.11,E1 Desarrollo,"Sesión y certificación E1, perfil 1, cohorte 47",Resultado de la ficha de familia y del paquete original; registro individual por código/ventana,"No duplicar padres, informes, ingeniería ni cobertura; no incluye horas de contraparte ni obras/adquisiciones del cliente","Dos sesiones de dos horas, ejercicio, registro individual y recuperación; máximo doce asistentes y sin interrumpir turnos.",José Lara Arce,12,A:2;Q:2;L:8,"Asignación y cuadrante integrado por código; entornos, usuarios y habilitaciones autorizados",RT-22.01--05; aforo propuesto,2027-11-19,2027-11-22,1.11.2.1.1;VERSION-E1,Recepción por etapa o control del periodo; no acredita ejecución,RT-22.01--05; aforo propuesto
1.11.7.1.1.1.48,"Sesión y certificación E1, perfil 1, cohorte 48",1.11,E1 Desarrollo,"Sesión y certificación E1, perfil 1, cohorte 48",Resultado de la ficha de familia y del paquete original; registro individual por código/ventana,"No duplicar padres, informes, ingeniería ni cobertura; no incluye horas de contraparte ni obras/adquisiciones del cliente","Dos sesiones de dos horas, ejercicio, registro individual y recuperación; máximo doce asistentes y sin interrumpir turnos.",José Lara Arce,12,A:2;Q:2;L:8,"Asignación y cuadrante integrado por código; entornos, usuarios y habilitaciones autorizados",RT-22.01--05; aforo propuesto,2027-11-19,2027-11-22,1.11.2.1.1;VERSION-E1,Recepción por etapa o control del periodo; no acredita ejecución,RT-22.01--05; aforo propuesto
1.11.7.1.1.1.49,"Sesión y certificación E1, perfil 1, cohorte 49",1.11,E1 Desarrollo,"Sesión y certificación E1, perfil 1, cohorte 49",Resultado de la ficha de familia y del paquete original; registro individual por código/ventana,"No duplicar padres, informes, ingeniería ni cobertura; no incluye horas de contraparte ni obras/adquisiciones del cliente","Dos sesiones de dos horas, ejercicio, registro individual y recuperación; máximo doce asistentes y sin interrumpir turnos.",José Lara Arce,12,A:2;Q:2;L:8,"Asignación y cuadrante integrado por código; entornos, usuarios y habilitaciones autorizados",RT-22.01--05; aforo propuesto,2027-11-19,2027-11-23,1.11.2.1.1;VERSION-E1,Recepción por etapa o control del periodo; no acredita ejecución,RT-22.01--05; aforo propuesto
1.11.7.1.1.1.50,"Sesión y certificación E1, perfil 1, cohorte 50",1.11,E1 Desarrollo,"Sesión y certificación E1, perfil 1, cohorte 50",Resultado de la ficha de familia y del paquete original; registro individual por código/ventana,"No duplicar padres, informes, ingeniería ni cobertura; no incluye horas de contraparte ni obras/adquisiciones del cliente","Dos sesiones de dos horas, ejercicio, registro individual y recuperación; máximo doce asistentes y sin interrumpir turnos.",José Lara Arce,12,A:2;Q:2;L:8,"Asignación y cuadrante integrado por código; entornos, usuarios y habilitaciones autorizados",RT-22.01--05; aforo propuesto,2027-11-22,2027-11-24,1.11.2.1.1;VERSION-E1,Recepción por etapa o control del periodo; no acredita ejecución,RT-22.01--05; aforo propuesto
1.11.7.1.1.1.51,"Sesión y certificación E1, perfil 1, cohorte 51",1.11,E1 Desarrollo,"Sesión y certificación E1, perfil 1, cohorte 51",Resultado de la ficha de familia y del paquete original; registro individual por código/ventana,"No duplicar padres, informes, ingeniería ni cobertura; no incluye horas de contraparte ni obras/adquisiciones del cliente","Dos sesiones de dos horas, ejercicio, registro individual y recuperación; máximo doce asistentes y sin interrumpir turnos.",José Lara Arce,12,A:2;Q:2;L:8,"Asignación y cuadrante integrado por código; entornos, usuarios y habilitaciones autorizados",RT-22.01--05; aforo propuesto,2027-11-22,2027-11-24,1.11.2.1.1;VERSION-E1,Recepción por etapa o control del periodo; no acredita ejecución,RT-22.01--05; aforo propuesto
1.11.7.1.1.1.52,"Sesión y certificación E1, perfil 1, cohorte 52",1.11,E1 Desarrollo,"Sesión y certificación E1, perfil 1, cohorte 52",Resultado de la ficha de familia y del paquete original; registro individual por código/ventana,"No duplicar padres, informes, ingeniería ni cobertura; no incluye horas de contraparte ni obras/adquisiciones del cliente","Dos sesiones de dos horas, ejercicio, registro individual y recuperación; máximo doce asistentes y sin interrumpir turnos.",José Lara Arce,12,A:2;Q:2;L:8,"Asignación y cuadrante integrado por código; entornos, usuarios y habilitaciones autorizados",RT-22.01--05; aforo propuesto,2027-11-16,2027-11-17,1.11.2.1.1;VERSION-E1,Recepción por etapa o control del periodo; no acredita ejecución,RT-22.01--05; aforo propuesto
1.11.7.1.1.1.53,"Sesión y certificación E1, perfil 1, cohorte 53",1.11,E1 Desarrollo,"Sesión y certificación E1, perfil 1, cohorte 53",Resultado de la ficha de familia y del paquete original; registro individual por código/ventana,"No duplicar padres, informes, ingeniería ni cobertura; no incluye horas de contraparte ni obras/adquisiciones del cliente","Dos sesiones de dos horas, ejercicio, registro individual y recuperación; máximo doce asistentes y sin interrumpir turnos.",José Lara Arce,12,A:2;Q:2;L:8,"Asignación y cuadrante integrado por código; entornos, usuarios y habilitaciones autorizados",RT-22.01--05; aforo propuesto,2027-11-02,2027-11-03,1.11.2.1.1;VERSION-E1,Recepción por etapa o control del periodo; no acredita ejecución,RT-22.01--05; aforo propuesto
1.11.7.1.1.1.54,"Sesión y certificación E1, perfil 1, cohorte 54",1.11,E1 Desarrollo,"Sesión y certificación E1, perfil 1, cohorte 54",Resultado de la ficha de familia y del paquete original; registro individual por código/ventana,"No duplicar padres, informes, ingeniería ni cobertura; no incluye horas de contraparte ni obras/adquisiciones del cliente","Dos sesiones de dos horas, ejercicio, registro individual y recuperación; máximo doce asistentes y sin interrumpir turnos.",José Lara Arce,12,A:2;Q:2;L:8,"Asignación y cuadrante integrado por código; entornos, usuarios y habilitaciones autorizados",RT-22.01--05; aforo propuesto,2027-11-03,2027-11-04,1.11.2.1.1;VERSION-E1,Recepción por etapa o control del periodo; no acredita ejecución,RT-22.01--05; aforo propuesto
1.11.7.1.1.1.55,"Sesión y certificación E1, perfil 1, cohorte 55",1.11,E1 Desarrollo,"Sesión y certificación E1, perfil 1, cohorte 55",Resultado de la ficha de familia y del paquete original; registro individual por código/ventana,"No duplicar padres, informes, ingeniería ni cobertura; no incluye horas de contraparte ni obras/adquisiciones del cliente","Dos sesiones de dos horas, ejercicio, registro individual y recuperación; máximo doce asistentes y sin interrumpir turnos.",José Lara Arce,12,A:2;Q:2;L:8,"Asignación y cuadrante integrado por código; entornos, usuarios y habilitaciones autorizados",RT-22.01--05; aforo propuesto,2027-11-04,2027-11-05,1.11.2.1.1;VERSION-E1,Recepción por etapa o control del periodo; no acredita ejecución,RT-22.01--05; aforo propuesto
1.11.7.1.1.1.56,"Sesión y certificación E1, perfil 1, cohorte 56",1.11,E1 Desarrollo,"Sesión y certificación E1, perfil 1, cohorte 56",Resultado de la ficha de familia y del paquete original; registro individual por código/ventana,"No duplicar padres, informes, ingeniería ni cobertura; no incluye horas de contraparte ni obras/adquisiciones del cliente","Dos sesiones de dos horas, ejercicio, registro individual y recuperación; máximo doce asistentes y sin interrumpir turnos.",José Lara Arce,12,A:2;Q:2;L:8,"Asignación y cuadrante integrado por código; entornos, usuarios y habilitaciones autorizados",RT-22.01--05; aforo propuesto,2027-11-05,2027-11-08,1.11.2.1.1;VERSION-E1,Recepción por etapa o control del periodo; no acredita ejecución,RT-22.01--05; aforo propuesto
1.11.7.1.1.1.57,"Sesión y certificación E1, perfil 1, cohorte 57",1.11,E1 Desarrollo,"Sesión y certificación E1, perfil 1, cohorte 57",Resultado de la ficha de familia y del paquete original; registro individual por código/ventana,"No duplicar padres, informes, ingeniería ni cobertura; no incluye horas de contraparte ni obras/adquisiciones del cliente","Dos sesiones de dos horas, ejercicio, registro individual y recuperación; máximo doce asistentes y sin interrumpir turnos.",José Lara Arce,12,A:2;Q:2;L:8,"Asignación y cuadrante integrado por código; entornos, usuarios y habilitaciones autorizados",RT-22.01--05; aforo propuesto,2027-11-08,2027-11-09,1.11.2.1.1;VERSION-E1,Recepción por etapa o control del periodo; no acredita ejecución,RT-22.01--05; aforo propuesto
1.11.7.1.1.1.58,"Sesión y certificación E1, perfil 1, cohorte 58",1.11,E1 Desarrollo,"Sesión y certificación E1, perfil 1, cohorte 58",Resultado de la ficha de familia y del paquete original; registro individual por código/ventana,"No duplicar padres, informes, ingeniería ni cobertura; no incluye horas de contraparte ni obras/adquisiciones del cliente","Dos sesiones de dos horas, ejercicio, registro individual y recuperación; máximo doce asistentes y sin interrumpir turnos.",José Lara Arce,12,A:2;Q:2;L:8,"Asignación y cuadrante integrado por código; entornos, usuarios y habilitaciones autorizados",RT-22.01--05; aforo propuesto,2027-11-09,2027-11-10,1.11.2.1.1;VERSION-E1,Recepción por etapa o control del periodo; no acredita ejecución,RT-22.01--05; aforo propuesto
1.11.7.1.1.1.59,"Sesión y certificación E1, perfil 1, cohorte 59",1.11,E1 Desarrollo,"Sesión y certificación E1, perfil 1, cohorte 59",Resultado de la ficha de familia y del paquete original; registro individual por código/ventana,"No duplicar padres, informes, ingeniería ni cobertura; no incluye horas de contraparte ni obras/adquisiciones del cliente","Dos sesiones de dos horas, ejercicio, registro individual y recuperación; máximo doce asistentes y sin interrumpir turnos.",José Lara Arce,12,A:2;Q:2;L:8,"Asignación y cuadrante integrado por código; entornos, usuarios y habilitaciones autorizados",RT-22.01--05; aforo propuesto,2027-11-16,2027-11-17,1.11.2.1.1;VERSION-E1,Recepción por etapa o control del periodo; no acredita ejecución,RT-22.01--05; aforo propuesto
1.11.7.1.1.1.60,"Sesión y certificación E1, perfil 1, cohorte 60",1.11,E1 Desarrollo,"Sesión y certificación E1, perfil 1, cohorte 60",Resultado de la ficha de familia y del paquete original; registro individual por código/ventana,"No duplicar padres, informes, ingeniería ni cobertura; no incluye horas de contraparte ni obras/adquisiciones del cliente","Dos sesiones de dos horas, ejercicio, registro individual y recuperación; máximo doce asistentes y sin interrumpir turnos.",José Lara Arce,12,A:2;Q:2;L:8,"Asignación y cuadrante integrado por código; entornos, usuarios y habilitaciones autorizados",RT-22.01--05; aforo propuesto,2027-11-18,2027-11-19,1.11.2.1.1;VERSION-E1,Recepción por etapa o control del periodo; no acredita ejecución,RT-22.01--05; aforo propuesto
1.11.7.1.1.1.61,"Sesión y certificación E1, perfil 1, cohorte 61",1.11,E1 Desarrollo,"Sesión y certificación E1, perfil 1, cohorte 61",Resultado de la ficha de familia y del paquete original; registro individual por código/ventana,"No duplicar padres, informes, ingeniería ni cobertura; no incluye horas de contraparte ni obras/adquisiciones del cliente","Dos sesiones de dos horas, ejercicio, registro individual y recuperación; máximo doce asistentes y sin interrumpir turnos.",José Lara Arce,12,A:2;Q:2;L:8,"Asignación y cuadrante integrado por código; entornos, usuarios y habilitaciones autorizados",RT-22.01--05; aforo propuesto,2027-11-19,2027-11-22,1.11.2.1.1;VERSION-E1,Recepción por etapa o control del periodo; no acredita ejecución,RT-22.01--05; aforo propuesto
1.11.7.1.1.1.62,"Sesión y certificación E1, perfil 1, cohorte 62",1.11,E1 Desarrollo,"Sesión y certificación E1, perfil 1, cohorte 62",Resultado de la ficha de familia y del paquete original; registro individual por código/ventana,"No duplicar padres, informes, ingeniería ni cobertura; no incluye horas de contraparte ni obras/adquisiciones del cliente","Dos sesiones de dos horas, ejercicio, registro individual y recuperación; máximo doce asistentes y sin interrumpir turnos.",José Lara Arce,12,A:2;Q:2;L:8,"Asignación y cuadrante integrado por código; entornos, usuarios y habilitaciones autorizados",RT-22.01--05; aforo propuesto,2027-11-22,2027-11-24,1.11.2.1.1;VERSION-E1,Recepción por etapa o control del periodo; no acredita ejecución,RT-22.01--05; aforo propuesto
1.11.7.1.1.1.63,"Sesión y certificación E1, perfil 1, cohorte 63",1.11,E1 Desarrollo,"Sesión y certificación E1, perfil 1, cohorte 63",Resultado de la ficha de familia y del paquete original; registro individual por código/ventana,"No duplicar padres, informes, ingeniería ni cobertura; no incluye horas de contraparte ni obras/adquisiciones del cliente","Dos sesiones de dos horas, ejercicio, registro individual y recuperación; máximo doce asistentes y sin interrumpir turnos.",José Lara Arce,12,A:2;Q:2;L:8,"Asignación y cuadrante integrado por código; entornos, usuarios y habilitaciones autorizados",RT-22.01--05; aforo propuesto,2027-11-03,2027-11-04,1.11.2.1.1;VERSION-E1,Recepción por etapa o control del periodo; no acredita ejecución,RT-22.01--05; aforo propuesto
1.11.7.1.1.1.64,"Sesión y certificación E1, perfil 1, cohorte 64",1.11,E1 Desarrollo,"Sesión y certificación E1, perfil 1, cohorte 64",Resultado de la ficha de familia y del paquete original; registro individual por código/ventana,"No duplicar padres, informes, ingeniería ni cobertura; no incluye horas de contraparte ni obras/adquisiciones del cliente","Dos sesiones de dos horas, ejercicio, registro individual y recuperación; máximo doce asistentes y sin interrumpir turnos.",José Lara Arce,12,A:2;Q:2;L:8,"Asignación y cuadrante integrado por código; entornos, usuarios y habilitaciones autorizados",RT-22.01--05; aforo propuesto,2027-11-04,2027-11-05,1.11.2.1.1;VERSION-E1,Recepción por etapa o control del periodo; no acredita ejecución,RT-22.01--05; aforo propuesto
1.11.7.1.1.1.65,"Sesión y certificación E1, perfil 1, cohorte 65",1.11,E1 Desarrollo,"Sesión y certificación E1, perfil 1, cohorte 65",Resultado de la ficha de familia y del paquete original; registro individual por código/ventana,"No duplicar padres, informes, ingeniería ni cobertura; no incluye horas de contraparte ni obras/adquisiciones del cliente","Dos sesiones de dos horas, ejercicio, registro individual y recuperación; máximo doce asistentes y sin interrumpir turnos.",José Lara Arce,12,A:2;Q:2;L:8,"Asignación y cuadrante integrado por código; entornos, usuarios y habilitaciones autorizados",RT-22.01--05; aforo propuesto,2027-11-05,2027-11-08,1.11.2.1.1;VERSION-E1,Recepción por etapa o control del periodo; no acredita ejecución,RT-22.01--05; aforo propuesto
1.11.7.1.1.1.66,"Sesión y certificación E1, perfil 1, cohorte 66",1.11,E1 Desarrollo,"Sesión y certificación E1, perfil 1, cohorte 66",Resultado de la ficha de familia y del paquete original; registro individual por código/ventana,"No duplicar padres, informes, ingeniería ni cobertura; no incluye horas de contraparte ni obras/adquisiciones del cliente","Dos sesiones de dos horas, ejercicio, registro individual y recuperación; máximo doce asistentes y sin interrumpir turnos.",José Lara Arce,12,A:2;Q:2;L:8,"Asignación y cuadrante integrado por código; entornos, usuarios y habilitaciones autorizados",RT-22.01--05; aforo propuesto,2027-11-08,2027-11-10,1.11.2.1.1;VERSION-E1,Recepción por etapa o control del periodo; no acredita ejecución,RT-22.01--05; aforo propuesto
1.11.7.1.1.1.67,"Sesión y certificación E1, perfil 1, cohorte 67",1.11,E1 Desarrollo,"Sesión y certificación E1, perfil 1, cohorte 67",Resultado de la ficha de familia y del paquete original; registro individual por código/ventana,"No duplicar padres, informes, ingeniería ni cobertura; no incluye horas de contraparte ni obras/adquisiciones del cliente","Dos sesiones de dos horas, ejercicio, registro individual y recuperación; máximo doce asistentes y sin interrumpir turnos.",José Lara Arce,12,A:2;Q:2;L:8,"Asignación y cuadrante integrado por código; entornos, usuarios y habilitaciones autorizados",RT-22.01--05; aforo propuesto,2027-11-09,2027-11-11,1.11.2.1.1;VERSION-E1,Recepción por etapa o control del periodo; no acredita ejecución,RT-22.01--05; aforo propuesto
1.11.7.1.1.1.68,"Sesión y certificación E1, perfil 1, cohorte 68",1.11,E1 Desarrollo,"Sesión y certificación E1, perfil 1, cohorte 68",Resultado de la ficha de familia y del paquete original; registro individual por código/ventana,"No duplicar padres, informes, ingeniería ni cobertura; no incluye horas de contraparte ni obras/adquisiciones del cliente","Dos sesiones de dos horas, ejercicio, registro individual y recuperación; máximo doce asistentes y sin interrumpir turnos.",José Lara Arce,12,A:2;Q:2;L:8,"Asignación y cuadrante integrado por código; entornos, usuarios y habilitaciones autorizados",RT-22.01--05; aforo propuesto,2027-11-10,2027-11-12,1.11.2.1.1;VERSION-E1,Recepción por etapa o control del periodo; no acredita ejecución,RT-22.01--05; aforo propuesto
1.11.7.1.1.1.69,"Sesión y certificación E1, perfil 1, cohorte 69",1.11,E1 Desarrollo,"Sesión y certificación E1, perfil 1, cohorte 69",Resultado de la ficha de familia y del paquete original; registro individual por código/ventana,"No duplicar padres, informes, ingeniería ni cobertura; no incluye horas de contraparte ni obras/adquisiciones del cliente","Dos sesiones de dos horas, ejercicio, registro individual y recuperación; máximo doce asistentes y sin interrumpir turnos.",José Lara Arce,12,A:2;Q:2;L:8,"Asignación y cuadrante integrado por código; entornos, usuarios y habilitaciones autorizados",RT-22.01--05; aforo propuesto,2027-11-17,2027-11-18,1.11.2.1.1;VERSION-E1,Recepción por etapa o control del periodo; no acredita ejecución,RT-22.01--05; aforo propuesto
1.11.7.1.1.1.70,"Sesión y certificación E1, perfil 1, cohorte 70",1.11,E1 Desarrollo,"Sesión y certificación E1, perfil 1, cohorte 70",Resultado de la ficha de familia y del paquete original; registro individual por código/ventana,"No duplicar padres, informes, ingeniería ni cobertura; no incluye horas de contraparte ni obras/adquisiciones del cliente","Dos sesiones de dos horas, ejercicio, registro individual y recuperación; máximo doce asistentes y sin interrumpir turnos.",José Lara Arce,12,A:2;Q:2;L:8,"Asignación y cuadrante integrado por código; entornos, usuarios y habilitaciones autorizados",RT-22.01--05; aforo propuesto,2027-11-19,2027-11-22,1.11.2.1.1;VERSION-E1,Recepción por etapa o control del periodo; no acredita ejecución,RT-22.01--05; aforo propuesto
1.11.7.1.1.1.71,"Sesión y certificación E1, perfil 1, cohorte 71",1.11,E1 Desarrollo,"Sesión y certificación E1, perfil 1, cohorte 71",Resultado de la ficha de familia y del paquete original; registro individual por código/ventana,"No duplicar padres, informes, ingeniería ni cobertura; no incluye horas de contraparte ni obras/adquisiciones del cliente","Dos sesiones de dos horas, ejercicio, registro individual y recuperación; máximo doce asistentes y sin interrumpir turnos.",José Lara Arce,12,A:2;Q:2;L:8,"Asignación y cuadrante integrado por código; entornos, usuarios y habilitaciones autorizados",RT-22.01--05; aforo propuesto,2027-11-22,2027-11-23,1.11.2.1.1;VERSION-E1,Recepción por etapa o control del periodo; no acredita ejecución,RT-22.01--05; aforo propuesto
1.11.7.1.1.1.72,"Sesión y certificación E1, perfil 1, cohorte 72",1.11,E1 Desarrollo,"Sesión y certificación E1, perfil 1, cohorte 72",Resultado de la ficha de familia y del paquete original; registro individual por código/ventana,"No duplicar padres, informes, ingeniería ni cobertura; no incluye horas de contraparte ni obras/adquisiciones del cliente","Dos sesiones de dos horas, ejercicio, registro individual y recuperación; máximo doce asistentes y sin interrumpir turnos.",José Lara Arce,12,A:2;Q:2;L:8,"Asignación y cuadrante integrado por código; entornos, usuarios y habilitaciones autorizados",RT-22.01--05; aforo propuesto,2027-11-16,2027-11-17,1.11.2.1.1;VERSION-E1,Recepción por etapa o control del periodo; no acredita ejecución,RT-22.01--05; aforo propuesto
1.11.7.1.1.1.73,"Sesión y certificación E1, perfil 1, cohorte 73",1.11,E1 Desarrollo,"Sesión y certificación E1, perfil 1, cohorte 73",Resultado de la ficha de familia y del paquete original; registro individual por código/ventana,"No duplicar padres, informes, ingeniería ni cobertura; no incluye horas de contraparte ni obras/adquisiciones del cliente","Dos sesiones de dos horas, ejercicio, registro individual y recuperación; máximo doce asistentes y sin interrumpir turnos.",José Lara Arce,12,A:2;Q:2;L:8,"Asignación y cuadrante integrado por código; entornos, usuarios y habilitaciones autorizados",RT-22.01--05; aforo propuesto,2027-11-02,2027-11-03,1.11.2.1.1;VERSION-E1,Recepción por etapa o control del periodo; no acredita ejecución,RT-22.01--05; aforo propuesto
1.11.7.1.1.1.74,"Sesión y certificación E1, perfil 1, cohorte 74",1.11,E1 Desarrollo,"Sesión y certificación E1, perfil 1, cohorte 74",Resultado de la ficha de familia y del paquete original; registro individual por código/ventana,"No duplicar padres, informes, ingeniería ni cobertura; no incluye horas de contraparte ni obras/adquisiciones del cliente","Dos sesiones de dos horas, ejercicio, registro individual y recuperación; máximo doce asistentes y sin interrumpir turnos.",José Lara Arce,12,A:2;Q:2;L:8,"Asignación y cuadrante integrado por código; entornos, usuarios y habilitaciones autorizados",RT-22.01--05; aforo propuesto,2027-11-03,2027-11-04,1.11.2.1.1;VERSION-E1,Recepción por etapa o control del periodo; no acredita ejecución,RT-22.01--05; aforo propuesto
1.11.7.1.1.1.75,"Sesión y certificación E1, perfil 1, cohorte 75",1.11,E1 Desarrollo,"Sesión y certificación E1, perfil 1, cohorte 75",Resultado de la ficha de familia y del paquete original; registro individual por código/ventana,"No duplicar padres, informes, ingeniería ni cobertura; no incluye horas de contraparte ni obras/adquisiciones del cliente","Dos sesiones de dos horas, ejercicio, registro individual y recuperación; máximo doce asistentes y sin interrumpir turnos.",José Lara Arce,12,A:2;Q:2;L:8,"Asignación y cuadrante integrado por código; entornos, usuarios y habilitaciones autorizados",RT-22.01--05; aforo propuesto,2027-11-04,2027-11-05,1.11.2.1.1;VERSION-E1,Recepción por etapa o control del periodo; no acredita ejecución,RT-22.01--05; aforo propuesto
1.11.7.1.1.1.76,"Sesión y certificación E1, perfil 1, cohorte 76",1.11,E1 Desarrollo,"Sesión y certificación E1, perfil 1, cohorte 76",Resultado de la ficha de familia y del paquete original; registro individual por código/ventana,"No duplicar padres, informes, ingeniería ni cobertura; no incluye horas de contraparte ni obras/adquisiciones del cliente","Dos sesiones de dos horas, ejercicio, registro individual y recuperación; máximo doce asistentes y sin interrumpir turnos.",José Lara Arce,12,A:2;Q:2;L:8,"Asignación y cuadrante integrado por código; entornos, usuarios y habilitaciones autorizados",RT-22.01--05; aforo propuesto,2027-11-05,2027-11-08,1.11.2.1.1;VERSION-E1,Recepción por etapa o control del periodo; no acredita ejecución,RT-22.01--05; aforo propuesto
1.11.7.1.1.1.77,"Sesión y certificación E1, perfil 1, cohorte 77",1.11,E1 Desarrollo,"Sesión y certificación E1, perfil 1, cohorte 77",Resultado de la ficha de familia y del paquete original; registro individual por código/ventana,"No duplicar padres, informes, ingeniería ni cobertura; no incluye horas de contraparte ni obras/adquisiciones del cliente","Dos sesiones de dos horas, ejercicio, registro individual y recuperación; máximo doce asistentes y sin interrumpir turnos.",José Lara Arce,12,A:2;Q:2;L:8,"Asignación y cuadrante integrado por código; entornos, usuarios y habilitaciones autorizados",RT-22.01--05; aforo propuesto,2027-11-08,2027-11-09,1.11.2.1.1;VERSION-E1,Recepción por etapa o control del periodo; no acredita ejecución,RT-22.01--05; aforo propuesto
1.11.7.1.1.1.78,"Sesión y certificación E1, perfil 1, cohorte 78",1.11,E1 Desarrollo,"Sesión y certificación E1, perfil 1, cohorte 78",Resultado de la ficha de familia y del paquete original; registro individual por código/ventana,"No duplicar padres, informes, ingeniería ni cobertura; no incluye horas de contraparte ni obras/adquisiciones del cliente","Dos sesiones de dos horas, ejercicio, registro individual y recuperación; máximo doce asistentes y sin interrumpir turnos.",José Lara Arce,12,A:2;Q:2;L:8,"Asignación y cuadrante integrado por código; entornos, usuarios y habilitaciones autorizados",RT-22.01--05; aforo propuesto,2027-11-09,2027-11-10,1.11.2.1.1;VERSION-E1,Recepción por etapa o control del periodo; no acredita ejecución,RT-22.01--05; aforo propuesto
1.11.7.1.1.1.79,"Sesión y certificación E1, perfil 1, cohorte 79",1.11,E1 Desarrollo,"Sesión y certificación E1, perfil 1, cohorte 79",Resultado de la ficha de familia y del paquete original; registro individual por código/ventana,"No duplicar padres, informes, ingeniería ni cobertura; no incluye horas de contraparte ni obras/adquisiciones del cliente","Dos sesiones de dos horas, ejercicio, registro individual y recuperación; máximo doce asistentes y sin interrumpir turnos.",José Lara Arce,12,A:2;Q:2;L:8,"Asignación y cuadrante integrado por código; entornos, usuarios y habilitaciones autorizados",RT-22.01--05; aforo propuesto,2027-11-16,2027-11-17,1.11.2.1.1;VERSION-E1,Recepción por etapa o control del periodo; no acredita ejecución,RT-22.01--05; aforo propuesto
1.11.7.1.1.1.80,"Sesión y certificación E1, perfil 1, cohorte 80",1.11,E1 Desarrollo,"Sesión y certificación E1, perfil 1, cohorte 80",Resultado de la ficha de familia y del paquete original; registro individual por código/ventana,"No duplicar padres, informes, ingeniería ni cobertura; no incluye horas de contraparte ni obras/adquisiciones del cliente","Dos sesiones de dos horas, ejercicio, registro individual y recuperación; máximo doce asistentes y sin interrumpir turnos.",José Lara Arce,12,A:2;Q:2;L:8,"Asignación y cuadrante integrado por código; entornos, usuarios y habilitaciones autorizados",RT-22.01--05; aforo propuesto,2027-11-18,2027-11-19,1.11.2.1.1;VERSION-E1,Recepción por etapa o control del periodo; no acredita ejecución,RT-22.01--05; aforo propuesto
1.11.7.1.1.1.81,"Sesión y certificación E1, perfil 1, cohorte 81",1.11,E1 Desarrollo,"Sesión y certificación E1, perfil 1, cohorte 81",Resultado de la ficha de familia y del paquete original; registro individual por código/ventana,"No duplicar padres, informes, ingeniería ni cobertura; no incluye horas de contraparte ni obras/adquisiciones del cliente","Dos sesiones de dos horas, ejercicio, registro individual y recuperación; máximo doce asistentes y sin interrumpir turnos.",José Lara Arce,12,A:2;Q:2;L:8,"Asignación y cuadrante integrado por código; entornos, usuarios y habilitaciones autorizados",RT-22.01--05; aforo propuesto,2027-11-19,2027-11-22,1.11.2.1.1;VERSION-E1,Recepción por etapa o control del periodo; no acredita ejecución,RT-22.01--05; aforo propuesto
1.11.7.1.1.1.82,"Sesión y certificación E1, perfil 1, cohorte 82",1.11,E1 Desarrollo,"Sesión y certificación E1, perfil 1, cohorte 82",Resultado de la ficha de familia y del paquete original; registro individual por código/ventana,"No duplicar padres, informes, ingeniería ni cobertura; no incluye horas de contraparte ni obras/adquisiciones del cliente","Dos sesiones de dos horas, ejercicio, registro individual y recuperación; máximo doce asistentes y sin interrumpir turnos.",José Lara Arce,12,A:2;Q:2;L:8,"Asignación y cuadrante integrado por código; entornos, usuarios y habilitaciones autorizados",RT-22.01--05; aforo propuesto,2027-11-22,2027-11-24,1.11.2.1.1;VERSION-E1,Recepción por etapa o control del periodo; no acredita ejecución,RT-22.01--05; aforo propuesto
1.11.7.1.1.1.83,"Sesión y certificación E1, perfil 1, cohorte 83",1.11,E1 Desarrollo,"Sesión y certificación E1, perfil 1, cohorte 83",Resultado de la ficha de familia y del paquete original; registro individual por código/ventana,"No duplicar padres, informes, ingeniería ni cobertura; no incluye horas de contraparte ni obras/adquisiciones del cliente","Dos sesiones de dos horas, ejercicio, registro individual y recuperación; máximo doce asistentes y sin interrumpir turnos.",José Lara Arce,12,A:2;Q:2;L:8,"Asignación y cuadrante integrado por código; entornos, usuarios y habilitaciones autorizados",RT-22.01--05; aforo propuesto,2027-11-03,2027-11-04,1.11.2.1.1;VERSION-E1,Recepción por etapa o control del periodo; no acredita ejecución,RT-22.01--05; aforo propuesto
1.11.7.1.1.1.84,"Sesión y certificación E1, perfil 1, cohorte 84",1.11,E1 Desarrollo,"Sesión y certificación E1, perfil 1, cohorte 84",Resultado de la ficha de familia y del paquete original; registro individual por código/ventana,"No duplicar padres, informes, ingeniería ni cobertura; no incluye horas de contraparte ni obras/adquisiciones del cliente","Dos sesiones de dos horas, ejercicio, registro individual y recuperación; máximo doce asistentes y sin interrumpir turnos.",José Lara Arce,12,A:2;Q:2;L:8,"Asignación y cuadrante integrado por código; entornos, usuarios y habilitaciones autorizados",RT-22.01--05; aforo propuesto,2027-11-05,2027-11-09,1.11.2.1.1;VERSION-E1,Recepción por etapa o control del periodo; no acredita ejecución,RT-22.01--05; aforo propuesto
1.11.7.1.1.1.85,"Sesión y certificación E1, perfil 1, cohorte 85",1.11,E1 Desarrollo,"Sesión y certificación E1, perfil 1, cohorte 85",Resultado de la ficha de familia y del paquete original; registro individual por código/ventana,"No duplicar padres, informes, ingeniería ni cobertura; no incluye horas de contraparte ni obras/adquisiciones del cliente","Dos sesiones de dos horas, ejercicio, registro individual y recuperación; máximo doce asistentes y sin interrumpir turnos.",José Lara Arce,12,A:2;Q:2;L:8,"Asignación y cuadrante integrado por código; entornos, usuarios y habilitaciones autorizados",RT-22.01--05; aforo propuesto,2027-11-09,2027-11-10,1.11.2.1.1;VERSION-E1,Recepción por etapa o control del periodo; no acredita ejecución,RT-22.01--05; aforo propuesto
1.11.7.1.1.1.86,"Sesión y certificación E1, perfil 1, cohorte 86",1.11,E1 Desarrollo,"Sesión y certificación E1, perfil 1, cohorte 86",Resultado de la ficha de familia y del paquete original; registro individual por código/ventana,"No duplicar padres, informes, ingeniería ni cobertura; no incluye horas de contraparte ni obras/adquisiciones del cliente","Dos sesiones de dos horas, ejercicio, registro individual y recuperación; máximo doce asistentes y sin interrumpir turnos.",José Lara Arce,12,A:2;Q:2;L:8,"Asignación y cuadrante integrado por código; entornos, usuarios y habilitaciones autorizados",RT-22.01--05; aforo propuesto,2027-11-19,2027-11-23,1.11.2.1.1;VERSION-E1,Recepción por etapa o control del periodo; no acredita ejecución,RT-22.01--05; aforo propuesto
1.11.7.1.1.1.87,"Sesión y certificación E1, perfil 1, cohorte 87",1.11,E1 Desarrollo,"Sesión y certificación E1, perfil 1, cohorte 87",Resultado de la ficha de familia y del paquete original; registro individual por código/ventana,"No duplicar padres, informes, ingeniería ni cobertura; no incluye horas de contraparte ni obras/adquisiciones del cliente","Dos sesiones de dos horas, ejercicio, registro individual y recuperación; máximo doce asistentes y sin interrumpir turnos.",José Lara Arce,12,A:2;Q:2;L:8,"Asignación y cuadrante integrado por código; entornos, usuarios y habilitaciones autorizados",RT-22.01--05; aforo propuesto,2027-11-04,2027-11-05,1.11.2.1.1;VERSION-E1,Recepción por etapa o control del periodo; no acredita ejecución,RT-22.01--05; aforo propuesto
1.11.7.1.1.1.88,"Sesión y certificación E1, perfil 1, cohorte 88",1.11,E1 Desarrollo,"Sesión y certificación E1, perfil 1, cohorte 88",Resultado de la ficha de familia y del paquete original; registro individual por código/ventana,"No duplicar padres, informes, ingeniería ni cobertura; no incluye horas de contraparte ni obras/adquisiciones del cliente","Dos sesiones de dos horas, ejercicio, registro individual y recuperación; máximo doce asistentes y sin interrumpir turnos.",José Lara Arce,12,A:2;Q:2;L:8,"Asignación y cuadrante integrado por código; entornos, usuarios y habilitaciones autorizados",RT-22.01--05; aforo propuesto,2027-11-10,2027-11-11,1.11.2.1.1;VERSION-E1,Recepción por etapa o control del periodo; no acredita ejecución,RT-22.01--05; aforo propuesto
1.11.7.1.1.1.89,"Sesión y certificación E1, perfil 1, cohorte 89",1.11,E1 Desarrollo,"Sesión y certificación E1, perfil 1, cohorte 89",Resultado de la ficha de familia y del paquete original; registro individual por código/ventana,"No duplicar padres, informes, ingeniería ni cobertura; no incluye horas de contraparte ni obras/adquisiciones del cliente","Dos sesiones de dos horas, ejercicio, registro individual y recuperación; máximo doce asistentes y sin interrumpir turnos.",José Lara Arce,12,A:2;Q:2;L:8,"Asignación y cuadrante integrado por código; entornos, usuarios y habilitaciones autorizados",RT-22.01--05; aforo propuesto,2027-11-11,2027-11-12,1.11.2.1.1;VERSION-E1,Recepción por etapa o control del periodo; no acredita ejecución,RT-22.01--05; aforo propuesto
1.11.7.1.1.1.90,"Sesión y certificación E1, perfil 1, cohorte 90",1.11,E1 Desarrollo,"Sesión y certificación E1, perfil 1, cohorte 90",Resultado de la ficha de familia y del paquete original; registro individual por código/ventana,"No duplicar padres, informes, ingeniería ni cobertura; no incluye horas de contraparte ni obras/adquisiciones del cliente","Dos sesiones de dos horas, ejercicio, registro individual y recuperación; máximo doce asistentes y sin interrumpir turnos.",José Lara Arce,12,A:2;Q:2;L:8,"Asignación y cuadrante integrado por código; entornos, usuarios y habilitaciones autorizados",RT-22.01--05; aforo propuesto,2027-11-18,2027-11-19,1.11.2.1.1;VERSION-E1,Recepción por etapa o control del periodo; no acredita ejecución,RT-22.01--05; aforo propuesto
1.11.7.1.1.1.91,"Sesión y certificación E1, perfil 1, cohorte 91",1.11,E1 Desarrollo,"Sesión y certificación E1, perfil 1, cohorte 91",Resultado de la ficha de familia y del paquete original; registro individual por código/ventana,"No duplicar padres, informes, ingeniería ni cobertura; no incluye horas de contraparte ni obras/adquisiciones del cliente","Dos sesiones de dos horas, ejercicio, registro individual y recuperación; máximo doce asistentes y sin interrumpir turnos.",José Lara Arce,12,A:2;Q:2;L:8,"Asignación y cuadrante integrado por código; entornos, usuarios y habilitaciones autorizados",RT-22.01--05; aforo propuesto,2027-11-16,2027-11-17,1.11.2.1.1;VERSION-E1,Recepción por etapa o control del periodo; no acredita ejecución,RT-22.01--05; aforo propuesto
1.11.7.1.1.1.92,"Sesión y certificación E1, perfil 1, cohorte 92",1.11,E1 Desarrollo,"Sesión y certificación E1, perfil 1, cohorte 92",Resultado de la ficha de familia y del paquete original; registro individual por código/ventana,"No duplicar padres, informes, ingeniería ni cobertura; no incluye horas de contraparte ni obras/adquisiciones del cliente","Dos sesiones de dos horas, ejercicio, registro individual y recuperación; máximo doce asistentes y sin interrumpir turnos.",José Lara Arce,12,A:2;Q:2;L:8,"Asignación y cuadrante integrado por código; entornos, usuarios y habilitaciones autorizados",RT-22.01--05; aforo propuesto,2027-11-02,2027-11-03,1.11.2.1.1;VERSION-E1,Recepción por etapa o control del periodo; no acredita ejecución,RT-22.01--05; aforo propuesto
1.11.7.1.1.1.93,"Sesión y certificación E1, perfil 1, cohorte 93",1.11,E1 Desarrollo,"Sesión y certificación E1, perfil 1, cohorte 93",Resultado de la ficha de familia y del paquete original; registro individual por código/ventana,"No duplicar padres, informes, ingeniería ni cobertura; no incluye horas de contraparte ni obras/adquisiciones del cliente","Dos sesiones de dos horas, ejercicio, registro individual y recuperación; máximo doce asistentes y sin interrumpir turnos.",José Lara Arce,12,A:2;Q:2;L:8,"Asignación y cuadrante integrado por código; entornos, usuarios y habilitaciones autorizados",RT-22.01--05; aforo propuesto,2027-11-03,2027-11-04,1.11.2.1.1;VERSION-E1,Recepción por etapa o control del periodo; no acredita ejecución,RT-22.01--05; aforo propuesto
1.11.7.1.1.1.94,"Sesión y certificación E1, perfil 1, cohorte 94",1.11,E1 Desarrollo,"Sesión y certificación E1, perfil 1, cohorte 94",Resultado de la ficha de familia y del paquete original; registro individual por código/ventana,"No duplicar padres, informes, ingeniería ni cobertura; no incluye horas de contraparte ni obras/adquisiciones del cliente","Dos sesiones de dos horas, ejercicio, registro individual y recuperación; máximo doce asistentes y sin interrumpir turnos.",José Lara Arce,12,A:2;Q:2;L:8,"Asignación y cuadrante integrado por código; entornos, usuarios y habilitaciones autorizados",RT-22.01--05; aforo propuesto,2027-11-04,2027-11-05,1.11.2.1.1;VERSION-E1,Recepción por etapa o control del periodo; no acredita ejecución,RT-22.01--05; aforo propuesto
1.11.7.1.1.1.95,"Sesión y certificación E1, perfil 1, cohorte 95",1.11,E1 Desarrollo,"Sesión y certificación E1, perfil 1, cohorte 95",Resultado de la ficha de familia y del paquete original; registro individual por código/ventana,"No duplicar padres, informes, ingeniería ni cobertura; no incluye horas de contraparte ni obras/adquisiciones del cliente","Dos sesiones de dos horas, ejercicio, registro individual y recuperación; máximo doce asistentes y sin interrumpir turnos.",José Lara Arce,12,A:2;Q:2;L:8,"Asignación y cuadrante integrado por código; entornos, usuarios y habilitaciones autorizados",RT-22.01--05; aforo propuesto,2027-11-05,2027-11-08,1.11.2.1.1;VERSION-E1,Recepción por etapa o control del periodo; no acredita ejecución,RT-22.01--05; aforo propuesto
1.11.7.1.1.1.96,"Sesión y certificación E1, perfil 1, cohorte 96",1.11,E1 Desarrollo,"Sesión y certificación E1, perfil 1, cohorte 96",Resultado de la ficha de familia y del paquete original; registro individual por código/ventana,"No duplicar padres, informes, ingeniería ni cobertura; no incluye horas de contraparte ni obras/adquisiciones del cliente","Dos sesiones de dos horas, ejercicio, registro individual y recuperación; máximo doce asistentes y sin interrumpir turnos.",José Lara Arce,12,A:2;Q:2;L:8,"Asignación y cuadrante integrado por código; entornos, usuarios y habilitaciones autorizados",RT-22.01--05; aforo propuesto,2027-11-08,2027-11-09,1.11.2.1.1;VERSION-E1,Recepción por etapa o control del periodo; no acredita ejecución,RT-22.01--05; aforo propuesto
1.11.7.1.1.1.97,"Sesión y certificación E1, perfil 1, cohorte 97",1.11,E1 Desarrollo,"Sesión y certificación E1, perfil 1, cohorte 97",Resultado de la ficha de familia y del paquete original; registro individual por código/ventana,"No duplicar padres, informes, ingeniería ni cobertura; no incluye horas de contraparte ni obras/adquisiciones del cliente","Dos sesiones de dos horas, ejercicio, registro individual y recuperación; máximo doce asistentes y sin interrumpir turnos.",José Lara Arce,12,A:2;Q:2;L:8,"Asignación y cuadrante integrado por código; entornos, usuarios y habilitaciones autorizados",RT-22.01--05; aforo propuesto,2027-11-09,2027-11-10,1.11.2.1.1;VERSION-E1,Recepción por etapa o control del periodo; no acredita ejecución,RT-22.01--05; aforo propuesto
1.11.7.1.1.1.98,"Sesión y certificación E1, perfil 1, cohorte 98",1.11,E1 Desarrollo,"Sesión y certificación E1, perfil 1, cohorte 98",Resultado de la ficha de familia y del paquete original; registro individual por código/ventana,"No duplicar padres, informes, ingeniería ni cobertura; no incluye horas de contraparte ni obras/adquisiciones del cliente","Dos sesiones de dos horas, ejercicio, registro individual y recuperación; máximo doce asistentes y sin interrumpir turnos.",José Lara Arce,12,A:2;Q:2;L:8,"Asignación y cuadrante integrado por código; entornos, usuarios y habilitaciones autorizados",RT-22.01--05; aforo propuesto,2027-11-16,2027-11-17,1.11.2.1.1;VERSION-E1,Recepción por etapa o control del periodo; no acredita ejecución,RT-22.01--05; aforo propuesto
1.11.7.1.1.1.99,"Sesión y certificación E1, perfil 1, cohorte 99",1.11,E1 Desarrollo,"Sesión y certificación E1, perfil 1, cohorte 99",Resultado de la ficha de familia y del paquete original; registro individual por código/ventana,"No duplicar padres, informes, ingeniería ni cobertura; no incluye horas de contraparte ni obras/adquisiciones del cliente","Dos sesiones de dos horas, ejercicio, registro individual y recuperación; máximo doce asistentes y sin interrumpir turnos.",José Lara Arce,12,A:2;Q:2;L:8,"Asignación y cuadrante integrado por código; entornos, usuarios y habilitaciones autorizados",RT-22.01--05; aforo propuesto,2027-11-17,2027-11-18,1.11.2.1.1;VERSION-E1,Recepción por etapa o control del periodo; no acredita ejecución,RT-22.01--05; aforo propuesto
1.11.7.1.1.1.100,"Sesión y certificación E1, perfil 1, cohorte 100",1.11,E1 Desarrollo,"Sesión y certificación E1, perfil 1, cohorte 100",Resultado de la ficha de familia y del paquete original; registro individual por código/ventana,"No duplicar padres, informes, ingeniería ni cobertura; no incluye horas de contraparte ni obras/adquisiciones del cliente","Dos sesiones de dos horas, ejercicio, registro individual y recuperación; máximo doce asistentes y sin interrumpir turnos.",José Lara Arce,12,A:2;Q:2;L:8,"Asignación y cuadrante integrado por código; entornos, usuarios y habilitaciones autorizados",RT-22.01--05; aforo propuesto,2027-11-05,2027-11-08,1.11.2.1.1;VERSION-E1,Recepción por etapa o control del periodo; no acredita ejecución,RT-22.01--05; aforo propuesto
1.11.7.1.2.1.1,"Sesión y certificación E1, perfil 2, cohorte 1",1.11,E1 Desarrollo,"Sesión y certificación E1, perfil 2, cohorte 1",Resultado de la ficha de familia y del paquete original; registro individual por código/ventana,"No duplicar padres, informes, ingeniería ni cobertura; no incluye horas de contraparte ni obras/adquisiciones del cliente","Dos sesiones de dos horas, ejercicio, registro individual y recuperación; máximo doce asistentes y sin interrumpir turnos.",José Lara Arce,12,A:2;Q:2;L:8,"Asignación y cuadrante integrado por código; entornos, usuarios y habilitaciones autorizados",RT-22.01--05; aforo propuesto,2027-11-18,2027-11-19,1.11.2.1.2;VERSION-E1,Recepción por etapa o control del periodo; no acredita ejecución,RT-22.01--05; aforo propuesto
1.11.7.1.2.1.2,"Sesión y certificación E1, perfil 2, cohorte 2",1.11,E1 Desarrollo,"Sesión y certificación E1, perfil 2, cohorte 2",Resultado de la ficha de familia y del paquete original; registro individual por código/ventana,"No duplicar padres, informes, ingeniería ni cobertura; no incluye horas de contraparte ni obras/adquisiciones del cliente","Dos sesiones de dos horas, ejercicio, registro individual y recuperación; máximo doce asistentes y sin interrumpir turnos.",José Lara Arce,12,A:2;Q:2;L:8,"Asignación y cuadrante integrado por código; entornos, usuarios y habilitaciones autorizados",RT-22.01--05; aforo propuesto,2027-11-19,2027-11-22,1.11.2.1.2;VERSION-E1,Recepción por etapa o control del periodo; no acredita ejecución,RT-22.01--05; aforo propuesto
1.11.7.1.3.1.1,"Sesión y certificación E1, perfil 3, cohorte 1",1.11,E1 Desarrollo,"Sesión y certificación E1, perfil 3, cohorte 1",Resultado de la ficha de familia y del paquete original; registro individual por código/ventana,"No duplicar padres, informes, ingeniería ni cobertura; no incluye horas de contraparte ni obras/adquisiciones del cliente","Dos sesiones de dos horas, ejercicio, registro individual y recuperación; máximo doce asistentes y sin interrumpir turnos.",José Lara Arce,12,A:2;Q:2;L:8,"Asignación y cuadrante integrado por código; entornos, usuarios y habilitaciones autorizados",RT-22.01--05; aforo propuesto,2027-11-22,2027-11-24,1.11.2.1.3;VERSION-E1,Recepción por etapa o control del periodo; no acredita ejecución,RT-22.01--05; aforo propuesto
1.11.7.1.4.1.1,"Sesión y certificación E1, perfil 4, cohorte 1",1.11,E1 Desarrollo,"Sesión y certificación E1, perfil 4, cohorte 1",Resultado de la ficha de familia y del paquete original; registro individual por código/ventana,"No duplicar padres, informes, ingeniería ni cobertura; no incluye horas de contraparte ni obras/adquisiciones del cliente","Dos sesiones de dos horas, ejercicio, registro individual y recuperación; máximo doce asistentes y sin interrumpir turnos.",José Lara Arce,12,A:2;Q:2;L:8,"Asignación y cuadrante integrado por código; entornos, usuarios y habilitaciones autorizados",RT-22.01--05; aforo propuesto,2027-11-03,2027-11-04,1.11.2.1.4;VERSION-E1,Recepción por etapa o control del periodo; no acredita ejecución,RT-22.01--05; aforo propuesto
1.11.7.1.5.1.1,"Sesión y certificación E1, perfil 5, cohorte 1",1.11,E1 Desarrollo,"Sesión y certificación E1, perfil 5, cohorte 1",Resultado de la ficha de familia y del paquete original; registro individual por código/ventana,"No duplicar padres, informes, ingeniería ni cobertura; no incluye horas de contraparte ni obras/adquisiciones del cliente","Dos sesiones de dos horas, ejercicio, registro individual y recuperación; máximo doce asistentes y sin interrumpir turnos.",José Lara Arce,12,A:2;Q:2;L:8,"Asignación y cuadrante integrado por código; entornos, usuarios y habilitaciones autorizados",RT-22.01--05; aforo propuesto,2027-11-04,2027-11-05,1.11.2.1.5;VERSION-E1,Recepción por etapa o control del periodo; no acredita ejecución,RT-22.01--05; aforo propuesto
1.11.7.1.5.1.2,"Sesión y certificación E1, perfil 5, cohorte 2",1.11,E1 Desarrollo,"Sesión y certificación E1, perfil 5, cohorte 2",Resultado de la ficha de familia y del paquete original; registro individual por código/ventana,"No duplicar padres, informes, ingeniería ni cobertura; no incluye horas de contraparte ni obras/adquisiciones del cliente","Dos sesiones de dos horas, ejercicio, registro individual y recuperación; máximo doce asistentes y sin interrumpir turnos.",José Lara Arce,12,A:2;Q:2;L:8,"Asignación y cuadrante integrado por código; entornos, usuarios y habilitaciones autorizados",RT-22.01--05; aforo propuesto,2027-11-05,2027-11-08,1.11.2.1.5;VERSION-E1,Recepción por etapa o control del periodo; no acredita ejecución,RT-22.01--05; aforo propuesto
1.11.7.1.5.1.3,"Sesión y certificación E1, perfil 5, cohorte 3",1.11,E1 Desarrollo,"Sesión y certificación E1, perfil 5, cohorte 3",Resultado de la ficha de familia y del paquete original; registro individual por código/ventana,"No duplicar padres, informes, ingeniería ni cobertura; no incluye horas de contraparte ni obras/adquisiciones del cliente","Dos sesiones de dos horas, ejercicio, registro individual y recuperación; máximo doce asistentes y sin interrumpir turnos.",José Lara Arce,12,A:2;Q:2;L:8,"Asignación y cuadrante integrado por código; entornos, usuarios y habilitaciones autorizados",RT-22.01--05; aforo propuesto,2027-11-08,2027-11-10,1.11.2.1.5;VERSION-E1,Recepción por etapa o control del periodo; no acredita ejecución,RT-22.01--05; aforo propuesto
1.11.4.1.1.1.1,"Acompañamiento E1, ola 1, día 1, zona 1",1.11,E1 Marcha blanca,"Acompañamiento E1, ola 1, día 1, zona 1",Resultado de la ficha de familia y del paquete original; registro individual por código/ventana,"No duplicar padres, informes, ingeniería ni cobertura; no incluye horas de contraparte ni obras/adquisiciones del cliente","Registro diario, turno, zona, tarea, incidencia y relevo; 8 h presencia días 1--14, luego 4 h presencia +4 h preparación.",José Lara Arce,8,L:8,"Asignación y cuadrante integrado por código; entornos, usuarios y habilitaciones autorizados",C07 13.3.5; RT-22.02,2027-12-01,2027-12-01,FORMACION-E1,Recepción por etapa o control del periodo; no acredita ejecución,C07 13.3.5; RT-22.02
1.11.4.1.1.1.2,"Acompañamiento E1, ola 1, día 1, zona 2",1.11,E1 Marcha blanca,"Acompañamiento E1, ola 1, día 1, zona 2",Resultado de la ficha de familia y del paquete original; registro individual por código/ventana,"No duplicar padres, informes, ingeniería ni cobertura; no incluye horas de contraparte ni obras/adquisiciones del cliente","Registro diario, turno, zona, tarea, incidencia y relevo; 8 h presencia días 1--14, luego 4 h presencia +4 h preparación.",José Lara Arce,8,L:8,"Asignación y cuadrante integrado por código; entornos, usuarios y habilitaciones autorizados",C07 13.3.5; RT-22.02,2027-12-01,2027-12-01,FORMACION-E1,Recepción por etapa o control del periodo; no acredita ejecución,C07 13.3.5; RT-22.02
1.11.4.1.1.2.1,"Acompañamiento E1, ola 1, día 2, zona 1",1.11,E1 Marcha blanca,"Acompañamiento E1, ola 1, día 2, zona 1",Resultado de la ficha de familia y del paquete original; registro individual por código/ventana,"No duplicar padres, informes, ingeniería ni cobertura; no incluye horas de contraparte ni obras/adquisiciones del cliente","Registro diario, turno, zona, tarea, incidencia y relevo; 8 h presencia días 1--14, luego 4 h presencia +4 h preparación.",José Lara Arce,8,L:8,"Asignación y cuadrante integrado por código; entornos, usuarios y habilitaciones autorizados",C07 13.3.5; RT-22.02,2027-12-02,2027-12-02,FORMACION-E1,Recepción por etapa o control del periodo; no acredita ejecución,C07 13.3.5; RT-22.02
1.11.4.1.1.2.2,"Acompañamiento E1, ola 1, día 2, zona 2",1.11,E1 Marcha blanca,"Acompañamiento E1, ola 1, día 2, zona 2",Resultado de la ficha de familia y del paquete original; registro individual por código/ventana,"No duplicar padres, informes, ingeniería ni cobertura; no incluye horas de contraparte ni obras/adquisiciones del cliente","Registro diario, turno, zona, tarea, incidencia y relevo; 8 h presencia días 1--14, luego 4 h presencia +4 h preparación.",José Lara Arce,8,L:8,"Asignación y cuadrante integrado por código; entornos, usuarios y habilitaciones autorizados",C07 13.3.5; RT-22.02,2027-12-02,2027-12-02,FORMACION-E1,Recepción por etapa o control del periodo; no acredita ejecución,C07 13.3.5; RT-22.02
1.11.4.1.1.3.1,"Acompañamiento E1, ola 1, día 3, zona 1",1.11,E1 Marcha blanca,"Acompañamiento E1, ola 1, día 3, zona 1",Resultado de la ficha de familia y del paquete original; registro individual por código/ventana,"No duplicar padres, informes, ingeniería ni cobertura; no incluye horas de contraparte ni obras/adquisiciones del cliente","Registro diario, turno, zona, tarea, incidencia y relevo; 8 h presencia días 1--14, luego 4 h presencia +4 h preparación.",José Lara Arce,8,L:8,"Asignación y cuadrante integrado por código; entornos, usuarios y habilitaciones autorizados",C07 13.3.5; RT-22.02,2027-12-03,2027-12-03,FORMACION-E1,Recepción por etapa o control del periodo; no acredita ejecución,C07 13.3.5; RT-22.02
1.11.4.1.1.3.2,"Acompañamiento E1, ola 1, día 3, zona 2",1.11,E1 Marcha blanca,"Acompañamiento E1, ola 1, día 3, zona 2",Resultado de la ficha de familia y del paquete original; registro individual por código/ventana,"No duplicar padres, informes, ingeniería ni cobertura; no incluye horas de contraparte ni obras/adquisiciones del cliente","Registro diario, turno, zona, tarea, incidencia y relevo; 8 h presencia días 1--14, luego 4 h presencia +4 h preparación.",José Lara Arce,8,L:8,"Asignación y cuadrante integrado por código; entornos, usuarios y habilitaciones autorizados",C07 13.3.5; RT-22.02,2027-12-03,2027-12-03,FORMACION-E1,Recepción por etapa o control del periodo; no acredita ejecución,C07 13.3.5; RT-22.02
1.11.4.1.1.4.1,"Acompañamiento E1, ola 1, día 4, zona 1",1.11,E1 Marcha blanca,"Acompañamiento E1, ola 1, día 4, zona 1",Resultado de la ficha de familia y del paquete original; registro individual por código/ventana,"No duplicar padres, informes, ingeniería ni cobertura; no incluye horas de contraparte ni obras/adquisiciones del cliente","Registro diario, turno, zona, tarea, incidencia y relevo; 8 h presencia días 1--14, luego 4 h presencia +4 h preparación.",José Lara Arce,8,L:8,"Asignación y cuadrante integrado por código; entornos, usuarios y habilitaciones autorizados",C07 13.3.5; RT-22.02,2027-12-04,2027-12-04,FORMACION-E1,Recepción por etapa o control del periodo; no acredita ejecución,C07 13.3.5; RT-22.02
1.11.4.1.1.4.2,"Acompañamiento E1, ola 1, día 4, zona 2",1.11,E1 Marcha blanca,"Acompañamiento E1, ola 1, día 4, zona 2",Resultado de la ficha de familia y del paquete original; registro individual por código/ventana,"No duplicar padres, informes, ingeniería ni cobertura; no incluye horas de contraparte ni obras/adquisiciones del cliente","Registro diario, turno, zona, tarea, incidencia y relevo; 8 h presencia días 1--14, luego 4 h presencia +4 h preparación.",José Lara Arce,8,L:8,"Asignación y cuadrante integrado por código; entornos, usuarios y habilitaciones autorizados",C07 13.3.5; RT-22.02,2027-12-04,2027-12-04,FORMACION-E1,Recepción por etapa o control del periodo; no acredita ejecución,C07 13.3.5; RT-22.02
1.11.4.1.1.5.1,"Acompañamiento E1, ola 1, día 5, zona 1",1.11,E1 Marcha blanca,"Acompañamiento E1, ola 1, día 5, zona 1",Resultado de la ficha de familia y del paquete original; registro individual por código/ventana,"No duplicar padres, informes, ingeniería ni cobertura; no incluye horas de contraparte ni obras/adquisiciones del cliente","Registro diario, turno, zona, tarea, incidencia y relevo; 8 h presencia días 1--14, luego 4 h presencia +4 h preparación.",José Lara Arce,8,L:8,"Asignación y cuadrante integrado por código; entornos, usuarios y habilitaciones autorizados",C07 13.3.5; RT-22.02,2027-12-05,2027-12-05,FORMACION-E1,Recepción por etapa o control del periodo; no acredita ejecución,C07 13.3.5; RT-22.02
1.11.4.1.1.5.2,"Acompañamiento E1, ola 1, día 5, zona 2",1.11,E1 Marcha blanca,"Acompañamiento E1, ola 1, día 5, zona 2",Resultado de la ficha de familia y del paquete original; registro individual por código/ventana,"No duplicar padres, informes, ingeniería ni cobertura; no incluye horas de contraparte ni obras/adquisiciones del cliente","Registro diario, turno, zona, tarea, incidencia y relevo; 8 h presencia días 1--14, luego 4 h presencia +4 h preparación.",José Lara Arce,8,L:8,"Asignación y cuadrante integrado por código; entornos, usuarios y habilitaciones autorizados",C07 13.3.5; RT-22.02,2027-12-05,2027-12-05,FORMACION-E1,Recepción por etapa o control del periodo; no acredita ejecución,C07 13.3.5; RT-22.02
1.11.4.1.1.6.1,"Acompañamiento E1, ola 1, día 6, zona 1",1.11,E1 Marcha blanca,"Acompañamiento E1, ola 1, día 6, zona 1",Resultado de la ficha de familia y del paquete original; registro individual por código/ventana,"No duplicar padres, informes, ingeniería ni cobertura; no incluye horas de contraparte ni obras/adquisiciones del cliente","Registro diario, turno, zona, tarea, incidencia y relevo; 8 h presencia días 1--14, luego 4 h presencia +4 h preparación.",José Lara Arce,8,L:8,"Asignación y cuadrante integrado por código; entornos, usuarios y habilitaciones autorizados",C07 13.3.5; RT-22.02,2027-12-06,2027-12-06,FORMACION-E1,Recepción por etapa o control del periodo; no acredita ejecución,C07 13.3.5; RT-22.02
1.11.4.1.1.6.2,"Acompañamiento E1, ola 1, día 6, zona 2",1.11,E1 Marcha blanca,"Acompañamiento E1, ola 1, día 6, zona 2",Resultado de la ficha de familia y del paquete original; registro individual por código/ventana,"No duplicar padres, informes, ingeniería ni cobertura; no incluye horas de contraparte ni obras/adquisiciones del cliente","Registro diario, turno, zona, tarea, incidencia y relevo; 8 h presencia días 1--14, luego 4 h presencia +4 h preparación.",José Lara Arce,8,L:8,"Asignación y cuadrante integrado por código; entornos, usuarios y habilitaciones autorizados",C07 13.3.5; RT-22.02,2027-12-06,2027-12-06,FORMACION-E1,Recepción por etapa o control del periodo; no acredita ejecución,C07 13.3.5; RT-22.02
1.11.4.1.1.7.1,"Acompañamiento E1, ola 1, día 7, zona 1",1.11,E1 Marcha blanca,"Acompañamiento E1, ola 1, día 7, zona 1",Resultado de la ficha de familia y del paquete original; registro individual por código/ventana,"No duplicar padres, informes, ingeniería ni cobertura; no incluye horas de contraparte ni obras/adquisiciones del cliente","Registro diario, turno, zona, tarea, incidencia y relevo; 8 h presencia días 1--14, luego 4 h presencia +4 h preparación.",José Lara Arce,8,L:8,"Asignación y cuadrante integrado por código; entornos, usuarios y habilitaciones autorizados",C07 13.3.5; RT-22.02,2027-12-07,2027-12-07,FORMACION-E1,Recepción por etapa o control del periodo; no acredita ejecución,C07 13.3.5; RT-22.02
1.11.4.1.1.7.2,"Acompañamiento E1, ola 1, día 7, zona 2",1.11,E1 Marcha blanca,"Acompañamiento E1, ola 1, día 7, zona 2",Resultado de la ficha de familia y del paquete original; registro individual por código/ventana,"No duplicar padres, informes, ingeniería ni cobertura; no incluye horas de contraparte ni obras/adquisiciones del cliente","Registro diario, turno, zona, tarea, incidencia y relevo; 8 h presencia días 1--14, luego 4 h presencia +4 h preparación.",José Lara Arce,8,L:8,"Asignación y cuadrante integrado por código; entornos, usuarios y habilitaciones autorizados",C07 13.3.5; RT-22.02,2027-12-07,2027-12-07,FORMACION-E1,Recepción por etapa o control del periodo; no acredita ejecución,C07 13.3.5; RT-22.02
1.11.4.1.1.8.1,"Acompañamiento E1, ola 1, día 8, zona 1",1.11,E1 Marcha blanca,"Acompañamiento E1, ola 1, día 8, zona 1",Resultado de la ficha de familia y del paquete original; registro individual por código/ventana,"No duplicar padres, informes, ingeniería ni cobertura; no incluye horas de contraparte ni obras/adquisiciones del cliente","Registro diario, turno, zona, tarea, incidencia y relevo; 8 h presencia días 1--14, luego 4 h presencia +4 h preparación.",José Lara Arce,8,L:8,"Asignación y cuadrante integrado por código; entornos, usuarios y habilitaciones autorizados",C07 13.3.5; RT-22.02,2027-12-08,2027-12-08,FORMACION-E1,Recepción por etapa o control del periodo; no acredita ejecución,C07 13.3.5; RT-22.02
1.11.4.1.1.8.2,"Acompañamiento E1, ola 1, día 8, zona 2",1.11,E1 Marcha blanca,"Acompañamiento E1, ola 1, día 8, zona 2",Resultado de la ficha de familia y del paquete original; registro individual por código/ventana,"No duplicar padres, informes, ingeniería ni cobertura; no incluye horas de contraparte ni obras/adquisiciones del cliente","Registro diario, turno, zona, tarea, incidencia y relevo; 8 h presencia días 1--14, luego 4 h presencia +4 h preparación.",José Lara Arce,8,L:8,"Asignación y cuadrante integrado por código; entornos, usuarios y habilitaciones autorizados",C07 13.3.5; RT-22.02,2027-12-08,2027-12-08,FORMACION-E1,Recepción por etapa o control del periodo; no acredita ejecución,C07 13.3.5; RT-22.02
1.11.4.1.1.9.1,"Acompañamiento E1, ola 1, día 9, zona 1",1.11,E1 Marcha blanca,"Acompañamiento E1, ola 1, día 9, zona 1",Resultado de la ficha de familia y del paquete original; registro individual por código/ventana,"No duplicar padres, informes, ingeniería ni cobertura; no incluye horas de contraparte ni obras/adquisiciones del cliente","Registro diario, turno, zona, tarea, incidencia y relevo; 8 h presencia días 1--14, luego 4 h presencia +4 h preparación.",José Lara Arce,8,L:8,"Asignación y cuadrante integrado por código; entornos, usuarios y habilitaciones autorizados",C07 13.3.5; RT-22.02,2027-12-09,2027-12-09,FORMACION-E1,Recepción por etapa o control del periodo; no acredita ejecución,C07 13.3.5; RT-22.02
1.11.4.1.1.9.2,"Acompañamiento E1, ola 1, día 9, zona 2",1.11,E1 Marcha blanca,"Acompañamiento E1, ola 1, día 9, zona 2",Resultado de la ficha de familia y del paquete original; registro individual por código/ventana,"No duplicar padres, informes, ingeniería ni cobertura; no incluye horas de contraparte ni obras/adquisiciones del cliente","Registro diario, turno, zona, tarea, incidencia y relevo; 8 h presencia días 1--14, luego 4 h presencia +4 h preparación.",José Lara Arce,8,L:8,"Asignación y cuadrante integrado por código; entornos, usuarios y habilitaciones autorizados",C07 13.3.5; RT-22.02,2027-12-09,2027-12-09,FORMACION-E1,Recepción por etapa o control del periodo; no acredita ejecución,C07 13.3.5; RT-22.02
1.11.4.1.1.10.1,"Acompañamiento E1, ola 1, día 10, zona 1",1.11,E1 Marcha blanca,"Acompañamiento E1, ola 1, día 10, zona 1",Resultado de la ficha de familia y del paquete original; registro individual por código/ventana,"No duplicar padres, informes, ingeniería ni cobertura; no incluye horas de contraparte ni obras/adquisiciones del cliente","Registro diario, turno, zona, tarea, incidencia y relevo; 8 h presencia días 1--14, luego 4 h presencia +4 h preparación.",José Lara Arce,8,L:8,"Asignación y cuadrante integrado por código; entornos, usuarios y habilitaciones autorizados",C07 13.3.5; RT-22.02,2027-12-10,2027-12-10,FORMACION-E1,Recepción por etapa o control del periodo; no acredita ejecución,C07 13.3.5; RT-22.02
1.11.4.1.1.10.2,"Acompañamiento E1, ola 1, día 10, zona 2",1.11,E1 Marcha blanca,"Acompañamiento E1, ola 1, día 10, zona 2",Resultado de la ficha de familia y del paquete original; registro individual por código/ventana,"No duplicar padres, informes, ingeniería ni cobertura; no incluye horas de contraparte ni obras/adquisiciones del cliente","Registro diario, turno, zona, tarea, incidencia y relevo; 8 h presencia días 1--14, luego 4 h presencia +4 h preparación.",José Lara Arce,8,L:8,"Asignación y cuadrante integrado por código; entornos, usuarios y habilitaciones autorizados",C07 13.3.5; RT-22.02,2027-12-10,2027-12-10,FORMACION-E1,Recepción por etapa o control del periodo; no acredita ejecución,C07 13.3.5; RT-22.02
1.11.4.1.1.11.1,"Acompañamiento E1, ola 1, día 11, zona 1",1.11,E1 Marcha blanca,"Acompañamiento E1, ola 1, día 11, zona 1",Resultado de la ficha de familia y del paquete original; registro individual por código/ventana,"No duplicar padres, informes, ingeniería ni cobertura; no incluye horas de contraparte ni obras/adquisiciones del cliente","Registro diario, turno, zona, tarea, incidencia y relevo; 8 h presencia días 1--14, luego 4 h presencia +4 h preparación.",José Lara Arce,8,L:8,"Asignación y cuadrante integrado por código; entornos, usuarios y habilitaciones autorizados",C07 13.3.5; RT-22.02,2027-12-11,2027-12-11,FORMACION-E1,Recepción por etapa o control del periodo; no acredita ejecución,C07 13.3.5; RT-22.02
1.11.4.1.1.11.2,"Acompañamiento E1, ola 1, día 11, zona 2",1.11,E1 Marcha blanca,"Acompañamiento E1, ola 1, día 11, zona 2",Resultado de la ficha de familia y del paquete original; registro individual por código/ventana,"No duplicar padres, informes, ingeniería ni cobertura; no incluye horas de contraparte ni obras/adquisiciones del cliente","Registro diario, turno, zona, tarea, incidencia y relevo; 8 h presencia días 1--14, luego 4 h presencia +4 h preparación.",José Lara Arce,8,L:8,"Asignación y cuadrante integrado por código; entornos, usuarios y habilitaciones autorizados",C07 13.3.5; RT-22.02,2027-12-11,2027-12-11,FORMACION-E1,Recepción por etapa o control del periodo; no acredita ejecución,C07 13.3.5; RT-22.02
1.11.4.1.1.12.1,"Acompañamiento E1, ola 1, día 12, zona 1",1.11,E1 Marcha blanca,"Acompañamiento E1, ola 1, día 12, zona 1",Resultado de la ficha de familia y del paquete original; registro individual por código/ventana,"No duplicar padres, informes, ingeniería ni cobertura; no incluye horas de contraparte ni obras/adquisiciones del cliente","Registro diario, turno, zona, tarea, incidencia y relevo; 8 h presencia días 1--14, luego 4 h presencia +4 h preparación.",José Lara Arce,8,L:8,"Asignación y cuadrante integrado por código; entornos, usuarios y habilitaciones autorizados",C07 13.3.5; RT-22.02,2027-12-12,2027-12-12,FORMACION-E1,Recepción por etapa o control del periodo; no acredita ejecución,C07 13.3.5; RT-22.02
1.11.4.1.1.12.2,"Acompañamiento E1, ola 1, día 12, zona 2",1.11,E1 Marcha blanca,"Acompañamiento E1, ola 1, día 12, zona 2",Resultado de la ficha de familia y del paquete original; registro individual por código/ventana,"No duplicar padres, informes, ingeniería ni cobertura; no incluye horas de contraparte ni obras/adquisiciones del cliente","Registro diario, turno, zona, tarea, incidencia y relevo; 8 h presencia días 1--14, luego 4 h presencia +4 h preparación.",José Lara Arce,8,L:8,"Asignación y cuadrante integrado por código; entornos, usuarios y habilitaciones autorizados",C07 13.3.5; RT-22.02,2027-12-12,2027-12-12,FORMACION-E1,Recepción por etapa o control del periodo; no acredita ejecución,C07 13.3.5; RT-22.02
1.11.4.1.1.13.1,"Acompañamiento E1, ola 1, día 13, zona 1",1.11,E1 Marcha blanca,"Acompañamiento E1, ola 1, día 13, zona 1",Resultado de la ficha de familia y del paquete original; registro individual por código/ventana,"No duplicar padres, informes, ingeniería ni cobertura; no incluye horas de contraparte ni obras/adquisiciones del cliente","Registro diario, turno, zona, tarea, incidencia y relevo; 8 h presencia días 1--14, luego 4 h presencia +4 h preparación.",José Lara Arce,8,L:8,"Asignación y cuadrante integrado por código; entornos, usuarios y habilitaciones autorizados",C07 13.3.5; RT-22.02,2027-12-13,2027-12-13,FORMACION-E1,Recepción por etapa o control del periodo; no acredita ejecución,C07 13.3.5; RT-22.02
1.11.4.1.1.13.2,"Acompañamiento E1, ola 1, día 13, zona 2",1.11,E1 Marcha blanca,"Acompañamiento E1, ola 1, día 13, zona 2",Resultado de la ficha de familia y del paquete original; registro individual por código/ventana,"No duplicar padres, informes, ingeniería ni cobertura; no incluye horas de contraparte ni obras/adquisiciones del cliente","Registro diario, turno, zona, tarea, incidencia y relevo; 8 h presencia días 1--14, luego 4 h presencia +4 h preparación.",José Lara Arce,8,L:8,"Asignación y cuadrante integrado por código; entornos, usuarios y habilitaciones autorizados",C07 13.3.5; RT-22.02,2027-12-13,2027-12-13,FORMACION-E1,Recepción por etapa o control del periodo; no acredita ejecución,C07 13.3.5; RT-22.02
1.11.4.1.1.14.1,"Acompañamiento E1, ola 1, día 14, zona 1",1.11,E1 Marcha blanca,"Acompañamiento E1, ola 1, día 14, zona 1",Resultado de la ficha de familia y del paquete original; registro individual por código/ventana,"No duplicar padres, informes, ingeniería ni cobertura; no incluye horas de contraparte ni obras/adquisiciones del cliente","Registro diario, turno, zona, tarea, incidencia y relevo; 8 h presencia días 1--14, luego 4 h presencia +4 h preparación.",José Lara Arce,8,L:8,"Asignación y cuadrante integrado por código; entornos, usuarios y habilitaciones autorizados",C07 13.3.5; RT-22.02,2027-12-14,2027-12-14,FORMACION-E1,Recepción por etapa o control del periodo; no acredita ejecución,C07 13.3.5; RT-22.02
1.11.4.1.1.14.2,"Acompañamiento E1, ola 1, día 14, zona 2",1.11,E1 Marcha blanca,"Acompañamiento E1, ola 1, día 14, zona 2",Resultado de la ficha de familia y del paquete original; registro individual por código/ventana,"No duplicar padres, informes, ingeniería ni cobertura; no incluye horas de contraparte ni obras/adquisiciones del cliente","Registro diario, turno, zona, tarea, incidencia y relevo; 8 h presencia días 1--14, luego 4 h presencia +4 h preparación.",José Lara Arce,8,L:8,"Asignación y cuadrante integrado por código; entornos, usuarios y habilitaciones autorizados",C07 13.3.5; RT-22.02,2027-12-14,2027-12-14,FORMACION-E1,Recepción por etapa o control del periodo; no acredita ejecución,C07 13.3.5; RT-22.02
1.11.4.1.1.15.1,"Acompañamiento E1, ola 1, día 15, zona 1",1.11,E1 Marcha blanca,"Acompañamiento E1, ola 1, día 15, zona 1",Resultado de la ficha de familia y del paquete original; registro individual por código/ventana,"No duplicar padres, informes, ingeniería ni cobertura; no incluye horas de contraparte ni obras/adquisiciones del cliente","Registro diario, turno, zona, tarea, incidencia y relevo; 8 h presencia días 1--14, luego 4 h presencia +4 h preparación.",José Lara Arce,8,L:8,"Asignación y cuadrante integrado por código; entornos, usuarios y habilitaciones autorizados",C07 13.3.5; RT-22.02,2027-12-15,2027-12-15,FORMACION-E1,Recepción por etapa o control del periodo; no acredita ejecución,C07 13.3.5; RT-22.02
1.11.4.1.1.15.2,"Acompañamiento E1, ola 1, día 15, zona 2",1.11,E1 Marcha blanca,"Acompañamiento E1, ola 1, día 15, zona 2",Resultado de la ficha de familia y del paquete original; registro individual por código/ventana,"No duplicar padres, informes, ingeniería ni cobertura; no incluye horas de contraparte ni obras/adquisiciones del cliente","Registro diario, turno, zona, tarea, incidencia y relevo; 8 h presencia días 1--14, luego 4 h presencia +4 h preparación.",José Lara Arce,8,L:8,"Asignación y cuadrante integrado por código; entornos, usuarios y habilitaciones autorizados",C07 13.3.5; RT-22.02,2027-12-15,2027-12-15,FORMACION-E1,Recepción por etapa o control del periodo; no acredita ejecución,C07 13.3.5; RT-22.02
1.11.4.1.1.16.1,"Acompañamiento E1, ola 1, día 16, zona 1",1.11,E1 Marcha blanca,"Acompañamiento E1, ola 1, día 16, zona 1",Resultado de la ficha de familia y del paquete original; registro individual por código/ventana,"No duplicar padres, informes, ingeniería ni cobertura; no incluye horas de contraparte ni obras/adquisiciones del cliente","Registro diario, turno, zona, tarea, incidencia y relevo; 8 h presencia días 1--14, luego 4 h presencia +4 h preparación.",José Lara Arce,8,L:8,"Asignación y cuadrante integrado por código; entornos, usuarios y habilitaciones autorizados",C07 13.3.5; RT-22.02,2027-12-16,2027-12-16,FORMACION-E1,Recepción por etapa o control del periodo; no acredita ejecución,C07 13.3.5; RT-22.02
1.11.4.1.1.16.2,"Acompañamiento E1, ola 1, día 16, zona 2",1.11,E1 Marcha blanca,"Acompañamiento E1, ola 1, día 16, zona 2",Resultado de la ficha de familia y del paquete original; registro individual por código/ventana,"No duplicar padres, informes, ingeniería ni cobertura; no incluye horas de contraparte ni obras/adquisiciones del cliente","Registro diario, turno, zona, tarea, incidencia y relevo; 8 h presencia días 1--14, luego 4 h presencia +4 h preparación.",José Lara Arce,8,L:8,"Asignación y cuadrante integrado por código; entornos, usuarios y habilitaciones autorizados",C07 13.3.5; RT-22.02,2027-12-16,2027-12-16,FORMACION-E1,Recepción por etapa o control del periodo; no acredita ejecución,C07 13.3.5; RT-22.02
1.11.4.1.1.17.1,"Acompañamiento E1, ola 1, día 17, zona 1",1.11,E1 Marcha blanca,"Acompañamiento E1, ola 1, día 17, zona 1",Resultado de la ficha de familia y del paquete original; registro individual por código/ventana,"No duplicar padres, informes, ingeniería ni cobertura; no incluye horas de contraparte ni obras/adquisiciones del cliente","Registro diario, turno, zona, tarea, incidencia y relevo; 8 h presencia días 1--14, luego 4 h presencia +4 h preparación.",José Lara Arce,8,L:8,"Asignación y cuadrante integrado por código; entornos, usuarios y habilitaciones autorizados",C07 13.3.5; RT-22.02,2027-12-17,2027-12-17,FORMACION-E1,Recepción por etapa o control del periodo; no acredita ejecución,C07 13.3.5; RT-22.02
1.11.4.1.1.17.2,"Acompañamiento E1, ola 1, día 17, zona 2",1.11,E1 Marcha blanca,"Acompañamiento E1, ola 1, día 17, zona 2",Resultado de la ficha de familia y del paquete original; registro individual por código/ventana,"No duplicar padres, informes, ingeniería ni cobertura; no incluye horas de contraparte ni obras/adquisiciones del cliente","Registro diario, turno, zona, tarea, incidencia y relevo; 8 h presencia días 1--14, luego 4 h presencia +4 h preparación.",José Lara Arce,8,L:8,"Asignación y cuadrante integrado por código; entornos, usuarios y habilitaciones autorizados",C07 13.3.5; RT-22.02,2027-12-17,2027-12-17,FORMACION-E1,Recepción por etapa o control del periodo; no acredita ejecución,C07 13.3.5; RT-22.02
1.11.4.1.1.18.1,"Acompañamiento E1, ola 1, día 18, zona 1",1.11,E1 Marcha blanca,"Acompañamiento E1, ola 1, día 18, zona 1",Resultado de la ficha de familia y del paquete original; registro individual por código/ventana,"No duplicar padres, informes, ingeniería ni cobertura; no incluye horas de contraparte ni obras/adquisiciones del cliente","Registro diario, turno, zona, tarea, incidencia y relevo; 8 h presencia días 1--14, luego 4 h presencia +4 h preparación.",José Lara Arce,8,L:8,"Asignación y cuadrante integrado por código; entornos, usuarios y habilitaciones autorizados",C07 13.3.5; RT-22.02,2027-12-18,2027-12-18,FORMACION-E1,Recepción por etapa o control del periodo; no acredita ejecución,C07 13.3.5; RT-22.02
1.11.4.1.1.18.2,"Acompañamiento E1, ola 1, día 18, zona 2",1.11,E1 Marcha blanca,"Acompañamiento E1, ola 1, día 18, zona 2",Resultado de la ficha de familia y del paquete original; registro individual por código/ventana,"No duplicar padres, informes, ingeniería ni cobertura; no incluye horas de contraparte ni obras/adquisiciones del cliente","Registro diario, turno, zona, tarea, incidencia y relevo; 8 h presencia días 1--14, luego 4 h presencia +4 h preparación.",José Lara Arce,8,L:8,"Asignación y cuadrante integrado por código; entornos, usuarios y habilitaciones autorizados",C07 13.3.5; RT-22.02,2027-12-18,2027-12-18,FORMACION-E1,Recepción por etapa o control del periodo; no acredita ejecución,C07 13.3.5; RT-22.02
1.11.4.1.1.19.1,"Acompañamiento E1, ola 1, día 19, zona 1",1.11,E1 Marcha blanca,"Acompañamiento E1, ola 1, día 19, zona 1",Resultado de la ficha de familia y del paquete original; registro individual por código/ventana,"No duplicar padres, informes, ingeniería ni cobertura; no incluye horas de contraparte ni obras/adquisiciones del cliente","Registro diario, turno, zona, tarea, incidencia y relevo; 8 h presencia días 1--14, luego 4 h presencia +4 h preparación.",José Lara Arce,8,L:8,"Asignación y cuadrante integrado por código; entornos, usuarios y habilitaciones autorizados",C07 13.3.5; RT-22.02,2027-12-19,2027-12-19,FORMACION-E1,Recepción por etapa o control del periodo; no acredita ejecución,C07 13.3.5; RT-22.02
1.11.4.1.1.19.2,"Acompañamiento E1, ola 1, día 19, zona 2",1.11,E1 Marcha blanca,"Acompañamiento E1, ola 1, día 19, zona 2",Resultado de la ficha de familia y del paquete original; registro individual por código/ventana,"No duplicar padres, informes, ingeniería ni cobertura; no incluye horas de contraparte ni obras/adquisiciones del cliente","Registro diario, turno, zona, tarea, incidencia y relevo; 8 h presencia días 1--14, luego 4 h presencia +4 h preparación.",José Lara Arce,8,L:8,"Asignación y cuadrante integrado por código; entornos, usuarios y habilitaciones autorizados",C07 13.3.5; RT-22.02,2027-12-19,2027-12-19,FORMACION-E1,Recepción por etapa o control del periodo; no acredita ejecución,C07 13.3.5; RT-22.02
1.11.4.1.1.20.1,"Acompañamiento E1, ola 1, día 20, zona 1",1.11,E1 Marcha blanca,"Acompañamiento E1, ola 1, día 20, zona 1",Resultado de la ficha de familia y del paquete original; registro individual por código/ventana,"No duplicar padres, informes, ingeniería ni cobertura; no incluye horas de contraparte ni obras/adquisiciones del cliente","Registro diario, turno, zona, tarea, incidencia y relevo; 8 h presencia días 1--14, luego 4 h presencia +4 h preparación.",José Lara Arce,8,L:8,"Asignación y cuadrante integrado por código; entornos, usuarios y habilitaciones autorizados",C07 13.3.5; RT-22.02,2027-12-20,2027-12-20,FORMACION-E1,Recepción por etapa o control del periodo; no acredita ejecución,C07 13.3.5; RT-22.02
1.11.4.1.1.20.2,"Acompañamiento E1, ola 1, día 20, zona 2",1.11,E1 Marcha blanca,"Acompañamiento E1, ola 1, día 20, zona 2",Resultado de la ficha de familia y del paquete original; registro individual por código/ventana,"No duplicar padres, informes, ingeniería ni cobertura; no incluye horas de contraparte ni obras/adquisiciones del cliente","Registro diario, turno, zona, tarea, incidencia y relevo; 8 h presencia días 1--14, luego 4 h presencia +4 h preparación.",José Lara Arce,8,L:8,"Asignación y cuadrante integrado por código; entornos, usuarios y habilitaciones autorizados",C07 13.3.5; RT-22.02,2027-12-20,2027-12-20,FORMACION-E1,Recepción por etapa o control del periodo; no acredita ejecución,C07 13.3.5; RT-22.02
1.11.4.1.1.21.1,"Acompañamiento E1, ola 1, día 21, zona 1",1.11,E1 Marcha blanca,"Acompañamiento E1, ola 1, día 21, zona 1",Resultado de la ficha de familia y del paquete original; registro individual por código/ventana,"No duplicar padres, informes, ingeniería ni cobertura; no incluye horas de contraparte ni obras/adquisiciones del cliente","Registro diario, turno, zona, tarea, incidencia y relevo; 8 h presencia días 1--14, luego 4 h presencia +4 h preparación.",José Lara Arce,8,L:8,"Asignación y cuadrante integrado por código; entornos, usuarios y habilitaciones autorizados",C07 13.3.5; RT-22.02,2027-12-21,2027-12-21,FORMACION-E1,Recepción por etapa o control del periodo; no acredita ejecución,C07 13.3.5; RT-22.02
1.11.4.1.1.21.2,"Acompañamiento E1, ola 1, día 21, zona 2",1.11,E1 Marcha blanca,"Acompañamiento E1, ola 1, día 21, zona 2",Resultado de la ficha de familia y del paquete original; registro individual por código/ventana,"No duplicar padres, informes, ingeniería ni cobertura; no incluye horas de contraparte ni obras/adquisiciones del cliente","Registro diario, turno, zona, tarea, incidencia y relevo; 8 h presencia días 1--14, luego 4 h presencia +4 h preparación.",José Lara Arce,8,L:8,"Asignación y cuadrante integrado por código; entornos, usuarios y habilitaciones autorizados",C07 13.3.5; RT-22.02,2027-12-21,2027-12-21,FORMACION-E1,Recepción por etapa o control del periodo; no acredita ejecución,C07 13.3.5; RT-22.02
1.11.4.1.1.22.1,"Acompañamiento E1, ola 1, día 22, zona 1",1.11,E1 Marcha blanca,"Acompañamiento E1, ola 1, día 22, zona 1",Resultado de la ficha de familia y del paquete original; registro individual por código/ventana,"No duplicar padres, informes, ingeniería ni cobertura; no incluye horas de contraparte ni obras/adquisiciones del cliente","Registro diario, turno, zona, tarea, incidencia y relevo; 8 h presencia días 1--14, luego 4 h presencia +4 h preparación.",José Lara Arce,8,L:8,"Asignación y cuadrante integrado por código; entornos, usuarios y habilitaciones autorizados",C07 13.3.5; RT-22.02,2027-12-22,2027-12-22,FORMACION-E1,Recepción por etapa o control del periodo; no acredita ejecución,C07 13.3.5; RT-22.02
1.11.4.1.1.22.2,"Acompañamiento E1, ola 1, día 22, zona 2",1.11,E1 Marcha blanca,"Acompañamiento E1, ola 1, día 22, zona 2",Resultado de la ficha de familia y del paquete original; registro individual por código/ventana,"No duplicar padres, informes, ingeniería ni cobertura; no incluye horas de contraparte ni obras/adquisiciones del cliente","Registro diario, turno, zona, tarea, incidencia y relevo; 8 h presencia días 1--14, luego 4 h presencia +4 h preparación.",José Lara Arce,8,L:8,"Asignación y cuadrante integrado por código; entornos, usuarios y habilitaciones autorizados",C07 13.3.5; RT-22.02,2027-12-22,2027-12-22,FORMACION-E1,Recepción por etapa o control del periodo; no acredita ejecución,C07 13.3.5; RT-22.02
1.11.4.1.1.23.1,"Acompañamiento E1, ola 1, día 23, zona 1",1.11,E1 Marcha blanca,"Acompañamiento E1, ola 1, día 23, zona 1",Resultado de la ficha de familia y del paquete original; registro individual por código/ventana,"No duplicar padres, informes, ingeniería ni cobertura; no incluye horas de contraparte ni obras/adquisiciones del cliente","Registro diario, turno, zona, tarea, incidencia y relevo; 8 h presencia días 1--14, luego 4 h presencia +4 h preparación.",José Lara Arce,8,L:8,"Asignación y cuadrante integrado por código; entornos, usuarios y habilitaciones autorizados",C07 13.3.5; RT-22.02,2027-12-23,2027-12-23,FORMACION-E1,Recepción por etapa o control del periodo; no acredita ejecución,C07 13.3.5; RT-22.02
1.11.4.1.1.23.2,"Acompañamiento E1, ola 1, día 23, zona 2",1.11,E1 Marcha blanca,"Acompañamiento E1, ola 1, día 23, zona 2",Resultado de la ficha de familia y del paquete original; registro individual por código/ventana,"No duplicar padres, informes, ingeniería ni cobertura; no incluye horas de contraparte ni obras/adquisiciones del cliente","Registro diario, turno, zona, tarea, incidencia y relevo; 8 h presencia días 1--14, luego 4 h presencia +4 h preparación.",José Lara Arce,8,L:8,"Asignación y cuadrante integrado por código; entornos, usuarios y habilitaciones autorizados",C07 13.3.5; RT-22.02,2027-12-23,2027-12-23,FORMACION-E1,Recepción por etapa o control del periodo; no acredita ejecución,C07 13.3.5; RT-22.02
1.11.4.1.1.24.1,"Acompañamiento E1, ola 1, día 24, zona 1",1.11,E1 Marcha blanca,"Acompañamiento E1, ola 1, día 24, zona 1",Resultado de la ficha de familia y del paquete original; registro individual por código/ventana,"No duplicar padres, informes, ingeniería ni cobertura; no incluye horas de contraparte ni obras/adquisiciones del cliente","Registro diario, turno, zona, tarea, incidencia y relevo; 8 h presencia días 1--14, luego 4 h presencia +4 h preparación.",José Lara Arce,8,L:8,"Asignación y cuadrante integrado por código; entornos, usuarios y habilitaciones autorizados",C07 13.3.5; RT-22.02,2027-12-24,2027-12-24,FORMACION-E1,Recepción por etapa o control del periodo; no acredita ejecución,C07 13.3.5; RT-22.02
1.11.4.1.1.24.2,"Acompañamiento E1, ola 1, día 24, zona 2",1.11,E1 Marcha blanca,"Acompañamiento E1, ola 1, día 24, zona 2",Resultado de la ficha de familia y del paquete original; registro individual por código/ventana,"No duplicar padres, informes, ingeniería ni cobertura; no incluye horas de contraparte ni obras/adquisiciones del cliente","Registro diario, turno, zona, tarea, incidencia y relevo; 8 h presencia días 1--14, luego 4 h presencia +4 h preparación.",José Lara Arce,8,L:8,"Asignación y cuadrante integrado por código; entornos, usuarios y habilitaciones autorizados",C07 13.3.5; RT-22.02,2027-12-24,2027-12-24,FORMACION-E1,Recepción por etapa o control del periodo; no acredita ejecución,C07 13.3.5; RT-22.02
1.11.4.1.1.25.1,"Acompañamiento E1, ola 1, día 25, zona 1",1.11,E1 Marcha blanca,"Acompañamiento E1, ola 1, día 25, zona 1",Resultado de la ficha de familia y del paquete original; registro individual por código/ventana,"No duplicar padres, informes, ingeniería ni cobertura; no incluye horas de contraparte ni obras/adquisiciones del cliente","Registro diario, turno, zona, tarea, incidencia y relevo; 8 h presencia días 1--14, luego 4 h presencia +4 h preparación.",José Lara Arce,8,L:8,"Asignación y cuadrante integrado por código; entornos, usuarios y habilitaciones autorizados",C07 13.3.5; RT-22.02,2027-12-25,2027-12-25,FORMACION-E1,Recepción por etapa o control del periodo; no acredita ejecución,C07 13.3.5; RT-22.02
1.11.4.1.1.25.2,"Acompañamiento E1, ola 1, día 25, zona 2",1.11,E1 Marcha blanca,"Acompañamiento E1, ola 1, día 25, zona 2",Resultado de la ficha de familia y del paquete original; registro individual por código/ventana,"No duplicar padres, informes, ingeniería ni cobertura; no incluye horas de contraparte ni obras/adquisiciones del cliente","Registro diario, turno, zona, tarea, incidencia y relevo; 8 h presencia días 1--14, luego 4 h presencia +4 h preparación.",José Lara Arce,8,L:8,"Asignación y cuadrante integrado por código; entornos, usuarios y habilitaciones autorizados",C07 13.3.5; RT-22.02,2027-12-25,2027-12-25,FORMACION-E1,Recepción por etapa o control del periodo; no acredita ejecución,C07 13.3.5; RT-22.02
1.11.4.1.1.26.1,"Acompañamiento E1, ola 1, día 26, zona 1",1.11,E1 Marcha blanca,"Acompañamiento E1, ola 1, día 26, zona 1",Resultado de la ficha de familia y del paquete original; registro individual por código/ventana,"No duplicar padres, informes, ingeniería ni cobertura; no incluye horas de contraparte ni obras/adquisiciones del cliente","Registro diario, turno, zona, tarea, incidencia y relevo; 8 h presencia días 1--14, luego 4 h presencia +4 h preparación.",José Lara Arce,8,L:8,"Asignación y cuadrante integrado por código; entornos, usuarios y habilitaciones autorizados",C07 13.3.5; RT-22.02,2027-12-26,2027-12-26,FORMACION-E1,Recepción por etapa o control del periodo; no acredita ejecución,C07 13.3.5; RT-22.02
1.11.4.1.1.26.2,"Acompañamiento E1, ola 1, día 26, zona 2",1.11,E1 Marcha blanca,"Acompañamiento E1, ola 1, día 26, zona 2",Resultado de la ficha de familia y del paquete original; registro individual por código/ventana,"No duplicar padres, informes, ingeniería ni cobertura; no incluye horas de contraparte ni obras/adquisiciones del cliente","Registro diario, turno, zona, tarea, incidencia y relevo; 8 h presencia días 1--14, luego 4 h presencia +4 h preparación.",José Lara Arce,8,L:8,"Asignación y cuadrante integrado por código; entornos, usuarios y habilitaciones autorizados",C07 13.3.5; RT-22.02,2027-12-26,2027-12-26,FORMACION-E1,Recepción por etapa o control del periodo; no acredita ejecución,C07 13.3.5; RT-22.02
1.11.4.1.1.27.1,"Acompañamiento E1, ola 1, día 27, zona 1",1.11,E1 Marcha blanca,"Acompañamiento E1, ola 1, día 27, zona 1",Resultado de la ficha de familia y del paquete original; registro individual por código/ventana,"No duplicar padres, informes, ingeniería ni cobertura; no incluye horas de contraparte ni obras/adquisiciones del cliente","Registro diario, turno, zona, tarea, incidencia y relevo; 8 h presencia días 1--14, luego 4 h presencia +4 h preparación.",José Lara Arce,8,L:8,"Asignación y cuadrante integrado por código; entornos, usuarios y habilitaciones autorizados",C07 13.3.5; RT-22.02,2027-12-27,2027-12-27,FORMACION-E1,Recepción por etapa o control del periodo; no acredita ejecución,C07 13.3.5; RT-22.02
1.11.4.1.1.27.2,"Acompañamiento E1, ola 1, día 27, zona 2",1.11,E1 Marcha blanca,"Acompañamiento E1, ola 1, día 27, zona 2",Resultado de la ficha de familia y del paquete original; registro individual por código/ventana,"No duplicar padres, informes, ingeniería ni cobertura; no incluye horas de contraparte ni obras/adquisiciones del cliente","Registro diario, turno, zona, tarea, incidencia y relevo; 8 h presencia días 1--14, luego 4 h presencia +4 h preparación.",José Lara Arce,8,L:8,"Asignación y cuadrante integrado por código; entornos, usuarios y habilitaciones autorizados",C07 13.3.5; RT-22.02,2027-12-27,2027-12-27,FORMACION-E1,Recepción por etapa o control del periodo; no acredita ejecución,C07 13.3.5; RT-22.02
1.11.4.1.1.28.1,"Acompañamiento E1, ola 1, día 28, zona 1",1.11,E1 Marcha blanca,"Acompañamiento E1, ola 1, día 28, zona 1",Resultado de la ficha de familia y del paquete original; registro individual por código/ventana,"No duplicar padres, informes, ingeniería ni cobertura; no incluye horas de contraparte ni obras/adquisiciones del cliente","Registro diario, turno, zona, tarea, incidencia y relevo; 8 h presencia días 1--14, luego 4 h presencia +4 h preparación.",José Lara Arce,8,L:8,"Asignación y cuadrante integrado por código; entornos, usuarios y habilitaciones autorizados",C07 13.3.5; RT-22.02,2027-12-28,2027-12-28,FORMACION-E1,Recepción por etapa o control del periodo; no acredita ejecución,C07 13.3.5; RT-22.02
1.11.4.1.1.28.2,"Acompañamiento E1, ola 1, día 28, zona 2",1.11,E1 Marcha blanca,"Acompañamiento E1, ola 1, día 28, zona 2",Resultado de la ficha de familia y del paquete original; registro individual por código/ventana,"No duplicar padres, informes, ingeniería ni cobertura; no incluye horas de contraparte ni obras/adquisiciones del cliente","Registro diario, turno, zona, tarea, incidencia y relevo; 8 h presencia días 1--14, luego 4 h presencia +4 h preparación.",José Lara Arce,8,L:8,"Asignación y cuadrante integrado por código; entornos, usuarios y habilitaciones autorizados",C07 13.3.5; RT-22.02,2027-12-28,2027-12-28,FORMACION-E1,Recepción por etapa o control del periodo; no acredita ejecución,C07 13.3.5; RT-22.02
1.11.4.1.2.1.1,"Acompañamiento E1, ola 2, día 1, zona 1",1.11,E1 Marcha blanca,"Acompañamiento E1, ola 2, día 1, zona 1",Resultado de la ficha de familia y del paquete original; registro individual por código/ventana,"No duplicar padres, informes, ingeniería ni cobertura; no incluye horas de contraparte ni obras/adquisiciones del cliente","Registro diario, turno, zona, tarea, incidencia y relevo; 8 h presencia días 1--14, luego 4 h presencia +4 h preparación.",José Lara Arce,8,L:8,"Asignación y cuadrante integrado por código; entornos, usuarios y habilitaciones autorizados",C07 13.3.5; RT-22.02,2027-12-01,2027-12-01,FORMACION-E1,Recepción por etapa o control del periodo; no acredita ejecución,C07 13.3.5; RT-22.02
1.11.4.1.2.1.2,"Acompañamiento E1, ola 2, día 1, zona 2",1.11,E1 Marcha blanca,"Acompañamiento E1, ola 2, día 1, zona 2",Resultado de la ficha de familia y del paquete original; registro individual por código/ventana,"No duplicar padres, informes, ingeniería ni cobertura; no incluye horas de contraparte ni obras/adquisiciones del cliente","Registro diario, turno, zona, tarea, incidencia y relevo; 8 h presencia días 1--14, luego 4 h presencia +4 h preparación.",José Lara Arce,8,L:8,"Asignación y cuadrante integrado por código; entornos, usuarios y habilitaciones autorizados",C07 13.3.5; RT-22.02,2027-12-01,2027-12-01,FORMACION-E1,Recepción por etapa o control del periodo; no acredita ejecución,C07 13.3.5; RT-22.02
1.11.4.1.2.2.1,"Acompañamiento E1, ola 2, día 2, zona 1",1.11,E1 Marcha blanca,"Acompañamiento E1, ola 2, día 2, zona 1",Resultado de la ficha de familia y del paquete original; registro individual por código/ventana,"No duplicar padres, informes, ingeniería ni cobertura; no incluye horas de contraparte ni obras/adquisiciones del cliente","Registro diario, turno, zona, tarea, incidencia y relevo; 8 h presencia días 1--14, luego 4 h presencia +4 h preparación.",José Lara Arce,8,L:8,"Asignación y cuadrante integrado por código; entornos, usuarios y habilitaciones autorizados",C07 13.3.5; RT-22.02,2027-12-02,2027-12-02,FORMACION-E1,Recepción por etapa o control del periodo; no acredita ejecución,C07 13.3.5; RT-22.02
1.11.4.1.2.2.2,"Acompañamiento E1, ola 2, día 2, zona 2",1.11,E1 Marcha blanca,"Acompañamiento E1, ola 2, día 2, zona 2",Resultado de la ficha de familia y del paquete original; registro individual por código/ventana,"No duplicar padres, informes, ingeniería ni cobertura; no incluye horas de contraparte ni obras/adquisiciones del cliente","Registro diario, turno, zona, tarea, incidencia y relevo; 8 h presencia días 1--14, luego 4 h presencia +4 h preparación.",José Lara Arce,8,L:8,"Asignación y cuadrante integrado por código; entornos, usuarios y habilitaciones autorizados",C07 13.3.5; RT-22.02,2027-12-02,2027-12-02,FORMACION-E1,Recepción por etapa o control del periodo; no acredita ejecución,C07 13.3.5; RT-22.02
1.11.4.1.2.3.1,"Acompañamiento E1, ola 2, día 3, zona 1",1.11,E1 Marcha blanca,"Acompañamiento E1, ola 2, día 3, zona 1",Resultado de la ficha de familia y del paquete original; registro individual por código/ventana,"No duplicar padres, informes, ingeniería ni cobertura; no incluye horas de contraparte ni obras/adquisiciones del cliente","Registro diario, turno, zona, tarea, incidencia y relevo; 8 h presencia días 1--14, luego 4 h presencia +4 h preparación.",José Lara Arce,8,L:8,"Asignación y cuadrante integrado por código; entornos, usuarios y habilitaciones autorizados",C07 13.3.5; RT-22.02,2027-12-03,2027-12-03,FORMACION-E1,Recepción por etapa o control del periodo; no acredita ejecución,C07 13.3.5; RT-22.02
1.11.4.1.2.3.2,"Acompañamiento E1, ola 2, día 3, zona 2",1.11,E1 Marcha blanca,"Acompañamiento E1, ola 2, día 3, zona 2",Resultado de la ficha de familia y del paquete original; registro individual por código/ventana,"No duplicar padres, informes, ingeniería ni cobertura; no incluye horas de contraparte ni obras/adquisiciones del cliente","Registro diario, turno, zona, tarea, incidencia y relevo; 8 h presencia días 1--14, luego 4 h presencia +4 h preparación.",José Lara Arce,8,L:8,"Asignación y cuadrante integrado por código; entornos, usuarios y habilitaciones autorizados",C07 13.3.5; RT-22.02,2027-12-03,2027-12-03,FORMACION-E1,Recepción por etapa o control del periodo; no acredita ejecución,C07 13.3.5; RT-22.02
1.11.4.1.2.4.1,"Acompañamiento E1, ola 2, día 4, zona 1",1.11,E1 Marcha blanca,"Acompañamiento E1, ola 2, día 4, zona 1",Resultado de la ficha de familia y del paquete original; registro individual por código/ventana,"No duplicar padres, informes, ingeniería ni cobertura; no incluye horas de contraparte ni obras/adquisiciones del cliente","Registro diario, turno, zona, tarea, incidencia y relevo; 8 h presencia días 1--14, luego 4 h presencia +4 h preparación.",José Lara Arce,8,L:8,"Asignación y cuadrante integrado por código; entornos, usuarios y habilitaciones autorizados",C07 13.3.5; RT-22.02,2027-12-04,2027-12-04,FORMACION-E1,Recepción por etapa o control del periodo; no acredita ejecución,C07 13.3.5; RT-22.02
1.11.4.1.2.4.2,"Acompañamiento E1, ola 2, día 4, zona 2",1.11,E1 Marcha blanca,"Acompañamiento E1, ola 2, día 4, zona 2",Resultado de la ficha de familia y del paquete original; registro individual por código/ventana,"No duplicar padres, informes, ingeniería ni cobertura; no incluye horas de contraparte ni obras/adquisiciones del cliente","Registro diario, turno, zona, tarea, incidencia y relevo; 8 h presencia días 1--14, luego 4 h presencia +4 h preparación.",José Lara Arce,8,L:8,"Asignación y cuadrante integrado por código; entornos, usuarios y habilitaciones autorizados",C07 13.3.5; RT-22.02,2027-12-04,2027-12-04,FORMACION-E1,Recepción por etapa o control del periodo; no acredita ejecución,C07 13.3.5; RT-22.02
1.11.4.1.2.5.1,"Acompañamiento E1, ola 2, día 5, zona 1",1.11,E1 Marcha blanca,"Acompañamiento E1, ola 2, día 5, zona 1",Resultado de la ficha de familia y del paquete original; registro individual por código/ventana,"No duplicar padres, informes, ingeniería ni cobertura; no incluye horas de contraparte ni obras/adquisiciones del cliente","Registro diario, turno, zona, tarea, incidencia y relevo; 8 h presencia días 1--14, luego 4 h presencia +4 h preparación.",José Lara Arce,8,L:8,"Asignación y cuadrante integrado por código; entornos, usuarios y habilitaciones autorizados",C07 13.3.5; RT-22.02,2027-12-05,2027-12-05,FORMACION-E1,Recepción por etapa o control del periodo; no acredita ejecución,C07 13.3.5; RT-22.02
1.11.4.1.2.5.2,"Acompañamiento E1, ola 2, día 5, zona 2",1.11,E1 Marcha blanca,"Acompañamiento E1, ola 2, día 5, zona 2",Resultado de la ficha de familia y del paquete original; registro individual por código/ventana,"No duplicar padres, informes, ingeniería ni cobertura; no incluye horas de contraparte ni obras/adquisiciones del cliente","Registro diario, turno, zona, tarea, incidencia y relevo; 8 h presencia días 1--14, luego 4 h presencia +4 h preparación.",José Lara Arce,8,L:8,"Asignación y cuadrante integrado por código; entornos, usuarios y habilitaciones autorizados",C07 13.3.5; RT-22.02,2027-12-05,2027-12-05,FORMACION-E1,Recepción por etapa o control del periodo; no acredita ejecución,C07 13.3.5; RT-22.02
1.11.4.1.2.6.1,"Acompañamiento E1, ola 2, día 6, zona 1",1.11,E1 Marcha blanca,"Acompañamiento E1, ola 2, día 6, zona 1",Resultado de la ficha de familia y del paquete original; registro individual por código/ventana,"No duplicar padres, informes, ingeniería ni cobertura; no incluye horas de contraparte ni obras/adquisiciones del cliente","Registro diario, turno, zona, tarea, incidencia y relevo; 8 h presencia días 1--14, luego 4 h presencia +4 h preparación.",José Lara Arce,8,L:8,"Asignación y cuadrante integrado por código; entornos, usuarios y habilitaciones autorizados",C07 13.3.5; RT-22.02,2027-12-06,2027-12-06,FORMACION-E1,Recepción por etapa o control del periodo; no acredita ejecución,C07 13.3.5; RT-22.02
1.11.4.1.2.6.2,"Acompañamiento E1, ola 2, día 6, zona 2",1.11,E1 Marcha blanca,"Acompañamiento E1, ola 2, día 6, zona 2",Resultado de la ficha de familia y del paquete original; registro individual por código/ventana,"No duplicar padres, informes, ingeniería ni cobertura; no incluye horas de contraparte ni obras/adquisiciones del cliente","Registro diario, turno, zona, tarea, incidencia y relevo; 8 h presencia días 1--14, luego 4 h presencia +4 h preparación.",José Lara Arce,8,L:8,"Asignación y cuadrante integrado por código; entornos, usuarios y habilitaciones autorizados",C07 13.3.5; RT-22.02,2027-12-06,2027-12-06,FORMACION-E1,Recepción por etapa o control del periodo; no acredita ejecución,C07 13.3.5; RT-22.02
1.11.4.1.2.7.1,"Acompañamiento E1, ola 2, día 7, zona 1",1.11,E1 Marcha blanca,"Acompañamiento E1, ola 2, día 7, zona 1",Resultado de la ficha de familia y del paquete original; registro individual por código/ventana,"No duplicar padres, informes, ingeniería ni cobertura; no incluye horas de contraparte ni obras/adquisiciones del cliente","Registro diario, turno, zona, tarea, incidencia y relevo; 8 h presencia días 1--14, luego 4 h presencia +4 h preparación.",José Lara Arce,8,L:8,"Asignación y cuadrante integrado por código; entornos, usuarios y habilitaciones autorizados",C07 13.3.5; RT-22.02,2027-12-07,2027-12-07,FORMACION-E1,Recepción por etapa o control del periodo; no acredita ejecución,C07 13.3.5; RT-22.02
1.11.4.1.2.7.2,"Acompañamiento E1, ola 2, día 7, zona 2",1.11,E1 Marcha blanca,"Acompañamiento E1, ola 2, día 7, zona 2",Resultado de la ficha de familia y del paquete original; registro individual por código/ventana,"No duplicar padres, informes, ingeniería ni cobertura; no incluye horas de contraparte ni obras/adquisiciones del cliente","Registro diario, turno, zona, tarea, incidencia y relevo; 8 h presencia días 1--14, luego 4 h presencia +4 h preparación.",José Lara Arce,8,L:8,"Asignación y cuadrante integrado por código; entornos, usuarios y habilitaciones autorizados",C07 13.3.5; RT-22.02,2027-12-07,2027-12-07,FORMACION-E1,Recepción por etapa o control del periodo; no acredita ejecución,C07 13.3.5; RT-22.02
1.11.4.1.2.8.1,"Acompañamiento E1, ola 2, día 8, zona 1",1.11,E1 Marcha blanca,"Acompañamiento E1, ola 2, día 8, zona 1",Resultado de la ficha de familia y del paquete original; registro individual por código/ventana,"No duplicar padres, informes, ingeniería ni cobertura; no incluye horas de contraparte ni obras/adquisiciones del cliente","Registro diario, turno, zona, tarea, incidencia y relevo; 8 h presencia días 1--14, luego 4 h presencia +4 h preparación.",José Lara Arce,8,L:8,"Asignación y cuadrante integrado por código; entornos, usuarios y habilitaciones autorizados",C07 13.3.5; RT-22.02,2027-12-08,2027-12-08,FORMACION-E1,Recepción por etapa o control del periodo; no acredita ejecución,C07 13.3.5; RT-22.02
1.11.4.1.2.8.2,"Acompañamiento E1, ola 2, día 8, zona 2",1.11,E1 Marcha blanca,"Acompañamiento E1, ola 2, día 8, zona 2",Resultado de la ficha de familia y del paquete original; registro individual por código/ventana,"No duplicar padres, informes, ingeniería ni cobertura; no incluye horas de contraparte ni obras/adquisiciones del cliente","Registro diario, turno, zona, tarea, incidencia y relevo; 8 h presencia días 1--14, luego 4 h presencia +4 h preparación.",José Lara Arce,8,L:8,"Asignación y cuadrante integrado por código; entornos, usuarios y habilitaciones autorizados",C07 13.3.5; RT-22.02,2027-12-08,2027-12-08,FORMACION-E1,Recepción por etapa o control del periodo; no acredita ejecución,C07 13.3.5; RT-22.02
1.11.4.1.2.9.1,"Acompañamiento E1, ola 2, día 9, zona 1",1.11,E1 Marcha blanca,"Acompañamiento E1, ola 2, día 9, zona 1",Resultado de la ficha de familia y del paquete original; registro individual por código/ventana,"No duplicar padres, informes, ingeniería ni cobertura; no incluye horas de contraparte ni obras/adquisiciones del cliente","Registro diario, turno, zona, tarea, incidencia y relevo; 8 h presencia días 1--14, luego 4 h presencia +4 h preparación.",José Lara Arce,8,L:8,"Asignación y cuadrante integrado por código; entornos, usuarios y habilitaciones autorizados",C07 13.3.5; RT-22.02,2027-12-09,2027-12-09,FORMACION-E1,Recepción por etapa o control del periodo; no acredita ejecución,C07 13.3.5; RT-22.02
1.11.4.1.2.9.2,"Acompañamiento E1, ola 2, día 9, zona 2",1.11,E1 Marcha blanca,"Acompañamiento E1, ola 2, día 9, zona 2",Resultado de la ficha de familia y del paquete original; registro individual por código/ventana,"No duplicar padres, informes, ingeniería ni cobertura; no incluye horas de contraparte ni obras/adquisiciones del cliente","Registro diario, turno, zona, tarea, incidencia y relevo; 8 h presencia días 1--14, luego 4 h presencia +4 h preparación.",José Lara Arce,8,L:8,"Asignación y cuadrante integrado por código; entornos, usuarios y habilitaciones autorizados",C07 13.3.5; RT-22.02,2027-12-09,2027-12-09,FORMACION-E1,Recepción por etapa o control del periodo; no acredita ejecución,C07 13.3.5; RT-22.02
1.11.4.1.2.10.1,"Acompañamiento E1, ola 2, día 10, zona 1",1.11,E1 Marcha blanca,"Acompañamiento E1, ola 2, día 10, zona 1",Resultado de la ficha de familia y del paquete original; registro individual por código/ventana,"No duplicar padres, informes, ingeniería ni cobertura; no incluye horas de contraparte ni obras/adquisiciones del cliente","Registro diario, turno, zona, tarea, incidencia y relevo; 8 h presencia días 1--14, luego 4 h presencia +4 h preparación.",José Lara Arce,8,L:8,"Asignación y cuadrante integrado por código; entornos, usuarios y habilitaciones autorizados",C07 13.3.5; RT-22.02,2027-12-10,2027-12-10,FORMACION-E1,Recepción por etapa o control del periodo; no acredita ejecución,C07 13.3.5; RT-22.02
1.11.4.1.2.10.2,"Acompañamiento E1, ola 2, día 10, zona 2",1.11,E1 Marcha blanca,"Acompañamiento E1, ola 2, día 10, zona 2",Resultado de la ficha de familia y del paquete original; registro individual por código/ventana,"No duplicar padres, informes, ingeniería ni cobertura; no incluye horas de contraparte ni obras/adquisiciones del cliente","Registro diario, turno, zona, tarea, incidencia y relevo; 8 h presencia días 1--14, luego 4 h presencia +4 h preparación.",José Lara Arce,8,L:8,"Asignación y cuadrante integrado por código; entornos, usuarios y habilitaciones autorizados",C07 13.3.5; RT-22.02,2027-12-10,2027-12-10,FORMACION-E1,Recepción por etapa o control del periodo; no acredita ejecución,C07 13.3.5; RT-22.02
1.11.4.1.2.11.1,"Acompañamiento E1, ola 2, día 11, zona 1",1.11,E1 Marcha blanca,"Acompañamiento E1, ola 2, día 11, zona 1",Resultado de la ficha de familia y del paquete original; registro individual por código/ventana,"No duplicar padres, informes, ingeniería ni cobertura; no incluye horas de contraparte ni obras/adquisiciones del cliente","Registro diario, turno, zona, tarea, incidencia y relevo; 8 h presencia días 1--14, luego 4 h presencia +4 h preparación.",José Lara Arce,8,L:8,"Asignación y cuadrante integrado por código; entornos, usuarios y habilitaciones autorizados",C07 13.3.5; RT-22.02,2027-12-11,2027-12-11,FORMACION-E1,Recepción por etapa o control del periodo; no acredita ejecución,C07 13.3.5; RT-22.02
1.11.4.1.2.11.2,"Acompañamiento E1, ola 2, día 11, zona 2",1.11,E1 Marcha blanca,"Acompañamiento E1, ola 2, día 11, zona 2",Resultado de la ficha de familia y del paquete original; registro individual por código/ventana,"No duplicar padres, informes, ingeniería ni cobertura; no incluye horas de contraparte ni obras/adquisiciones del cliente","Registro diario, turno, zona, tarea, incidencia y relevo; 8 h presencia días 1--14, luego 4 h presencia +4 h preparación.",José Lara Arce,8,L:8,"Asignación y cuadrante integrado por código; entornos, usuarios y habilitaciones autorizados",C07 13.3.5; RT-22.02,2027-12-11,2027-12-11,FORMACION-E1,Recepción por etapa o control del periodo; no acredita ejecución,C07 13.3.5; RT-22.02
1.11.4.1.2.12.1,"Acompañamiento E1, ola 2, día 12, zona 1",1.11,E1 Marcha blanca,"Acompañamiento E1, ola 2, día 12, zona 1",Resultado de la ficha de familia y del paquete original; registro individual por código/ventana,"No duplicar padres, informes, ingeniería ni cobertura; no incluye horas de contraparte ni obras/adquisiciones del cliente","Registro diario, turno, zona, tarea, incidencia y relevo; 8 h presencia días 1--14, luego 4 h presencia +4 h preparación.",José Lara Arce,8,L:8,"Asignación y cuadrante integrado por código; entornos, usuarios y habilitaciones autorizados",C07 13.3.5; RT-22.02,2027-12-12,2027-12-12,FORMACION-E1,Recepción por etapa o control del periodo; no acredita ejecución,C07 13.3.5; RT-22.02
1.11.4.1.2.12.2,"Acompañamiento E1, ola 2, día 12, zona 2",1.11,E1 Marcha blanca,"Acompañamiento E1, ola 2, día 12, zona 2",Resultado de la ficha de familia y del paquete original; registro individual por código/ventana,"No duplicar padres, informes, ingeniería ni cobertura; no incluye horas de contraparte ni obras/adquisiciones del cliente","Registro diario, turno, zona, tarea, incidencia y relevo; 8 h presencia días 1--14, luego 4 h presencia +4 h preparación.",José Lara Arce,8,L:8,"Asignación y cuadrante integrado por código; entornos, usuarios y habilitaciones autorizados",C07 13.3.5; RT-22.02,2027-12-12,2027-12-12,FORMACION-E1,Recepción por etapa o control del periodo; no acredita ejecución,C07 13.3.5; RT-22.02
1.11.4.1.2.13.1,"Acompañamiento E1, ola 2, día 13, zona 1",1.11,E1 Marcha blanca,"Acompañamiento E1, ola 2, día 13, zona 1",Resultado de la ficha de familia y del paquete original; registro individual por código/ventana,"No duplicar padres, informes, ingeniería ni cobertura; no incluye horas de contraparte ni obras/adquisiciones del cliente","Registro diario, turno, zona, tarea, incidencia y relevo; 8 h presencia días 1--14, luego 4 h presencia +4 h preparación.",José Lara Arce,8,L:8,"Asignación y cuadrante integrado por código; entornos, usuarios y habilitaciones autorizados",C07 13.3.5; RT-22.02,2027-12-13,2027-12-13,FORMACION-E1,Recepción por etapa o control del periodo; no acredita ejecución,C07 13.3.5; RT-22.02
1.11.4.1.2.13.2,"Acompañamiento E1, ola 2, día 13, zona 2",1.11,E1 Marcha blanca,"Acompañamiento E1, ola 2, día 13, zona 2",Resultado de la ficha de familia y del paquete original; registro individual por código/ventana,"No duplicar padres, informes, ingeniería ni cobertura; no incluye horas de contraparte ni obras/adquisiciones del cliente","Registro diario, turno, zona, tarea, incidencia y relevo; 8 h presencia días 1--14, luego 4 h presencia +4 h preparación.",José Lara Arce,8,L:8,"Asignación y cuadrante integrado por código; entornos, usuarios y habilitaciones autorizados",C07 13.3.5; RT-22.02,2027-12-13,2027-12-13,FORMACION-E1,Recepción por etapa o control del periodo; no acredita ejecución,C07 13.3.5; RT-22.02
1.11.4.1.2.14.1,"Acompañamiento E1, ola 2, día 14, zona 1",1.11,E1 Marcha blanca,"Acompañamiento E1, ola 2, día 14, zona 1",Resultado de la ficha de familia y del paquete original; registro individual por código/ventana,"No duplicar padres, informes, ingeniería ni cobertura; no incluye horas de contraparte ni obras/adquisiciones del cliente","Registro diario, turno, zona, tarea, incidencia y relevo; 8 h presencia días 1--14, luego 4 h presencia +4 h preparación.",José Lara Arce,8,L:8,"Asignación y cuadrante integrado por código; entornos, usuarios y habilitaciones autorizados",C07 13.3.5; RT-22.02,2027-12-14,2027-12-14,FORMACION-E1,Recepción por etapa o control del periodo; no acredita ejecución,C07 13.3.5; RT-22.02
1.11.4.1.2.14.2,"Acompañamiento E1, ola 2, día 14, zona 2",1.11,E1 Marcha blanca,"Acompañamiento E1, ola 2, día 14, zona 2",Resultado de la ficha de familia y del paquete original; registro individual por código/ventana,"No duplicar padres, informes, ingeniería ni cobertura; no incluye horas de contraparte ni obras/adquisiciones del cliente","Registro diario, turno, zona, tarea, incidencia y relevo; 8 h presencia días 1--14, luego 4 h presencia +4 h preparación.",José Lara Arce,8,L:8,"Asignación y cuadrante integrado por código; entornos, usuarios y habilitaciones autorizados",C07 13.3.5; RT-22.02,2027-12-14,2027-12-14,FORMACION-E1,Recepción por etapa o control del periodo; no acredita ejecución,C07 13.3.5; RT-22.02
1.11.4.1.2.15.1,"Acompañamiento E1, ola 2, día 15, zona 1",1.11,E1 Marcha blanca,"Acompañamiento E1, ola 2, día 15, zona 1",Resultado de la ficha de familia y del paquete original; registro individual por código/ventana,"No duplicar padres, informes, ingeniería ni cobertura; no incluye horas de contraparte ni obras/adquisiciones del cliente","Registro diario, turno, zona, tarea, incidencia y relevo; 8 h presencia días 1--14, luego 4 h presencia +4 h preparación.",José Lara Arce,8,L:8,"Asignación y cuadrante integrado por código; entornos, usuarios y habilitaciones autorizados",C07 13.3.5; RT-22.02,2027-12-15,2027-12-15,FORMACION-E1,Recepción por etapa o control del periodo; no acredita ejecución,C07 13.3.5; RT-22.02
1.11.4.1.2.15.2,"Acompañamiento E1, ola 2, día 15, zona 2",1.11,E1 Marcha blanca,"Acompañamiento E1, ola 2, día 15, zona 2",Resultado de la ficha de familia y del paquete original; registro individual por código/ventana,"No duplicar padres, informes, ingeniería ni cobertura; no incluye horas de contraparte ni obras/adquisiciones del cliente","Registro diario, turno, zona, tarea, incidencia y relevo; 8 h presencia días 1--14, luego 4 h presencia +4 h preparación.",José Lara Arce,8,L:8,"Asignación y cuadrante integrado por código; entornos, usuarios y habilitaciones autorizados",C07 13.3.5; RT-22.02,2027-12-15,2027-12-15,FORMACION-E1,Recepción por etapa o control del periodo; no acredita ejecución,C07 13.3.5; RT-22.02
1.11.4.1.2.16.1,"Acompañamiento E1, ola 2, día 16, zona 1",1.11,E1 Marcha blanca,"Acompañamiento E1, ola 2, día 16, zona 1",Resultado de la ficha de familia y del paquete original; registro individual por código/ventana,"No duplicar padres, informes, ingeniería ni cobertura; no incluye horas de contraparte ni obras/adquisiciones del cliente","Registro diario, turno, zona, tarea, incidencia y relevo; 8 h presencia días 1--14, luego 4 h presencia +4 h preparación.",José Lara Arce,8,L:8,"Asignación y cuadrante integrado por código; entornos, usuarios y habilitaciones autorizados",C07 13.3.5; RT-22.02,2027-12-16,2027-12-16,FORMACION-E1,Recepción por etapa o control del periodo; no acredita ejecución,C07 13.3.5; RT-22.02
1.11.4.1.2.16.2,"Acompañamiento E1, ola 2, día 16, zona 2",1.11,E1 Marcha blanca,"Acompañamiento E1, ola 2, día 16, zona 2",Resultado de la ficha de familia y del paquete original; registro individual por código/ventana,"No duplicar padres, informes, ingeniería ni cobertura; no incluye horas de contraparte ni obras/adquisiciones del cliente","Registro diario, turno, zona, tarea, incidencia y relevo; 8 h presencia días 1--14, luego 4 h presencia +4 h preparación.",José Lara Arce,8,L:8,"Asignación y cuadrante integrado por código; entornos, usuarios y habilitaciones autorizados",C07 13.3.5; RT-22.02,2027-12-16,2027-12-16,FORMACION-E1,Recepción por etapa o control del periodo; no acredita ejecución,C07 13.3.5; RT-22.02
1.11.4.1.2.17.1,"Acompañamiento E1, ola 2, día 17, zona 1",1.11,E1 Marcha blanca,"Acompañamiento E1, ola 2, día 17, zona 1",Resultado de la ficha de familia y del paquete original; registro individual por código/ventana,"No duplicar padres, informes, ingeniería ni cobertura; no incluye horas de contraparte ni obras/adquisiciones del cliente","Registro diario, turno, zona, tarea, incidencia y relevo; 8 h presencia días 1--14, luego 4 h presencia +4 h preparación.",José Lara Arce,8,L:8,"Asignación y cuadrante integrado por código; entornos, usuarios y habilitaciones autorizados",C07 13.3.5; RT-22.02,2027-12-17,2027-12-17,FORMACION-E1,Recepción por etapa o control del periodo; no acredita ejecución,C07 13.3.5; RT-22.02
1.11.4.1.2.17.2,"Acompañamiento E1, ola 2, día 17, zona 2",1.11,E1 Marcha blanca,"Acompañamiento E1, ola 2, día 17, zona 2",Resultado de la ficha de familia y del paquete original; registro individual por código/ventana,"No duplicar padres, informes, ingeniería ni cobertura; no incluye horas de contraparte ni obras/adquisiciones del cliente","Registro diario, turno, zona, tarea, incidencia y relevo; 8 h presencia días 1--14, luego 4 h presencia +4 h preparación.",José Lara Arce,8,L:8,"Asignación y cuadrante integrado por código; entornos, usuarios y habilitaciones autorizados",C07 13.3.5; RT-22.02,2027-12-17,2027-12-17,FORMACION-E1,Recepción por etapa o control del periodo; no acredita ejecución,C07 13.3.5; RT-22.02
1.11.4.1.2.18.1,"Acompañamiento E1, ola 2, día 18, zona 1",1.11,E1 Marcha blanca,"Acompañamiento E1, ola 2, día 18, zona 1",Resultado de la ficha de familia y del paquete original; registro individual por código/ventana,"No duplicar padres, informes, ingeniería ni cobertura; no incluye horas de contraparte ni obras/adquisiciones del cliente","Registro diario, turno, zona, tarea, incidencia y relevo; 8 h presencia días 1--14, luego 4 h presencia +4 h preparación.",José Lara Arce,8,L:8,"Asignación y cuadrante integrado por código; entornos, usuarios y habilitaciones autorizados",C07 13.3.5; RT-22.02,2027-12-18,2027-12-18,FORMACION-E1,Recepción por etapa o control del periodo; no acredita ejecución,C07 13.3.5; RT-22.02
1.11.4.1.2.18.2,"Acompañamiento E1, ola 2, día 18, zona 2",1.11,E1 Marcha blanca,"Acompañamiento E1, ola 2, día 18, zona 2",Resultado de la ficha de familia y del paquete original; registro individual por código/ventana,"No duplicar padres, informes, ingeniería ni cobertura; no incluye horas de contraparte ni obras/adquisiciones del cliente","Registro diario, turno, zona, tarea, incidencia y relevo; 8 h presencia días 1--14, luego 4 h presencia +4 h preparación.",José Lara Arce,8,L:8,"Asignación y cuadrante integrado por código; entornos, usuarios y habilitaciones autorizados",C07 13.3.5; RT-22.02,2027-12-18,2027-12-18,FORMACION-E1,Recepción por etapa o control del periodo; no acredita ejecución,C07 13.3.5; RT-22.02
1.11.4.1.2.19.1,"Acompañamiento E1, ola 2, día 19, zona 1",1.11,E1 Marcha blanca,"Acompañamiento E1, ola 2, día 19, zona 1",Resultado de la ficha de familia y del paquete original; registro individual por código/ventana,"No duplicar padres, informes, ingeniería ni cobertura; no incluye horas de contraparte ni obras/adquisiciones del cliente","Registro diario, turno, zona, tarea, incidencia y relevo; 8 h presencia días 1--14, luego 4 h presencia +4 h preparación.",José Lara Arce,8,L:8,"Asignación y cuadrante integrado por código; entornos, usuarios y habilitaciones autorizados",C07 13.3.5; RT-22.02,2027-12-19,2027-12-19,FORMACION-E1,Recepción por etapa o control del periodo; no acredita ejecución,C07 13.3.5; RT-22.02
1.11.4.1.2.19.2,"Acompañamiento E1, ola 2, día 19, zona 2",1.11,E1 Marcha blanca,"Acompañamiento E1, ola 2, día 19, zona 2",Resultado de la ficha de familia y del paquete original; registro individual por código/ventana,"No duplicar padres, informes, ingeniería ni cobertura; no incluye horas de contraparte ni obras/adquisiciones del cliente","Registro diario, turno, zona, tarea, incidencia y relevo; 8 h presencia días 1--14, luego 4 h presencia +4 h preparación.",José Lara Arce,8,L:8,"Asignación y cuadrante integrado por código; entornos, usuarios y habilitaciones autorizados",C07 13.3.5; RT-22.02,2027-12-19,2027-12-19,FORMACION-E1,Recepción por etapa o control del periodo; no acredita ejecución,C07 13.3.5; RT-22.02
1.11.4.1.2.20.1,"Acompañamiento E1, ola 2, día 20, zona 1",1.11,E1 Marcha blanca,"Acompañamiento E1, ola 2, día 20, zona 1",Resultado de la ficha de familia y del paquete original; registro individual por código/ventana,"No duplicar padres, informes, ingeniería ni cobertura; no incluye horas de contraparte ni obras/adquisiciones del cliente","Registro diario, turno, zona, tarea, incidencia y relevo; 8 h presencia días 1--14, luego 4 h presencia +4 h preparación.",José Lara Arce,8,L:8,"Asignación y cuadrante integrado por código; entornos, usuarios y habilitaciones autorizados",C07 13.3.5; RT-22.02,2027-12-20,2027-12-20,FORMACION-E1,Recepción por etapa o control del periodo; no acredita ejecución,C07 13.3.5; RT-22.02
1.11.4.1.2.20.2,"Acompañamiento E1, ola 2, día 20, zona 2",1.11,E1 Marcha blanca,"Acompañamiento E1, ola 2, día 20, zona 2",Resultado de la ficha de familia y del paquete original; registro individual por código/ventana,"No duplicar padres, informes, ingeniería ni cobertura; no incluye horas de contraparte ni obras/adquisiciones del cliente","Registro diario, turno, zona, tarea, incidencia y relevo; 8 h presencia días 1--14, luego 4 h presencia +4 h preparación.",José Lara Arce,8,L:8,"Asignación y cuadrante integrado por código; entornos, usuarios y habilitaciones autorizados",C07 13.3.5; RT-22.02,2027-12-20,2027-12-20,FORMACION-E1,Recepción por etapa o control del periodo; no acredita ejecución,C07 13.3.5; RT-22.02
1.11.4.1.2.21.1,"Acompañamiento E1, ola 2, día 21, zona 1",1.11,E1 Marcha blanca,"Acompañamiento E1, ola 2, día 21, zona 1",Resultado de la ficha de familia y del paquete original; registro individual por código/ventana,"No duplicar padres, informes, ingeniería ni cobertura; no incluye horas de contraparte ni obras/adquisiciones del cliente","Registro diario, turno, zona, tarea, incidencia y relevo; 8 h presencia días 1--14, luego 4 h presencia +4 h preparación.",José Lara Arce,8,L:8,"Asignación y cuadrante integrado por código; entornos, usuarios y habilitaciones autorizados",C07 13.3.5; RT-22.02,2027-12-21,2027-12-21,FORMACION-E1,Recepción por etapa o control del periodo; no acredita ejecución,C07 13.3.5; RT-22.02
1.11.4.1.2.21.2,"Acompañamiento E1, ola 2, día 21, zona 2",1.11,E1 Marcha blanca,"Acompañamiento E1, ola 2, día 21, zona 2",Resultado de la ficha de familia y del paquete original; registro individual por código/ventana,"No duplicar padres, informes, ingeniería ni cobertura; no incluye horas de contraparte ni obras/adquisiciones del cliente","Registro diario, turno, zona, tarea, incidencia y relevo; 8 h presencia días 1--14, luego 4 h presencia +4 h preparación.",José Lara Arce,8,L:8,"Asignación y cuadrante integrado por código; entornos, usuarios y habilitaciones autorizados",C07 13.3.5; RT-22.02,2027-12-21,2027-12-21,FORMACION-E1,Recepción por etapa o control del periodo; no acredita ejecución,C07 13.3.5; RT-22.02
1.11.4.1.2.22.1,"Acompañamiento E1, ola 2, día 22, zona 1",1.11,E1 Marcha blanca,"Acompañamiento E1, ola 2, día 22, zona 1",Resultado de la ficha de familia y del paquete original; registro individual por código/ventana,"No duplicar padres, informes, ingeniería ni cobertura; no incluye horas de contraparte ni obras/adquisiciones del cliente","Registro diario, turno, zona, tarea, incidencia y relevo; 8 h presencia días 1--14, luego 4 h presencia +4 h preparación.",José Lara Arce,8,L:8,"Asignación y cuadrante integrado por código; entornos, usuarios y habilitaciones autorizados",C07 13.3.5; RT-22.02,2027-12-22,2027-12-22,FORMACION-E1,Recepción por etapa o control del periodo; no acredita ejecución,C07 13.3.5; RT-22.02
1.11.4.1.2.22.2,"Acompañamiento E1, ola 2, día 22, zona 2",1.11,E1 Marcha blanca,"Acompañamiento E1, ola 2, día 22, zona 2",Resultado de la ficha de familia y del paquete original; registro individual por código/ventana,"No duplicar padres, informes, ingeniería ni cobertura; no incluye horas de contraparte ni obras/adquisiciones del cliente","Registro diario, turno, zona, tarea, incidencia y relevo; 8 h presencia días 1--14, luego 4 h presencia +4 h preparación.",José Lara Arce,8,L:8,"Asignación y cuadrante integrado por código; entornos, usuarios y habilitaciones autorizados",C07 13.3.5; RT-22.02,2027-12-22,2027-12-22,FORMACION-E1,Recepción por etapa o control del periodo; no acredita ejecución,C07 13.3.5; RT-22.02
1.11.4.1.2.23.1,"Acompañamiento E1, ola 2, día 23, zona 1",1.11,E1 Marcha blanca,"Acompañamiento E1, ola 2, día 23, zona 1",Resultado de la ficha de familia y del paquete original; registro individual por código/ventana,"No duplicar padres, informes, ingeniería ni cobertura; no incluye horas de contraparte ni obras/adquisiciones del cliente","Registro diario, turno, zona, tarea, incidencia y relevo; 8 h presencia días 1--14, luego 4 h presencia +4 h preparación.",José Lara Arce,8,L:8,"Asignación y cuadrante integrado por código; entornos, usuarios y habilitaciones autorizados",C07 13.3.5; RT-22.02,2027-12-23,2027-12-23,FORMACION-E1,Recepción por etapa o control del periodo; no acredita ejecución,C07 13.3.5; RT-22.02
1.11.4.1.2.23.2,"Acompañamiento E1, ola 2, día 23, zona 2",1.11,E1 Marcha blanca,"Acompañamiento E1, ola 2, día 23, zona 2",Resultado de la ficha de familia y del paquete original; registro individual por código/ventana,"No duplicar padres, informes, ingeniería ni cobertura; no incluye horas de contraparte ni obras/adquisiciones del cliente","Registro diario, turno, zona, tarea, incidencia y relevo; 8 h presencia días 1--14, luego 4 h presencia +4 h preparación.",José Lara Arce,8,L:8,"Asignación y cuadrante integrado por código; entornos, usuarios y habilitaciones autorizados",C07 13.3.5; RT-22.02,2027-12-23,2027-12-23,FORMACION-E1,Recepción por etapa o control del periodo; no acredita ejecución,C07 13.3.5; RT-22.02
1.11.4.1.2.24.1,"Acompañamiento E1, ola 2, día 24, zona 1",1.11,E1 Marcha blanca,"Acompañamiento E1, ola 2, día 24, zona 1",Resultado de la ficha de familia y del paquete original; registro individual por código/ventana,"No duplicar padres, informes, ingeniería ni cobertura; no incluye horas de contraparte ni obras/adquisiciones del cliente","Registro diario, turno, zona, tarea, incidencia y relevo; 8 h presencia días 1--14, luego 4 h presencia +4 h preparación.",José Lara Arce,8,L:8,"Asignación y cuadrante integrado por código; entornos, usuarios y habilitaciones autorizados",C07 13.3.5; RT-22.02,2027-12-24,2027-12-24,FORMACION-E1,Recepción por etapa o control del periodo; no acredita ejecución,C07 13.3.5; RT-22.02
1.11.4.1.2.24.2,"Acompañamiento E1, ola 2, día 24, zona 2",1.11,E1 Marcha blanca,"Acompañamiento E1, ola 2, día 24, zona 2",Resultado de la ficha de familia y del paquete original; registro individual por código/ventana,"No duplicar padres, informes, ingeniería ni cobertura; no incluye horas de contraparte ni obras/adquisiciones del cliente","Registro diario, turno, zona, tarea, incidencia y relevo; 8 h presencia días 1--14, luego 4 h presencia +4 h preparación.",José Lara Arce,8,L:8,"Asignación y cuadrante integrado por código; entornos, usuarios y habilitaciones autorizados",C07 13.3.5; RT-22.02,2027-12-24,2027-12-24,FORMACION-E1,Recepción por etapa o control del periodo; no acredita ejecución,C07 13.3.5; RT-22.02
1.11.4.1.2.25.1,"Acompañamiento E1, ola 2, día 25, zona 1",1.11,E1 Marcha blanca,"Acompañamiento E1, ola 2, día 25, zona 1",Resultado de la ficha de familia y del paquete original; registro individual por código/ventana,"No duplicar padres, informes, ingeniería ni cobertura; no incluye horas de contraparte ni obras/adquisiciones del cliente","Registro diario, turno, zona, tarea, incidencia y relevo; 8 h presencia días 1--14, luego 4 h presencia +4 h preparación.",José Lara Arce,8,L:8,"Asignación y cuadrante integrado por código; entornos, usuarios y habilitaciones autorizados",C07 13.3.5; RT-22.02,2027-12-25,2027-12-25,FORMACION-E1,Recepción por etapa o control del periodo; no acredita ejecución,C07 13.3.5; RT-22.02
1.11.4.1.2.25.2,"Acompañamiento E1, ola 2, día 25, zona 2",1.11,E1 Marcha blanca,"Acompañamiento E1, ola 2, día 25, zona 2",Resultado de la ficha de familia y del paquete original; registro individual por código/ventana,"No duplicar padres, informes, ingeniería ni cobertura; no incluye horas de contraparte ni obras/adquisiciones del cliente","Registro diario, turno, zona, tarea, incidencia y relevo; 8 h presencia días 1--14, luego 4 h presencia +4 h preparación.",José Lara Arce,8,L:8,"Asignación y cuadrante integrado por código; entornos, usuarios y habilitaciones autorizados",C07 13.3.5; RT-22.02,2027-12-25,2027-12-25,FORMACION-E1,Recepción por etapa o control del periodo; no acredita ejecución,C07 13.3.5; RT-22.02
1.11.4.1.2.26.1,"Acompañamiento E1, ola 2, día 26, zona 1",1.11,E1 Marcha blanca,"Acompañamiento E1, ola 2, día 26, zona 1",Resultado de la ficha de familia y del paquete original; registro individual por código/ventana,"No duplicar padres, informes, ingeniería ni cobertura; no incluye horas de contraparte ni obras/adquisiciones del cliente","Registro diario, turno, zona, tarea, incidencia y relevo; 8 h presencia días 1--14, luego 4 h presencia +4 h preparación.",José Lara Arce,8,L:8,"Asignación y cuadrante integrado por código; entornos, usuarios y habilitaciones autorizados",C07 13.3.5; RT-22.02,2027-12-26,2027-12-26,FORMACION-E1,Recepción por etapa o control del periodo; no acredita ejecución,C07 13.3.5; RT-22.02
1.11.4.1.2.26.2,"Acompañamiento E1, ola 2, día 26, zona 2",1.11,E1 Marcha blanca,"Acompañamiento E1, ola 2, día 26, zona 2",Resultado de la ficha de familia y del paquete original; registro individual por código/ventana,"No duplicar padres, informes, ingeniería ni cobertura; no incluye horas de contraparte ni obras/adquisiciones del cliente","Registro diario, turno, zona, tarea, incidencia y relevo; 8 h presencia días 1--14, luego 4 h presencia +4 h preparación.",José Lara Arce,8,L:8,"Asignación y cuadrante integrado por código; entornos, usuarios y habilitaciones autorizados",C07 13.3.5; RT-22.02,2027-12-26,2027-12-26,FORMACION-E1,Recepción por etapa o control del periodo; no acredita ejecución,C07 13.3.5; RT-22.02
1.11.4.1.2.27.1,"Acompañamiento E1, ola 2, día 27, zona 1",1.11,E1 Marcha blanca,"Acompañamiento E1, ola 2, día 27, zona 1",Resultado de la ficha de familia y del paquete original; registro individual por código/ventana,"No duplicar padres, informes, ingeniería ni cobertura; no incluye horas de contraparte ni obras/adquisiciones del cliente","Registro diario, turno, zona, tarea, incidencia y relevo; 8 h presencia días 1--14, luego 4 h presencia +4 h preparación.",José Lara Arce,8,L:8,"Asignación y cuadrante integrado por código; entornos, usuarios y habilitaciones autorizados",C07 13.3.5; RT-22.02,2027-12-27,2027-12-27,FORMACION-E1,Recepción por etapa o control del periodo; no acredita ejecución,C07 13.3.5; RT-22.02
1.11.4.1.2.27.2,"Acompañamiento E1, ola 2, día 27, zona 2",1.11,E1 Marcha blanca,"Acompañamiento E1, ola 2, día 27, zona 2",Resultado de la ficha de familia y del paquete original; registro individual por código/ventana,"No duplicar padres, informes, ingeniería ni cobertura; no incluye horas de contraparte ni obras/adquisiciones del cliente","Registro diario, turno, zona, tarea, incidencia y relevo; 8 h presencia días 1--14, luego 4 h presencia +4 h preparación.",José Lara Arce,8,L:8,"Asignación y cuadrante integrado por código; entornos, usuarios y habilitaciones autorizados",C07 13.3.5; RT-22.02,2027-12-27,2027-12-27,FORMACION-E1,Recepción por etapa o control del periodo; no acredita ejecución,C07 13.3.5; RT-22.02
1.11.4.1.2.28.1,"Acompañamiento E1, ola 2, día 28, zona 1",1.11,E1 Marcha blanca,"Acompañamiento E1, ola 2, día 28, zona 1",Resultado de la ficha de familia y del paquete original; registro individual por código/ventana,"No duplicar padres, informes, ingeniería ni cobertura; no incluye horas de contraparte ni obras/adquisiciones del cliente","Registro diario, turno, zona, tarea, incidencia y relevo; 8 h presencia días 1--14, luego 4 h presencia +4 h preparación.",José Lara Arce,8,L:8,"Asignación y cuadrante integrado por código; entornos, usuarios y habilitaciones autorizados",C07 13.3.5; RT-22.02,2027-12-28,2027-12-28,FORMACION-E1,Recepción por etapa o control del periodo; no acredita ejecución,C07 13.3.5; RT-22.02
1.11.4.1.2.28.2,"Acompañamiento E1, ola 2, día 28, zona 2",1.11,E1 Marcha blanca,"Acompañamiento E1, ola 2, día 28, zona 2",Resultado de la ficha de familia y del paquete original; registro individual por código/ventana,"No duplicar padres, informes, ingeniería ni cobertura; no incluye horas de contraparte ni obras/adquisiciones del cliente","Registro diario, turno, zona, tarea, incidencia y relevo; 8 h presencia días 1--14, luego 4 h presencia +4 h preparación.",José Lara Arce,8,L:8,"Asignación y cuadrante integrado por código; entornos, usuarios y habilitaciones autorizados",C07 13.3.5; RT-22.02,2027-12-28,2027-12-28,FORMACION-E1,Recepción por etapa o control del periodo; no acredita ejecución,C07 13.3.5; RT-22.02
1.11.4.1.3.1.1,"Acompañamiento E1, ola 3, día 1, zona 1",1.11,E1 Marcha blanca,"Acompañamiento E1, ola 3, día 1, zona 1",Resultado de la ficha de familia y del paquete original; registro individual por código/ventana,"No duplicar padres, informes, ingeniería ni cobertura; no incluye horas de contraparte ni obras/adquisiciones del cliente","Registro diario, turno, zona, tarea, incidencia y relevo; 8 h presencia días 1--14, luego 4 h presencia +4 h preparación.",José Lara Arce,8,L:8,"Asignación y cuadrante integrado por código; entornos, usuarios y habilitaciones autorizados",C07 13.3.5; RT-22.02,2027-12-01,2027-12-01,FORMACION-E1,Recepción por etapa o control del periodo; no acredita ejecución,C07 13.3.5; RT-22.02
1.11.4.1.3.1.2,"Acompañamiento E1, ola 3, día 1, zona 2",1.11,E1 Marcha blanca,"Acompañamiento E1, ola 3, día 1, zona 2",Resultado de la ficha de familia y del paquete original; registro individual por código/ventana,"No duplicar padres, informes, ingeniería ni cobertura; no incluye horas de contraparte ni obras/adquisiciones del cliente","Registro diario, turno, zona, tarea, incidencia y relevo; 8 h presencia días 1--14, luego 4 h presencia +4 h preparación.",José Lara Arce,8,L:8,"Asignación y cuadrante integrado por código; entornos, usuarios y habilitaciones autorizados",C07 13.3.5; RT-22.02,2027-12-01,2027-12-01,FORMACION-E1,Recepción por etapa o control del periodo; no acredita ejecución,C07 13.3.5; RT-22.02
1.11.4.1.3.2.1,"Acompañamiento E1, ola 3, día 2, zona 1",1.11,E1 Marcha blanca,"Acompañamiento E1, ola 3, día 2, zona 1",Resultado de la ficha de familia y del paquete original; registro individual por código/ventana,"No duplicar padres, informes, ingeniería ni cobertura; no incluye horas de contraparte ni obras/adquisiciones del cliente","Registro diario, turno, zona, tarea, incidencia y relevo; 8 h presencia días 1--14, luego 4 h presencia +4 h preparación.",José Lara Arce,8,L:8,"Asignación y cuadrante integrado por código; entornos, usuarios y habilitaciones autorizados",C07 13.3.5; RT-22.02,2027-12-02,2027-12-02,FORMACION-E1,Recepción por etapa o control del periodo; no acredita ejecución,C07 13.3.5; RT-22.02
1.11.4.1.3.2.2,"Acompañamiento E1, ola 3, día 2, zona 2",1.11,E1 Marcha blanca,"Acompañamiento E1, ola 3, día 2, zona 2",Resultado de la ficha de familia y del paquete original; registro individual por código/ventana,"No duplicar padres, informes, ingeniería ni cobertura; no incluye horas de contraparte ni obras/adquisiciones del cliente","Registro diario, turno, zona, tarea, incidencia y relevo; 8 h presencia días 1--14, luego 4 h presencia +4 h preparación.",José Lara Arce,8,L:8,"Asignación y cuadrante integrado por código; entornos, usuarios y habilitaciones autorizados",C07 13.3.5; RT-22.02,2027-12-02,2027-12-02,FORMACION-E1,Recepción por etapa o control del periodo; no acredita ejecución,C07 13.3.5; RT-22.02
1.11.4.1.3.3.1,"Acompañamiento E1, ola 3, día 3, zona 1",1.11,E1 Marcha blanca,"Acompañamiento E1, ola 3, día 3, zona 1",Resultado de la ficha de familia y del paquete original; registro individual por código/ventana,"No duplicar padres, informes, ingeniería ni cobertura; no incluye horas de contraparte ni obras/adquisiciones del cliente","Registro diario, turno, zona, tarea, incidencia y relevo; 8 h presencia días 1--14, luego 4 h presencia +4 h preparación.",José Lara Arce,8,L:8,"Asignación y cuadrante integrado por código; entornos, usuarios y habilitaciones autorizados",C07 13.3.5; RT-22.02,2027-12-03,2027-12-03,FORMACION-E1,Recepción por etapa o control del periodo; no acredita ejecución,C07 13.3.5; RT-22.02
1.11.4.1.3.3.2,"Acompañamiento E1, ola 3, día 3, zona 2",1.11,E1 Marcha blanca,"Acompañamiento E1, ola 3, día 3, zona 2",Resultado de la ficha de familia y del paquete original; registro individual por código/ventana,"No duplicar padres, informes, ingeniería ni cobertura; no incluye horas de contraparte ni obras/adquisiciones del cliente","Registro diario, turno, zona, tarea, incidencia y relevo; 8 h presencia días 1--14, luego 4 h presencia +4 h preparación.",José Lara Arce,8,L:8,"Asignación y cuadrante integrado por código; entornos, usuarios y habilitaciones autorizados",C07 13.3.5; RT-22.02,2027-12-03,2027-12-03,FORMACION-E1,Recepción por etapa o control del periodo; no acredita ejecución,C07 13.3.5; RT-22.02
1.11.4.1.3.4.1,"Acompañamiento E1, ola 3, día 4, zona 1",1.11,E1 Marcha blanca,"Acompañamiento E1, ola 3, día 4, zona 1",Resultado de la ficha de familia y del paquete original; registro individual por código/ventana,"No duplicar padres, informes, ingeniería ni cobertura; no incluye horas de contraparte ni obras/adquisiciones del cliente","Registro diario, turno, zona, tarea, incidencia y relevo; 8 h presencia días 1--14, luego 4 h presencia +4 h preparación.",José Lara Arce,8,L:8,"Asignación y cuadrante integrado por código; entornos, usuarios y habilitaciones autorizados",C07 13.3.5; RT-22.02,2027-12-04,2027-12-04,FORMACION-E1,Recepción por etapa o control del periodo; no acredita ejecución,C07 13.3.5; RT-22.02
1.11.4.1.3.4.2,"Acompañamiento E1, ola 3, día 4, zona 2",1.11,E1 Marcha blanca,"Acompañamiento E1, ola 3, día 4, zona 2",Resultado de la ficha de familia y del paquete original; registro individual por código/ventana,"No duplicar padres, informes, ingeniería ni cobertura; no incluye horas de contraparte ni obras/adquisiciones del cliente","Registro diario, turno, zona, tarea, incidencia y relevo; 8 h presencia días 1--14, luego 4 h presencia +4 h preparación.",José Lara Arce,8,L:8,"Asignación y cuadrante integrado por código; entornos, usuarios y habilitaciones autorizados",C07 13.3.5; RT-22.02,2027-12-04,2027-12-04,FORMACION-E1,Recepción por etapa o control del periodo; no acredita ejecución,C07 13.3.5; RT-22.02
1.11.4.1.3.5.1,"Acompañamiento E1, ola 3, día 5, zona 1",1.11,E1 Marcha blanca,"Acompañamiento E1, ola 3, día 5, zona 1",Resultado de la ficha de familia y del paquete original; registro individual por código/ventana,"No duplicar padres, informes, ingeniería ni cobertura; no incluye horas de contraparte ni obras/adquisiciones del cliente","Registro diario, turno, zona, tarea, incidencia y relevo; 8 h presencia días 1--14, luego 4 h presencia +4 h preparación.",José Lara Arce,8,L:8,"Asignación y cuadrante integrado por código; entornos, usuarios y habilitaciones autorizados",C07 13.3.5; RT-22.02,2027-12-05,2027-12-05,FORMACION-E1,Recepción por etapa o control del periodo; no acredita ejecución,C07 13.3.5; RT-22.02
1.11.4.1.3.5.2,"Acompañamiento E1, ola 3, día 5, zona 2",1.11,E1 Marcha blanca,"Acompañamiento E1, ola 3, día 5, zona 2",Resultado de la ficha de familia y del paquete original; registro individual por código/ventana,"No duplicar padres, informes, ingeniería ni cobertura; no incluye horas de contraparte ni obras/adquisiciones del cliente","Registro diario, turno, zona, tarea, incidencia y relevo; 8 h presencia días 1--14, luego 4 h presencia +4 h preparación.",José Lara Arce,8,L:8,"Asignación y cuadrante integrado por código; entornos, usuarios y habilitaciones autorizados",C07 13.3.5; RT-22.02,2027-12-05,2027-12-05,FORMACION-E1,Recepción por etapa o control del periodo; no acredita ejecución,C07 13.3.5; RT-22.02
1.11.4.1.3.6.1,"Acompañamiento E1, ola 3, día 6, zona 1",1.11,E1 Marcha blanca,"Acompañamiento E1, ola 3, día 6, zona 1",Resultado de la ficha de familia y del paquete original; registro individual por código/ventana,"No duplicar padres, informes, ingeniería ni cobertura; no incluye horas de contraparte ni obras/adquisiciones del cliente","Registro diario, turno, zona, tarea, incidencia y relevo; 8 h presencia días 1--14, luego 4 h presencia +4 h preparación.",José Lara Arce,8,L:8,"Asignación y cuadrante integrado por código; entornos, usuarios y habilitaciones autorizados",C07 13.3.5; RT-22.02,2027-12-06,2027-12-06,FORMACION-E1,Recepción por etapa o control del periodo; no acredita ejecución,C07 13.3.5; RT-22.02
1.11.4.1.3.6.2,"Acompañamiento E1, ola 3, día 6, zona 2",1.11,E1 Marcha blanca,"Acompañamiento E1, ola 3, día 6, zona 2",Resultado de la ficha de familia y del paquete original; registro individual por código/ventana,"No duplicar padres, informes, ingeniería ni cobertura; no incluye horas de contraparte ni obras/adquisiciones del cliente","Registro diario, turno, zona, tarea, incidencia y relevo; 8 h presencia días 1--14, luego 4 h presencia +4 h preparación.",José Lara Arce,8,L:8,"Asignación y cuadrante integrado por código; entornos, usuarios y habilitaciones autorizados",C07 13.3.5; RT-22.02,2027-12-06,2027-12-06,FORMACION-E1,Recepción por etapa o control del periodo; no acredita ejecución,C07 13.3.5; RT-22.02
1.11.4.1.3.7.1,"Acompañamiento E1, ola 3, día 7, zona 1",1.11,E1 Marcha blanca,"Acompañamiento E1, ola 3, día 7, zona 1",Resultado de la ficha de familia y del paquete original; registro individual por código/ventana,"No duplicar padres, informes, ingeniería ni cobertura; no incluye horas de contraparte ni obras/adquisiciones del cliente","Registro diario, turno, zona, tarea, incidencia y relevo; 8 h presencia días 1--14, luego 4 h presencia +4 h preparación.",José Lara Arce,8,L:8,"Asignación y cuadrante integrado por código; entornos, usuarios y habilitaciones autorizados",C07 13.3.5; RT-22.02,2027-12-07,2027-12-07,FORMACION-E1,Recepción por etapa o control del periodo; no acredita ejecución,C07 13.3.5; RT-22.02
1.11.4.1.3.7.2,"Acompañamiento E1, ola 3, día 7, zona 2",1.11,E1 Marcha blanca,"Acompañamiento E1, ola 3, día 7, zona 2",Resultado de la ficha de familia y del paquete original; registro individual por código/ventana,"No duplicar padres, informes, ingeniería ni cobertura; no incluye horas de contraparte ni obras/adquisiciones del cliente","Registro diario, turno, zona, tarea, incidencia y relevo; 8 h presencia días 1--14, luego 4 h presencia +4 h preparación.",José Lara Arce,8,L:8,"Asignación y cuadrante integrado por código; entornos, usuarios y habilitaciones autorizados",C07 13.3.5; RT-22.02,2027-12-07,2027-12-07,FORMACION-E1,Recepción por etapa o control del periodo; no acredita ejecución,C07 13.3.5; RT-22.02
1.11.4.1.3.8.1,"Acompañamiento E1, ola 3, día 8, zona 1",1.11,E1 Marcha blanca,"Acompañamiento E1, ola 3, día 8, zona 1",Resultado de la ficha de familia y del paquete original; registro individual por código/ventana,"No duplicar padres, informes, ingeniería ni cobertura; no incluye horas de contraparte ni obras/adquisiciones del cliente","Registro diario, turno, zona, tarea, incidencia y relevo; 8 h presencia días 1--14, luego 4 h presencia +4 h preparación.",José Lara Arce,8,L:8,"Asignación y cuadrante integrado por código; entornos, usuarios y habilitaciones autorizados",C07 13.3.5; RT-22.02,2027-12-08,2027-12-08,FORMACION-E1,Recepción por etapa o control del periodo; no acredita ejecución,C07 13.3.5; RT-22.02
1.11.4.1.3.8.2,"Acompañamiento E1, ola 3, día 8, zona 2",1.11,E1 Marcha blanca,"Acompañamiento E1, ola 3, día 8, zona 2",Resultado de la ficha de familia y del paquete original; registro individual por código/ventana,"No duplicar padres, informes, ingeniería ni cobertura; no incluye horas de contraparte ni obras/adquisiciones del cliente","Registro diario, turno, zona, tarea, incidencia y relevo; 8 h presencia días 1--14, luego 4 h presencia +4 h preparación.",José Lara Arce,8,L:8,"Asignación y cuadrante integrado por código; entornos, usuarios y habilitaciones autorizados",C07 13.3.5; RT-22.02,2027-12-08,2027-12-08,FORMACION-E1,Recepción por etapa o control del periodo; no acredita ejecución,C07 13.3.5; RT-22.02
1.11.4.1.3.9.1,"Acompañamiento E1, ola 3, día 9, zona 1",1.11,E1 Marcha blanca,"Acompañamiento E1, ola 3, día 9, zona 1",Resultado de la ficha de familia y del paquete original; registro individual por código/ventana,"No duplicar padres, informes, ingeniería ni cobertura; no incluye horas de contraparte ni obras/adquisiciones del cliente","Registro diario, turno, zona, tarea, incidencia y relevo; 8 h presencia días 1--14, luego 4 h presencia +4 h preparación.",José Lara Arce,8,L:8,"Asignación y cuadrante integrado por código; entornos, usuarios y habilitaciones autorizados",C07 13.3.5; RT-22.02,2027-12-09,2027-12-09,FORMACION-E1,Recepción por etapa o control del periodo; no acredita ejecución,C07 13.3.5; RT-22.02
1.11.4.1.3.9.2,"Acompañamiento E1, ola 3, día 9, zona 2",1.11,E1 Marcha blanca,"Acompañamiento E1, ola 3, día 9, zona 2",Resultado de la ficha de familia y del paquete original; registro individual por código/ventana,"No duplicar padres, informes, ingeniería ni cobertura; no incluye horas de contraparte ni obras/adquisiciones del cliente","Registro diario, turno, zona, tarea, incidencia y relevo; 8 h presencia días 1--14, luego 4 h presencia +4 h preparación.",José Lara Arce,8,L:8,"Asignación y cuadrante integrado por código; entornos, usuarios y habilitaciones autorizados",C07 13.3.5; RT-22.02,2027-12-09,2027-12-09,FORMACION-E1,Recepción por etapa o control del periodo; no acredita ejecución,C07 13.3.5; RT-22.02
1.11.4.1.3.10.1,"Acompañamiento E1, ola 3, día 10, zona 1",1.11,E1 Marcha blanca,"Acompañamiento E1, ola 3, día 10, zona 1",Resultado de la ficha de familia y del paquete original; registro individual por código/ventana,"No duplicar padres, informes, ingeniería ni cobertura; no incluye horas de contraparte ni obras/adquisiciones del cliente","Registro diario, turno, zona, tarea, incidencia y relevo; 8 h presencia días 1--14, luego 4 h presencia +4 h preparación.",José Lara Arce,8,L:8,"Asignación y cuadrante integrado por código; entornos, usuarios y habilitaciones autorizados",C07 13.3.5; RT-22.02,2027-12-10,2027-12-10,FORMACION-E1,Recepción por etapa o control del periodo; no acredita ejecución,C07 13.3.5; RT-22.02
1.11.4.1.3.10.2,"Acompañamiento E1, ola 3, día 10, zona 2",1.11,E1 Marcha blanca,"Acompañamiento E1, ola 3, día 10, zona 2",Resultado de la ficha de familia y del paquete original; registro individual por código/ventana,"No duplicar padres, informes, ingeniería ni cobertura; no incluye horas de contraparte ni obras/adquisiciones del cliente","Registro diario, turno, zona, tarea, incidencia y relevo; 8 h presencia días 1--14, luego 4 h presencia +4 h preparación.",José Lara Arce,8,L:8,"Asignación y cuadrante integrado por código; entornos, usuarios y habilitaciones autorizados",C07 13.3.5; RT-22.02,2027-12-10,2027-12-10,FORMACION-E1,Recepción por etapa o control del periodo; no acredita ejecución,C07 13.3.5; RT-22.02
1.11.4.1.3.11.1,"Acompañamiento E1, ola 3, día 11, zona 1",1.11,E1 Marcha blanca,"Acompañamiento E1, ola 3, día 11, zona 1",Resultado de la ficha de familia y del paquete original; registro individual por código/ventana,"No duplicar padres, informes, ingeniería ni cobertura; no incluye horas de contraparte ni obras/adquisiciones del cliente","Registro diario, turno, zona, tarea, incidencia y relevo; 8 h presencia días 1--14, luego 4 h presencia +4 h preparación.",José Lara Arce,8,L:8,"Asignación y cuadrante integrado por código; entornos, usuarios y habilitaciones autorizados",C07 13.3.5; RT-22.02,2027-12-11,2027-12-11,FORMACION-E1,Recepción por etapa o control del periodo; no acredita ejecución,C07 13.3.5; RT-22.02
1.11.4.1.3.11.2,"Acompañamiento E1, ola 3, día 11, zona 2",1.11,E1 Marcha blanca,"Acompañamiento E1, ola 3, día 11, zona 2",Resultado de la ficha de familia y del paquete original; registro individual por código/ventana,"No duplicar padres, informes, ingeniería ni cobertura; no incluye horas de contraparte ni obras/adquisiciones del cliente","Registro diario, turno, zona, tarea, incidencia y relevo; 8 h presencia días 1--14, luego 4 h presencia +4 h preparación.",José Lara Arce,8,L:8,"Asignación y cuadrante integrado por código; entornos, usuarios y habilitaciones autorizados",C07 13.3.5; RT-22.02,2027-12-11,2027-12-11,FORMACION-E1,Recepción por etapa o control del periodo; no acredita ejecución,C07 13.3.5; RT-22.02
1.11.4.1.3.12.1,"Acompañamiento E1, ola 3, día 12, zona 1",1.11,E1 Marcha blanca,"Acompañamiento E1, ola 3, día 12, zona 1",Resultado de la ficha de familia y del paquete original; registro individual por código/ventana,"No duplicar padres, informes, ingeniería ni cobertura; no incluye horas de contraparte ni obras/adquisiciones del cliente","Registro diario, turno, zona, tarea, incidencia y relevo; 8 h presencia días 1--14, luego 4 h presencia +4 h preparación.",José Lara Arce,8,L:8,"Asignación y cuadrante integrado por código; entornos, usuarios y habilitaciones autorizados",C07 13.3.5; RT-22.02,2027-12-12,2027-12-12,FORMACION-E1,Recepción por etapa o control del periodo; no acredita ejecución,C07 13.3.5; RT-22.02
1.11.4.1.3.12.2,"Acompañamiento E1, ola 3, día 12, zona 2",1.11,E1 Marcha blanca,"Acompañamiento E1, ola 3, día 12, zona 2",Resultado de la ficha de familia y del paquete original; registro individual por código/ventana,"No duplicar padres, informes, ingeniería ni cobertura; no incluye horas de contraparte ni obras/adquisiciones del cliente","Registro diario, turno, zona, tarea, incidencia y relevo; 8 h presencia días 1--14, luego 4 h presencia +4 h preparación.",José Lara Arce,8,L:8,"Asignación y cuadrante integrado por código; entornos, usuarios y habilitaciones autorizados",C07 13.3.5; RT-22.02,2027-12-12,2027-12-12,FORMACION-E1,Recepción por etapa o control del periodo; no acredita ejecución,C07 13.3.5; RT-22.02
1.11.4.1.3.13.1,"Acompañamiento E1, ola 3, día 13, zona 1",1.11,E1 Marcha blanca,"Acompañamiento E1, ola 3, día 13, zona 1",Resultado de la ficha de familia y del paquete original; registro individual por código/ventana,"No duplicar padres, informes, ingeniería ni cobertura; no incluye horas de contraparte ni obras/adquisiciones del cliente","Registro diario, turno, zona, tarea, incidencia y relevo; 8 h presencia días 1--14, luego 4 h presencia +4 h preparación.",José Lara Arce,8,L:8,"Asignación y cuadrante integrado por código; entornos, usuarios y habilitaciones autorizados",C07 13.3.5; RT-22.02,2027-12-13,2027-12-13,FORMACION-E1,Recepción por etapa o control del periodo; no acredita ejecución,C07 13.3.5; RT-22.02
1.11.4.1.3.13.2,"Acompañamiento E1, ola 3, día 13, zona 2",1.11,E1 Marcha blanca,"Acompañamiento E1, ola 3, día 13, zona 2",Resultado de la ficha de familia y del paquete original; registro individual por código/ventana,"No duplicar padres, informes, ingeniería ni cobertura; no incluye horas de contraparte ni obras/adquisiciones del cliente","Registro diario, turno, zona, tarea, incidencia y relevo; 8 h presencia días 1--14, luego 4 h presencia +4 h preparación.",José Lara Arce,8,L:8,"Asignación y cuadrante integrado por código; entornos, usuarios y habilitaciones autorizados",C07 13.3.5; RT-22.02,2027-12-13,2027-12-13,FORMACION-E1,Recepción por etapa o control del periodo; no acredita ejecución,C07 13.3.5; RT-22.02
1.11.4.1.3.14.1,"Acompañamiento E1, ola 3, día 14, zona 1",1.11,E1 Marcha blanca,"Acompañamiento E1, ola 3, día 14, zona 1",Resultado de la ficha de familia y del paquete original; registro individual por código/ventana,"No duplicar padres, informes, ingeniería ni cobertura; no incluye horas de contraparte ni obras/adquisiciones del cliente","Registro diario, turno, zona, tarea, incidencia y relevo; 8 h presencia días 1--14, luego 4 h presencia +4 h preparación.",José Lara Arce,8,L:8,"Asignación y cuadrante integrado por código; entornos, usuarios y habilitaciones autorizados",C07 13.3.5; RT-22.02,2027-12-14,2027-12-14,FORMACION-E1,Recepción por etapa o control del periodo; no acredita ejecución,C07 13.3.5; RT-22.02
1.11.4.1.3.14.2,"Acompañamiento E1, ola 3, día 14, zona 2",1.11,E1 Marcha blanca,"Acompañamiento E1, ola 3, día 14, zona 2",Resultado de la ficha de familia y del paquete original; registro individual por código/ventana,"No duplicar padres, informes, ingeniería ni cobertura; no incluye horas de contraparte ni obras/adquisiciones del cliente","Registro diario, turno, zona, tarea, incidencia y relevo; 8 h presencia días 1--14, luego 4 h presencia +4 h preparación.",José Lara Arce,8,L:8,"Asignación y cuadrante integrado por código; entornos, usuarios y habilitaciones autorizados",C07 13.3.5; RT-22.02,2027-12-14,2027-12-14,FORMACION-E1,Recepción por etapa o control del periodo; no acredita ejecución,C07 13.3.5; RT-22.02
1.11.4.1.3.15.1,"Acompañamiento E1, ola 3, día 15, zona 1",1.11,E1 Marcha blanca,"Acompañamiento E1, ola 3, día 15, zona 1",Resultado de la ficha de familia y del paquete original; registro individual por código/ventana,"No duplicar padres, informes, ingeniería ni cobertura; no incluye horas de contraparte ni obras/adquisiciones del cliente","Registro diario, turno, zona, tarea, incidencia y relevo; 8 h presencia días 1--14, luego 4 h presencia +4 h preparación.",José Lara Arce,8,L:8,"Asignación y cuadrante integrado por código; entornos, usuarios y habilitaciones autorizados",C07 13.3.5; RT-22.02,2027-12-15,2027-12-15,FORMACION-E1,Recepción por etapa o control del periodo; no acredita ejecución,C07 13.3.5; RT-22.02
1.11.4.1.3.15.2,"Acompañamiento E1, ola 3, día 15, zona 2",1.11,E1 Marcha blanca,"Acompañamiento E1, ola 3, día 15, zona 2",Resultado de la ficha de familia y del paquete original; registro individual por código/ventana,"No duplicar padres, informes, ingeniería ni cobertura; no incluye horas de contraparte ni obras/adquisiciones del cliente","Registro diario, turno, zona, tarea, incidencia y relevo; 8 h presencia días 1--14, luego 4 h presencia +4 h preparación.",José Lara Arce,8,L:8,"Asignación y cuadrante integrado por código; entornos, usuarios y habilitaciones autorizados",C07 13.3.5; RT-22.02,2027-12-15,2027-12-15,FORMACION-E1,Recepción por etapa o control del periodo; no acredita ejecución,C07 13.3.5; RT-22.02
1.11.4.1.3.16.1,"Acompañamiento E1, ola 3, día 16, zona 1",1.11,E1 Marcha blanca,"Acompañamiento E1, ola 3, día 16, zona 1",Resultado de la ficha de familia y del paquete original; registro individual por código/ventana,"No duplicar padres, informes, ingeniería ni cobertura; no incluye horas de contraparte ni obras/adquisiciones del cliente","Registro diario, turno, zona, tarea, incidencia y relevo; 8 h presencia días 1--14, luego 4 h presencia +4 h preparación.",José Lara Arce,8,L:8,"Asignación y cuadrante integrado por código; entornos, usuarios y habilitaciones autorizados",C07 13.3.5; RT-22.02,2027-12-16,2027-12-16,FORMACION-E1,Recepción por etapa o control del periodo; no acredita ejecución,C07 13.3.5; RT-22.02
1.11.4.1.3.16.2,"Acompañamiento E1, ola 3, día 16, zona 2",1.11,E1 Marcha blanca,"Acompañamiento E1, ola 3, día 16, zona 2",Resultado de la ficha de familia y del paquete original; registro individual por código/ventana,"No duplicar padres, informes, ingeniería ni cobertura; no incluye horas de contraparte ni obras/adquisiciones del cliente","Registro diario, turno, zona, tarea, incidencia y relevo; 8 h presencia días 1--14, luego 4 h presencia +4 h preparación.",José Lara Arce,8,L:8,"Asignación y cuadrante integrado por código; entornos, usuarios y habilitaciones autorizados",C07 13.3.5; RT-22.02,2027-12-16,2027-12-16,FORMACION-E1,Recepción por etapa o control del periodo; no acredita ejecución,C07 13.3.5; RT-22.02
1.11.4.1.3.17.1,"Acompañamiento E1, ola 3, día 17, zona 1",1.11,E1 Marcha blanca,"Acompañamiento E1, ola 3, día 17, zona 1",Resultado de la ficha de familia y del paquete original; registro individual por código/ventana,"No duplicar padres, informes, ingeniería ni cobertura; no incluye horas de contraparte ni obras/adquisiciones del cliente","Registro diario, turno, zona, tarea, incidencia y relevo; 8 h presencia días 1--14, luego 4 h presencia +4 h preparación.",José Lara Arce,8,L:8,"Asignación y cuadrante integrado por código; entornos, usuarios y habilitaciones autorizados",C07 13.3.5; RT-22.02,2027-12-17,2027-12-17,FORMACION-E1,Recepción por etapa o control del periodo; no acredita ejecución,C07 13.3.5; RT-22.02
1.11.4.1.3.17.2,"Acompañamiento E1, ola 3, día 17, zona 2",1.11,E1 Marcha blanca,"Acompañamiento E1, ola 3, día 17, zona 2",Resultado de la ficha de familia y del paquete original; registro individual por código/ventana,"No duplicar padres, informes, ingeniería ni cobertura; no incluye horas de contraparte ni obras/adquisiciones del cliente","Registro diario, turno, zona, tarea, incidencia y relevo; 8 h presencia días 1--14, luego 4 h presencia +4 h preparación.",José Lara Arce,8,L:8,"Asignación y cuadrante integrado por código; entornos, usuarios y habilitaciones autorizados",C07 13.3.5; RT-22.02,2027-12-17,2027-12-17,FORMACION-E1,Recepción por etapa o control del periodo; no acredita ejecución,C07 13.3.5; RT-22.02
1.11.4.1.3.18.1,"Acompañamiento E1, ola 3, día 18, zona 1",1.11,E1 Marcha blanca,"Acompañamiento E1, ola 3, día 18, zona 1",Resultado de la ficha de familia y del paquete original; registro individual por código/ventana,"No duplicar padres, informes, ingeniería ni cobertura; no incluye horas de contraparte ni obras/adquisiciones del cliente","Registro diario, turno, zona, tarea, incidencia y relevo; 8 h presencia días 1--14, luego 4 h presencia +4 h preparación.",José Lara Arce,8,L:8,"Asignación y cuadrante integrado por código; entornos, usuarios y habilitaciones autorizados",C07 13.3.5; RT-22.02,2027-12-18,2027-12-18,FORMACION-E1,Recepción por etapa o control del periodo; no acredita ejecución,C07 13.3.5; RT-22.02
1.11.4.1.3.18.2,"Acompañamiento E1, ola 3, día 18, zona 2",1.11,E1 Marcha blanca,"Acompañamiento E1, ola 3, día 18, zona 2",Resultado de la ficha de familia y del paquete original; registro individual por código/ventana,"No duplicar padres, informes, ingeniería ni cobertura; no incluye horas de contraparte ni obras/adquisiciones del cliente","Registro diario, turno, zona, tarea, incidencia y relevo; 8 h presencia días 1--14, luego 4 h presencia +4 h preparación.",José Lara Arce,8,L:8,"Asignación y cuadrante integrado por código; entornos, usuarios y habilitaciones autorizados",C07 13.3.5; RT-22.02,2027-12-18,2027-12-18,FORMACION-E1,Recepción por etapa o control del periodo; no acredita ejecución,C07 13.3.5; RT-22.02
1.11.4.1.3.19.1,"Acompañamiento E1, ola 3, día 19, zona 1",1.11,E1 Marcha blanca,"Acompañamiento E1, ola 3, día 19, zona 1",Resultado de la ficha de familia y del paquete original; registro individual por código/ventana,"No duplicar padres, informes, ingeniería ni cobertura; no incluye horas de contraparte ni obras/adquisiciones del cliente","Registro diario, turno, zona, tarea, incidencia y relevo; 8 h presencia días 1--14, luego 4 h presencia +4 h preparación.",José Lara Arce,8,L:8,"Asignación y cuadrante integrado por código; entornos, usuarios y habilitaciones autorizados",C07 13.3.5; RT-22.02,2027-12-19,2027-12-19,FORMACION-E1,Recepción por etapa o control del periodo; no acredita ejecución,C07 13.3.5; RT-22.02
1.11.4.1.3.19.2,"Acompañamiento E1, ola 3, día 19, zona 2",1.11,E1 Marcha blanca,"Acompañamiento E1, ola 3, día 19, zona 2",Resultado de la ficha de familia y del paquete original; registro individual por código/ventana,"No duplicar padres, informes, ingeniería ni cobertura; no incluye horas de contraparte ni obras/adquisiciones del cliente","Registro diario, turno, zona, tarea, incidencia y relevo; 8 h presencia días 1--14, luego 4 h presencia +4 h preparación.",José Lara Arce,8,L:8,"Asignación y cuadrante integrado por código; entornos, usuarios y habilitaciones autorizados",C07 13.3.5; RT-22.02,2027-12-19,2027-12-19,FORMACION-E1,Recepción por etapa o control del periodo; no acredita ejecución,C07 13.3.5; RT-22.02
1.11.4.1.3.20.1,"Acompañamiento E1, ola 3, día 20, zona 1",1.11,E1 Marcha blanca,"Acompañamiento E1, ola 3, día 20, zona 1",Resultado de la ficha de familia y del paquete original; registro individual por código/ventana,"No duplicar padres, informes, ingeniería ni cobertura; no incluye horas de contraparte ni obras/adquisiciones del cliente","Registro diario, turno, zona, tarea, incidencia y relevo; 8 h presencia días 1--14, luego 4 h presencia +4 h preparación.",José Lara Arce,8,L:8,"Asignación y cuadrante integrado por código; entornos, usuarios y habilitaciones autorizados",C07 13.3.5; RT-22.02,2027-12-20,2027-12-20,FORMACION-E1,Recepción por etapa o control del periodo; no acredita ejecución,C07 13.3.5; RT-22.02
1.11.4.1.3.20.2,"Acompañamiento E1, ola 3, día 20, zona 2",1.11,E1 Marcha blanca,"Acompañamiento E1, ola 3, día 20, zona 2",Resultado de la ficha de familia y del paquete original; registro individual por código/ventana,"No duplicar padres, informes, ingeniería ni cobertura; no incluye horas de contraparte ni obras/adquisiciones del cliente","Registro diario, turno, zona, tarea, incidencia y relevo; 8 h presencia días 1--14, luego 4 h presencia +4 h preparación.",José Lara Arce,8,L:8,"Asignación y cuadrante integrado por código; entornos, usuarios y habilitaciones autorizados",C07 13.3.5; RT-22.02,2027-12-20,2027-12-20,FORMACION-E1,Recepción por etapa o control del periodo; no acredita ejecución,C07 13.3.5; RT-22.02
1.11.4.1.3.21.1,"Acompañamiento E1, ola 3, día 21, zona 1",1.11,E1 Marcha blanca,"Acompañamiento E1, ola 3, día 21, zona 1",Resultado de la ficha de familia y del paquete original; registro individual por código/ventana,"No duplicar padres, informes, ingeniería ni cobertura; no incluye horas de contraparte ni obras/adquisiciones del cliente","Registro diario, turno, zona, tarea, incidencia y relevo; 8 h presencia días 1--14, luego 4 h presencia +4 h preparación.",José Lara Arce,8,L:8,"Asignación y cuadrante integrado por código; entornos, usuarios y habilitaciones autorizados",C07 13.3.5; RT-22.02,2027-12-21,2027-12-21,FORMACION-E1,Recepción por etapa o control del periodo; no acredita ejecución,C07 13.3.5; RT-22.02
1.11.4.1.3.21.2,"Acompañamiento E1, ola 3, día 21, zona 2",1.11,E1 Marcha blanca,"Acompañamiento E1, ola 3, día 21, zona 2",Resultado de la ficha de familia y del paquete original; registro individual por código/ventana,"No duplicar padres, informes, ingeniería ni cobertura; no incluye horas de contraparte ni obras/adquisiciones del cliente","Registro diario, turno, zona, tarea, incidencia y relevo; 8 h presencia días 1--14, luego 4 h presencia +4 h preparación.",José Lara Arce,8,L:8,"Asignación y cuadrante integrado por código; entornos, usuarios y habilitaciones autorizados",C07 13.3.5; RT-22.02,2027-12-21,2027-12-21,FORMACION-E1,Recepción por etapa o control del periodo; no acredita ejecución,C07 13.3.5; RT-22.02
1.11.4.1.3.22.1,"Acompañamiento E1, ola 3, día 22, zona 1",1.11,E1 Marcha blanca,"Acompañamiento E1, ola 3, día 22, zona 1",Resultado de la ficha de familia y del paquete original; registro individual por código/ventana,"No duplicar padres, informes, ingeniería ni cobertura; no incluye horas de contraparte ni obras/adquisiciones del cliente","Registro diario, turno, zona, tarea, incidencia y relevo; 8 h presencia días 1--14, luego 4 h presencia +4 h preparación.",José Lara Arce,8,L:8,"Asignación y cuadrante integrado por código; entornos, usuarios y habilitaciones autorizados",C07 13.3.5; RT-22.02,2027-12-22,2027-12-22,FORMACION-E1,Recepción por etapa o control del periodo; no acredita ejecución,C07 13.3.5; RT-22.02
1.11.4.1.3.22.2,"Acompañamiento E1, ola 3, día 22, zona 2",1.11,E1 Marcha blanca,"Acompañamiento E1, ola 3, día 22, zona 2",Resultado de la ficha de familia y del paquete original; registro individual por código/ventana,"No duplicar padres, informes, ingeniería ni cobertura; no incluye horas de contraparte ni obras/adquisiciones del cliente","Registro diario, turno, zona, tarea, incidencia y relevo; 8 h presencia días 1--14, luego 4 h presencia +4 h preparación.",José Lara Arce,8,L:8,"Asignación y cuadrante integrado por código; entornos, usuarios y habilitaciones autorizados",C07 13.3.5; RT-22.02,2027-12-22,2027-12-22,FORMACION-E1,Recepción por etapa o control del periodo; no acredita ejecución,C07 13.3.5; RT-22.02
1.11.4.1.3.23.1,"Acompañamiento E1, ola 3, día 23, zona 1",1.11,E1 Marcha blanca,"Acompañamiento E1, ola 3, día 23, zona 1",Resultado de la ficha de familia y del paquete original; registro individual por código/ventana,"No duplicar padres, informes, ingeniería ni cobertura; no incluye horas de contraparte ni obras/adquisiciones del cliente","Registro diario, turno, zona, tarea, incidencia y relevo; 8 h presencia días 1--14, luego 4 h presencia +4 h preparación.",José Lara Arce,8,L:8,"Asignación y cuadrante integrado por código; entornos, usuarios y habilitaciones autorizados",C07 13.3.5; RT-22.02,2027-12-23,2027-12-23,FORMACION-E1,Recepción por etapa o control del periodo; no acredita ejecución,C07 13.3.5; RT-22.02
1.11.4.1.3.23.2,"Acompañamiento E1, ola 3, día 23, zona 2",1.11,E1 Marcha blanca,"Acompañamiento E1, ola 3, día 23, zona 2",Resultado de la ficha de familia y del paquete original; registro individual por código/ventana,"No duplicar padres, informes, ingeniería ni cobertura; no incluye horas de contraparte ni obras/adquisiciones del cliente","Registro diario, turno, zona, tarea, incidencia y relevo; 8 h presencia días 1--14, luego 4 h presencia +4 h preparación.",José Lara Arce,8,L:8,"Asignación y cuadrante integrado por código; entornos, usuarios y habilitaciones autorizados",C07 13.3.5; RT-22.02,2027-12-23,2027-12-23,FORMACION-E1,Recepción por etapa o control del periodo; no acredita ejecución,C07 13.3.5; RT-22.02
1.11.4.1.3.24.1,"Acompañamiento E1, ola 3, día 24, zona 1",1.11,E1 Marcha blanca,"Acompañamiento E1, ola 3, día 24, zona 1",Resultado de la ficha de familia y del paquete original; registro individual por código/ventana,"No duplicar padres, informes, ingeniería ni cobertura; no incluye horas de contraparte ni obras/adquisiciones del cliente","Registro diario, turno, zona, tarea, incidencia y relevo; 8 h presencia días 1--14, luego 4 h presencia +4 h preparación.",José Lara Arce,8,L:8,"Asignación y cuadrante integrado por código; entornos, usuarios y habilitaciones autorizados",C07 13.3.5; RT-22.02,2027-12-24,2027-12-24,FORMACION-E1,Recepción por etapa o control del periodo; no acredita ejecución,C07 13.3.5; RT-22.02
1.11.4.1.3.24.2,"Acompañamiento E1, ola 3, día 24, zona 2",1.11,E1 Marcha blanca,"Acompañamiento E1, ola 3, día 24, zona 2",Resultado de la ficha de familia y del paquete original; registro individual por código/ventana,"No duplicar padres, informes, ingeniería ni cobertura; no incluye horas de contraparte ni obras/adquisiciones del cliente","Registro diario, turno, zona, tarea, incidencia y relevo; 8 h presencia días 1--14, luego 4 h presencia +4 h preparación.",José Lara Arce,8,L:8,"Asignación y cuadrante integrado por código; entornos, usuarios y habilitaciones autorizados",C07 13.3.5; RT-22.02,2027-12-24,2027-12-24,FORMACION-E1,Recepción por etapa o control del periodo; no acredita ejecución,C07 13.3.5; RT-22.02
1.11.4.1.3.25.1,"Acompañamiento E1, ola 3, día 25, zona 1",1.11,E1 Marcha blanca,"Acompañamiento E1, ola 3, día 25, zona 1",Resultado de la ficha de familia y del paquete original; registro individual por código/ventana,"No duplicar padres, informes, ingeniería ni cobertura; no incluye horas de contraparte ni obras/adquisiciones del cliente","Registro diario, turno, zona, tarea, incidencia y relevo; 8 h presencia días 1--14, luego 4 h presencia +4 h preparación.",José Lara Arce,8,L:8,"Asignación y cuadrante integrado por código; entornos, usuarios y habilitaciones autorizados",C07 13.3.5; RT-22.02,2027-12-25,2027-12-25,FORMACION-E1,Recepción por etapa o control del periodo; no acredita ejecución,C07 13.3.5; RT-22.02
1.11.4.1.3.25.2,"Acompañamiento E1, ola 3, día 25, zona 2",1.11,E1 Marcha blanca,"Acompañamiento E1, ola 3, día 25, zona 2",Resultado de la ficha de familia y del paquete original; registro individual por código/ventana,"No duplicar padres, informes, ingeniería ni cobertura; no incluye horas de contraparte ni obras/adquisiciones del cliente","Registro diario, turno, zona, tarea, incidencia y relevo; 8 h presencia días 1--14, luego 4 h presencia +4 h preparación.",José Lara Arce,8,L:8,"Asignación y cuadrante integrado por código; entornos, usuarios y habilitaciones autorizados",C07 13.3.5; RT-22.02,2027-12-25,2027-12-25,FORMACION-E1,Recepción por etapa o control del periodo; no acredita ejecución,C07 13.3.5; RT-22.02
1.11.4.1.3.26.1,"Acompañamiento E1, ola 3, día 26, zona 1",1.11,E1 Marcha blanca,"Acompañamiento E1, ola 3, día 26, zona 1",Resultado de la ficha de familia y del paquete original; registro individual por código/ventana,"No duplicar padres, informes, ingeniería ni cobertura; no incluye horas de contraparte ni obras/adquisiciones del cliente","Registro diario, turno, zona, tarea, incidencia y relevo; 8 h presencia días 1--14, luego 4 h presencia +4 h preparación.",José Lara Arce,8,L:8,"Asignación y cuadrante integrado por código; entornos, usuarios y habilitaciones autorizados",C07 13.3.5; RT-22.02,2027-12-26,2027-12-26,FORMACION-E1,Recepción por etapa o control del periodo; no acredita ejecución,C07 13.3.5; RT-22.02
1.11.4.1.3.26.2,"Acompañamiento E1, ola 3, día 26, zona 2",1.11,E1 Marcha blanca,"Acompañamiento E1, ola 3, día 26, zona 2",Resultado de la ficha de familia y del paquete original; registro individual por código/ventana,"No duplicar padres, informes, ingeniería ni cobertura; no incluye horas de contraparte ni obras/adquisiciones del cliente","Registro diario, turno, zona, tarea, incidencia y relevo; 8 h presencia días 1--14, luego 4 h presencia +4 h preparación.",José Lara Arce,8,L:8,"Asignación y cuadrante integrado por código; entornos, usuarios y habilitaciones autorizados",C07 13.3.5; RT-22.02,2027-12-26,2027-12-26,FORMACION-E1,Recepción por etapa o control del periodo; no acredita ejecución,C07 13.3.5; RT-22.02
1.11.4.1.3.27.1,"Acompañamiento E1, ola 3, día 27, zona 1",1.11,E1 Marcha blanca,"Acompañamiento E1, ola 3, día 27, zona 1",Resultado de la ficha de familia y del paquete original; registro individual por código/ventana,"No duplicar padres, informes, ingeniería ni cobertura; no incluye horas de contraparte ni obras/adquisiciones del cliente","Registro diario, turno, zona, tarea, incidencia y relevo; 8 h presencia días 1--14, luego 4 h presencia +4 h preparación.",José Lara Arce,8,L:8,"Asignación y cuadrante integrado por código; entornos, usuarios y habilitaciones autorizados",C07 13.3.5; RT-22.02,2027-12-27,2027-12-27,FORMACION-E1,Recepción por etapa o control del periodo; no acredita ejecución,C07 13.3.5; RT-22.02
1.11.4.1.3.27.2,"Acompañamiento E1, ola 3, día 27, zona 2",1.11,E1 Marcha blanca,"Acompañamiento E1, ola 3, día 27, zona 2",Resultado de la ficha de familia y del paquete original; registro individual por código/ventana,"No duplicar padres, informes, ingeniería ni cobertura; no incluye horas de contraparte ni obras/adquisiciones del cliente","Registro diario, turno, zona, tarea, incidencia y relevo; 8 h presencia días 1--14, luego 4 h presencia +4 h preparación.",José Lara Arce,8,L:8,"Asignación y cuadrante integrado por código; entornos, usuarios y habilitaciones autorizados",C07 13.3.5; RT-22.02,2027-12-27,2027-12-27,FORMACION-E1,Recepción por etapa o control del periodo; no acredita ejecución,C07 13.3.5; RT-22.02
1.11.4.1.3.28.1,"Acompañamiento E1, ola 3, día 28, zona 1",1.11,E1 Marcha blanca,"Acompañamiento E1, ola 3, día 28, zona 1",Resultado de la ficha de familia y del paquete original; registro individual por código/ventana,"No duplicar padres, informes, ingeniería ni cobertura; no incluye horas de contraparte ni obras/adquisiciones del cliente","Registro diario, turno, zona, tarea, incidencia y relevo; 8 h presencia días 1--14, luego 4 h presencia +4 h preparación.",José Lara Arce,8,L:8,"Asignación y cuadrante integrado por código; entornos, usuarios y habilitaciones autorizados",C07 13.3.5; RT-22.02,2027-12-28,2027-12-28,FORMACION-E1,Recepción por etapa o control del periodo; no acredita ejecución,C07 13.3.5; RT-22.02
1.11.4.1.3.28.2,"Acompañamiento E1, ola 3, día 28, zona 2",1.11,E1 Marcha blanca,"Acompañamiento E1, ola 3, día 28, zona 2",Resultado de la ficha de familia y del paquete original; registro individual por código/ventana,"No duplicar padres, informes, ingeniería ni cobertura; no incluye horas de contraparte ni obras/adquisiciones del cliente","Registro diario, turno, zona, tarea, incidencia y relevo; 8 h presencia días 1--14, luego 4 h presencia +4 h preparación.",José Lara Arce,8,L:8,"Asignación y cuadrante integrado por código; entornos, usuarios y habilitaciones autorizados",C07 13.3.5; RT-22.02,2027-12-28,2027-12-28,FORMACION-E1,Recepción por etapa o control del periodo; no acredita ejecución,C07 13.3.5; RT-22.02
1.11.4.1.4.1.1,"Acompañamiento E1, ola 4, día 1, zona 1",1.11,E1 Marcha blanca,"Acompañamiento E1, ola 4, día 1, zona 1",Resultado de la ficha de familia y del paquete original; registro individual por código/ventana,"No duplicar padres, informes, ingeniería ni cobertura; no incluye horas de contraparte ni obras/adquisiciones del cliente","Registro diario, turno, zona, tarea, incidencia y relevo; 8 h presencia días 1--14, luego 4 h presencia +4 h preparación.",José Lara Arce,8,L:8,"Asignación y cuadrante integrado por código; entornos, usuarios y habilitaciones autorizados",C07 13.3.5; RT-22.02,2027-12-01,2027-12-01,FORMACION-E1,Recepción por etapa o control del periodo; no acredita ejecución,C07 13.3.5; RT-22.02
1.11.4.1.4.1.2,"Acompañamiento E1, ola 4, día 1, zona 2",1.11,E1 Marcha blanca,"Acompañamiento E1, ola 4, día 1, zona 2",Resultado de la ficha de familia y del paquete original; registro individual por código/ventana,"No duplicar padres, informes, ingeniería ni cobertura; no incluye horas de contraparte ni obras/adquisiciones del cliente","Registro diario, turno, zona, tarea, incidencia y relevo; 8 h presencia días 1--14, luego 4 h presencia +4 h preparación.",José Lara Arce,8,L:8,"Asignación y cuadrante integrado por código; entornos, usuarios y habilitaciones autorizados",C07 13.3.5; RT-22.02,2027-12-01,2027-12-01,FORMACION-E1,Recepción por etapa o control del periodo; no acredita ejecución,C07 13.3.5; RT-22.02
1.11.4.1.4.2.1,"Acompañamiento E1, ola 4, día 2, zona 1",1.11,E1 Marcha blanca,"Acompañamiento E1, ola 4, día 2, zona 1",Resultado de la ficha de familia y del paquete original; registro individual por código/ventana,"No duplicar padres, informes, ingeniería ni cobertura; no incluye horas de contraparte ni obras/adquisiciones del cliente","Registro diario, turno, zona, tarea, incidencia y relevo; 8 h presencia días 1--14, luego 4 h presencia +4 h preparación.",José Lara Arce,8,L:8,"Asignación y cuadrante integrado por código; entornos, usuarios y habilitaciones autorizados",C07 13.3.5; RT-22.02,2027-12-02,2027-12-02,FORMACION-E1,Recepción por etapa o control del periodo; no acredita ejecución,C07 13.3.5; RT-22.02
1.11.4.1.4.2.2,"Acompañamiento E1, ola 4, día 2, zona 2",1.11,E1 Marcha blanca,"Acompañamiento E1, ola 4, día 2, zona 2",Resultado de la ficha de familia y del paquete original; registro individual por código/ventana,"No duplicar padres, informes, ingeniería ni cobertura; no incluye horas de contraparte ni obras/adquisiciones del cliente","Registro diario, turno, zona, tarea, incidencia y relevo; 8 h presencia días 1--14, luego 4 h presencia +4 h preparación.",José Lara Arce,8,L:8,"Asignación y cuadrante integrado por código; entornos, usuarios y habilitaciones autorizados",C07 13.3.5; RT-22.02,2027-12-02,2027-12-02,FORMACION-E1,Recepción por etapa o control del periodo; no acredita ejecución,C07 13.3.5; RT-22.02
1.11.4.1.4.3.1,"Acompañamiento E1, ola 4, día 3, zona 1",1.11,E1 Marcha blanca,"Acompañamiento E1, ola 4, día 3, zona 1",Resultado de la ficha de familia y del paquete original; registro individual por código/ventana,"No duplicar padres, informes, ingeniería ni cobertura; no incluye horas de contraparte ni obras/adquisiciones del cliente","Registro diario, turno, zona, tarea, incidencia y relevo; 8 h presencia días 1--14, luego 4 h presencia +4 h preparación.",José Lara Arce,8,L:8,"Asignación y cuadrante integrado por código; entornos, usuarios y habilitaciones autorizados",C07 13.3.5; RT-22.02,2027-12-03,2027-12-03,FORMACION-E1,Recepción por etapa o control del periodo; no acredita ejecución,C07 13.3.5; RT-22.02
1.11.4.1.4.3.2,"Acompañamiento E1, ola 4, día 3, zona 2",1.11,E1 Marcha blanca,"Acompañamiento E1, ola 4, día 3, zona 2",Resultado de la ficha de familia y del paquete original; registro individual por código/ventana,"No duplicar padres, informes, ingeniería ni cobertura; no incluye horas de contraparte ni obras/adquisiciones del cliente","Registro diario, turno, zona, tarea, incidencia y relevo; 8 h presencia días 1--14, luego 4 h presencia +4 h preparación.",José Lara Arce,8,L:8,"Asignación y cuadrante integrado por código; entornos, usuarios y habilitaciones autorizados",C07 13.3.5; RT-22.02,2027-12-03,2027-12-03,FORMACION-E1,Recepción por etapa o control del periodo; no acredita ejecución,C07 13.3.5; RT-22.02
1.11.4.1.4.4.1,"Acompañamiento E1, ola 4, día 4, zona 1",1.11,E1 Marcha blanca,"Acompañamiento E1, ola 4, día 4, zona 1",Resultado de la ficha de familia y del paquete original; registro individual por código/ventana,"No duplicar padres, informes, ingeniería ni cobertura; no incluye horas de contraparte ni obras/adquisiciones del cliente","Registro diario, turno, zona, tarea, incidencia y relevo; 8 h presencia días 1--14, luego 4 h presencia +4 h preparación.",José Lara Arce,8,L:8,"Asignación y cuadrante integrado por código; entornos, usuarios y habilitaciones autorizados",C07 13.3.5; RT-22.02,2027-12-04,2027-12-04,FORMACION-E1,Recepción por etapa o control del periodo; no acredita ejecución,C07 13.3.5; RT-22.02
1.11.4.1.4.4.2,"Acompañamiento E1, ola 4, día 4, zona 2",1.11,E1 Marcha blanca,"Acompañamiento E1, ola 4, día 4, zona 2",Resultado de la ficha de familia y del paquete original; registro individual por código/ventana,"No duplicar padres, informes, ingeniería ni cobertura; no incluye horas de contraparte ni obras/adquisiciones del cliente","Registro diario, turno, zona, tarea, incidencia y relevo; 8 h presencia días 1--14, luego 4 h presencia +4 h preparación.",José Lara Arce,8,L:8,"Asignación y cuadrante integrado por código; entornos, usuarios y habilitaciones autorizados",C07 13.3.5; RT-22.02,2027-12-04,2027-12-04,FORMACION-E1,Recepción por etapa o control del periodo; no acredita ejecución,C07 13.3.5; RT-22.02
1.11.4.1.4.5.1,"Acompañamiento E1, ola 4, día 5, zona 1",1.11,E1 Marcha blanca,"Acompañamiento E1, ola 4, día 5, zona 1",Resultado de la ficha de familia y del paquete original; registro individual por código/ventana,"No duplicar padres, informes, ingeniería ni cobertura; no incluye horas de contraparte ni obras/adquisiciones del cliente","Registro diario, turno, zona, tarea, incidencia y relevo; 8 h presencia días 1--14, luego 4 h presencia +4 h preparación.",José Lara Arce,8,L:8,"Asignación y cuadrante integrado por código; entornos, usuarios y habilitaciones autorizados",C07 13.3.5; RT-22.02,2027-12-05,2027-12-05,FORMACION-E1,Recepción por etapa o control del periodo; no acredita ejecución,C07 13.3.5; RT-22.02
1.11.4.1.4.5.2,"Acompañamiento E1, ola 4, día 5, zona 2",1.11,E1 Marcha blanca,"Acompañamiento E1, ola 4, día 5, zona 2",Resultado de la ficha de familia y del paquete original; registro individual por código/ventana,"No duplicar padres, informes, ingeniería ni cobertura; no incluye horas de contraparte ni obras/adquisiciones del cliente","Registro diario, turno, zona, tarea, incidencia y relevo; 8 h presencia días 1--14, luego 4 h presencia +4 h preparación.",José Lara Arce,8,L:8,"Asignación y cuadrante integrado por código; entornos, usuarios y habilitaciones autorizados",C07 13.3.5; RT-22.02,2027-12-05,2027-12-05,FORMACION-E1,Recepción por etapa o control del periodo; no acredita ejecución,C07 13.3.5; RT-22.02
1.11.4.1.4.6.1,"Acompañamiento E1, ola 4, día 6, zona 1",1.11,E1 Marcha blanca,"Acompañamiento E1, ola 4, día 6, zona 1",Resultado de la ficha de familia y del paquete original; registro individual por código/ventana,"No duplicar padres, informes, ingeniería ni cobertura; no incluye horas de contraparte ni obras/adquisiciones del cliente","Registro diario, turno, zona, tarea, incidencia y relevo; 8 h presencia días 1--14, luego 4 h presencia +4 h preparación.",José Lara Arce,8,L:8,"Asignación y cuadrante integrado por código; entornos, usuarios y habilitaciones autorizados",C07 13.3.5; RT-22.02,2027-12-06,2027-12-06,FORMACION-E1,Recepción por etapa o control del periodo; no acredita ejecución,C07 13.3.5; RT-22.02
1.11.4.1.4.6.2,"Acompañamiento E1, ola 4, día 6, zona 2",1.11,E1 Marcha blanca,"Acompañamiento E1, ola 4, día 6, zona 2",Resultado de la ficha de familia y del paquete original; registro individual por código/ventana,"No duplicar padres, informes, ingeniería ni cobertura; no incluye horas de contraparte ni obras/adquisiciones del cliente","Registro diario, turno, zona, tarea, incidencia y relevo; 8 h presencia días 1--14, luego 4 h presencia +4 h preparación.",José Lara Arce,8,L:8,"Asignación y cuadrante integrado por código; entornos, usuarios y habilitaciones autorizados",C07 13.3.5; RT-22.02,2027-12-06,2027-12-06,FORMACION-E1,Recepción por etapa o control del periodo; no acredita ejecución,C07 13.3.5; RT-22.02
1.11.4.1.4.7.1,"Acompañamiento E1, ola 4, día 7, zona 1",1.11,E1 Marcha blanca,"Acompañamiento E1, ola 4, día 7, zona 1",Resultado de la ficha de familia y del paquete original; registro individual por código/ventana,"No duplicar padres, informes, ingeniería ni cobertura; no incluye horas de contraparte ni obras/adquisiciones del cliente","Registro diario, turno, zona, tarea, incidencia y relevo; 8 h presencia días 1--14, luego 4 h presencia +4 h preparación.",José Lara Arce,8,L:8,"Asignación y cuadrante integrado por código; entornos, usuarios y habilitaciones autorizados",C07 13.3.5; RT-22.02,2027-12-07,2027-12-07,FORMACION-E1,Recepción por etapa o control del periodo; no acredita ejecución,C07 13.3.5; RT-22.02
1.11.4.1.4.7.2,"Acompañamiento E1, ola 4, día 7, zona 2",1.11,E1 Marcha blanca,"Acompañamiento E1, ola 4, día 7, zona 2",Resultado de la ficha de familia y del paquete original; registro individual por código/ventana,"No duplicar padres, informes, ingeniería ni cobertura; no incluye horas de contraparte ni obras/adquisiciones del cliente","Registro diario, turno, zona, tarea, incidencia y relevo; 8 h presencia días 1--14, luego 4 h presencia +4 h preparación.",José Lara Arce,8,L:8,"Asignación y cuadrante integrado por código; entornos, usuarios y habilitaciones autorizados",C07 13.3.5; RT-22.02,2027-12-07,2027-12-07,FORMACION-E1,Recepción por etapa o control del periodo; no acredita ejecución,C07 13.3.5; RT-22.02
1.11.4.1.4.8.1,"Acompañamiento E1, ola 4, día 8, zona 1",1.11,E1 Marcha blanca,"Acompañamiento E1, ola 4, día 8, zona 1",Resultado de la ficha de familia y del paquete original; registro individual por código/ventana,"No duplicar padres, informes, ingeniería ni cobertura; no incluye horas de contraparte ni obras/adquisiciones del cliente","Registro diario, turno, zona, tarea, incidencia y relevo; 8 h presencia días 1--14, luego 4 h presencia +4 h preparación.",José Lara Arce,8,L:8,"Asignación y cuadrante integrado por código; entornos, usuarios y habilitaciones autorizados",C07 13.3.5; RT-22.02,2027-12-08,2027-12-08,FORMACION-E1,Recepción por etapa o control del periodo; no acredita ejecución,C07 13.3.5; RT-22.02
1.11.4.1.4.8.2,"Acompañamiento E1, ola 4, día 8, zona 2",1.11,E1 Marcha blanca,"Acompañamiento E1, ola 4, día 8, zona 2",Resultado de la ficha de familia y del paquete original; registro individual por código/ventana,"No duplicar padres, informes, ingeniería ni cobertura; no incluye horas de contraparte ni obras/adquisiciones del cliente","Registro diario, turno, zona, tarea, incidencia y relevo; 8 h presencia días 1--14, luego 4 h presencia +4 h preparación.",José Lara Arce,8,L:8,"Asignación y cuadrante integrado por código; entornos, usuarios y habilitaciones autorizados",C07 13.3.5; RT-22.02,2027-12-08,2027-12-08,FORMACION-E1,Recepción por etapa o control del periodo; no acredita ejecución,C07 13.3.5; RT-22.02
1.11.4.1.4.9.1,"Acompañamiento E1, ola 4, día 9, zona 1",1.11,E1 Marcha blanca,"Acompañamiento E1, ola 4, día 9, zona 1",Resultado de la ficha de familia y del paquete original; registro individual por código/ventana,"No duplicar padres, informes, ingeniería ni cobertura; no incluye horas de contraparte ni obras/adquisiciones del cliente","Registro diario, turno, zona, tarea, incidencia y relevo; 8 h presencia días 1--14, luego 4 h presencia +4 h preparación.",José Lara Arce,8,L:8,"Asignación y cuadrante integrado por código; entornos, usuarios y habilitaciones autorizados",C07 13.3.5; RT-22.02,2027-12-09,2027-12-09,FORMACION-E1,Recepción por etapa o control del periodo; no acredita ejecución,C07 13.3.5; RT-22.02
1.11.4.1.4.9.2,"Acompañamiento E1, ola 4, día 9, zona 2",1.11,E1 Marcha blanca,"Acompañamiento E1, ola 4, día 9, zona 2",Resultado de la ficha de familia y del paquete original; registro individual por código/ventana,"No duplicar padres, informes, ingeniería ni cobertura; no incluye horas de contraparte ni obras/adquisiciones del cliente","Registro diario, turno, zona, tarea, incidencia y relevo; 8 h presencia días 1--14, luego 4 h presencia +4 h preparación.",José Lara Arce,8,L:8,"Asignación y cuadrante integrado por código; entornos, usuarios y habilitaciones autorizados",C07 13.3.5; RT-22.02,2027-12-09,2027-12-09,FORMACION-E1,Recepción por etapa o control del periodo; no acredita ejecución,C07 13.3.5; RT-22.02
1.11.4.1.4.10.1,"Acompañamiento E1, ola 4, día 10, zona 1",1.11,E1 Marcha blanca,"Acompañamiento E1, ola 4, día 10, zona 1",Resultado de la ficha de familia y del paquete original; registro individual por código/ventana,"No duplicar padres, informes, ingeniería ni cobertura; no incluye horas de contraparte ni obras/adquisiciones del cliente","Registro diario, turno, zona, tarea, incidencia y relevo; 8 h presencia días 1--14, luego 4 h presencia +4 h preparación.",José Lara Arce,8,L:8,"Asignación y cuadrante integrado por código; entornos, usuarios y habilitaciones autorizados",C07 13.3.5; RT-22.02,2027-12-10,2027-12-10,FORMACION-E1,Recepción por etapa o control del periodo; no acredita ejecución,C07 13.3.5; RT-22.02
1.11.4.1.4.10.2,"Acompañamiento E1, ola 4, día 10, zona 2",1.11,E1 Marcha blanca,"Acompañamiento E1, ola 4, día 10, zona 2",Resultado de la ficha de familia y del paquete original; registro individual por código/ventana,"No duplicar padres, informes, ingeniería ni cobertura; no incluye horas de contraparte ni obras/adquisiciones del cliente","Registro diario, turno, zona, tarea, incidencia y relevo; 8 h presencia días 1--14, luego 4 h presencia +4 h preparación.",José Lara Arce,8,L:8,"Asignación y cuadrante integrado por código; entornos, usuarios y habilitaciones autorizados",C07 13.3.5; RT-22.02,2027-12-10,2027-12-10,FORMACION-E1,Recepción por etapa o control del periodo; no acredita ejecución,C07 13.3.5; RT-22.02
1.11.4.1.4.11.1,"Acompañamiento E1, ola 4, día 11, zona 1",1.11,E1 Marcha blanca,"Acompañamiento E1, ola 4, día 11, zona 1",Resultado de la ficha de familia y del paquete original; registro individual por código/ventana,"No duplicar padres, informes, ingeniería ni cobertura; no incluye horas de contraparte ni obras/adquisiciones del cliente","Registro diario, turno, zona, tarea, incidencia y relevo; 8 h presencia días 1--14, luego 4 h presencia +4 h preparación.",José Lara Arce,8,L:8,"Asignación y cuadrante integrado por código; entornos, usuarios y habilitaciones autorizados",C07 13.3.5; RT-22.02,2027-12-11,2027-12-11,FORMACION-E1,Recepción por etapa o control del periodo; no acredita ejecución,C07 13.3.5; RT-22.02
1.11.4.1.4.11.2,"Acompañamiento E1, ola 4, día 11, zona 2",1.11,E1 Marcha blanca,"Acompañamiento E1, ola 4, día 11, zona 2",Resultado de la ficha de familia y del paquete original; registro individual por código/ventana,"No duplicar padres, informes, ingeniería ni cobertura; no incluye horas de contraparte ni obras/adquisiciones del cliente","Registro diario, turno, zona, tarea, incidencia y relevo; 8 h presencia días 1--14, luego 4 h presencia +4 h preparación.",José Lara Arce,8,L:8,"Asignación y cuadrante integrado por código; entornos, usuarios y habilitaciones autorizados",C07 13.3.5; RT-22.02,2027-12-11,2027-12-11,FORMACION-E1,Recepción por etapa o control del periodo; no acredita ejecución,C07 13.3.5; RT-22.02
1.11.4.1.4.12.1,"Acompañamiento E1, ola 4, día 12, zona 1",1.11,E1 Marcha blanca,"Acompañamiento E1, ola 4, día 12, zona 1",Resultado de la ficha de familia y del paquete original; registro individual por código/ventana,"No duplicar padres, informes, ingeniería ni cobertura; no incluye horas de contraparte ni obras/adquisiciones del cliente","Registro diario, turno, zona, tarea, incidencia y relevo; 8 h presencia días 1--14, luego 4 h presencia +4 h preparación.",José Lara Arce,8,L:8,"Asignación y cuadrante integrado por código; entornos, usuarios y habilitaciones autorizados",C07 13.3.5; RT-22.02,2027-12-12,2027-12-12,FORMACION-E1,Recepción por etapa o control del periodo; no acredita ejecución,C07 13.3.5; RT-22.02
1.11.4.1.4.12.2,"Acompañamiento E1, ola 4, día 12, zona 2",1.11,E1 Marcha blanca,"Acompañamiento E1, ola 4, día 12, zona 2",Resultado de la ficha de familia y del paquete original; registro individual por código/ventana,"No duplicar padres, informes, ingeniería ni cobertura; no incluye horas de contraparte ni obras/adquisiciones del cliente","Registro diario, turno, zona, tarea, incidencia y relevo; 8 h presencia días 1--14, luego 4 h presencia +4 h preparación.",José Lara Arce,8,L:8,"Asignación y cuadrante integrado por código; entornos, usuarios y habilitaciones autorizados",C07 13.3.5; RT-22.02,2027-12-12,2027-12-12,FORMACION-E1,Recepción por etapa o control del periodo; no acredita ejecución,C07 13.3.5; RT-22.02
1.11.4.1.4.13.1,"Acompañamiento E1, ola 4, día 13, zona 1",1.11,E1 Marcha blanca,"Acompañamiento E1, ola 4, día 13, zona 1",Resultado de la ficha de familia y del paquete original; registro individual por código/ventana,"No duplicar padres, informes, ingeniería ni cobertura; no incluye horas de contraparte ni obras/adquisiciones del cliente","Registro diario, turno, zona, tarea, incidencia y relevo; 8 h presencia días 1--14, luego 4 h presencia +4 h preparación.",José Lara Arce,8,L:8,"Asignación y cuadrante integrado por código; entornos, usuarios y habilitaciones autorizados",C07 13.3.5; RT-22.02,2027-12-13,2027-12-13,FORMACION-E1,Recepción por etapa o control del periodo; no acredita ejecución,C07 13.3.5; RT-22.02
1.11.4.1.4.13.2,"Acompañamiento E1, ola 4, día 13, zona 2",1.11,E1 Marcha blanca,"Acompañamiento E1, ola 4, día 13, zona 2",Resultado de la ficha de familia y del paquete original; registro individual por código/ventana,"No duplicar padres, informes, ingeniería ni cobertura; no incluye horas de contraparte ni obras/adquisiciones del cliente","Registro diario, turno, zona, tarea, incidencia y relevo; 8 h presencia días 1--14, luego 4 h presencia +4 h preparación.",José Lara Arce,8,L:8,"Asignación y cuadrante integrado por código; entornos, usuarios y habilitaciones autorizados",C07 13.3.5; RT-22.02,2027-12-13,2027-12-13,FORMACION-E1,Recepción por etapa o control del periodo; no acredita ejecución,C07 13.3.5; RT-22.02
1.11.4.1.4.14.1,"Acompañamiento E1, ola 4, día 14, zona 1",1.11,E1 Marcha blanca,"Acompañamiento E1, ola 4, día 14, zona 1",Resultado de la ficha de familia y del paquete original; registro individual por código/ventana,"No duplicar padres, informes, ingeniería ni cobertura; no incluye horas de contraparte ni obras/adquisiciones del cliente","Registro diario, turno, zona, tarea, incidencia y relevo; 8 h presencia días 1--14, luego 4 h presencia +4 h preparación.",José Lara Arce,8,L:8,"Asignación y cuadrante integrado por código; entornos, usuarios y habilitaciones autorizados",C07 13.3.5; RT-22.02,2027-12-14,2027-12-14,FORMACION-E1,Recepción por etapa o control del periodo; no acredita ejecución,C07 13.3.5; RT-22.02
1.11.4.1.4.14.2,"Acompañamiento E1, ola 4, día 14, zona 2",1.11,E1 Marcha blanca,"Acompañamiento E1, ola 4, día 14, zona 2",Resultado de la ficha de familia y del paquete original; registro individual por código/ventana,"No duplicar padres, informes, ingeniería ni cobertura; no incluye horas de contraparte ni obras/adquisiciones del cliente","Registro diario, turno, zona, tarea, incidencia y relevo; 8 h presencia días 1--14, luego 4 h presencia +4 h preparación.",José Lara Arce,8,L:8,"Asignación y cuadrante integrado por código; entornos, usuarios y habilitaciones autorizados",C07 13.3.5; RT-22.02,2027-12-14,2027-12-14,FORMACION-E1,Recepción por etapa o control del periodo; no acredita ejecución,C07 13.3.5; RT-22.02
1.11.4.1.4.15.1,"Acompañamiento E1, ola 4, día 15, zona 1",1.11,E1 Marcha blanca,"Acompañamiento E1, ola 4, día 15, zona 1",Resultado de la ficha de familia y del paquete original; registro individual por código/ventana,"No duplicar padres, informes, ingeniería ni cobertura; no incluye horas de contraparte ni obras/adquisiciones del cliente","Registro diario, turno, zona, tarea, incidencia y relevo; 8 h presencia días 1--14, luego 4 h presencia +4 h preparación.",José Lara Arce,8,L:8,"Asignación y cuadrante integrado por código; entornos, usuarios y habilitaciones autorizados",C07 13.3.5; RT-22.02,2027-12-15,2027-12-15,FORMACION-E1,Recepción por etapa o control del periodo; no acredita ejecución,C07 13.3.5; RT-22.02
1.11.4.1.4.15.2,"Acompañamiento E1, ola 4, día 15, zona 2",1.11,E1 Marcha blanca,"Acompañamiento E1, ola 4, día 15, zona 2",Resultado de la ficha de familia y del paquete original; registro individual por código/ventana,"No duplicar padres, informes, ingeniería ni cobertura; no incluye horas de contraparte ni obras/adquisiciones del cliente","Registro diario, turno, zona, tarea, incidencia y relevo; 8 h presencia días 1--14, luego 4 h presencia +4 h preparación.",José Lara Arce,8,L:8,"Asignación y cuadrante integrado por código; entornos, usuarios y habilitaciones autorizados",C07 13.3.5; RT-22.02,2027-12-15,2027-12-15,FORMACION-E1,Recepción por etapa o control del periodo; no acredita ejecución,C07 13.3.5; RT-22.02
1.11.4.1.4.16.1,"Acompañamiento E1, ola 4, día 16, zona 1",1.11,E1 Marcha blanca,"Acompañamiento E1, ola 4, día 16, zona 1",Resultado de la ficha de familia y del paquete original; registro individual por código/ventana,"No duplicar padres, informes, ingeniería ni cobertura; no incluye horas de contraparte ni obras/adquisiciones del cliente","Registro diario, turno, zona, tarea, incidencia y relevo; 8 h presencia días 1--14, luego 4 h presencia +4 h preparación.",José Lara Arce,8,L:8,"Asignación y cuadrante integrado por código; entornos, usuarios y habilitaciones autorizados",C07 13.3.5; RT-22.02,2027-12-16,2027-12-16,FORMACION-E1,Recepción por etapa o control del periodo; no acredita ejecución,C07 13.3.5; RT-22.02
1.11.4.1.4.16.2,"Acompañamiento E1, ola 4, día 16, zona 2",1.11,E1 Marcha blanca,"Acompañamiento E1, ola 4, día 16, zona 2",Resultado de la ficha de familia y del paquete original; registro individual por código/ventana,"No duplicar padres, informes, ingeniería ni cobertura; no incluye horas de contraparte ni obras/adquisiciones del cliente","Registro diario, turno, zona, tarea, incidencia y relevo; 8 h presencia días 1--14, luego 4 h presencia +4 h preparación.",José Lara Arce,8,L:8,"Asignación y cuadrante integrado por código; entornos, usuarios y habilitaciones autorizados",C07 13.3.5; RT-22.02,2027-12-16,2027-12-16,FORMACION-E1,Recepción por etapa o control del periodo; no acredita ejecución,C07 13.3.5; RT-22.02
1.11.4.1.4.17.1,"Acompañamiento E1, ola 4, día 17, zona 1",1.11,E1 Marcha blanca,"Acompañamiento E1, ola 4, día 17, zona 1",Resultado de la ficha de familia y del paquete original; registro individual por código/ventana,"No duplicar padres, informes, ingeniería ni cobertura; no incluye horas de contraparte ni obras/adquisiciones del cliente","Registro diario, turno, zona, tarea, incidencia y relevo; 8 h presencia días 1--14, luego 4 h presencia +4 h preparación.",José Lara Arce,8,L:8,"Asignación y cuadrante integrado por código; entornos, usuarios y habilitaciones autorizados",C07 13.3.5; RT-22.02,2027-12-17,2027-12-17,FORMACION-E1,Recepción por etapa o control del periodo; no acredita ejecución,C07 13.3.5; RT-22.02
1.11.4.1.4.17.2,"Acompañamiento E1, ola 4, día 17, zona 2",1.11,E1 Marcha blanca,"Acompañamiento E1, ola 4, día 17, zona 2",Resultado de la ficha de familia y del paquete original; registro individual por código/ventana,"No duplicar padres, informes, ingeniería ni cobertura; no incluye horas de contraparte ni obras/adquisiciones del cliente","Registro diario, turno, zona, tarea, incidencia y relevo; 8 h presencia días 1--14, luego 4 h presencia +4 h preparación.",José Lara Arce,8,L:8,"Asignación y cuadrante integrado por código; entornos, usuarios y habilitaciones autorizados",C07 13.3.5; RT-22.02,2027-12-17,2027-12-17,FORMACION-E1,Recepción por etapa o control del periodo; no acredita ejecución,C07 13.3.5; RT-22.02
1.11.4.1.4.18.1,"Acompañamiento E1, ola 4, día 18, zona 1",1.11,E1 Marcha blanca,"Acompañamiento E1, ola 4, día 18, zona 1",Resultado de la ficha de familia y del paquete original; registro individual por código/ventana,"No duplicar padres, informes, ingeniería ni cobertura; no incluye horas de contraparte ni obras/adquisiciones del cliente","Registro diario, turno, zona, tarea, incidencia y relevo; 8 h presencia días 1--14, luego 4 h presencia +4 h preparación.",José Lara Arce,8,L:8,"Asignación y cuadrante integrado por código; entornos, usuarios y habilitaciones autorizados",C07 13.3.5; RT-22.02,2027-12-18,2027-12-18,FORMACION-E1,Recepción por etapa o control del periodo; no acredita ejecución,C07 13.3.5; RT-22.02
1.11.4.1.4.18.2,"Acompañamiento E1, ola 4, día 18, zona 2",1.11,E1 Marcha blanca,"Acompañamiento E1, ola 4, día 18, zona 2",Resultado de la ficha de familia y del paquete original; registro individual por código/ventana,"No duplicar padres, informes, ingeniería ni cobertura; no incluye horas de contraparte ni obras/adquisiciones del cliente","Registro diario, turno, zona, tarea, incidencia y relevo; 8 h presencia días 1--14, luego 4 h presencia +4 h preparación.",José Lara Arce,8,L:8,"Asignación y cuadrante integrado por código; entornos, usuarios y habilitaciones autorizados",C07 13.3.5; RT-22.02,2027-12-18,2027-12-18,FORMACION-E1,Recepción por etapa o control del periodo; no acredita ejecución,C07 13.3.5; RT-22.02
1.11.4.1.4.19.1,"Acompañamiento E1, ola 4, día 19, zona 1",1.11,E1 Marcha blanca,"Acompañamiento E1, ola 4, día 19, zona 1",Resultado de la ficha de familia y del paquete original; registro individual por código/ventana,"No duplicar padres, informes, ingeniería ni cobertura; no incluye horas de contraparte ni obras/adquisiciones del cliente","Registro diario, turno, zona, tarea, incidencia y relevo; 8 h presencia días 1--14, luego 4 h presencia +4 h preparación.",José Lara Arce,8,L:8,"Asignación y cuadrante integrado por código; entornos, usuarios y habilitaciones autorizados",C07 13.3.5; RT-22.02,2027-12-19,2027-12-19,FORMACION-E1,Recepción por etapa o control del periodo; no acredita ejecución,C07 13.3.5; RT-22.02
1.11.4.1.4.19.2,"Acompañamiento E1, ola 4, día 19, zona 2",1.11,E1 Marcha blanca,"Acompañamiento E1, ola 4, día 19, zona 2",Resultado de la ficha de familia y del paquete original; registro individual por código/ventana,"No duplicar padres, informes, ingeniería ni cobertura; no incluye horas de contraparte ni obras/adquisiciones del cliente","Registro diario, turno, zona, tarea, incidencia y relevo; 8 h presencia días 1--14, luego 4 h presencia +4 h preparación.",José Lara Arce,8,L:8,"Asignación y cuadrante integrado por código; entornos, usuarios y habilitaciones autorizados",C07 13.3.5; RT-22.02,2027-12-19,2027-12-19,FORMACION-E1,Recepción por etapa o control del periodo; no acredita ejecución,C07 13.3.5; RT-22.02
1.11.4.1.4.20.1,"Acompañamiento E1, ola 4, día 20, zona 1",1.11,E1 Marcha blanca,"Acompañamiento E1, ola 4, día 20, zona 1",Resultado de la ficha de familia y del paquete original; registro individual por código/ventana,"No duplicar padres, informes, ingeniería ni cobertura; no incluye horas de contraparte ni obras/adquisiciones del cliente","Registro diario, turno, zona, tarea, incidencia y relevo; 8 h presencia días 1--14, luego 4 h presencia +4 h preparación.",José Lara Arce,8,L:8,"Asignación y cuadrante integrado por código; entornos, usuarios y habilitaciones autorizados",C07 13.3.5; RT-22.02,2027-12-20,2027-12-20,FORMACION-E1,Recepción por etapa o control del periodo; no acredita ejecución,C07 13.3.5; RT-22.02
1.11.4.1.4.20.2,"Acompañamiento E1, ola 4, día 20, zona 2",1.11,E1 Marcha blanca,"Acompañamiento E1, ola 4, día 20, zona 2",Resultado de la ficha de familia y del paquete original; registro individual por código/ventana,"No duplicar padres, informes, ingeniería ni cobertura; no incluye horas de contraparte ni obras/adquisiciones del cliente","Registro diario, turno, zona, tarea, incidencia y relevo; 8 h presencia días 1--14, luego 4 h presencia +4 h preparación.",José Lara Arce,8,L:8,"Asignación y cuadrante integrado por código; entornos, usuarios y habilitaciones autorizados",C07 13.3.5; RT-22.02,2027-12-20,2027-12-20,FORMACION-E1,Recepción por etapa o control del periodo; no acredita ejecución,C07 13.3.5; RT-22.02
1.11.4.1.4.21.1,"Acompañamiento E1, ola 4, día 21, zona 1",1.11,E1 Marcha blanca,"Acompañamiento E1, ola 4, día 21, zona 1",Resultado de la ficha de familia y del paquete original; registro individual por código/ventana,"No duplicar padres, informes, ingeniería ni cobertura; no incluye horas de contraparte ni obras/adquisiciones del cliente","Registro diario, turno, zona, tarea, incidencia y relevo; 8 h presencia días 1--14, luego 4 h presencia +4 h preparación.",José Lara Arce,8,L:8,"Asignación y cuadrante integrado por código; entornos, usuarios y habilitaciones autorizados",C07 13.3.5; RT-22.02,2027-12-21,2027-12-21,FORMACION-E1,Recepción por etapa o control del periodo; no acredita ejecución,C07 13.3.5; RT-22.02
1.11.4.1.4.21.2,"Acompañamiento E1, ola 4, día 21, zona 2",1.11,E1 Marcha blanca,"Acompañamiento E1, ola 4, día 21, zona 2",Resultado de la ficha de familia y del paquete original; registro individual por código/ventana,"No duplicar padres, informes, ingeniería ni cobertura; no incluye horas de contraparte ni obras/adquisiciones del cliente","Registro diario, turno, zona, tarea, incidencia y relevo; 8 h presencia días 1--14, luego 4 h presencia +4 h preparación.",José Lara Arce,8,L:8,"Asignación y cuadrante integrado por código; entornos, usuarios y habilitaciones autorizados",C07 13.3.5; RT-22.02,2027-12-21,2027-12-21,FORMACION-E1,Recepción por etapa o control del periodo; no acredita ejecución,C07 13.3.5; RT-22.02
1.11.4.1.4.22.1,"Acompañamiento E1, ola 4, día 22, zona 1",1.11,E1 Marcha blanca,"Acompañamiento E1, ola 4, día 22, zona 1",Resultado de la ficha de familia y del paquete original; registro individual por código/ventana,"No duplicar padres, informes, ingeniería ni cobertura; no incluye horas de contraparte ni obras/adquisiciones del cliente","Registro diario, turno, zona, tarea, incidencia y relevo; 8 h presencia días 1--14, luego 4 h presencia +4 h preparación.",José Lara Arce,8,L:8,"Asignación y cuadrante integrado por código; entornos, usuarios y habilitaciones autorizados",C07 13.3.5; RT-22.02,2027-12-22,2027-12-22,FORMACION-E1,Recepción por etapa o control del periodo; no acredita ejecución,C07 13.3.5; RT-22.02
1.11.4.1.4.22.2,"Acompañamiento E1, ola 4, día 22, zona 2",1.11,E1 Marcha blanca,"Acompañamiento E1, ola 4, día 22, zona 2",Resultado de la ficha de familia y del paquete original; registro individual por código/ventana,"No duplicar padres, informes, ingeniería ni cobertura; no incluye horas de contraparte ni obras/adquisiciones del cliente","Registro diario, turno, zona, tarea, incidencia y relevo; 8 h presencia días 1--14, luego 4 h presencia +4 h preparación.",José Lara Arce,8,L:8,"Asignación y cuadrante integrado por código; entornos, usuarios y habilitaciones autorizados",C07 13.3.5; RT-22.02,2027-12-22,2027-12-22,FORMACION-E1,Recepción por etapa o control del periodo; no acredita ejecución,C07 13.3.5; RT-22.02
1.11.4.1.4.23.1,"Acompañamiento E1, ola 4, día 23, zona 1",1.11,E1 Marcha blanca,"Acompañamiento E1, ola 4, día 23, zona 1",Resultado de la ficha de familia y del paquete original; registro individual por código/ventana,"No duplicar padres, informes, ingeniería ni cobertura; no incluye horas de contraparte ni obras/adquisiciones del cliente","Registro diario, turno, zona, tarea, incidencia y relevo; 8 h presencia días 1--14, luego 4 h presencia +4 h preparación.",José Lara Arce,8,L:8,"Asignación y cuadrante integrado por código; entornos, usuarios y habilitaciones autorizados",C07 13.3.5; RT-22.02,2027-12-23,2027-12-23,FORMACION-E1,Recepción por etapa o control del periodo; no acredita ejecución,C07 13.3.5; RT-22.02
1.11.4.1.4.23.2,"Acompañamiento E1, ola 4, día 23, zona 2",1.11,E1 Marcha blanca,"Acompañamiento E1, ola 4, día 23, zona 2",Resultado de la ficha de familia y del paquete original; registro individual por código/ventana,"No duplicar padres, informes, ingeniería ni cobertura; no incluye horas de contraparte ni obras/adquisiciones del cliente","Registro diario, turno, zona, tarea, incidencia y relevo; 8 h presencia días 1--14, luego 4 h presencia +4 h preparación.",José Lara Arce,8,L:8,"Asignación y cuadrante integrado por código; entornos, usuarios y habilitaciones autorizados",C07 13.3.5; RT-22.02,2027-12-23,2027-12-23,FORMACION-E1,Recepción por etapa o control del periodo; no acredita ejecución,C07 13.3.5; RT-22.02
1.11.4.1.4.24.1,"Acompañamiento E1, ola 4, día 24, zona 1",1.11,E1 Marcha blanca,"Acompañamiento E1, ola 4, día 24, zona 1",Resultado de la ficha de familia y del paquete original; registro individual por código/ventana,"No duplicar padres, informes, ingeniería ni cobertura; no incluye horas de contraparte ni obras/adquisiciones del cliente","Registro diario, turno, zona, tarea, incidencia y relevo; 8 h presencia días 1--14, luego 4 h presencia +4 h preparación.",José Lara Arce,8,L:8,"Asignación y cuadrante integrado por código; entornos, usuarios y habilitaciones autorizados",C07 13.3.5; RT-22.02,2027-12-24,2027-12-24,FORMACION-E1,Recepción por etapa o control del periodo; no acredita ejecución,C07 13.3.5; RT-22.02
1.11.4.1.4.24.2,"Acompañamiento E1, ola 4, día 24, zona 2",1.11,E1 Marcha blanca,"Acompañamiento E1, ola 4, día 24, zona 2",Resultado de la ficha de familia y del paquete original; registro individual por código/ventana,"No duplicar padres, informes, ingeniería ni cobertura; no incluye horas de contraparte ni obras/adquisiciones del cliente","Registro diario, turno, zona, tarea, incidencia y relevo; 8 h presencia días 1--14, luego 4 h presencia +4 h preparación.",José Lara Arce,8,L:8,"Asignación y cuadrante integrado por código; entornos, usuarios y habilitaciones autorizados",C07 13.3.5; RT-22.02,2027-12-24,2027-12-24,FORMACION-E1,Recepción por etapa o control del periodo; no acredita ejecución,C07 13.3.5; RT-22.02
1.11.4.1.4.25.1,"Acompañamiento E1, ola 4, día 25, zona 1",1.11,E1 Marcha blanca,"Acompañamiento E1, ola 4, día 25, zona 1",Resultado de la ficha de familia y del paquete original; registro individual por código/ventana,"No duplicar padres, informes, ingeniería ni cobertura; no incluye horas de contraparte ni obras/adquisiciones del cliente","Registro diario, turno, zona, tarea, incidencia y relevo; 8 h presencia días 1--14, luego 4 h presencia +4 h preparación.",José Lara Arce,8,L:8,"Asignación y cuadrante integrado por código; entornos, usuarios y habilitaciones autorizados",C07 13.3.5; RT-22.02,2027-12-25,2027-12-25,FORMACION-E1,Recepción por etapa o control del periodo; no acredita ejecución,C07 13.3.5; RT-22.02
1.11.4.1.4.25.2,"Acompañamiento E1, ola 4, día 25, zona 2",1.11,E1 Marcha blanca,"Acompañamiento E1, ola 4, día 25, zona 2",Resultado de la ficha de familia y del paquete original; registro individual por código/ventana,"No duplicar padres, informes, ingeniería ni cobertura; no incluye horas de contraparte ni obras/adquisiciones del cliente","Registro diario, turno, zona, tarea, incidencia y relevo; 8 h presencia días 1--14, luego 4 h presencia +4 h preparación.",José Lara Arce,8,L:8,"Asignación y cuadrante integrado por código; entornos, usuarios y habilitaciones autorizados",C07 13.3.5; RT-22.02,2027-12-25,2027-12-25,FORMACION-E1,Recepción por etapa o control del periodo; no acredita ejecución,C07 13.3.5; RT-22.02
1.11.4.1.4.26.1,"Acompañamiento E1, ola 4, día 26, zona 1",1.11,E1 Marcha blanca,"Acompañamiento E1, ola 4, día 26, zona 1",Resultado de la ficha de familia y del paquete original; registro individual por código/ventana,"No duplicar padres, informes, ingeniería ni cobertura; no incluye horas de contraparte ni obras/adquisiciones del cliente","Registro diario, turno, zona, tarea, incidencia y relevo; 8 h presencia días 1--14, luego 4 h presencia +4 h preparación.",José Lara Arce,8,L:8,"Asignación y cuadrante integrado por código; entornos, usuarios y habilitaciones autorizados",C07 13.3.5; RT-22.02,2027-12-26,2027-12-26,FORMACION-E1,Recepción por etapa o control del periodo; no acredita ejecución,C07 13.3.5; RT-22.02
1.11.4.1.4.26.2,"Acompañamiento E1, ola 4, día 26, zona 2",1.11,E1 Marcha blanca,"Acompañamiento E1, ola 4, día 26, zona 2",Resultado de la ficha de familia y del paquete original; registro individual por código/ventana,"No duplicar padres, informes, ingeniería ni cobertura; no incluye horas de contraparte ni obras/adquisiciones del cliente","Registro diario, turno, zona, tarea, incidencia y relevo; 8 h presencia días 1--14, luego 4 h presencia +4 h preparación.",José Lara Arce,8,L:8,"Asignación y cuadrante integrado por código; entornos, usuarios y habilitaciones autorizados",C07 13.3.5; RT-22.02,2027-12-26,2027-12-26,FORMACION-E1,Recepción por etapa o control del periodo; no acredita ejecución,C07 13.3.5; RT-22.02
1.11.4.1.4.27.1,"Acompañamiento E1, ola 4, día 27, zona 1",1.11,E1 Marcha blanca,"Acompañamiento E1, ola 4, día 27, zona 1",Resultado de la ficha de familia y del paquete original; registro individual por código/ventana,"No duplicar padres, informes, ingeniería ni cobertura; no incluye horas de contraparte ni obras/adquisiciones del cliente","Registro diario, turno, zona, tarea, incidencia y relevo; 8 h presencia días 1--14, luego 4 h presencia +4 h preparación.",José Lara Arce,8,L:8,"Asignación y cuadrante integrado por código; entornos, usuarios y habilitaciones autorizados",C07 13.3.5; RT-22.02,2027-12-27,2027-12-27,FORMACION-E1,Recepción por etapa o control del periodo; no acredita ejecución,C07 13.3.5; RT-22.02
1.11.4.1.4.27.2,"Acompañamiento E1, ola 4, día 27, zona 2",1.11,E1 Marcha blanca,"Acompañamiento E1, ola 4, día 27, zona 2",Resultado de la ficha de familia y del paquete original; registro individual por código/ventana,"No duplicar padres, informes, ingeniería ni cobertura; no incluye horas de contraparte ni obras/adquisiciones del cliente","Registro diario, turno, zona, tarea, incidencia y relevo; 8 h presencia días 1--14, luego 4 h presencia +4 h preparación.",José Lara Arce,8,L:8,"Asignación y cuadrante integrado por código; entornos, usuarios y habilitaciones autorizados",C07 13.3.5; RT-22.02,2027-12-27,2027-12-27,FORMACION-E1,Recepción por etapa o control del periodo; no acredita ejecución,C07 13.3.5; RT-22.02
1.11.4.1.4.28.1,"Acompañamiento E1, ola 4, día 28, zona 1",1.11,E1 Marcha blanca,"Acompañamiento E1, ola 4, día 28, zona 1",Resultado de la ficha de familia y del paquete original; registro individual por código/ventana,"No duplicar padres, informes, ingeniería ni cobertura; no incluye horas de contraparte ni obras/adquisiciones del cliente","Registro diario, turno, zona, tarea, incidencia y relevo; 8 h presencia días 1--14, luego 4 h presencia +4 h preparación.",José Lara Arce,8,L:8,"Asignación y cuadrante integrado por código; entornos, usuarios y habilitaciones autorizados",C07 13.3.5; RT-22.02,2027-12-28,2027-12-28,FORMACION-E1,Recepción por etapa o control del periodo; no acredita ejecución,C07 13.3.5; RT-22.02
1.11.4.1.4.28.2,"Acompañamiento E1, ola 4, día 28, zona 2",1.11,E1 Marcha blanca,"Acompañamiento E1, ola 4, día 28, zona 2",Resultado de la ficha de familia y del paquete original; registro individual por código/ventana,"No duplicar padres, informes, ingeniería ni cobertura; no incluye horas de contraparte ni obras/adquisiciones del cliente","Registro diario, turno, zona, tarea, incidencia y relevo; 8 h presencia días 1--14, luego 4 h presencia +4 h preparación.",José Lara Arce,8,L:8,"Asignación y cuadrante integrado por código; entornos, usuarios y habilitaciones autorizados",C07 13.3.5; RT-22.02,2027-12-28,2027-12-28,FORMACION-E1,Recepción por etapa o control del periodo; no acredita ejecución,C07 13.3.5; RT-22.02
1.11.6.1.1.1,"Estabilización presencial E1, día 1, zona 1",1.11,E1 Estabilización,"Estabilización presencial E1, día 1, zona 1",Resultado de la ficha de familia y del paquete original; registro individual por código/ventana,"No duplicar padres, informes, ingeniería ni cobertura; no incluye horas de contraparte ni obras/adquisiciones del cliente","Dos puestos diarios, pantalanes y varadero, 28 días consecutivos, incluidos fines de semana; relevo e incidencias registrados.",José Lara Arce,8,O:8,"Asignación y cuadrante integrado por código; entornos, usuarios y habilitaciones autorizados",C07 13.3.9; presencia adicional a conciliación,2028-04-01,2028-04-01,CORTE-E1;MARCHA-E1,Recepción por etapa o control del periodo; no acredita ejecución,C07 13.3.9; presencia adicional a conciliación
1.11.6.1.1.2,"Estabilización presencial E1, día 1, zona 2",1.11,E1 Estabilización,"Estabilización presencial E1, día 1, zona 2",Resultado de la ficha de familia y del paquete original; registro individual por código/ventana,"No duplicar padres, informes, ingeniería ni cobertura; no incluye horas de contraparte ni obras/adquisiciones del cliente","Dos puestos diarios, pantalanes y varadero, 28 días consecutivos, incluidos fines de semana; relevo e incidencias registrados.",José Lara Arce,8,O:8,"Asignación y cuadrante integrado por código; entornos, usuarios y habilitaciones autorizados",C07 13.3.9; presencia adicional a conciliación,2028-04-01,2028-04-01,CORTE-E1;MARCHA-E1,Recepción por etapa o control del periodo; no acredita ejecución,C07 13.3.9; presencia adicional a conciliación
1.11.6.1.2.1,"Estabilización presencial E1, día 2, zona 1",1.11,E1 Estabilización,"Estabilización presencial E1, día 2, zona 1",Resultado de la ficha de familia y del paquete original; registro individual por código/ventana,"No duplicar padres, informes, ingeniería ni cobertura; no incluye horas de contraparte ni obras/adquisiciones del cliente","Dos puestos diarios, pantalanes y varadero, 28 días consecutivos, incluidos fines de semana; relevo e incidencias registrados.",José Lara Arce,8,O:8,"Asignación y cuadrante integrado por código; entornos, usuarios y habilitaciones autorizados",C07 13.3.9; presencia adicional a conciliación,2028-04-02,2028-04-02,CORTE-E1;MARCHA-E1,Recepción por etapa o control del periodo; no acredita ejecución,C07 13.3.9; presencia adicional a conciliación
1.11.6.1.2.2,"Estabilización presencial E1, día 2, zona 2",1.11,E1 Estabilización,"Estabilización presencial E1, día 2, zona 2",Resultado de la ficha de familia y del paquete original; registro individual por código/ventana,"No duplicar padres, informes, ingeniería ni cobertura; no incluye horas de contraparte ni obras/adquisiciones del cliente","Dos puestos diarios, pantalanes y varadero, 28 días consecutivos, incluidos fines de semana; relevo e incidencias registrados.",José Lara Arce,8,O:8,"Asignación y cuadrante integrado por código; entornos, usuarios y habilitaciones autorizados",C07 13.3.9; presencia adicional a conciliación,2028-04-02,2028-04-02,CORTE-E1;MARCHA-E1,Recepción por etapa o control del periodo; no acredita ejecución,C07 13.3.9; presencia adicional a conciliación
1.11.6.1.3.1,"Estabilización presencial E1, día 3, zona 1",1.11,E1 Estabilización,"Estabilización presencial E1, día 3, zona 1",Resultado de la ficha de familia y del paquete original; registro individual por código/ventana,"No duplicar padres, informes, ingeniería ni cobertura; no incluye horas de contraparte ni obras/adquisiciones del cliente","Dos puestos diarios, pantalanes y varadero, 28 días consecutivos, incluidos fines de semana; relevo e incidencias registrados.",José Lara Arce,8,O:8,"Asignación y cuadrante integrado por código; entornos, usuarios y habilitaciones autorizados",C07 13.3.9; presencia adicional a conciliación,2028-04-03,2028-04-03,CORTE-E1;MARCHA-E1,Recepción por etapa o control del periodo; no acredita ejecución,C07 13.3.9; presencia adicional a conciliación
1.11.6.1.3.2,"Estabilización presencial E1, día 3, zona 2",1.11,E1 Estabilización,"Estabilización presencial E1, día 3, zona 2",Resultado de la ficha de familia y del paquete original; registro individual por código/ventana,"No duplicar padres, informes, ingeniería ni cobertura; no incluye horas de contraparte ni obras/adquisiciones del cliente","Dos puestos diarios, pantalanes y varadero, 28 días consecutivos, incluidos fines de semana; relevo e incidencias registrados.",José Lara Arce,8,O:8,"Asignación y cuadrante integrado por código; entornos, usuarios y habilitaciones autorizados",C07 13.3.9; presencia adicional a conciliación,2028-04-03,2028-04-03,CORTE-E1;MARCHA-E1,Recepción por etapa o control del periodo; no acredita ejecución,C07 13.3.9; presencia adicional a conciliación
1.11.6.1.4.1,"Estabilización presencial E1, día 4, zona 1",1.11,E1 Estabilización,"Estabilización presencial E1, día 4, zona 1",Resultado de la ficha de familia y del paquete original; registro individual por código/ventana,"No duplicar padres, informes, ingeniería ni cobertura; no incluye horas de contraparte ni obras/adquisiciones del cliente","Dos puestos diarios, pantalanes y varadero, 28 días consecutivos, incluidos fines de semana; relevo e incidencias registrados.",José Lara Arce,8,O:8,"Asignación y cuadrante integrado por código; entornos, usuarios y habilitaciones autorizados",C07 13.3.9; presencia adicional a conciliación,2028-04-04,2028-04-04,CORTE-E1;MARCHA-E1,Recepción por etapa o control del periodo; no acredita ejecución,C07 13.3.9; presencia adicional a conciliación
1.11.6.1.4.2,"Estabilización presencial E1, día 4, zona 2",1.11,E1 Estabilización,"Estabilización presencial E1, día 4, zona 2",Resultado de la ficha de familia y del paquete original; registro individual por código/ventana,"No duplicar padres, informes, ingeniería ni cobertura; no incluye horas de contraparte ni obras/adquisiciones del cliente","Dos puestos diarios, pantalanes y varadero, 28 días consecutivos, incluidos fines de semana; relevo e incidencias registrados.",José Lara Arce,8,O:8,"Asignación y cuadrante integrado por código; entornos, usuarios y habilitaciones autorizados",C07 13.3.9; presencia adicional a conciliación,2028-04-04,2028-04-04,CORTE-E1;MARCHA-E1,Recepción por etapa o control del periodo; no acredita ejecución,C07 13.3.9; presencia adicional a conciliación
1.11.6.1.5.1,"Estabilización presencial E1, día 5, zona 1",1.11,E1 Estabilización,"Estabilización presencial E1, día 5, zona 1",Resultado de la ficha de familia y del paquete original; registro individual por código/ventana,"No duplicar padres, informes, ingeniería ni cobertura; no incluye horas de contraparte ni obras/adquisiciones del cliente","Dos puestos diarios, pantalanes y varadero, 28 días consecutivos, incluidos fines de semana; relevo e incidencias registrados.",José Lara Arce,8,O:8,"Asignación y cuadrante integrado por código; entornos, usuarios y habilitaciones autorizados",C07 13.3.9; presencia adicional a conciliación,2028-04-05,2028-04-05,CORTE-E1;MARCHA-E1,Recepción por etapa o control del periodo; no acredita ejecución,C07 13.3.9; presencia adicional a conciliación
1.11.6.1.5.2,"Estabilización presencial E1, día 5, zona 2",1.11,E1 Estabilización,"Estabilización presencial E1, día 5, zona 2",Resultado de la ficha de familia y del paquete original; registro individual por código/ventana,"No duplicar padres, informes, ingeniería ni cobertura; no incluye horas de contraparte ni obras/adquisiciones del cliente","Dos puestos diarios, pantalanes y varadero, 28 días consecutivos, incluidos fines de semana; relevo e incidencias registrados.",José Lara Arce,8,O:8,"Asignación y cuadrante integrado por código; entornos, usuarios y habilitaciones autorizados",C07 13.3.9; presencia adicional a conciliación,2028-04-05,2028-04-05,CORTE-E1;MARCHA-E1,Recepción por etapa o control del periodo; no acredita ejecución,C07 13.3.9; presencia adicional a conciliación
1.11.6.1.6.1,"Estabilización presencial E1, día 6, zona 1",1.11,E1 Estabilización,"Estabilización presencial E1, día 6, zona 1",Resultado de la ficha de familia y del paquete original; registro individual por código/ventana,"No duplicar padres, informes, ingeniería ni cobertura; no incluye horas de contraparte ni obras/adquisiciones del cliente","Dos puestos diarios, pantalanes y varadero, 28 días consecutivos, incluidos fines de semana; relevo e incidencias registrados.",José Lara Arce,8,O:8,"Asignación y cuadrante integrado por código; entornos, usuarios y habilitaciones autorizados",C07 13.3.9; presencia adicional a conciliación,2028-04-06,2028-04-06,CORTE-E1;MARCHA-E1,Recepción por etapa o control del periodo; no acredita ejecución,C07 13.3.9; presencia adicional a conciliación
1.11.6.1.6.2,"Estabilización presencial E1, día 6, zona 2",1.11,E1 Estabilización,"Estabilización presencial E1, día 6, zona 2",Resultado de la ficha de familia y del paquete original; registro individual por código/ventana,"No duplicar padres, informes, ingeniería ni cobertura; no incluye horas de contraparte ni obras/adquisiciones del cliente","Dos puestos diarios, pantalanes y varadero, 28 días consecutivos, incluidos fines de semana; relevo e incidencias registrados.",José Lara Arce,8,O:8,"Asignación y cuadrante integrado por código; entornos, usuarios y habilitaciones autorizados",C07 13.3.9; presencia adicional a conciliación,2028-04-06,2028-04-06,CORTE-E1;MARCHA-E1,Recepción por etapa o control del periodo; no acredita ejecución,C07 13.3.9; presencia adicional a conciliación
1.11.6.1.7.1,"Estabilización presencial E1, día 7, zona 1",1.11,E1 Estabilización,"Estabilización presencial E1, día 7, zona 1",Resultado de la ficha de familia y del paquete original; registro individual por código/ventana,"No duplicar padres, informes, ingeniería ni cobertura; no incluye horas de contraparte ni obras/adquisiciones del cliente","Dos puestos diarios, pantalanes y varadero, 28 días consecutivos, incluidos fines de semana; relevo e incidencias registrados.",José Lara Arce,8,O:8,"Asignación y cuadrante integrado por código; entornos, usuarios y habilitaciones autorizados",C07 13.3.9; presencia adicional a conciliación,2028-04-07,2028-04-07,CORTE-E1;MARCHA-E1,Recepción por etapa o control del periodo; no acredita ejecución,C07 13.3.9; presencia adicional a conciliación
1.11.6.1.7.2,"Estabilización presencial E1, día 7, zona 2",1.11,E1 Estabilización,"Estabilización presencial E1, día 7, zona 2",Resultado de la ficha de familia y del paquete original; registro individual por código/ventana,"No duplicar padres, informes, ingeniería ni cobertura; no incluye horas de contraparte ni obras/adquisiciones del cliente","Dos puestos diarios, pantalanes y varadero, 28 días consecutivos, incluidos fines de semana; relevo e incidencias registrados.",José Lara Arce,8,O:8,"Asignación y cuadrante integrado por código; entornos, usuarios y habilitaciones autorizados",C07 13.3.9; presencia adicional a conciliación,2028-04-07,2028-04-07,CORTE-E1;MARCHA-E1,Recepción por etapa o control del periodo; no acredita ejecución,C07 13.3.9; presencia adicional a conciliación
1.11.6.1.8.1,"Estabilización presencial E1, día 8, zona 1",1.11,E1 Estabilización,"Estabilización presencial E1, día 8, zona 1",Resultado de la ficha de familia y del paquete original; registro individual por código/ventana,"No duplicar padres, informes, ingeniería ni cobertura; no incluye horas de contraparte ni obras/adquisiciones del cliente","Dos puestos diarios, pantalanes y varadero, 28 días consecutivos, incluidos fines de semana; relevo e incidencias registrados.",José Lara Arce,8,O:8,"Asignación y cuadrante integrado por código; entornos, usuarios y habilitaciones autorizados",C07 13.3.9; presencia adicional a conciliación,2028-04-08,2028-04-08,CORTE-E1;MARCHA-E1,Recepción por etapa o control del periodo; no acredita ejecución,C07 13.3.9; presencia adicional a conciliación
1.11.6.1.8.2,"Estabilización presencial E1, día 8, zona 2",1.11,E1 Estabilización,"Estabilización presencial E1, día 8, zona 2",Resultado de la ficha de familia y del paquete original; registro individual por código/ventana,"No duplicar padres, informes, ingeniería ni cobertura; no incluye horas de contraparte ni obras/adquisiciones del cliente","Dos puestos diarios, pantalanes y varadero, 28 días consecutivos, incluidos fines de semana; relevo e incidencias registrados.",José Lara Arce,8,O:8,"Asignación y cuadrante integrado por código; entornos, usuarios y habilitaciones autorizados",C07 13.3.9; presencia adicional a conciliación,2028-04-08,2028-04-08,CORTE-E1;MARCHA-E1,Recepción por etapa o control del periodo; no acredita ejecución,C07 13.3.9; presencia adicional a conciliación
1.11.6.1.9.1,"Estabilización presencial E1, día 9, zona 1",1.11,E1 Estabilización,"Estabilización presencial E1, día 9, zona 1",Resultado de la ficha de familia y del paquete original; registro individual por código/ventana,"No duplicar padres, informes, ingeniería ni cobertura; no incluye horas de contraparte ni obras/adquisiciones del cliente","Dos puestos diarios, pantalanes y varadero, 28 días consecutivos, incluidos fines de semana; relevo e incidencias registrados.",José Lara Arce,8,O:8,"Asignación y cuadrante integrado por código; entornos, usuarios y habilitaciones autorizados",C07 13.3.9; presencia adicional a conciliación,2028-04-09,2028-04-09,CORTE-E1;MARCHA-E1,Recepción por etapa o control del periodo; no acredita ejecución,C07 13.3.9; presencia adicional a conciliación
1.11.6.1.9.2,"Estabilización presencial E1, día 9, zona 2",1.11,E1 Estabilización,"Estabilización presencial E1, día 9, zona 2",Resultado de la ficha de familia y del paquete original; registro individual por código/ventana,"No duplicar padres, informes, ingeniería ni cobertura; no incluye horas de contraparte ni obras/adquisiciones del cliente","Dos puestos diarios, pantalanes y varadero, 28 días consecutivos, incluidos fines de semana; relevo e incidencias registrados.",José Lara Arce,8,O:8,"Asignación y cuadrante integrado por código; entornos, usuarios y habilitaciones autorizados",C07 13.3.9; presencia adicional a conciliación,2028-04-09,2028-04-09,CORTE-E1;MARCHA-E1,Recepción por etapa o control del periodo; no acredita ejecución,C07 13.3.9; presencia adicional a conciliación
1.11.6.1.10.1,"Estabilización presencial E1, día 10, zona 1",1.11,E1 Estabilización,"Estabilización presencial E1, día 10, zona 1",Resultado de la ficha de familia y del paquete original; registro individual por código/ventana,"No duplicar padres, informes, ingeniería ni cobertura; no incluye horas de contraparte ni obras/adquisiciones del cliente","Dos puestos diarios, pantalanes y varadero, 28 días consecutivos, incluidos fines de semana; relevo e incidencias registrados.",José Lara Arce,8,O:8,"Asignación y cuadrante integrado por código; entornos, usuarios y habilitaciones autorizados",C07 13.3.9; presencia adicional a conciliación,2028-04-10,2028-04-10,CORTE-E1;MARCHA-E1,Recepción por etapa o control del periodo; no acredita ejecución,C07 13.3.9; presencia adicional a conciliación
1.11.6.1.10.2,"Estabilización presencial E1, día 10, zona 2",1.11,E1 Estabilización,"Estabilización presencial E1, día 10, zona 2",Resultado de la ficha de familia y del paquete original; registro individual por código/ventana,"No duplicar padres, informes, ingeniería ni cobertura; no incluye horas de contraparte ni obras/adquisiciones del cliente","Dos puestos diarios, pantalanes y varadero, 28 días consecutivos, incluidos fines de semana; relevo e incidencias registrados.",José Lara Arce,8,O:8,"Asignación y cuadrante integrado por código; entornos, usuarios y habilitaciones autorizados",C07 13.3.9; presencia adicional a conciliación,2028-04-10,2028-04-10,CORTE-E1;MARCHA-E1,Recepción por etapa o control del periodo; no acredita ejecución,C07 13.3.9; presencia adicional a conciliación
1.11.6.1.11.1,"Estabilización presencial E1, día 11, zona 1",1.11,E1 Estabilización,"Estabilización presencial E1, día 11, zona 1",Resultado de la ficha de familia y del paquete original; registro individual por código/ventana,"No duplicar padres, informes, ingeniería ni cobertura; no incluye horas de contraparte ni obras/adquisiciones del cliente","Dos puestos diarios, pantalanes y varadero, 28 días consecutivos, incluidos fines de semana; relevo e incidencias registrados.",José Lara Arce,8,O:8,"Asignación y cuadrante integrado por código; entornos, usuarios y habilitaciones autorizados",C07 13.3.9; presencia adicional a conciliación,2028-04-11,2028-04-11,CORTE-E1;MARCHA-E1,Recepción por etapa o control del periodo; no acredita ejecución,C07 13.3.9; presencia adicional a conciliación
1.11.6.1.11.2,"Estabilización presencial E1, día 11, zona 2",1.11,E1 Estabilización,"Estabilización presencial E1, día 11, zona 2",Resultado de la ficha de familia y del paquete original; registro individual por código/ventana,"No duplicar padres, informes, ingeniería ni cobertura; no incluye horas de contraparte ni obras/adquisiciones del cliente","Dos puestos diarios, pantalanes y varadero, 28 días consecutivos, incluidos fines de semana; relevo e incidencias registrados.",José Lara Arce,8,O:8,"Asignación y cuadrante integrado por código; entornos, usuarios y habilitaciones autorizados",C07 13.3.9; presencia adicional a conciliación,2028-04-11,2028-04-11,CORTE-E1;MARCHA-E1,Recepción por etapa o control del periodo; no acredita ejecución,C07 13.3.9; presencia adicional a conciliación
1.11.6.1.12.1,"Estabilización presencial E1, día 12, zona 1",1.11,E1 Estabilización,"Estabilización presencial E1, día 12, zona 1",Resultado de la ficha de familia y del paquete original; registro individual por código/ventana,"No duplicar padres, informes, ingeniería ni cobertura; no incluye horas de contraparte ni obras/adquisiciones del cliente","Dos puestos diarios, pantalanes y varadero, 28 días consecutivos, incluidos fines de semana; relevo e incidencias registrados.",José Lara Arce,8,O:8,"Asignación y cuadrante integrado por código; entornos, usuarios y habilitaciones autorizados",C07 13.3.9; presencia adicional a conciliación,2028-04-12,2028-04-12,CORTE-E1;MARCHA-E1,Recepción por etapa o control del periodo; no acredita ejecución,C07 13.3.9; presencia adicional a conciliación
1.11.6.1.12.2,"Estabilización presencial E1, día 12, zona 2",1.11,E1 Estabilización,"Estabilización presencial E1, día 12, zona 2",Resultado de la ficha de familia y del paquete original; registro individual por código/ventana,"No duplicar padres, informes, ingeniería ni cobertura; no incluye horas de contraparte ni obras/adquisiciones del cliente","Dos puestos diarios, pantalanes y varadero, 28 días consecutivos, incluidos fines de semana; relevo e incidencias registrados.",José Lara Arce,8,O:8,"Asignación y cuadrante integrado por código; entornos, usuarios y habilitaciones autorizados",C07 13.3.9; presencia adicional a conciliación,2028-04-12,2028-04-12,CORTE-E1;MARCHA-E1,Recepción por etapa o control del periodo; no acredita ejecución,C07 13.3.9; presencia adicional a conciliación
1.11.6.1.13.1,"Estabilización presencial E1, día 13, zona 1",1.11,E1 Estabilización,"Estabilización presencial E1, día 13, zona 1",Resultado de la ficha de familia y del paquete original; registro individual por código/ventana,"No duplicar padres, informes, ingeniería ni cobertura; no incluye horas de contraparte ni obras/adquisiciones del cliente","Dos puestos diarios, pantalanes y varadero, 28 días consecutivos, incluidos fines de semana; relevo e incidencias registrados.",José Lara Arce,8,O:8,"Asignación y cuadrante integrado por código; entornos, usuarios y habilitaciones autorizados",C07 13.3.9; presencia adicional a conciliación,2028-04-13,2028-04-13,CORTE-E1;MARCHA-E1,Recepción por etapa o control del periodo; no acredita ejecución,C07 13.3.9; presencia adicional a conciliación
1.11.6.1.13.2,"Estabilización presencial E1, día 13, zona 2",1.11,E1 Estabilización,"Estabilización presencial E1, día 13, zona 2",Resultado de la ficha de familia y del paquete original; registro individual por código/ventana,"No duplicar padres, informes, ingeniería ni cobertura; no incluye horas de contraparte ni obras/adquisiciones del cliente","Dos puestos diarios, pantalanes y varadero, 28 días consecutivos, incluidos fines de semana; relevo e incidencias registrados.",José Lara Arce,8,O:8,"Asignación y cuadrante integrado por código; entornos, usuarios y habilitaciones autorizados",C07 13.3.9; presencia adicional a conciliación,2028-04-13,2028-04-13,CORTE-E1;MARCHA-E1,Recepción por etapa o control del periodo; no acredita ejecución,C07 13.3.9; presencia adicional a conciliación
1.11.6.1.14.1,"Estabilización presencial E1, día 14, zona 1",1.11,E1 Estabilización,"Estabilización presencial E1, día 14, zona 1",Resultado de la ficha de familia y del paquete original; registro individual por código/ventana,"No duplicar padres, informes, ingeniería ni cobertura; no incluye horas de contraparte ni obras/adquisiciones del cliente","Dos puestos diarios, pantalanes y varadero, 28 días consecutivos, incluidos fines de semana; relevo e incidencias registrados.",José Lara Arce,8,O:8,"Asignación y cuadrante integrado por código; entornos, usuarios y habilitaciones autorizados",C07 13.3.9; presencia adicional a conciliación,2028-04-14,2028-04-14,CORTE-E1;MARCHA-E1,Recepción por etapa o control del periodo; no acredita ejecución,C07 13.3.9; presencia adicional a conciliación
1.11.6.1.14.2,"Estabilización presencial E1, día 14, zona 2",1.11,E1 Estabilización,"Estabilización presencial E1, día 14, zona 2",Resultado de la ficha de familia y del paquete original; registro individual por código/ventana,"No duplicar padres, informes, ingeniería ni cobertura; no incluye horas de contraparte ni obras/adquisiciones del cliente","Dos puestos diarios, pantalanes y varadero, 28 días consecutivos, incluidos fines de semana; relevo e incidencias registrados.",José Lara Arce,8,O:8,"Asignación y cuadrante integrado por código; entornos, usuarios y habilitaciones autorizados",C07 13.3.9; presencia adicional a conciliación,2028-04-14,2028-04-14,CORTE-E1;MARCHA-E1,Recepción por etapa o control del periodo; no acredita ejecución,C07 13.3.9; presencia adicional a conciliación
1.11.6.1.15.1,"Estabilización presencial E1, día 15, zona 1",1.11,E1 Estabilización,"Estabilización presencial E1, día 15, zona 1",Resultado de la ficha de familia y del paquete original; registro individual por código/ventana,"No duplicar padres, informes, ingeniería ni cobertura; no incluye horas de contraparte ni obras/adquisiciones del cliente","Dos puestos diarios, pantalanes y varadero, 28 días consecutivos, incluidos fines de semana; relevo e incidencias registrados.",José Lara Arce,8,O:8,"Asignación y cuadrante integrado por código; entornos, usuarios y habilitaciones autorizados",C07 13.3.9; presencia adicional a conciliación,2028-04-15,2028-04-15,CORTE-E1;MARCHA-E1,Recepción por etapa o control del periodo; no acredita ejecución,C07 13.3.9; presencia adicional a conciliación
1.11.6.1.15.2,"Estabilización presencial E1, día 15, zona 2",1.11,E1 Estabilización,"Estabilización presencial E1, día 15, zona 2",Resultado de la ficha de familia y del paquete original; registro individual por código/ventana,"No duplicar padres, informes, ingeniería ni cobertura; no incluye horas de contraparte ni obras/adquisiciones del cliente","Dos puestos diarios, pantalanes y varadero, 28 días consecutivos, incluidos fines de semana; relevo e incidencias registrados.",José Lara Arce,8,O:8,"Asignación y cuadrante integrado por código; entornos, usuarios y habilitaciones autorizados",C07 13.3.9; presencia adicional a conciliación,2028-04-15,2028-04-15,CORTE-E1;MARCHA-E1,Recepción por etapa o control del periodo; no acredita ejecución,C07 13.3.9; presencia adicional a conciliación
1.11.6.1.16.1,"Estabilización presencial E1, día 16, zona 1",1.11,E1 Estabilización,"Estabilización presencial E1, día 16, zona 1",Resultado de la ficha de familia y del paquete original; registro individual por código/ventana,"No duplicar padres, informes, ingeniería ni cobertura; no incluye horas de contraparte ni obras/adquisiciones del cliente","Dos puestos diarios, pantalanes y varadero, 28 días consecutivos, incluidos fines de semana; relevo e incidencias registrados.",José Lara Arce,8,O:8,"Asignación y cuadrante integrado por código; entornos, usuarios y habilitaciones autorizados",C07 13.3.9; presencia adicional a conciliación,2028-04-16,2028-04-16,CORTE-E1;MARCHA-E1,Recepción por etapa o control del periodo; no acredita ejecución,C07 13.3.9; presencia adicional a conciliación
1.11.6.1.16.2,"Estabilización presencial E1, día 16, zona 2",1.11,E1 Estabilización,"Estabilización presencial E1, día 16, zona 2",Resultado de la ficha de familia y del paquete original; registro individual por código/ventana,"No duplicar padres, informes, ingeniería ni cobertura; no incluye horas de contraparte ni obras/adquisiciones del cliente","Dos puestos diarios, pantalanes y varadero, 28 días consecutivos, incluidos fines de semana; relevo e incidencias registrados.",José Lara Arce,8,O:8,"Asignación y cuadrante integrado por código; entornos, usuarios y habilitaciones autorizados",C07 13.3.9; presencia adicional a conciliación,2028-04-16,2028-04-16,CORTE-E1;MARCHA-E1,Recepción por etapa o control del periodo; no acredita ejecución,C07 13.3.9; presencia adicional a conciliación
1.11.6.1.17.1,"Estabilización presencial E1, día 17, zona 1",1.11,E1 Estabilización,"Estabilización presencial E1, día 17, zona 1",Resultado de la ficha de familia y del paquete original; registro individual por código/ventana,"No duplicar padres, informes, ingeniería ni cobertura; no incluye horas de contraparte ni obras/adquisiciones del cliente","Dos puestos diarios, pantalanes y varadero, 28 días consecutivos, incluidos fines de semana; relevo e incidencias registrados.",José Lara Arce,8,O:8,"Asignación y cuadrante integrado por código; entornos, usuarios y habilitaciones autorizados",C07 13.3.9; presencia adicional a conciliación,2028-04-17,2028-04-17,CORTE-E1;MARCHA-E1,Recepción por etapa o control del periodo; no acredita ejecución,C07 13.3.9; presencia adicional a conciliación
1.11.6.1.17.2,"Estabilización presencial E1, día 17, zona 2",1.11,E1 Estabilización,"Estabilización presencial E1, día 17, zona 2",Resultado de la ficha de familia y del paquete original; registro individual por código/ventana,"No duplicar padres, informes, ingeniería ni cobertura; no incluye horas de contraparte ni obras/adquisiciones del cliente","Dos puestos diarios, pantalanes y varadero, 28 días consecutivos, incluidos fines de semana; relevo e incidencias registrados.",José Lara Arce,8,O:8,"Asignación y cuadrante integrado por código; entornos, usuarios y habilitaciones autorizados",C07 13.3.9; presencia adicional a conciliación,2028-04-17,2028-04-17,CORTE-E1;MARCHA-E1,Recepción por etapa o control del periodo; no acredita ejecución,C07 13.3.9; presencia adicional a conciliación
1.11.6.1.18.1,"Estabilización presencial E1, día 18, zona 1",1.11,E1 Estabilización,"Estabilización presencial E1, día 18, zona 1",Resultado de la ficha de familia y del paquete original; registro individual por código/ventana,"No duplicar padres, informes, ingeniería ni cobertura; no incluye horas de contraparte ni obras/adquisiciones del cliente","Dos puestos diarios, pantalanes y varadero, 28 días consecutivos, incluidos fines de semana; relevo e incidencias registrados.",José Lara Arce,8,O:8,"Asignación y cuadrante integrado por código; entornos, usuarios y habilitaciones autorizados",C07 13.3.9; presencia adicional a conciliación,2028-04-18,2028-04-18,CORTE-E1;MARCHA-E1,Recepción por etapa o control del periodo; no acredita ejecución,C07 13.3.9; presencia adicional a conciliación
1.11.6.1.18.2,"Estabilización presencial E1, día 18, zona 2",1.11,E1 Estabilización,"Estabilización presencial E1, día 18, zona 2",Resultado de la ficha de familia y del paquete original; registro individual por código/ventana,"No duplicar padres, informes, ingeniería ni cobertura; no incluye horas de contraparte ni obras/adquisiciones del cliente","Dos puestos diarios, pantalanes y varadero, 28 días consecutivos, incluidos fines de semana; relevo e incidencias registrados.",José Lara Arce,8,O:8,"Asignación y cuadrante integrado por código; entornos, usuarios y habilitaciones autorizados",C07 13.3.9; presencia adicional a conciliación,2028-04-18,2028-04-18,CORTE-E1;MARCHA-E1,Recepción por etapa o control del periodo; no acredita ejecución,C07 13.3.9; presencia adicional a conciliación
1.11.6.1.19.1,"Estabilización presencial E1, día 19, zona 1",1.11,E1 Estabilización,"Estabilización presencial E1, día 19, zona 1",Resultado de la ficha de familia y del paquete original; registro individual por código/ventana,"No duplicar padres, informes, ingeniería ni cobertura; no incluye horas de contraparte ni obras/adquisiciones del cliente","Dos puestos diarios, pantalanes y varadero, 28 días consecutivos, incluidos fines de semana; relevo e incidencias registrados.",José Lara Arce,8,O:8,"Asignación y cuadrante integrado por código; entornos, usuarios y habilitaciones autorizados",C07 13.3.9; presencia adicional a conciliación,2028-04-19,2028-04-19,CORTE-E1;MARCHA-E1,Recepción por etapa o control del periodo; no acredita ejecución,C07 13.3.9; presencia adicional a conciliación
1.11.6.1.19.2,"Estabilización presencial E1, día 19, zona 2",1.11,E1 Estabilización,"Estabilización presencial E1, día 19, zona 2",Resultado de la ficha de familia y del paquete original; registro individual por código/ventana,"No duplicar padres, informes, ingeniería ni cobertura; no incluye horas de contraparte ni obras/adquisiciones del cliente","Dos puestos diarios, pantalanes y varadero, 28 días consecutivos, incluidos fines de semana; relevo e incidencias registrados.",José Lara Arce,8,O:8,"Asignación y cuadrante integrado por código; entornos, usuarios y habilitaciones autorizados",C07 13.3.9; presencia adicional a conciliación,2028-04-19,2028-04-19,CORTE-E1;MARCHA-E1,Recepción por etapa o control del periodo; no acredita ejecución,C07 13.3.9; presencia adicional a conciliación
1.11.6.1.20.1,"Estabilización presencial E1, día 20, zona 1",1.11,E1 Estabilización,"Estabilización presencial E1, día 20, zona 1",Resultado de la ficha de familia y del paquete original; registro individual por código/ventana,"No duplicar padres, informes, ingeniería ni cobertura; no incluye horas de contraparte ni obras/adquisiciones del cliente","Dos puestos diarios, pantalanes y varadero, 28 días consecutivos, incluidos fines de semana; relevo e incidencias registrados.",José Lara Arce,8,O:8,"Asignación y cuadrante integrado por código; entornos, usuarios y habilitaciones autorizados",C07 13.3.9; presencia adicional a conciliación,2028-04-20,2028-04-20,CORTE-E1;MARCHA-E1,Recepción por etapa o control del periodo; no acredita ejecución,C07 13.3.9; presencia adicional a conciliación
1.11.6.1.20.2,"Estabilización presencial E1, día 20, zona 2",1.11,E1 Estabilización,"Estabilización presencial E1, día 20, zona 2",Resultado de la ficha de familia y del paquete original; registro individual por código/ventana,"No duplicar padres, informes, ingeniería ni cobertura; no incluye horas de contraparte ni obras/adquisiciones del cliente","Dos puestos diarios, pantalanes y varadero, 28 días consecutivos, incluidos fines de semana; relevo e incidencias registrados.",José Lara Arce,8,O:8,"Asignación y cuadrante integrado por código; entornos, usuarios y habilitaciones autorizados",C07 13.3.9; presencia adicional a conciliación,2028-04-20,2028-04-20,CORTE-E1;MARCHA-E1,Recepción por etapa o control del periodo; no acredita ejecución,C07 13.3.9; presencia adicional a conciliación
1.11.6.1.21.1,"Estabilización presencial E1, día 21, zona 1",1.11,E1 Estabilización,"Estabilización presencial E1, día 21, zona 1",Resultado de la ficha de familia y del paquete original; registro individual por código/ventana,"No duplicar padres, informes, ingeniería ni cobertura; no incluye horas de contraparte ni obras/adquisiciones del cliente","Dos puestos diarios, pantalanes y varadero, 28 días consecutivos, incluidos fines de semana; relevo e incidencias registrados.",José Lara Arce,8,O:8,"Asignación y cuadrante integrado por código; entornos, usuarios y habilitaciones autorizados",C07 13.3.9; presencia adicional a conciliación,2028-04-21,2028-04-21,CORTE-E1;MARCHA-E1,Recepción por etapa o control del periodo; no acredita ejecución,C07 13.3.9; presencia adicional a conciliación
1.11.6.1.21.2,"Estabilización presencial E1, día 21, zona 2",1.11,E1 Estabilización,"Estabilización presencial E1, día 21, zona 2",Resultado de la ficha de familia y del paquete original; registro individual por código/ventana,"No duplicar padres, informes, ingeniería ni cobertura; no incluye horas de contraparte ni obras/adquisiciones del cliente","Dos puestos diarios, pantalanes y varadero, 28 días consecutivos, incluidos fines de semana; relevo e incidencias registrados.",José Lara Arce,8,O:8,"Asignación y cuadrante integrado por código; entornos, usuarios y habilitaciones autorizados",C07 13.3.9; presencia adicional a conciliación,2028-04-21,2028-04-21,CORTE-E1;MARCHA-E1,Recepción por etapa o control del periodo; no acredita ejecución,C07 13.3.9; presencia adicional a conciliación
1.11.6.1.22.1,"Estabilización presencial E1, día 22, zona 1",1.11,E1 Estabilización,"Estabilización presencial E1, día 22, zona 1",Resultado de la ficha de familia y del paquete original; registro individual por código/ventana,"No duplicar padres, informes, ingeniería ni cobertura; no incluye horas de contraparte ni obras/adquisiciones del cliente","Dos puestos diarios, pantalanes y varadero, 28 días consecutivos, incluidos fines de semana; relevo e incidencias registrados.",José Lara Arce,8,O:8,"Asignación y cuadrante integrado por código; entornos, usuarios y habilitaciones autorizados",C07 13.3.9; presencia adicional a conciliación,2028-04-22,2028-04-22,CORTE-E1;MARCHA-E1,Recepción por etapa o control del periodo; no acredita ejecución,C07 13.3.9; presencia adicional a conciliación
1.11.6.1.22.2,"Estabilización presencial E1, día 22, zona 2",1.11,E1 Estabilización,"Estabilización presencial E1, día 22, zona 2",Resultado de la ficha de familia y del paquete original; registro individual por código/ventana,"No duplicar padres, informes, ingeniería ni cobertura; no incluye horas de contraparte ni obras/adquisiciones del cliente","Dos puestos diarios, pantalanes y varadero, 28 días consecutivos, incluidos fines de semana; relevo e incidencias registrados.",José Lara Arce,8,O:8,"Asignación y cuadrante integrado por código; entornos, usuarios y habilitaciones autorizados",C07 13.3.9; presencia adicional a conciliación,2028-04-22,2028-04-22,CORTE-E1;MARCHA-E1,Recepción por etapa o control del periodo; no acredita ejecución,C07 13.3.9; presencia adicional a conciliación
1.11.6.1.23.1,"Estabilización presencial E1, día 23, zona 1",1.11,E1 Estabilización,"Estabilización presencial E1, día 23, zona 1",Resultado de la ficha de familia y del paquete original; registro individual por código/ventana,"No duplicar padres, informes, ingeniería ni cobertura; no incluye horas de contraparte ni obras/adquisiciones del cliente","Dos puestos diarios, pantalanes y varadero, 28 días consecutivos, incluidos fines de semana; relevo e incidencias registrados.",José Lara Arce,8,O:8,"Asignación y cuadrante integrado por código; entornos, usuarios y habilitaciones autorizados",C07 13.3.9; presencia adicional a conciliación,2028-04-23,2028-04-23,CORTE-E1;MARCHA-E1,Recepción por etapa o control del periodo; no acredita ejecución,C07 13.3.9; presencia adicional a conciliación
1.11.6.1.23.2,"Estabilización presencial E1, día 23, zona 2",1.11,E1 Estabilización,"Estabilización presencial E1, día 23, zona 2",Resultado de la ficha de familia y del paquete original; registro individual por código/ventana,"No duplicar padres, informes, ingeniería ni cobertura; no incluye horas de contraparte ni obras/adquisiciones del cliente","Dos puestos diarios, pantalanes y varadero, 28 días consecutivos, incluidos fines de semana; relevo e incidencias registrados.",José Lara Arce,8,O:8,"Asignación y cuadrante integrado por código; entornos, usuarios y habilitaciones autorizados",C07 13.3.9; presencia adicional a conciliación,2028-04-23,2028-04-23,CORTE-E1;MARCHA-E1,Recepción por etapa o control del periodo; no acredita ejecución,C07 13.3.9; presencia adicional a conciliación
1.11.6.1.24.1,"Estabilización presencial E1, día 24, zona 1",1.11,E1 Estabilización,"Estabilización presencial E1, día 24, zona 1",Resultado de la ficha de familia y del paquete original; registro individual por código/ventana,"No duplicar padres, informes, ingeniería ni cobertura; no incluye horas de contraparte ni obras/adquisiciones del cliente","Dos puestos diarios, pantalanes y varadero, 28 días consecutivos, incluidos fines de semana; relevo e incidencias registrados.",José Lara Arce,8,O:8,"Asignación y cuadrante integrado por código; entornos, usuarios y habilitaciones autorizados",C07 13.3.9; presencia adicional a conciliación,2028-04-24,2028-04-24,CORTE-E1;MARCHA-E1,Recepción por etapa o control del periodo; no acredita ejecución,C07 13.3.9; presencia adicional a conciliación
1.11.6.1.24.2,"Estabilización presencial E1, día 24, zona 2",1.11,E1 Estabilización,"Estabilización presencial E1, día 24, zona 2",Resultado de la ficha de familia y del paquete original; registro individual por código/ventana,"No duplicar padres, informes, ingeniería ni cobertura; no incluye horas de contraparte ni obras/adquisiciones del cliente","Dos puestos diarios, pantalanes y varadero, 28 días consecutivos, incluidos fines de semana; relevo e incidencias registrados.",José Lara Arce,8,O:8,"Asignación y cuadrante integrado por código; entornos, usuarios y habilitaciones autorizados",C07 13.3.9; presencia adicional a conciliación,2028-04-24,2028-04-24,CORTE-E1;MARCHA-E1,Recepción por etapa o control del periodo; no acredita ejecución,C07 13.3.9; presencia adicional a conciliación
1.11.6.1.25.1,"Estabilización presencial E1, día 25, zona 1",1.11,E1 Estabilización,"Estabilización presencial E1, día 25, zona 1",Resultado de la ficha de familia y del paquete original; registro individual por código/ventana,"No duplicar padres, informes, ingeniería ni cobertura; no incluye horas de contraparte ni obras/adquisiciones del cliente","Dos puestos diarios, pantalanes y varadero, 28 días consecutivos, incluidos fines de semana; relevo e incidencias registrados.",José Lara Arce,8,O:8,"Asignación y cuadrante integrado por código; entornos, usuarios y habilitaciones autorizados",C07 13.3.9; presencia adicional a conciliación,2028-04-25,2028-04-25,CORTE-E1;MARCHA-E1,Recepción por etapa o control del periodo; no acredita ejecución,C07 13.3.9; presencia adicional a conciliación
1.11.6.1.25.2,"Estabilización presencial E1, día 25, zona 2",1.11,E1 Estabilización,"Estabilización presencial E1, día 25, zona 2",Resultado de la ficha de familia y del paquete original; registro individual por código/ventana,"No duplicar padres, informes, ingeniería ni cobertura; no incluye horas de contraparte ni obras/adquisiciones del cliente","Dos puestos diarios, pantalanes y varadero, 28 días consecutivos, incluidos fines de semana; relevo e incidencias registrados.",José Lara Arce,8,O:8,"Asignación y cuadrante integrado por código; entornos, usuarios y habilitaciones autorizados",C07 13.3.9; presencia adicional a conciliación,2028-04-25,2028-04-25,CORTE-E1;MARCHA-E1,Recepción por etapa o control del periodo; no acredita ejecución,C07 13.3.9; presencia adicional a conciliación
1.11.6.1.26.1,"Estabilización presencial E1, día 26, zona 1",1.11,E1 Estabilización,"Estabilización presencial E1, día 26, zona 1",Resultado de la ficha de familia y del paquete original; registro individual por código/ventana,"No duplicar padres, informes, ingeniería ni cobertura; no incluye horas de contraparte ni obras/adquisiciones del cliente","Dos puestos diarios, pantalanes y varadero, 28 días consecutivos, incluidos fines de semana; relevo e incidencias registrados.",José Lara Arce,8,O:8,"Asignación y cuadrante integrado por código; entornos, usuarios y habilitaciones autorizados",C07 13.3.9; presencia adicional a conciliación,2028-04-26,2028-04-26,CORTE-E1;MARCHA-E1,Recepción por etapa o control del periodo; no acredita ejecución,C07 13.3.9; presencia adicional a conciliación
1.11.6.1.26.2,"Estabilización presencial E1, día 26, zona 2",1.11,E1 Estabilización,"Estabilización presencial E1, día 26, zona 2",Resultado de la ficha de familia y del paquete original; registro individual por código/ventana,"No duplicar padres, informes, ingeniería ni cobertura; no incluye horas de contraparte ni obras/adquisiciones del cliente","Dos puestos diarios, pantalanes y varadero, 28 días consecutivos, incluidos fines de semana; relevo e incidencias registrados.",José Lara Arce,8,O:8,"Asignación y cuadrante integrado por código; entornos, usuarios y habilitaciones autorizados",C07 13.3.9; presencia adicional a conciliación,2028-04-26,2028-04-26,CORTE-E1;MARCHA-E1,Recepción por etapa o control del periodo; no acredita ejecución,C07 13.3.9; presencia adicional a conciliación
1.11.6.1.27.1,"Estabilización presencial E1, día 27, zona 1",1.11,E1 Estabilización,"Estabilización presencial E1, día 27, zona 1",Resultado de la ficha de familia y del paquete original; registro individual por código/ventana,"No duplicar padres, informes, ingeniería ni cobertura; no incluye horas de contraparte ni obras/adquisiciones del cliente","Dos puestos diarios, pantalanes y varadero, 28 días consecutivos, incluidos fines de semana; relevo e incidencias registrados.",José Lara Arce,8,O:8,"Asignación y cuadrante integrado por código; entornos, usuarios y habilitaciones autorizados",C07 13.3.9; presencia adicional a conciliación,2028-04-27,2028-04-27,CORTE-E1;MARCHA-E1,Recepción por etapa o control del periodo; no acredita ejecución,C07 13.3.9; presencia adicional a conciliación
1.11.6.1.27.2,"Estabilización presencial E1, día 27, zona 2",1.11,E1 Estabilización,"Estabilización presencial E1, día 27, zona 2",Resultado de la ficha de familia y del paquete original; registro individual por código/ventana,"No duplicar padres, informes, ingeniería ni cobertura; no incluye horas de contraparte ni obras/adquisiciones del cliente","Dos puestos diarios, pantalanes y varadero, 28 días consecutivos, incluidos fines de semana; relevo e incidencias registrados.",José Lara Arce,8,O:8,"Asignación y cuadrante integrado por código; entornos, usuarios y habilitaciones autorizados",C07 13.3.9; presencia adicional a conciliación,2028-04-27,2028-04-27,CORTE-E1;MARCHA-E1,Recepción por etapa o control del periodo; no acredita ejecución,C07 13.3.9; presencia adicional a conciliación
1.11.6.1.28.1,"Estabilización presencial E1, día 28, zona 1",1.11,E1 Estabilización,"Estabilización presencial E1, día 28, zona 1",Resultado de la ficha de familia y del paquete original; registro individual por código/ventana,"No duplicar padres, informes, ingeniería ni cobertura; no incluye horas de contraparte ni obras/adquisiciones del cliente","Dos puestos diarios, pantalanes y varadero, 28 días consecutivos, incluidos fines de semana; relevo e incidencias registrados.",José Lara Arce,8,O:8,"Asignación y cuadrante integrado por código; entornos, usuarios y habilitaciones autorizados",C07 13.3.9; presencia adicional a conciliación,2028-04-28,2028-04-28,CORTE-E1;MARCHA-E1,Recepción por etapa o control del periodo; no acredita ejecución,C07 13.3.9; presencia adicional a conciliación
1.11.6.1.28.2,"Estabilización presencial E1, día 28, zona 2",1.11,E1 Estabilización,"Estabilización presencial E1, día 28, zona 2",Resultado de la ficha de familia y del paquete original; registro individual por código/ventana,"No duplicar padres, informes, ingeniería ni cobertura; no incluye horas de contraparte ni obras/adquisiciones del cliente","Dos puestos diarios, pantalanes y varadero, 28 días consecutivos, incluidos fines de semana; relevo e incidencias registrados.",José Lara Arce,8,O:8,"Asignación y cuadrante integrado por código; entornos, usuarios y habilitaciones autorizados",C07 13.3.9; presencia adicional a conciliación,2028-04-28,2028-04-28,CORTE-E1;MARCHA-E1,Recepción por etapa o control del periodo; no acredita ejecución,C07 13.3.9; presencia adicional a conciliación
1.11.7.2.1.1.1,"Sesión y certificación E2, perfil 1, cohorte 1",1.11,E2 Desarrollo,"Sesión y certificación E2, perfil 1, cohorte 1",Resultado de la ficha de familia y del paquete original; registro individual por código/ventana,"No duplicar padres, informes, ingeniería ni cobertura; no incluye horas de contraparte ni obras/adquisiciones del cliente","Dos sesiones de dos horas, ejercicio, registro individual y recuperación; máximo doce asistentes y sin interrumpir turnos.",José Lara Arce,12,A:2;Q:2;L:8,"Asignación y cuadrante integrado por código; entornos, usuarios y habilitaciones autorizados",RT-22.01--05; aforo propuesto,2028-04-20,2028-04-21,1.11.2.2.1;VERSION-E2,Recepción por etapa o control del periodo; no acredita ejecución,RT-22.01--05; aforo propuesto
1.11.7.2.1.1.2,"Sesión y certificación E2, perfil 1, cohorte 2",1.11,E2 Desarrollo,"Sesión y certificación E2, perfil 1, cohorte 2",Resultado de la ficha de familia y del paquete original; registro individual por código/ventana,"No duplicar padres, informes, ingeniería ni cobertura; no incluye horas de contraparte ni obras/adquisiciones del cliente","Dos sesiones de dos horas, ejercicio, registro individual y recuperación; máximo doce asistentes y sin interrumpir turnos.",José Lara Arce,12,A:2;Q:2;L:8,"Asignación y cuadrante integrado por código; entornos, usuarios y habilitaciones autorizados",RT-22.01--05; aforo propuesto,2028-04-24,2028-04-25,1.11.2.2.1;VERSION-E2,Recepción por etapa o control del periodo; no acredita ejecución,RT-22.01--05; aforo propuesto
1.11.7.2.1.1.3,"Sesión y certificación E2, perfil 1, cohorte 3",1.11,E2 Desarrollo,"Sesión y certificación E2, perfil 1, cohorte 3",Resultado de la ficha de familia y del paquete original; registro individual por código/ventana,"No duplicar padres, informes, ingeniería ni cobertura; no incluye horas de contraparte ni obras/adquisiciones del cliente","Dos sesiones de dos horas, ejercicio, registro individual y recuperación; máximo doce asistentes y sin interrumpir turnos.",José Lara Arce,12,A:2;Q:2;L:8,"Asignación y cuadrante integrado por código; entornos, usuarios y habilitaciones autorizados",RT-22.01--05; aforo propuesto,2028-04-25,2028-04-27,1.11.2.2.1;VERSION-E2,Recepción por etapa o control del periodo; no acredita ejecución,RT-22.01--05; aforo propuesto
1.11.7.2.1.1.4,"Sesión y certificación E2, perfil 1, cohorte 4",1.11,E2 Desarrollo,"Sesión y certificación E2, perfil 1, cohorte 4",Resultado de la ficha de familia y del paquete original; registro individual por código/ventana,"No duplicar padres, informes, ingeniería ni cobertura; no incluye horas de contraparte ni obras/adquisiciones del cliente","Dos sesiones de dos horas, ejercicio, registro individual y recuperación; máximo doce asistentes y sin interrumpir turnos.",José Lara Arce,12,A:2;Q:2;L:8,"Asignación y cuadrante integrado por código; entornos, usuarios y habilitaciones autorizados",RT-22.01--05; aforo propuesto,2028-04-26,2028-04-28,1.11.2.2.1;VERSION-E2,Recepción por etapa o control del periodo; no acredita ejecución,RT-22.01--05; aforo propuesto
1.11.7.2.1.1.5,"Sesión y certificación E2, perfil 1, cohorte 5",1.11,E2 Desarrollo,"Sesión y certificación E2, perfil 1, cohorte 5",Resultado de la ficha de familia y del paquete original; registro individual por código/ventana,"No duplicar padres, informes, ingeniería ni cobertura; no incluye horas de contraparte ni obras/adquisiciones del cliente","Dos sesiones de dos horas, ejercicio, registro individual y recuperación; máximo doce asistentes y sin interrumpir turnos.",José Lara Arce,12,A:2;Q:2;L:8,"Asignación y cuadrante integrado por código; entornos, usuarios y habilitaciones autorizados",RT-22.01--05; aforo propuesto,2028-04-20,2028-04-21,1.11.2.2.1;VERSION-E2,Recepción por etapa o control del periodo; no acredita ejecución,RT-22.01--05; aforo propuesto
1.11.7.2.1.1.6,"Sesión y certificación E2, perfil 1, cohorte 6",1.11,E2 Desarrollo,"Sesión y certificación E2, perfil 1, cohorte 6",Resultado de la ficha de familia y del paquete original; registro individual por código/ventana,"No duplicar padres, informes, ingeniería ni cobertura; no incluye horas de contraparte ni obras/adquisiciones del cliente","Dos sesiones de dos horas, ejercicio, registro individual y recuperación; máximo doce asistentes y sin interrumpir turnos.",José Lara Arce,12,A:2;Q:2;L:8,"Asignación y cuadrante integrado por código; entornos, usuarios y habilitaciones autorizados",RT-22.01--05; aforo propuesto,2028-04-27,2028-05-02,1.11.2.2.1;VERSION-E2,Recepción por etapa o control del periodo; no acredita ejecución,RT-22.01--05; aforo propuesto
1.11.7.2.1.1.7,"Sesión y certificación E2, perfil 1, cohorte 7",1.11,E2 Desarrollo,"Sesión y certificación E2, perfil 1, cohorte 7",Resultado de la ficha de familia y del paquete original; registro individual por código/ventana,"No duplicar padres, informes, ingeniería ni cobertura; no incluye horas de contraparte ni obras/adquisiciones del cliente","Dos sesiones de dos horas, ejercicio, registro individual y recuperación; máximo doce asistentes y sin interrumpir turnos.",José Lara Arce,12,A:2;Q:2;L:8,"Asignación y cuadrante integrado por código; entornos, usuarios y habilitaciones autorizados",RT-22.01--05; aforo propuesto,2028-05-03,2028-05-04,1.11.2.2.1;VERSION-E2,Recepción por etapa o control del periodo; no acredita ejecución,RT-22.01--05; aforo propuesto
1.11.7.2.1.1.8,"Sesión y certificación E2, perfil 1, cohorte 8",1.11,E2 Desarrollo,"Sesión y certificación E2, perfil 1, cohorte 8",Resultado de la ficha de familia y del paquete original; registro individual por código/ventana,"No duplicar padres, informes, ingeniería ni cobertura; no incluye horas de contraparte ni obras/adquisiciones del cliente","Dos sesiones de dos horas, ejercicio, registro individual y recuperación; máximo doce asistentes y sin interrumpir turnos.",José Lara Arce,12,A:2;Q:2;L:8,"Asignación y cuadrante integrado por código; entornos, usuarios y habilitaciones autorizados",RT-22.01--05; aforo propuesto,2028-05-03,2028-05-04,1.11.2.2.1;VERSION-E2,Recepción por etapa o control del periodo; no acredita ejecución,RT-22.01--05; aforo propuesto
1.11.7.2.1.1.9,"Sesión y certificación E2, perfil 1, cohorte 9",1.11,E2 Desarrollo,"Sesión y certificación E2, perfil 1, cohorte 9",Resultado de la ficha de familia y del paquete original; registro individual por código/ventana,"No duplicar padres, informes, ingeniería ni cobertura; no incluye horas de contraparte ni obras/adquisiciones del cliente","Dos sesiones de dos horas, ejercicio, registro individual y recuperación; máximo doce asistentes y sin interrumpir turnos.",José Lara Arce,12,A:2;Q:2;L:8,"Asignación y cuadrante integrado por código; entornos, usuarios y habilitaciones autorizados",RT-22.01--05; aforo propuesto,2028-05-02,2028-05-03,1.11.2.2.1;VERSION-E2,Recepción por etapa o control del periodo; no acredita ejecución,RT-22.01--05; aforo propuesto
1.11.7.2.1.1.10,"Sesión y certificación E2, perfil 1, cohorte 10",1.11,E2 Desarrollo,"Sesión y certificación E2, perfil 1, cohorte 10",Resultado de la ficha de familia y del paquete original; registro individual por código/ventana,"No duplicar padres, informes, ingeniería ni cobertura; no incluye horas de contraparte ni obras/adquisiciones del cliente","Dos sesiones de dos horas, ejercicio, registro individual y recuperación; máximo doce asistentes y sin interrumpir turnos.",José Lara Arce,12,A:2;Q:2;L:8,"Asignación y cuadrante integrado por código; entornos, usuarios y habilitaciones autorizados",RT-22.01--05; aforo propuesto,2028-04-20,2028-04-21,1.11.2.2.1;VERSION-E2,Recepción por etapa o control del periodo; no acredita ejecución,RT-22.01--05; aforo propuesto
1.11.7.2.1.1.11,"Sesión y certificación E2, perfil 1, cohorte 11",1.11,E2 Desarrollo,"Sesión y certificación E2, perfil 1, cohorte 11",Resultado de la ficha de familia y del paquete original; registro individual por código/ventana,"No duplicar padres, informes, ingeniería ni cobertura; no incluye horas de contraparte ni obras/adquisiciones del cliente","Dos sesiones de dos horas, ejercicio, registro individual y recuperación; máximo doce asistentes y sin interrumpir turnos.",José Lara Arce,12,A:2;Q:2;L:8,"Asignación y cuadrante integrado por código; entornos, usuarios y habilitaciones autorizados",RT-22.01--05; aforo propuesto,2028-04-24,2028-04-25,1.11.2.2.1;VERSION-E2,Recepción por etapa o control del periodo; no acredita ejecución,RT-22.01--05; aforo propuesto
1.11.7.2.1.1.12,"Sesión y certificación E2, perfil 1, cohorte 12",1.11,E2 Desarrollo,"Sesión y certificación E2, perfil 1, cohorte 12",Resultado de la ficha de familia y del paquete original; registro individual por código/ventana,"No duplicar padres, informes, ingeniería ni cobertura; no incluye horas de contraparte ni obras/adquisiciones del cliente","Dos sesiones de dos horas, ejercicio, registro individual y recuperación; máximo doce asistentes y sin interrumpir turnos.",José Lara Arce,12,A:2;Q:2;L:8,"Asignación y cuadrante integrado por código; entornos, usuarios y habilitaciones autorizados",RT-22.01--05; aforo propuesto,2028-04-25,2028-04-27,1.11.2.2.1;VERSION-E2,Recepción por etapa o control del periodo; no acredita ejecución,RT-22.01--05; aforo propuesto
1.11.7.2.1.1.13,"Sesión y certificación E2, perfil 1, cohorte 13",1.11,E2 Desarrollo,"Sesión y certificación E2, perfil 1, cohorte 13",Resultado de la ficha de familia y del paquete original; registro individual por código/ventana,"No duplicar padres, informes, ingeniería ni cobertura; no incluye horas de contraparte ni obras/adquisiciones del cliente","Dos sesiones de dos horas, ejercicio, registro individual y recuperación; máximo doce asistentes y sin interrumpir turnos.",José Lara Arce,12,A:2;Q:2;L:8,"Asignación y cuadrante integrado por código; entornos, usuarios y habilitaciones autorizados",RT-22.01--05; aforo propuesto,2028-04-26,2028-04-28,1.11.2.2.1;VERSION-E2,Recepción por etapa o control del periodo; no acredita ejecución,RT-22.01--05; aforo propuesto
1.11.7.2.1.1.14,"Sesión y certificación E2, perfil 1, cohorte 14",1.11,E2 Desarrollo,"Sesión y certificación E2, perfil 1, cohorte 14",Resultado de la ficha de familia y del paquete original; registro individual por código/ventana,"No duplicar padres, informes, ingeniería ni cobertura; no incluye horas de contraparte ni obras/adquisiciones del cliente","Dos sesiones de dos horas, ejercicio, registro individual y recuperación; máximo doce asistentes y sin interrumpir turnos.",José Lara Arce,12,A:2;Q:2;L:8,"Asignación y cuadrante integrado por código; entornos, usuarios y habilitaciones autorizados",RT-22.01--05; aforo propuesto,2028-04-27,2028-05-02,1.11.2.2.1;VERSION-E2,Recepción por etapa o control del periodo; no acredita ejecución,RT-22.01--05; aforo propuesto
1.11.7.2.1.1.15,"Sesión y certificación E2, perfil 1, cohorte 15",1.11,E2 Desarrollo,"Sesión y certificación E2, perfil 1, cohorte 15",Resultado de la ficha de familia y del paquete original; registro individual por código/ventana,"No duplicar padres, informes, ingeniería ni cobertura; no incluye horas de contraparte ni obras/adquisiciones del cliente","Dos sesiones de dos horas, ejercicio, registro individual y recuperación; máximo doce asistentes y sin interrumpir turnos.",José Lara Arce,12,A:2;Q:2;L:8,"Asignación y cuadrante integrado por código; entornos, usuarios y habilitaciones autorizados",RT-22.01--05; aforo propuesto,2028-05-02,2028-05-03,1.11.2.2.1;VERSION-E2,Recepción por etapa o control del periodo; no acredita ejecución,RT-22.01--05; aforo propuesto
1.11.7.2.1.1.16,"Sesión y certificación E2, perfil 1, cohorte 16",1.11,E2 Desarrollo,"Sesión y certificación E2, perfil 1, cohorte 16",Resultado de la ficha de familia y del paquete original; registro individual por código/ventana,"No duplicar padres, informes, ingeniería ni cobertura; no incluye horas de contraparte ni obras/adquisiciones del cliente","Dos sesiones de dos horas, ejercicio, registro individual y recuperación; máximo doce asistentes y sin interrumpir turnos.",José Lara Arce,12,A:2;Q:2;L:8,"Asignación y cuadrante integrado por código; entornos, usuarios y habilitaciones autorizados",RT-22.01--05; aforo propuesto,2028-05-03,2028-05-04,1.11.2.2.1;VERSION-E2,Recepción por etapa o control del periodo; no acredita ejecución,RT-22.01--05; aforo propuesto
1.11.7.2.1.1.17,"Sesión y certificación E2, perfil 1, cohorte 17",1.11,E2 Desarrollo,"Sesión y certificación E2, perfil 1, cohorte 17",Resultado de la ficha de familia y del paquete original; registro individual por código/ventana,"No duplicar padres, informes, ingeniería ni cobertura; no incluye horas de contraparte ni obras/adquisiciones del cliente","Dos sesiones de dos horas, ejercicio, registro individual y recuperación; máximo doce asistentes y sin interrumpir turnos.",José Lara Arce,12,A:2;Q:2;L:8,"Asignación y cuadrante integrado por código; entornos, usuarios y habilitaciones autorizados",RT-22.01--05; aforo propuesto,2028-05-04,2028-05-05,1.11.2.2.1;VERSION-E2,Recepción por etapa o control del periodo; no acredita ejecución,RT-22.01--05; aforo propuesto
1.11.7.2.1.1.18,"Sesión y certificación E2, perfil 1, cohorte 18",1.11,E2 Desarrollo,"Sesión y certificación E2, perfil 1, cohorte 18",Resultado de la ficha de familia y del paquete original; registro individual por código/ventana,"No duplicar padres, informes, ingeniería ni cobertura; no incluye horas de contraparte ni obras/adquisiciones del cliente","Dos sesiones de dos horas, ejercicio, registro individual y recuperación; máximo doce asistentes y sin interrumpir turnos.",José Lara Arce,12,A:2;Q:2;L:8,"Asignación y cuadrante integrado por código; entornos, usuarios y habilitaciones autorizados",RT-22.01--05; aforo propuesto,2028-04-20,2028-04-21,1.11.2.2.1;VERSION-E2,Recepción por etapa o control del periodo; no acredita ejecución,RT-22.01--05; aforo propuesto
1.11.7.2.1.1.19,"Sesión y certificación E2, perfil 1, cohorte 19",1.11,E2 Desarrollo,"Sesión y certificación E2, perfil 1, cohorte 19",Resultado de la ficha de familia y del paquete original; registro individual por código/ventana,"No duplicar padres, informes, ingeniería ni cobertura; no incluye horas de contraparte ni obras/adquisiciones del cliente","Dos sesiones de dos horas, ejercicio, registro individual y recuperación; máximo doce asistentes y sin interrumpir turnos.",José Lara Arce,12,A:2;Q:2;L:8,"Asignación y cuadrante integrado por código; entornos, usuarios y habilitaciones autorizados",RT-22.01--05; aforo propuesto,2028-04-21,2028-04-24,1.11.2.2.1;VERSION-E2,Recepción por etapa o control del periodo; no acredita ejecución,RT-22.01--05; aforo propuesto
1.11.7.2.1.1.20,"Sesión y certificación E2, perfil 1, cohorte 20",1.11,E2 Desarrollo,"Sesión y certificación E2, perfil 1, cohorte 20",Resultado de la ficha de familia y del paquete original; registro individual por código/ventana,"No duplicar padres, informes, ingeniería ni cobertura; no incluye horas de contraparte ni obras/adquisiciones del cliente","Dos sesiones de dos horas, ejercicio, registro individual y recuperación; máximo doce asistentes y sin interrumpir turnos.",José Lara Arce,12,A:2;Q:2;L:8,"Asignación y cuadrante integrado por código; entornos, usuarios y habilitaciones autorizados",RT-22.01--05; aforo propuesto,2028-04-25,2028-04-27,1.11.2.2.1;VERSION-E2,Recepción por etapa o control del periodo; no acredita ejecución,RT-22.01--05; aforo propuesto
1.11.7.2.1.1.21,"Sesión y certificación E2, perfil 1, cohorte 21",1.11,E2 Desarrollo,"Sesión y certificación E2, perfil 1, cohorte 21",Resultado de la ficha de familia y del paquete original; registro individual por código/ventana,"No duplicar padres, informes, ingeniería ni cobertura; no incluye horas de contraparte ni obras/adquisiciones del cliente","Dos sesiones de dos horas, ejercicio, registro individual y recuperación; máximo doce asistentes y sin interrumpir turnos.",José Lara Arce,12,A:2;Q:2;L:8,"Asignación y cuadrante integrado por código; entornos, usuarios y habilitaciones autorizados",RT-22.01--05; aforo propuesto,2028-04-26,2028-04-28,1.11.2.2.1;VERSION-E2,Recepción por etapa o control del periodo; no acredita ejecución,RT-22.01--05; aforo propuesto
1.11.7.2.1.1.22,"Sesión y certificación E2, perfil 1, cohorte 22",1.11,E2 Desarrollo,"Sesión y certificación E2, perfil 1, cohorte 22",Resultado de la ficha de familia y del paquete original; registro individual por código/ventana,"No duplicar padres, informes, ingeniería ni cobertura; no incluye horas de contraparte ni obras/adquisiciones del cliente","Dos sesiones de dos horas, ejercicio, registro individual y recuperación; máximo doce asistentes y sin interrumpir turnos.",José Lara Arce,12,A:2;Q:2;L:8,"Asignación y cuadrante integrado por código; entornos, usuarios y habilitaciones autorizados",RT-22.01--05; aforo propuesto,2028-04-28,2028-05-02,1.11.2.2.1;VERSION-E2,Recepción por etapa o control del periodo; no acredita ejecución,RT-22.01--05; aforo propuesto
1.11.7.2.1.1.23,"Sesión y certificación E2, perfil 1, cohorte 23",1.11,E2 Desarrollo,"Sesión y certificación E2, perfil 1, cohorte 23",Resultado de la ficha de familia y del paquete original; registro individual por código/ventana,"No duplicar padres, informes, ingeniería ni cobertura; no incluye horas de contraparte ni obras/adquisiciones del cliente","Dos sesiones de dos horas, ejercicio, registro individual y recuperación; máximo doce asistentes y sin interrumpir turnos.",José Lara Arce,12,A:2;Q:2;L:8,"Asignación y cuadrante integrado por código; entornos, usuarios y habilitaciones autorizados",RT-22.01--05; aforo propuesto,2028-04-20,2028-04-21,1.11.2.2.1;VERSION-E2,Recepción por etapa o control del periodo; no acredita ejecución,RT-22.01--05; aforo propuesto
1.11.7.2.1.1.24,"Sesión y certificación E2, perfil 1, cohorte 24",1.11,E2 Desarrollo,"Sesión y certificación E2, perfil 1, cohorte 24",Resultado de la ficha de familia y del paquete original; registro individual por código/ventana,"No duplicar padres, informes, ingeniería ni cobertura; no incluye horas de contraparte ni obras/adquisiciones del cliente","Dos sesiones de dos horas, ejercicio, registro individual y recuperación; máximo doce asistentes y sin interrumpir turnos.",José Lara Arce,12,A:2;Q:2;L:8,"Asignación y cuadrante integrado por código; entornos, usuarios y habilitaciones autorizados",RT-22.01--05; aforo propuesto,2028-04-21,2028-04-24,1.11.2.2.1;VERSION-E2,Recepción por etapa o control del periodo; no acredita ejecución,RT-22.01--05; aforo propuesto
1.11.7.2.1.1.25,"Sesión y certificación E2, perfil 1, cohorte 25",1.11,E2 Desarrollo,"Sesión y certificación E2, perfil 1, cohorte 25",Resultado de la ficha de familia y del paquete original; registro individual por código/ventana,"No duplicar padres, informes, ingeniería ni cobertura; no incluye horas de contraparte ni obras/adquisiciones del cliente","Dos sesiones de dos horas, ejercicio, registro individual y recuperación; máximo doce asistentes y sin interrumpir turnos.",José Lara Arce,12,A:2;Q:2;L:8,"Asignación y cuadrante integrado por código; entornos, usuarios y habilitaciones autorizados",RT-22.01--05; aforo propuesto,2028-04-24,2028-04-25,1.11.2.2.1;VERSION-E2,Recepción por etapa o control del periodo; no acredita ejecución,RT-22.01--05; aforo propuesto
1.11.7.2.1.1.26,"Sesión y certificación E2, perfil 1, cohorte 26",1.11,E2 Desarrollo,"Sesión y certificación E2, perfil 1, cohorte 26",Resultado de la ficha de familia y del paquete original; registro individual por código/ventana,"No duplicar padres, informes, ingeniería ni cobertura; no incluye horas de contraparte ni obras/adquisiciones del cliente","Dos sesiones de dos horas, ejercicio, registro individual y recuperación; máximo doce asistentes y sin interrumpir turnos.",José Lara Arce,12,A:2;Q:2;L:8,"Asignación y cuadrante integrado por código; entornos, usuarios y habilitaciones autorizados",RT-22.01--05; aforo propuesto,2028-04-25,2028-04-27,1.11.2.2.1;VERSION-E2,Recepción por etapa o control del periodo; no acredita ejecución,RT-22.01--05; aforo propuesto
1.11.7.2.1.1.27,"Sesión y certificación E2, perfil 1, cohorte 27",1.11,E2 Desarrollo,"Sesión y certificación E2, perfil 1, cohorte 27",Resultado de la ficha de familia y del paquete original; registro individual por código/ventana,"No duplicar padres, informes, ingeniería ni cobertura; no incluye horas de contraparte ni obras/adquisiciones del cliente","Dos sesiones de dos horas, ejercicio, registro individual y recuperación; máximo doce asistentes y sin interrumpir turnos.",José Lara Arce,12,A:2;Q:2;L:8,"Asignación y cuadrante integrado por código; entornos, usuarios y habilitaciones autorizados",RT-22.01--05; aforo propuesto,2028-04-26,2028-04-28,1.11.2.2.1;VERSION-E2,Recepción por etapa o control del periodo; no acredita ejecución,RT-22.01--05; aforo propuesto
1.11.7.2.1.1.28,"Sesión y certificación E2, perfil 1, cohorte 28",1.11,E2 Desarrollo,"Sesión y certificación E2, perfil 1, cohorte 28",Resultado de la ficha de familia y del paquete original; registro individual por código/ventana,"No duplicar padres, informes, ingeniería ni cobertura; no incluye horas de contraparte ni obras/adquisiciones del cliente","Dos sesiones de dos horas, ejercicio, registro individual y recuperación; máximo doce asistentes y sin interrumpir turnos.",José Lara Arce,12,A:2;Q:2;L:8,"Asignación y cuadrante integrado por código; entornos, usuarios y habilitaciones autorizados",RT-22.01--05; aforo propuesto,2028-04-21,2028-04-24,1.11.2.2.1;VERSION-E2,Recepción por etapa o control del periodo; no acredita ejecución,RT-22.01--05; aforo propuesto
1.11.7.2.1.1.29,"Sesión y certificación E2, perfil 1, cohorte 29",1.11,E2 Desarrollo,"Sesión y certificación E2, perfil 1, cohorte 29",Resultado de la ficha de familia y del paquete original; registro individual por código/ventana,"No duplicar padres, informes, ingeniería ni cobertura; no incluye horas de contraparte ni obras/adquisiciones del cliente","Dos sesiones de dos horas, ejercicio, registro individual y recuperación; máximo doce asistentes y sin interrumpir turnos.",José Lara Arce,12,A:2;Q:2;L:8,"Asignación y cuadrante integrado por código; entornos, usuarios y habilitaciones autorizados",RT-22.01--05; aforo propuesto,2028-04-24,2028-04-25,1.11.2.2.1;VERSION-E2,Recepción por etapa o control del periodo; no acredita ejecución,RT-22.01--05; aforo propuesto
1.11.7.2.1.1.30,"Sesión y certificación E2, perfil 1, cohorte 30",1.11,E2 Desarrollo,"Sesión y certificación E2, perfil 1, cohorte 30",Resultado de la ficha de familia y del paquete original; registro individual por código/ventana,"No duplicar padres, informes, ingeniería ni cobertura; no incluye horas de contraparte ni obras/adquisiciones del cliente","Dos sesiones de dos horas, ejercicio, registro individual y recuperación; máximo doce asistentes y sin interrumpir turnos.",José Lara Arce,12,A:2;Q:2;L:8,"Asignación y cuadrante integrado por código; entornos, usuarios y habilitaciones autorizados",RT-22.01--05; aforo propuesto,2028-04-26,2028-04-28,1.11.2.2.1;VERSION-E2,Recepción por etapa o control del periodo; no acredita ejecución,RT-22.01--05; aforo propuesto
1.11.7.2.1.1.31,"Sesión y certificación E2, perfil 1, cohorte 31",1.11,E2 Desarrollo,"Sesión y certificación E2, perfil 1, cohorte 31",Resultado de la ficha de familia y del paquete original; registro individual por código/ventana,"No duplicar padres, informes, ingeniería ni cobertura; no incluye horas de contraparte ni obras/adquisiciones del cliente","Dos sesiones de dos horas, ejercicio, registro individual y recuperación; máximo doce asistentes y sin interrumpir turnos.",José Lara Arce,12,A:2;Q:2;L:8,"Asignación y cuadrante integrado por código; entornos, usuarios y habilitaciones autorizados",RT-22.01--05; aforo propuesto,2028-04-20,2028-04-21,1.11.2.2.1;VERSION-E2,Recepción por etapa o control del periodo; no acredita ejecución,RT-22.01--05; aforo propuesto
1.11.7.2.1.1.32,"Sesión y certificación E2, perfil 1, cohorte 32",1.11,E2 Desarrollo,"Sesión y certificación E2, perfil 1, cohorte 32",Resultado de la ficha de familia y del paquete original; registro individual por código/ventana,"No duplicar padres, informes, ingeniería ni cobertura; no incluye horas de contraparte ni obras/adquisiciones del cliente","Dos sesiones de dos horas, ejercicio, registro individual y recuperación; máximo doce asistentes y sin interrumpir turnos.",José Lara Arce,12,A:2;Q:2;L:8,"Asignación y cuadrante integrado por código; entornos, usuarios y habilitaciones autorizados",RT-22.01--05; aforo propuesto,2028-04-21,2028-04-24,1.11.2.2.1;VERSION-E2,Recepción por etapa o control del periodo; no acredita ejecución,RT-22.01--05; aforo propuesto
1.11.7.2.1.1.33,"Sesión y certificación E2, perfil 1, cohorte 33",1.11,E2 Desarrollo,"Sesión y certificación E2, perfil 1, cohorte 33",Resultado de la ficha de familia y del paquete original; registro individual por código/ventana,"No duplicar padres, informes, ingeniería ni cobertura; no incluye horas de contraparte ni obras/adquisiciones del cliente","Dos sesiones de dos horas, ejercicio, registro individual y recuperación; máximo doce asistentes y sin interrumpir turnos.",José Lara Arce,12,A:2;Q:2;L:8,"Asignación y cuadrante integrado por código; entornos, usuarios y habilitaciones autorizados",RT-22.01--05; aforo propuesto,2028-04-24,2028-04-25,1.11.2.2.1;VERSION-E2,Recepción por etapa o control del periodo; no acredita ejecución,RT-22.01--05; aforo propuesto
1.11.7.2.1.1.34,"Sesión y certificación E2, perfil 1, cohorte 34",1.11,E2 Desarrollo,"Sesión y certificación E2, perfil 1, cohorte 34",Resultado de la ficha de familia y del paquete original; registro individual por código/ventana,"No duplicar padres, informes, ingeniería ni cobertura; no incluye horas de contraparte ni obras/adquisiciones del cliente","Dos sesiones de dos horas, ejercicio, registro individual y recuperación; máximo doce asistentes y sin interrumpir turnos.",José Lara Arce,12,A:2;Q:2;L:8,"Asignación y cuadrante integrado por código; entornos, usuarios y habilitaciones autorizados",RT-22.01--05; aforo propuesto,2028-04-25,2028-04-27,1.11.2.2.1;VERSION-E2,Recepción por etapa o control del periodo; no acredita ejecución,RT-22.01--05; aforo propuesto
1.11.7.2.1.1.35,"Sesión y certificación E2, perfil 1, cohorte 35",1.11,E2 Desarrollo,"Sesión y certificación E2, perfil 1, cohorte 35",Resultado de la ficha de familia y del paquete original; registro individual por código/ventana,"No duplicar padres, informes, ingeniería ni cobertura; no incluye horas de contraparte ni obras/adquisiciones del cliente","Dos sesiones de dos horas, ejercicio, registro individual y recuperación; máximo doce asistentes y sin interrumpir turnos.",José Lara Arce,12,A:2;Q:2;L:8,"Asignación y cuadrante integrado por código; entornos, usuarios y habilitaciones autorizados",RT-22.01--05; aforo propuesto,2028-04-26,2028-04-28,1.11.2.2.1;VERSION-E2,Recepción por etapa o control del periodo; no acredita ejecución,RT-22.01--05; aforo propuesto
1.11.7.2.1.1.36,"Sesión y certificación E2, perfil 1, cohorte 36",1.11,E2 Desarrollo,"Sesión y certificación E2, perfil 1, cohorte 36",Resultado de la ficha de familia y del paquete original; registro individual por código/ventana,"No duplicar padres, informes, ingeniería ni cobertura; no incluye horas de contraparte ni obras/adquisiciones del cliente","Dos sesiones de dos horas, ejercicio, registro individual y recuperación; máximo doce asistentes y sin interrumpir turnos.",José Lara Arce,12,A:2;Q:2;L:8,"Asignación y cuadrante integrado por código; entornos, usuarios y habilitaciones autorizados",RT-22.01--05; aforo propuesto,2028-04-20,2028-04-21,1.11.2.2.1;VERSION-E2,Recepción por etapa o control del periodo; no acredita ejecución,RT-22.01--05; aforo propuesto
1.11.7.2.1.1.37,"Sesión y certificación E2, perfil 1, cohorte 37",1.11,E2 Desarrollo,"Sesión y certificación E2, perfil 1, cohorte 37",Resultado de la ficha de familia y del paquete original; registro individual por código/ventana,"No duplicar padres, informes, ingeniería ni cobertura; no incluye horas de contraparte ni obras/adquisiciones del cliente","Dos sesiones de dos horas, ejercicio, registro individual y recuperación; máximo doce asistentes y sin interrumpir turnos.",José Lara Arce,12,A:2;Q:2;L:8,"Asignación y cuadrante integrado por código; entornos, usuarios y habilitaciones autorizados",RT-22.01--05; aforo propuesto,2028-04-21,2028-04-24,1.11.2.2.1;VERSION-E2,Recepción por etapa o control del periodo; no acredita ejecución,RT-22.01--05; aforo propuesto
1.11.7.2.1.1.38,"Sesión y certificación E2, perfil 1, cohorte 38",1.11,E2 Desarrollo,"Sesión y certificación E2, perfil 1, cohorte 38",Resultado de la ficha de familia y del paquete original; registro individual por código/ventana,"No duplicar padres, informes, ingeniería ni cobertura; no incluye horas de contraparte ni obras/adquisiciones del cliente","Dos sesiones de dos horas, ejercicio, registro individual y recuperación; máximo doce asistentes y sin interrumpir turnos.",José Lara Arce,12,A:2;Q:2;L:8,"Asignación y cuadrante integrado por código; entornos, usuarios y habilitaciones autorizados",RT-22.01--05; aforo propuesto,2028-04-24,2028-04-25,1.11.2.2.1;VERSION-E2,Recepción por etapa o control del periodo; no acredita ejecución,RT-22.01--05; aforo propuesto
1.11.7.2.1.1.39,"Sesión y certificación E2, perfil 1, cohorte 39",1.11,E2 Desarrollo,"Sesión y certificación E2, perfil 1, cohorte 39",Resultado de la ficha de familia y del paquete original; registro individual por código/ventana,"No duplicar padres, informes, ingeniería ni cobertura; no incluye horas de contraparte ni obras/adquisiciones del cliente","Dos sesiones de dos horas, ejercicio, registro individual y recuperación; máximo doce asistentes y sin interrumpir turnos.",José Lara Arce,12,A:2;Q:2;L:8,"Asignación y cuadrante integrado por código; entornos, usuarios y habilitaciones autorizados",RT-22.01--05; aforo propuesto,2028-04-25,2028-04-27,1.11.2.2.1;VERSION-E2,Recepción por etapa o control del periodo; no acredita ejecución,RT-22.01--05; aforo propuesto
1.11.7.2.1.1.40,"Sesión y certificación E2, perfil 1, cohorte 40",1.11,E2 Desarrollo,"Sesión y certificación E2, perfil 1, cohorte 40",Resultado de la ficha de familia y del paquete original; registro individual por código/ventana,"No duplicar padres, informes, ingeniería ni cobertura; no incluye horas de contraparte ni obras/adquisiciones del cliente","Dos sesiones de dos horas, ejercicio, registro individual y recuperación; máximo doce asistentes y sin interrumpir turnos.",José Lara Arce,12,A:2;Q:2;L:8,"Asignación y cuadrante integrado por código; entornos, usuarios y habilitaciones autorizados",RT-22.01--05; aforo propuesto,2028-04-20,2028-04-21,1.11.2.2.1;VERSION-E2,Recepción por etapa o control del periodo; no acredita ejecución,RT-22.01--05; aforo propuesto
1.11.7.2.1.1.41,"Sesión y certificación E2, perfil 1, cohorte 41",1.11,E2 Desarrollo,"Sesión y certificación E2, perfil 1, cohorte 41",Resultado de la ficha de familia y del paquete original; registro individual por código/ventana,"No duplicar padres, informes, ingeniería ni cobertura; no incluye horas de contraparte ni obras/adquisiciones del cliente","Dos sesiones de dos horas, ejercicio, registro individual y recuperación; máximo doce asistentes y sin interrumpir turnos.",José Lara Arce,12,A:2;Q:2;L:8,"Asignación y cuadrante integrado por código; entornos, usuarios y habilitaciones autorizados",RT-22.01--05; aforo propuesto,2028-04-21,2028-04-24,1.11.2.2.1;VERSION-E2,Recepción por etapa o control del periodo; no acredita ejecución,RT-22.01--05; aforo propuesto
1.11.7.2.1.1.42,"Sesión y certificación E2, perfil 1, cohorte 42",1.11,E2 Desarrollo,"Sesión y certificación E2, perfil 1, cohorte 42",Resultado de la ficha de familia y del paquete original; registro individual por código/ventana,"No duplicar padres, informes, ingeniería ni cobertura; no incluye horas de contraparte ni obras/adquisiciones del cliente","Dos sesiones de dos horas, ejercicio, registro individual y recuperación; máximo doce asistentes y sin interrumpir turnos.",José Lara Arce,12,A:2;Q:2;L:8,"Asignación y cuadrante integrado por código; entornos, usuarios y habilitaciones autorizados",RT-22.01--05; aforo propuesto,2028-04-24,2028-04-25,1.11.2.2.1;VERSION-E2,Recepción por etapa o control del periodo; no acredita ejecución,RT-22.01--05; aforo propuesto
1.11.7.2.1.1.43,"Sesión y certificación E2, perfil 1, cohorte 43",1.11,E2 Desarrollo,"Sesión y certificación E2, perfil 1, cohorte 43",Resultado de la ficha de familia y del paquete original; registro individual por código/ventana,"No duplicar padres, informes, ingeniería ni cobertura; no incluye horas de contraparte ni obras/adquisiciones del cliente","Dos sesiones de dos horas, ejercicio, registro individual y recuperación; máximo doce asistentes y sin interrumpir turnos.",José Lara Arce,12,A:2;Q:2;L:8,"Asignación y cuadrante integrado por código; entornos, usuarios y habilitaciones autorizados",RT-22.01--05; aforo propuesto,2028-04-25,2028-04-27,1.11.2.2.1;VERSION-E2,Recepción por etapa o control del periodo; no acredita ejecución,RT-22.01--05; aforo propuesto
1.11.7.2.1.1.44,"Sesión y certificación E2, perfil 1, cohorte 44",1.11,E2 Desarrollo,"Sesión y certificación E2, perfil 1, cohorte 44",Resultado de la ficha de familia y del paquete original; registro individual por código/ventana,"No duplicar padres, informes, ingeniería ni cobertura; no incluye horas de contraparte ni obras/adquisiciones del cliente","Dos sesiones de dos horas, ejercicio, registro individual y recuperación; máximo doce asistentes y sin interrumpir turnos.",José Lara Arce,12,A:2;Q:2;L:8,"Asignación y cuadrante integrado por código; entornos, usuarios y habilitaciones autorizados",RT-22.01--05; aforo propuesto,2028-04-26,2028-04-28,1.11.2.2.1;VERSION-E2,Recepción por etapa o control del periodo; no acredita ejecución,RT-22.01--05; aforo propuesto
1.11.7.2.1.1.45,"Sesión y certificación E2, perfil 1, cohorte 45",1.11,E2 Desarrollo,"Sesión y certificación E2, perfil 1, cohorte 45",Resultado de la ficha de familia y del paquete original; registro individual por código/ventana,"No duplicar padres, informes, ingeniería ni cobertura; no incluye horas de contraparte ni obras/adquisiciones del cliente","Dos sesiones de dos horas, ejercicio, registro individual y recuperación; máximo doce asistentes y sin interrumpir turnos.",José Lara Arce,12,A:2;Q:2;L:8,"Asignación y cuadrante integrado por código; entornos, usuarios y habilitaciones autorizados",RT-22.01--05; aforo propuesto,2028-04-20,2028-04-21,1.11.2.2.1;VERSION-E2,Recepción por etapa o control del periodo; no acredita ejecución,RT-22.01--05; aforo propuesto
1.11.7.2.1.1.46,"Sesión y certificación E2, perfil 1, cohorte 46",1.11,E2 Desarrollo,"Sesión y certificación E2, perfil 1, cohorte 46",Resultado de la ficha de familia y del paquete original; registro individual por código/ventana,"No duplicar padres, informes, ingeniería ni cobertura; no incluye horas de contraparte ni obras/adquisiciones del cliente","Dos sesiones de dos horas, ejercicio, registro individual y recuperación; máximo doce asistentes y sin interrumpir turnos.",José Lara Arce,12,A:2;Q:2;L:8,"Asignación y cuadrante integrado por código; entornos, usuarios y habilitaciones autorizados",RT-22.01--05; aforo propuesto,2028-04-21,2028-04-24,1.11.2.2.1;VERSION-E2,Recepción por etapa o control del periodo; no acredita ejecución,RT-22.01--05; aforo propuesto
1.11.7.2.1.1.47,"Sesión y certificación E2, perfil 1, cohorte 47",1.11,E2 Desarrollo,"Sesión y certificación E2, perfil 1, cohorte 47",Resultado de la ficha de familia y del paquete original; registro individual por código/ventana,"No duplicar padres, informes, ingeniería ni cobertura; no incluye horas de contraparte ni obras/adquisiciones del cliente","Dos sesiones de dos horas, ejercicio, registro individual y recuperación; máximo doce asistentes y sin interrumpir turnos.",José Lara Arce,12,A:2;Q:2;L:8,"Asignación y cuadrante integrado por código; entornos, usuarios y habilitaciones autorizados",RT-22.01--05; aforo propuesto,2028-04-24,2028-04-25,1.11.2.2.1;VERSION-E2,Recepción por etapa o control del periodo; no acredita ejecución,RT-22.01--05; aforo propuesto
1.11.7.2.1.1.48,"Sesión y certificación E2, perfil 1, cohorte 48",1.11,E2 Desarrollo,"Sesión y certificación E2, perfil 1, cohorte 48",Resultado de la ficha de familia y del paquete original; registro individual por código/ventana,"No duplicar padres, informes, ingeniería ni cobertura; no incluye horas de contraparte ni obras/adquisiciones del cliente","Dos sesiones de dos horas, ejercicio, registro individual y recuperación; máximo doce asistentes y sin interrumpir turnos.",José Lara Arce,12,A:2;Q:2;L:8,"Asignación y cuadrante integrado por código; entornos, usuarios y habilitaciones autorizados",RT-22.01--05; aforo propuesto,2028-04-25,2028-04-27,1.11.2.2.1;VERSION-E2,Recepción por etapa o control del periodo; no acredita ejecución,RT-22.01--05; aforo propuesto
1.11.7.2.1.1.49,"Sesión y certificación E2, perfil 1, cohorte 49",1.11,E2 Desarrollo,"Sesión y certificación E2, perfil 1, cohorte 49",Resultado de la ficha de familia y del paquete original; registro individual por código/ventana,"No duplicar padres, informes, ingeniería ni cobertura; no incluye horas de contraparte ni obras/adquisiciones del cliente","Dos sesiones de dos horas, ejercicio, registro individual y recuperación; máximo doce asistentes y sin interrumpir turnos.",José Lara Arce,12,A:2;Q:2;L:8,"Asignación y cuadrante integrado por código; entornos, usuarios y habilitaciones autorizados",RT-22.01--05; aforo propuesto,2028-04-26,2028-04-28,1.11.2.2.1;VERSION-E2,Recepción por etapa o control del periodo; no acredita ejecución,RT-22.01--05; aforo propuesto
1.11.7.2.1.1.50,"Sesión y certificación E2, perfil 1, cohorte 50",1.11,E2 Desarrollo,"Sesión y certificación E2, perfil 1, cohorte 50",Resultado de la ficha de familia y del paquete original; registro individual por código/ventana,"No duplicar padres, informes, ingeniería ni cobertura; no incluye horas de contraparte ni obras/adquisiciones del cliente","Dos sesiones de dos horas, ejercicio, registro individual y recuperación; máximo doce asistentes y sin interrumpir turnos.",José Lara Arce,12,A:2;Q:2;L:8,"Asignación y cuadrante integrado por código; entornos, usuarios y habilitaciones autorizados",RT-22.01--05; aforo propuesto,2028-04-21,2028-04-24,1.11.2.2.1;VERSION-E2,Recepción por etapa o control del periodo; no acredita ejecución,RT-22.01--05; aforo propuesto
1.11.7.2.1.1.51,"Sesión y certificación E2, perfil 1, cohorte 51",1.11,E2 Desarrollo,"Sesión y certificación E2, perfil 1, cohorte 51",Resultado de la ficha de familia y del paquete original; registro individual por código/ventana,"No duplicar padres, informes, ingeniería ni cobertura; no incluye horas de contraparte ni obras/adquisiciones del cliente","Dos sesiones de dos horas, ejercicio, registro individual y recuperación; máximo doce asistentes y sin interrumpir turnos.",José Lara Arce,12,A:2;Q:2;L:8,"Asignación y cuadrante integrado por código; entornos, usuarios y habilitaciones autorizados",RT-22.01--05; aforo propuesto,2028-04-24,2028-04-25,1.11.2.2.1;VERSION-E2,Recepción por etapa o control del periodo; no acredita ejecución,RT-22.01--05; aforo propuesto
1.11.7.2.1.1.52,"Sesión y certificación E2, perfil 1, cohorte 52",1.11,E2 Desarrollo,"Sesión y certificación E2, perfil 1, cohorte 52",Resultado de la ficha de familia y del paquete original; registro individual por código/ventana,"No duplicar padres, informes, ingeniería ni cobertura; no incluye horas de contraparte ni obras/adquisiciones del cliente","Dos sesiones de dos horas, ejercicio, registro individual y recuperación; máximo doce asistentes y sin interrumpir turnos.",José Lara Arce,12,A:2;Q:2;L:8,"Asignación y cuadrante integrado por código; entornos, usuarios y habilitaciones autorizados",RT-22.01--05; aforo propuesto,2028-04-25,2028-04-27,1.11.2.2.1;VERSION-E2,Recepción por etapa o control del periodo; no acredita ejecución,RT-22.01--05; aforo propuesto
1.11.7.2.1.1.53,"Sesión y certificación E2, perfil 1, cohorte 53",1.11,E2 Desarrollo,"Sesión y certificación E2, perfil 1, cohorte 53",Resultado de la ficha de familia y del paquete original; registro individual por código/ventana,"No duplicar padres, informes, ingeniería ni cobertura; no incluye horas de contraparte ni obras/adquisiciones del cliente","Dos sesiones de dos horas, ejercicio, registro individual y recuperación; máximo doce asistentes y sin interrumpir turnos.",José Lara Arce,12,A:2;Q:2;L:8,"Asignación y cuadrante integrado por código; entornos, usuarios y habilitaciones autorizados",RT-22.01--05; aforo propuesto,2028-04-26,2028-04-28,1.11.2.2.1;VERSION-E2,Recepción por etapa o control del periodo; no acredita ejecución,RT-22.01--05; aforo propuesto
1.11.7.2.1.1.54,"Sesión y certificación E2, perfil 1, cohorte 54",1.11,E2 Desarrollo,"Sesión y certificación E2, perfil 1, cohorte 54",Resultado de la ficha de familia y del paquete original; registro individual por código/ventana,"No duplicar padres, informes, ingeniería ni cobertura; no incluye horas de contraparte ni obras/adquisiciones del cliente","Dos sesiones de dos horas, ejercicio, registro individual y recuperación; máximo doce asistentes y sin interrumpir turnos.",José Lara Arce,12,A:2;Q:2;L:8,"Asignación y cuadrante integrado por código; entornos, usuarios y habilitaciones autorizados",RT-22.01--05; aforo propuesto,2028-04-20,2028-04-21,1.11.2.2.1;VERSION-E2,Recepción por etapa o control del periodo; no acredita ejecución,RT-22.01--05; aforo propuesto
1.11.7.2.1.1.55,"Sesión y certificación E2, perfil 1, cohorte 55",1.11,E2 Desarrollo,"Sesión y certificación E2, perfil 1, cohorte 55",Resultado de la ficha de familia y del paquete original; registro individual por código/ventana,"No duplicar padres, informes, ingeniería ni cobertura; no incluye horas de contraparte ni obras/adquisiciones del cliente","Dos sesiones de dos horas, ejercicio, registro individual y recuperación; máximo doce asistentes y sin interrumpir turnos.",José Lara Arce,12,A:2;Q:2;L:8,"Asignación y cuadrante integrado por código; entornos, usuarios y habilitaciones autorizados",RT-22.01--05; aforo propuesto,2028-04-21,2028-04-24,1.11.2.2.1;VERSION-E2,Recepción por etapa o control del periodo; no acredita ejecución,RT-22.01--05; aforo propuesto
1.11.7.2.1.1.56,"Sesión y certificación E2, perfil 1, cohorte 56",1.11,E2 Desarrollo,"Sesión y certificación E2, perfil 1, cohorte 56",Resultado de la ficha de familia y del paquete original; registro individual por código/ventana,"No duplicar padres, informes, ingeniería ni cobertura; no incluye horas de contraparte ni obras/adquisiciones del cliente","Dos sesiones de dos horas, ejercicio, registro individual y recuperación; máximo doce asistentes y sin interrumpir turnos.",José Lara Arce,12,A:2;Q:2;L:8,"Asignación y cuadrante integrado por código; entornos, usuarios y habilitaciones autorizados",RT-22.01--05; aforo propuesto,2028-04-24,2028-04-25,1.11.2.2.1;VERSION-E2,Recepción por etapa o control del periodo; no acredita ejecución,RT-22.01--05; aforo propuesto
1.11.7.2.1.1.57,"Sesión y certificación E2, perfil 1, cohorte 57",1.11,E2 Desarrollo,"Sesión y certificación E2, perfil 1, cohorte 57",Resultado de la ficha de familia y del paquete original; registro individual por código/ventana,"No duplicar padres, informes, ingeniería ni cobertura; no incluye horas de contraparte ni obras/adquisiciones del cliente","Dos sesiones de dos horas, ejercicio, registro individual y recuperación; máximo doce asistentes y sin interrumpir turnos.",José Lara Arce,12,A:2;Q:2;L:8,"Asignación y cuadrante integrado por código; entornos, usuarios y habilitaciones autorizados",RT-22.01--05; aforo propuesto,2028-04-25,2028-04-27,1.11.2.2.1;VERSION-E2,Recepción por etapa o control del periodo; no acredita ejecución,RT-22.01--05; aforo propuesto
1.11.7.2.1.1.58,"Sesión y certificación E2, perfil 1, cohorte 58",1.11,E2 Desarrollo,"Sesión y certificación E2, perfil 1, cohorte 58",Resultado de la ficha de familia y del paquete original; registro individual por código/ventana,"No duplicar padres, informes, ingeniería ni cobertura; no incluye horas de contraparte ni obras/adquisiciones del cliente","Dos sesiones de dos horas, ejercicio, registro individual y recuperación; máximo doce asistentes y sin interrumpir turnos.",José Lara Arce,12,A:2;Q:2;L:8,"Asignación y cuadrante integrado por código; entornos, usuarios y habilitaciones autorizados",RT-22.01--05; aforo propuesto,2028-04-26,2028-04-28,1.11.2.2.1;VERSION-E2,Recepción por etapa o control del periodo; no acredita ejecución,RT-22.01--05; aforo propuesto
1.11.7.2.1.1.59,"Sesión y certificación E2, perfil 1, cohorte 59",1.11,E2 Desarrollo,"Sesión y certificación E2, perfil 1, cohorte 59",Resultado de la ficha de familia y del paquete original; registro individual por código/ventana,"No duplicar padres, informes, ingeniería ni cobertura; no incluye horas de contraparte ni obras/adquisiciones del cliente","Dos sesiones de dos horas, ejercicio, registro individual y recuperación; máximo doce asistentes y sin interrumpir turnos.",José Lara Arce,12,A:2;Q:2;L:8,"Asignación y cuadrante integrado por código; entornos, usuarios y habilitaciones autorizados",RT-22.01--05; aforo propuesto,2028-04-20,2028-04-21,1.11.2.2.1;VERSION-E2,Recepción por etapa o control del periodo; no acredita ejecución,RT-22.01--05; aforo propuesto
1.11.7.2.1.1.60,"Sesión y certificación E2, perfil 1, cohorte 60",1.11,E2 Desarrollo,"Sesión y certificación E2, perfil 1, cohorte 60",Resultado de la ficha de familia y del paquete original; registro individual por código/ventana,"No duplicar padres, informes, ingeniería ni cobertura; no incluye horas de contraparte ni obras/adquisiciones del cliente","Dos sesiones de dos horas, ejercicio, registro individual y recuperación; máximo doce asistentes y sin interrumpir turnos.",José Lara Arce,12,A:2;Q:2;L:8,"Asignación y cuadrante integrado por código; entornos, usuarios y habilitaciones autorizados",RT-22.01--05; aforo propuesto,2028-04-28,2028-05-02,1.11.2.2.1;VERSION-E2,Recepción por etapa o control del periodo; no acredita ejecución,RT-22.01--05; aforo propuesto
1.11.7.2.1.1.61,"Sesión y certificación E2, perfil 1, cohorte 61",1.11,E2 Desarrollo,"Sesión y certificación E2, perfil 1, cohorte 61",Resultado de la ficha de familia y del paquete original; registro individual por código/ventana,"No duplicar padres, informes, ingeniería ni cobertura; no incluye horas de contraparte ni obras/adquisiciones del cliente","Dos sesiones de dos horas, ejercicio, registro individual y recuperación; máximo doce asistentes y sin interrumpir turnos.",José Lara Arce,12,A:2;Q:2;L:8,"Asignación y cuadrante integrado por código; entornos, usuarios y habilitaciones autorizados",RT-22.01--05; aforo propuesto,2028-04-27,2028-05-02,1.11.2.2.1;VERSION-E2,Recepción por etapa o control del periodo; no acredita ejecución,RT-22.01--05; aforo propuesto
1.11.7.2.1.1.62,"Sesión y certificación E2, perfil 1, cohorte 62",1.11,E2 Desarrollo,"Sesión y certificación E2, perfil 1, cohorte 62",Resultado de la ficha de familia y del paquete original; registro individual por código/ventana,"No duplicar padres, informes, ingeniería ni cobertura; no incluye horas de contraparte ni obras/adquisiciones del cliente","Dos sesiones de dos horas, ejercicio, registro individual y recuperación; máximo doce asistentes y sin interrumpir turnos.",José Lara Arce,12,A:2;Q:2;L:8,"Asignación y cuadrante integrado por código; entornos, usuarios y habilitaciones autorizados",RT-22.01--05; aforo propuesto,2028-04-28,2028-05-02,1.11.2.2.1;VERSION-E2,Recepción por etapa o control del periodo; no acredita ejecución,RT-22.01--05; aforo propuesto
1.11.7.2.1.1.63,"Sesión y certificación E2, perfil 1, cohorte 63",1.11,E2 Desarrollo,"Sesión y certificación E2, perfil 1, cohorte 63",Resultado de la ficha de familia y del paquete original; registro individual por código/ventana,"No duplicar padres, informes, ingeniería ni cobertura; no incluye horas de contraparte ni obras/adquisiciones del cliente","Dos sesiones de dos horas, ejercicio, registro individual y recuperación; máximo doce asistentes y sin interrumpir turnos.",José Lara Arce,12,A:2;Q:2;L:8,"Asignación y cuadrante integrado por código; entornos, usuarios y habilitaciones autorizados",RT-22.01--05; aforo propuesto,2028-04-27,2028-05-02,1.11.2.2.1;VERSION-E2,Recepción por etapa o control del periodo; no acredita ejecución,RT-22.01--05; aforo propuesto
1.11.7.2.1.1.64,"Sesión y certificación E2, perfil 1, cohorte 64",1.11,E2 Desarrollo,"Sesión y certificación E2, perfil 1, cohorte 64",Resultado de la ficha de familia y del paquete original; registro individual por código/ventana,"No duplicar padres, informes, ingeniería ni cobertura; no incluye horas de contraparte ni obras/adquisiciones del cliente","Dos sesiones de dos horas, ejercicio, registro individual y recuperación; máximo doce asistentes y sin interrumpir turnos.",José Lara Arce,12,A:2;Q:2;L:8,"Asignación y cuadrante integrado por código; entornos, usuarios y habilitaciones autorizados",RT-22.01--05; aforo propuesto,2028-04-28,2028-05-02,1.11.2.2.1;VERSION-E2,Recepción por etapa o control del periodo; no acredita ejecución,RT-22.01--05; aforo propuesto
1.11.7.2.1.1.65,"Sesión y certificación E2, perfil 1, cohorte 65",1.11,E2 Desarrollo,"Sesión y certificación E2, perfil 1, cohorte 65",Resultado de la ficha de familia y del paquete original; registro individual por código/ventana,"No duplicar padres, informes, ingeniería ni cobertura; no incluye horas de contraparte ni obras/adquisiciones del cliente","Dos sesiones de dos horas, ejercicio, registro individual y recuperación; máximo doce asistentes y sin interrumpir turnos.",José Lara Arce,12,A:2;Q:2;L:8,"Asignación y cuadrante integrado por código; entornos, usuarios y habilitaciones autorizados",RT-22.01--05; aforo propuesto,2028-04-27,2028-05-02,1.11.2.2.1;VERSION-E2,Recepción por etapa o control del periodo; no acredita ejecución,RT-22.01--05; aforo propuesto
1.11.7.2.1.1.66,"Sesión y certificación E2, perfil 1, cohorte 66",1.11,E2 Desarrollo,"Sesión y certificación E2, perfil 1, cohorte 66",Resultado de la ficha de familia y del paquete original; registro individual por código/ventana,"No duplicar padres, informes, ingeniería ni cobertura; no incluye horas de contraparte ni obras/adquisiciones del cliente","Dos sesiones de dos horas, ejercicio, registro individual y recuperación; máximo doce asistentes y sin interrumpir turnos.",José Lara Arce,12,A:2;Q:2;L:8,"Asignación y cuadrante integrado por código; entornos, usuarios y habilitaciones autorizados",RT-22.01--05; aforo propuesto,2028-04-28,2028-05-02,1.11.2.2.1;VERSION-E2,Recepción por etapa o control del periodo; no acredita ejecución,RT-22.01--05; aforo propuesto
1.11.7.2.1.1.67,"Sesión y certificación E2, perfil 1, cohorte 67",1.11,E2 Desarrollo,"Sesión y certificación E2, perfil 1, cohorte 67",Resultado de la ficha de familia y del paquete original; registro individual por código/ventana,"No duplicar padres, informes, ingeniería ni cobertura; no incluye horas de contraparte ni obras/adquisiciones del cliente","Dos sesiones de dos horas, ejercicio, registro individual y recuperación; máximo doce asistentes y sin interrumpir turnos.",José Lara Arce,12,A:2;Q:2;L:8,"Asignación y cuadrante integrado por código; entornos, usuarios y habilitaciones autorizados",RT-22.01--05; aforo propuesto,2028-05-02,2028-05-03,1.11.2.2.1;VERSION-E2,Recepción por etapa o control del periodo; no acredita ejecución,RT-22.01--05; aforo propuesto
1.11.7.2.1.1.68,"Sesión y certificación E2, perfil 1, cohorte 68",1.11,E2 Desarrollo,"Sesión y certificación E2, perfil 1, cohorte 68",Resultado de la ficha de familia y del paquete original; registro individual por código/ventana,"No duplicar padres, informes, ingeniería ni cobertura; no incluye horas de contraparte ni obras/adquisiciones del cliente","Dos sesiones de dos horas, ejercicio, registro individual y recuperación; máximo doce asistentes y sin interrumpir turnos.",José Lara Arce,12,A:2;Q:2;L:8,"Asignación y cuadrante integrado por código; entornos, usuarios y habilitaciones autorizados",RT-22.01--05; aforo propuesto,2028-05-02,2028-05-03,1.11.2.2.1;VERSION-E2,Recepción por etapa o control del periodo; no acredita ejecución,RT-22.01--05; aforo propuesto
1.11.7.2.1.1.69,"Sesión y certificación E2, perfil 1, cohorte 69",1.11,E2 Desarrollo,"Sesión y certificación E2, perfil 1, cohorte 69",Resultado de la ficha de familia y del paquete original; registro individual por código/ventana,"No duplicar padres, informes, ingeniería ni cobertura; no incluye horas de contraparte ni obras/adquisiciones del cliente","Dos sesiones de dos horas, ejercicio, registro individual y recuperación; máximo doce asistentes y sin interrumpir turnos.",José Lara Arce,12,A:2;Q:2;L:8,"Asignación y cuadrante integrado por código; entornos, usuarios y habilitaciones autorizados",RT-22.01--05; aforo propuesto,2028-05-03,2028-05-04,1.11.2.2.1;VERSION-E2,Recepción por etapa o control del periodo; no acredita ejecución,RT-22.01--05; aforo propuesto
1.11.7.2.1.1.70,"Sesión y certificación E2, perfil 1, cohorte 70",1.11,E2 Desarrollo,"Sesión y certificación E2, perfil 1, cohorte 70",Resultado de la ficha de familia y del paquete original; registro individual por código/ventana,"No duplicar padres, informes, ingeniería ni cobertura; no incluye horas de contraparte ni obras/adquisiciones del cliente","Dos sesiones de dos horas, ejercicio, registro individual y recuperación; máximo doce asistentes y sin interrumpir turnos.",José Lara Arce,12,A:2;Q:2;L:8,"Asignación y cuadrante integrado por código; entornos, usuarios y habilitaciones autorizados",RT-22.01--05; aforo propuesto,2028-05-04,2028-05-05,1.11.2.2.1;VERSION-E2,Recepción por etapa o control del periodo; no acredita ejecución,RT-22.01--05; aforo propuesto
1.11.7.2.1.1.71,"Sesión y certificación E2, perfil 1, cohorte 71",1.11,E2 Desarrollo,"Sesión y certificación E2, perfil 1, cohorte 71",Resultado de la ficha de familia y del paquete original; registro individual por código/ventana,"No duplicar padres, informes, ingeniería ni cobertura; no incluye horas de contraparte ni obras/adquisiciones del cliente","Dos sesiones de dos horas, ejercicio, registro individual y recuperación; máximo doce asistentes y sin interrumpir turnos.",José Lara Arce,12,A:2;Q:2;L:8,"Asignación y cuadrante integrado por código; entornos, usuarios y habilitaciones autorizados",RT-22.01--05; aforo propuesto,2028-05-04,2028-05-05,1.11.2.2.1;VERSION-E2,Recepción por etapa o control del periodo; no acredita ejecución,RT-22.01--05; aforo propuesto
1.11.7.2.1.1.72,"Sesión y certificación E2, perfil 1, cohorte 72",1.11,E2 Desarrollo,"Sesión y certificación E2, perfil 1, cohorte 72",Resultado de la ficha de familia y del paquete original; registro individual por código/ventana,"No duplicar padres, informes, ingeniería ni cobertura; no incluye horas de contraparte ni obras/adquisiciones del cliente","Dos sesiones de dos horas, ejercicio, registro individual y recuperación; máximo doce asistentes y sin interrumpir turnos.",José Lara Arce,12,A:2;Q:2;L:8,"Asignación y cuadrante integrado por código; entornos, usuarios y habilitaciones autorizados",RT-22.01--05; aforo propuesto,2028-05-05,2028-05-08,1.11.2.2.1;VERSION-E2,Recepción por etapa o control del periodo; no acredita ejecución,RT-22.01--05; aforo propuesto
1.11.7.2.1.1.73,"Sesión y certificación E2, perfil 1, cohorte 73",1.11,E2 Desarrollo,"Sesión y certificación E2, perfil 1, cohorte 73",Resultado de la ficha de familia y del paquete original; registro individual por código/ventana,"No duplicar padres, informes, ingeniería ni cobertura; no incluye horas de contraparte ni obras/adquisiciones del cliente","Dos sesiones de dos horas, ejercicio, registro individual y recuperación; máximo doce asistentes y sin interrumpir turnos.",José Lara Arce,12,A:2;Q:2;L:8,"Asignación y cuadrante integrado por código; entornos, usuarios y habilitaciones autorizados",RT-22.01--05; aforo propuesto,2028-05-05,2028-05-08,1.11.2.2.1;VERSION-E2,Recepción por etapa o control del periodo; no acredita ejecución,RT-22.01--05; aforo propuesto
1.11.7.2.1.1.74,"Sesión y certificación E2, perfil 1, cohorte 74",1.11,E2 Desarrollo,"Sesión y certificación E2, perfil 1, cohorte 74",Resultado de la ficha de familia y del paquete original; registro individual por código/ventana,"No duplicar padres, informes, ingeniería ni cobertura; no incluye horas de contraparte ni obras/adquisiciones del cliente","Dos sesiones de dos horas, ejercicio, registro individual y recuperación; máximo doce asistentes y sin interrumpir turnos.",José Lara Arce,12,A:2;Q:2;L:8,"Asignación y cuadrante integrado por código; entornos, usuarios y habilitaciones autorizados",RT-22.01--05; aforo propuesto,2028-05-08,2028-05-09,1.11.2.2.1;VERSION-E2,Recepción por etapa o control del periodo; no acredita ejecución,RT-22.01--05; aforo propuesto
1.11.7.2.1.1.75,"Sesión y certificación E2, perfil 1, cohorte 75",1.11,E2 Desarrollo,"Sesión y certificación E2, perfil 1, cohorte 75",Resultado de la ficha de familia y del paquete original; registro individual por código/ventana,"No duplicar padres, informes, ingeniería ni cobertura; no incluye horas de contraparte ni obras/adquisiciones del cliente","Dos sesiones de dos horas, ejercicio, registro individual y recuperación; máximo doce asistentes y sin interrumpir turnos.",José Lara Arce,12,A:2;Q:2;L:8,"Asignación y cuadrante integrado por código; entornos, usuarios y habilitaciones autorizados",RT-22.01--05; aforo propuesto,2028-05-08,2028-05-10,1.11.2.2.1;VERSION-E2,Recepción por etapa o control del periodo; no acredita ejecución,RT-22.01--05; aforo propuesto
1.11.7.2.1.1.76,"Sesión y certificación E2, perfil 1, cohorte 76",1.11,E2 Desarrollo,"Sesión y certificación E2, perfil 1, cohorte 76",Resultado de la ficha de familia y del paquete original; registro individual por código/ventana,"No duplicar padres, informes, ingeniería ni cobertura; no incluye horas de contraparte ni obras/adquisiciones del cliente","Dos sesiones de dos horas, ejercicio, registro individual y recuperación; máximo doce asistentes y sin interrumpir turnos.",José Lara Arce,12,A:2;Q:2;L:8,"Asignación y cuadrante integrado por código; entornos, usuarios y habilitaciones autorizados",RT-22.01--05; aforo propuesto,2028-05-09,2028-05-10,1.11.2.2.1;VERSION-E2,Recepción por etapa o control del periodo; no acredita ejecución,RT-22.01--05; aforo propuesto
1.11.7.2.1.1.77,"Sesión y certificación E2, perfil 1, cohorte 77",1.11,E2 Desarrollo,"Sesión y certificación E2, perfil 1, cohorte 77",Resultado de la ficha de familia y del paquete original; registro individual por código/ventana,"No duplicar padres, informes, ingeniería ni cobertura; no incluye horas de contraparte ni obras/adquisiciones del cliente","Dos sesiones de dos horas, ejercicio, registro individual y recuperación; máximo doce asistentes y sin interrumpir turnos.",José Lara Arce,12,A:2;Q:2;L:8,"Asignación y cuadrante integrado por código; entornos, usuarios y habilitaciones autorizados",RT-22.01--05; aforo propuesto,2028-05-09,2028-05-11,1.11.2.2.1;VERSION-E2,Recepción por etapa o control del periodo; no acredita ejecución,RT-22.01--05; aforo propuesto
1.11.7.2.1.1.78,"Sesión y certificación E2, perfil 1, cohorte 78",1.11,E2 Desarrollo,"Sesión y certificación E2, perfil 1, cohorte 78",Resultado de la ficha de familia y del paquete original; registro individual por código/ventana,"No duplicar padres, informes, ingeniería ni cobertura; no incluye horas de contraparte ni obras/adquisiciones del cliente","Dos sesiones de dos horas, ejercicio, registro individual y recuperación; máximo doce asistentes y sin interrumpir turnos.",José Lara Arce,12,A:2;Q:2;L:8,"Asignación y cuadrante integrado por código; entornos, usuarios y habilitaciones autorizados",RT-22.01--05; aforo propuesto,2028-05-02,2028-05-03,1.11.2.2.1;VERSION-E2,Recepción por etapa o control del periodo; no acredita ejecución,RT-22.01--05; aforo propuesto
1.11.7.2.1.1.79,"Sesión y certificación E2, perfil 1, cohorte 79",1.11,E2 Desarrollo,"Sesión y certificación E2, perfil 1, cohorte 79",Resultado de la ficha de familia y del paquete original; registro individual por código/ventana,"No duplicar padres, informes, ingeniería ni cobertura; no incluye horas de contraparte ni obras/adquisiciones del cliente","Dos sesiones de dos horas, ejercicio, registro individual y recuperación; máximo doce asistentes y sin interrumpir turnos.",José Lara Arce,12,A:2;Q:2;L:8,"Asignación y cuadrante integrado por código; entornos, usuarios y habilitaciones autorizados",RT-22.01--05; aforo propuesto,2028-05-02,2028-05-03,1.11.2.2.1;VERSION-E2,Recepción por etapa o control del periodo; no acredita ejecución,RT-22.01--05; aforo propuesto
1.11.7.2.1.1.80,"Sesión y certificación E2, perfil 1, cohorte 80",1.11,E2 Desarrollo,"Sesión y certificación E2, perfil 1, cohorte 80",Resultado de la ficha de familia y del paquete original; registro individual por código/ventana,"No duplicar padres, informes, ingeniería ni cobertura; no incluye horas de contraparte ni obras/adquisiciones del cliente","Dos sesiones de dos horas, ejercicio, registro individual y recuperación; máximo doce asistentes y sin interrumpir turnos.",José Lara Arce,12,A:2;Q:2;L:8,"Asignación y cuadrante integrado por código; entornos, usuarios y habilitaciones autorizados",RT-22.01--05; aforo propuesto,2028-05-03,2028-05-04,1.11.2.2.1;VERSION-E2,Recepción por etapa o control del periodo; no acredita ejecución,RT-22.01--05; aforo propuesto
1.11.7.2.1.1.81,"Sesión y certificación E2, perfil 1, cohorte 81",1.11,E2 Desarrollo,"Sesión y certificación E2, perfil 1, cohorte 81",Resultado de la ficha de familia y del paquete original; registro individual por código/ventana,"No duplicar padres, informes, ingeniería ni cobertura; no incluye horas de contraparte ni obras/adquisiciones del cliente","Dos sesiones de dos horas, ejercicio, registro individual y recuperación; máximo doce asistentes y sin interrumpir turnos.",José Lara Arce,12,A:2;Q:2;L:8,"Asignación y cuadrante integrado por código; entornos, usuarios y habilitaciones autorizados",RT-22.01--05; aforo propuesto,2028-05-04,2028-05-05,1.11.2.2.1;VERSION-E2,Recepción por etapa o control del periodo; no acredita ejecución,RT-22.01--05; aforo propuesto
1.11.7.2.1.1.82,"Sesión y certificación E2, perfil 1, cohorte 82",1.11,E2 Desarrollo,"Sesión y certificación E2, perfil 1, cohorte 82",Resultado de la ficha de familia y del paquete original; registro individual por código/ventana,"No duplicar padres, informes, ingeniería ni cobertura; no incluye horas de contraparte ni obras/adquisiciones del cliente","Dos sesiones de dos horas, ejercicio, registro individual y recuperación; máximo doce asistentes y sin interrumpir turnos.",José Lara Arce,12,A:2;Q:2;L:8,"Asignación y cuadrante integrado por código; entornos, usuarios y habilitaciones autorizados",RT-22.01--05; aforo propuesto,2028-05-04,2028-05-05,1.11.2.2.1;VERSION-E2,Recepción por etapa o control del periodo; no acredita ejecución,RT-22.01--05; aforo propuesto
1.11.7.2.1.1.83,"Sesión y certificación E2, perfil 1, cohorte 83",1.11,E2 Desarrollo,"Sesión y certificación E2, perfil 1, cohorte 83",Resultado de la ficha de familia y del paquete original; registro individual por código/ventana,"No duplicar padres, informes, ingeniería ni cobertura; no incluye horas de contraparte ni obras/adquisiciones del cliente","Dos sesiones de dos horas, ejercicio, registro individual y recuperación; máximo doce asistentes y sin interrumpir turnos.",José Lara Arce,12,A:2;Q:2;L:8,"Asignación y cuadrante integrado por código; entornos, usuarios y habilitaciones autorizados",RT-22.01--05; aforo propuesto,2028-05-05,2028-05-08,1.11.2.2.1;VERSION-E2,Recepción por etapa o control del periodo; no acredita ejecución,RT-22.01--05; aforo propuesto
1.11.7.2.1.1.84,"Sesión y certificación E2, perfil 1, cohorte 84",1.11,E2 Desarrollo,"Sesión y certificación E2, perfil 1, cohorte 84",Resultado de la ficha de familia y del paquete original; registro individual por código/ventana,"No duplicar padres, informes, ingeniería ni cobertura; no incluye horas de contraparte ni obras/adquisiciones del cliente","Dos sesiones de dos horas, ejercicio, registro individual y recuperación; máximo doce asistentes y sin interrumpir turnos.",José Lara Arce,12,A:2;Q:2;L:8,"Asignación y cuadrante integrado por código; entornos, usuarios y habilitaciones autorizados",RT-22.01--05; aforo propuesto,2028-05-05,2028-05-08,1.11.2.2.1;VERSION-E2,Recepción por etapa o control del periodo; no acredita ejecución,RT-22.01--05; aforo propuesto
1.11.7.2.1.1.85,"Sesión y certificación E2, perfil 1, cohorte 85",1.11,E2 Desarrollo,"Sesión y certificación E2, perfil 1, cohorte 85",Resultado de la ficha de familia y del paquete original; registro individual por código/ventana,"No duplicar padres, informes, ingeniería ni cobertura; no incluye horas de contraparte ni obras/adquisiciones del cliente","Dos sesiones de dos horas, ejercicio, registro individual y recuperación; máximo doce asistentes y sin interrumpir turnos.",José Lara Arce,12,A:2;Q:2;L:8,"Asignación y cuadrante integrado por código; entornos, usuarios y habilitaciones autorizados",RT-22.01--05; aforo propuesto,2028-05-08,2028-05-09,1.11.2.2.1;VERSION-E2,Recepción por etapa o control del periodo; no acredita ejecución,RT-22.01--05; aforo propuesto
1.11.7.2.1.1.86,"Sesión y certificación E2, perfil 1, cohorte 86",1.11,E2 Desarrollo,"Sesión y certificación E2, perfil 1, cohorte 86",Resultado de la ficha de familia y del paquete original; registro individual por código/ventana,"No duplicar padres, informes, ingeniería ni cobertura; no incluye horas de contraparte ni obras/adquisiciones del cliente","Dos sesiones de dos horas, ejercicio, registro individual y recuperación; máximo doce asistentes y sin interrumpir turnos.",José Lara Arce,12,A:2;Q:2;L:8,"Asignación y cuadrante integrado por código; entornos, usuarios y habilitaciones autorizados",RT-22.01--05; aforo propuesto,2028-05-08,2028-05-10,1.11.2.2.1;VERSION-E2,Recepción por etapa o control del periodo; no acredita ejecución,RT-22.01--05; aforo propuesto
1.11.7.2.1.1.87,"Sesión y certificación E2, perfil 1, cohorte 87",1.11,E2 Desarrollo,"Sesión y certificación E2, perfil 1, cohorte 87",Resultado de la ficha de familia y del paquete original; registro individual por código/ventana,"No duplicar padres, informes, ingeniería ni cobertura; no incluye horas de contraparte ni obras/adquisiciones del cliente","Dos sesiones de dos horas, ejercicio, registro individual y recuperación; máximo doce asistentes y sin interrumpir turnos.",José Lara Arce,12,A:2;Q:2;L:8,"Asignación y cuadrante integrado por código; entornos, usuarios y habilitaciones autorizados",RT-22.01--05; aforo propuesto,2028-05-09,2028-05-10,1.11.2.2.1;VERSION-E2,Recepción por etapa o control del periodo; no acredita ejecución,RT-22.01--05; aforo propuesto
1.11.7.2.1.1.88,"Sesión y certificación E2, perfil 1, cohorte 88",1.11,E2 Desarrollo,"Sesión y certificación E2, perfil 1, cohorte 88",Resultado de la ficha de familia y del paquete original; registro individual por código/ventana,"No duplicar padres, informes, ingeniería ni cobertura; no incluye horas de contraparte ni obras/adquisiciones del cliente","Dos sesiones de dos horas, ejercicio, registro individual y recuperación; máximo doce asistentes y sin interrumpir turnos.",José Lara Arce,12,A:2;Q:2;L:8,"Asignación y cuadrante integrado por código; entornos, usuarios y habilitaciones autorizados",RT-22.01--05; aforo propuesto,2028-05-09,2028-05-11,1.11.2.2.1;VERSION-E2,Recepción por etapa o control del periodo; no acredita ejecución,RT-22.01--05; aforo propuesto
1.11.7.2.1.1.89,"Sesión y certificación E2, perfil 1, cohorte 89",1.11,E2 Desarrollo,"Sesión y certificación E2, perfil 1, cohorte 89",Resultado de la ficha de familia y del paquete original; registro individual por código/ventana,"No duplicar padres, informes, ingeniería ni cobertura; no incluye horas de contraparte ni obras/adquisiciones del cliente","Dos sesiones de dos horas, ejercicio, registro individual y recuperación; máximo doce asistentes y sin interrumpir turnos.",José Lara Arce,12,A:2;Q:2;L:8,"Asignación y cuadrante integrado por código; entornos, usuarios y habilitaciones autorizados",RT-22.01--05; aforo propuesto,2028-05-02,2028-05-03,1.11.2.2.1;VERSION-E2,Recepción por etapa o control del periodo; no acredita ejecución,RT-22.01--05; aforo propuesto
1.11.7.2.1.1.90,"Sesión y certificación E2, perfil 1, cohorte 90",1.11,E2 Desarrollo,"Sesión y certificación E2, perfil 1, cohorte 90",Resultado de la ficha de familia y del paquete original; registro individual por código/ventana,"No duplicar padres, informes, ingeniería ni cobertura; no incluye horas de contraparte ni obras/adquisiciones del cliente","Dos sesiones de dos horas, ejercicio, registro individual y recuperación; máximo doce asistentes y sin interrumpir turnos.",José Lara Arce,12,A:2;Q:2;L:8,"Asignación y cuadrante integrado por código; entornos, usuarios y habilitaciones autorizados",RT-22.01--05; aforo propuesto,2028-05-03,2028-05-04,1.11.2.2.1;VERSION-E2,Recepción por etapa o control del periodo; no acredita ejecución,RT-22.01--05; aforo propuesto
1.11.7.2.1.1.91,"Sesión y certificación E2, perfil 1, cohorte 91",1.11,E2 Desarrollo,"Sesión y certificación E2, perfil 1, cohorte 91",Resultado de la ficha de familia y del paquete original; registro individual por código/ventana,"No duplicar padres, informes, ingeniería ni cobertura; no incluye horas de contraparte ni obras/adquisiciones del cliente","Dos sesiones de dos horas, ejercicio, registro individual y recuperación; máximo doce asistentes y sin interrumpir turnos.",José Lara Arce,12,A:2;Q:2;L:8,"Asignación y cuadrante integrado por código; entornos, usuarios y habilitaciones autorizados",RT-22.01--05; aforo propuesto,2028-05-03,2028-05-04,1.11.2.2.1;VERSION-E2,Recepción por etapa o control del periodo; no acredita ejecución,RT-22.01--05; aforo propuesto
1.11.7.2.1.1.92,"Sesión y certificación E2, perfil 1, cohorte 92",1.11,E2 Desarrollo,"Sesión y certificación E2, perfil 1, cohorte 92",Resultado de la ficha de familia y del paquete original; registro individual por código/ventana,"No duplicar padres, informes, ingeniería ni cobertura; no incluye horas de contraparte ni obras/adquisiciones del cliente","Dos sesiones de dos horas, ejercicio, registro individual y recuperación; máximo doce asistentes y sin interrumpir turnos.",José Lara Arce,12,A:2;Q:2;L:8,"Asignación y cuadrante integrado por código; entornos, usuarios y habilitaciones autorizados",RT-22.01--05; aforo propuesto,2028-05-04,2028-05-05,1.11.2.2.1;VERSION-E2,Recepción por etapa o control del periodo; no acredita ejecución,RT-22.01--05; aforo propuesto
1.11.7.2.1.1.93,"Sesión y certificación E2, perfil 1, cohorte 93",1.11,E2 Desarrollo,"Sesión y certificación E2, perfil 1, cohorte 93",Resultado de la ficha de familia y del paquete original; registro individual por código/ventana,"No duplicar padres, informes, ingeniería ni cobertura; no incluye horas de contraparte ni obras/adquisiciones del cliente","Dos sesiones de dos horas, ejercicio, registro individual y recuperación; máximo doce asistentes y sin interrumpir turnos.",José Lara Arce,12,A:2;Q:2;L:8,"Asignación y cuadrante integrado por código; entornos, usuarios y habilitaciones autorizados",RT-22.01--05; aforo propuesto,2028-05-04,2028-05-05,1.11.2.2.1;VERSION-E2,Recepción por etapa o control del periodo; no acredita ejecución,RT-22.01--05; aforo propuesto
1.11.7.2.1.1.94,"Sesión y certificación E2, perfil 1, cohorte 94",1.11,E2 Desarrollo,"Sesión y certificación E2, perfil 1, cohorte 94",Resultado de la ficha de familia y del paquete original; registro individual por código/ventana,"No duplicar padres, informes, ingeniería ni cobertura; no incluye horas de contraparte ni obras/adquisiciones del cliente","Dos sesiones de dos horas, ejercicio, registro individual y recuperación; máximo doce asistentes y sin interrumpir turnos.",José Lara Arce,12,A:2;Q:2;L:8,"Asignación y cuadrante integrado por código; entornos, usuarios y habilitaciones autorizados",RT-22.01--05; aforo propuesto,2028-05-05,2028-05-08,1.11.2.2.1;VERSION-E2,Recepción por etapa o control del periodo; no acredita ejecución,RT-22.01--05; aforo propuesto
1.11.7.2.1.1.95,"Sesión y certificación E2, perfil 1, cohorte 95",1.11,E2 Desarrollo,"Sesión y certificación E2, perfil 1, cohorte 95",Resultado de la ficha de familia y del paquete original; registro individual por código/ventana,"No duplicar padres, informes, ingeniería ni cobertura; no incluye horas de contraparte ni obras/adquisiciones del cliente","Dos sesiones de dos horas, ejercicio, registro individual y recuperación; máximo doce asistentes y sin interrumpir turnos.",José Lara Arce,12,A:2;Q:2;L:8,"Asignación y cuadrante integrado por código; entornos, usuarios y habilitaciones autorizados",RT-22.01--05; aforo propuesto,2028-05-05,2028-05-08,1.11.2.2.1;VERSION-E2,Recepción por etapa o control del periodo; no acredita ejecución,RT-22.01--05; aforo propuesto
1.11.7.2.1.1.96,"Sesión y certificación E2, perfil 1, cohorte 96",1.11,E2 Desarrollo,"Sesión y certificación E2, perfil 1, cohorte 96",Resultado de la ficha de familia y del paquete original; registro individual por código/ventana,"No duplicar padres, informes, ingeniería ni cobertura; no incluye horas de contraparte ni obras/adquisiciones del cliente","Dos sesiones de dos horas, ejercicio, registro individual y recuperación; máximo doce asistentes y sin interrumpir turnos.",José Lara Arce,12,A:2;Q:2;L:8,"Asignación y cuadrante integrado por código; entornos, usuarios y habilitaciones autorizados",RT-22.01--05; aforo propuesto,2028-05-08,2028-05-09,1.11.2.2.1;VERSION-E2,Recepción por etapa o control del periodo; no acredita ejecución,RT-22.01--05; aforo propuesto
1.11.7.2.1.1.97,"Sesión y certificación E2, perfil 1, cohorte 97",1.11,E2 Desarrollo,"Sesión y certificación E2, perfil 1, cohorte 97",Resultado de la ficha de familia y del paquete original; registro individual por código/ventana,"No duplicar padres, informes, ingeniería ni cobertura; no incluye horas de contraparte ni obras/adquisiciones del cliente","Dos sesiones de dos horas, ejercicio, registro individual y recuperación; máximo doce asistentes y sin interrumpir turnos.",José Lara Arce,12,A:2;Q:2;L:8,"Asignación y cuadrante integrado por código; entornos, usuarios y habilitaciones autorizados",RT-22.01--05; aforo propuesto,2028-05-08,2028-05-10,1.11.2.2.1;VERSION-E2,Recepción por etapa o control del periodo; no acredita ejecución,RT-22.01--05; aforo propuesto
1.11.7.2.1.1.98,"Sesión y certificación E2, perfil 1, cohorte 98",1.11,E2 Desarrollo,"Sesión y certificación E2, perfil 1, cohorte 98",Resultado de la ficha de familia y del paquete original; registro individual por código/ventana,"No duplicar padres, informes, ingeniería ni cobertura; no incluye horas de contraparte ni obras/adquisiciones del cliente","Dos sesiones de dos horas, ejercicio, registro individual y recuperación; máximo doce asistentes y sin interrumpir turnos.",José Lara Arce,12,A:2;Q:2;L:8,"Asignación y cuadrante integrado por código; entornos, usuarios y habilitaciones autorizados",RT-22.01--05; aforo propuesto,2028-05-09,2028-05-10,1.11.2.2.1;VERSION-E2,Recepción por etapa o control del periodo; no acredita ejecución,RT-22.01--05; aforo propuesto
1.11.7.2.1.1.99,"Sesión y certificación E2, perfil 1, cohorte 99",1.11,E2 Desarrollo,"Sesión y certificación E2, perfil 1, cohorte 99",Resultado de la ficha de familia y del paquete original; registro individual por código/ventana,"No duplicar padres, informes, ingeniería ni cobertura; no incluye horas de contraparte ni obras/adquisiciones del cliente","Dos sesiones de dos horas, ejercicio, registro individual y recuperación; máximo doce asistentes y sin interrumpir turnos.",José Lara Arce,12,A:2;Q:2;L:8,"Asignación y cuadrante integrado por código; entornos, usuarios y habilitaciones autorizados",RT-22.01--05; aforo propuesto,2028-05-09,2028-05-11,1.11.2.2.1;VERSION-E2,Recepción por etapa o control del periodo; no acredita ejecución,RT-22.01--05; aforo propuesto
1.11.7.2.1.1.100,"Sesión y certificación E2, perfil 1, cohorte 100",1.11,E2 Desarrollo,"Sesión y certificación E2, perfil 1, cohorte 100",Resultado de la ficha de familia y del paquete original; registro individual por código/ventana,"No duplicar padres, informes, ingeniería ni cobertura; no incluye horas de contraparte ni obras/adquisiciones del cliente","Dos sesiones de dos horas, ejercicio, registro individual y recuperación; máximo doce asistentes y sin interrumpir turnos.",José Lara Arce,12,A:2;Q:2;L:8,"Asignación y cuadrante integrado por código; entornos, usuarios y habilitaciones autorizados",RT-22.01--05; aforo propuesto,2028-04-21,2028-04-24,1.11.2.2.1;VERSION-E2,Recepción por etapa o control del periodo; no acredita ejecución,RT-22.01--05; aforo propuesto
1.11.7.2.2.1.1,"Sesión y certificación E2, perfil 2, cohorte 1",1.11,E2 Desarrollo,"Sesión y certificación E2, perfil 2, cohorte 1",Resultado de la ficha de familia y del paquete original; registro individual por código/ventana,"No duplicar padres, informes, ingeniería ni cobertura; no incluye horas de contraparte ni obras/adquisiciones del cliente","Dos sesiones de dos horas, ejercicio, registro individual y recuperación; máximo doce asistentes y sin interrumpir turnos.",José Lara Arce,12,A:2;Q:2;L:8,"Asignación y cuadrante integrado por código; entornos, usuarios y habilitaciones autorizados",RT-22.01--05; aforo propuesto,2028-04-21,2028-04-24,1.11.2.2.2;VERSION-E2,Recepción por etapa o control del periodo; no acredita ejecución,RT-22.01--05; aforo propuesto
1.11.7.2.2.1.2,"Sesión y certificación E2, perfil 2, cohorte 2",1.11,E2 Desarrollo,"Sesión y certificación E2, perfil 2, cohorte 2",Resultado de la ficha de familia y del paquete original; registro individual por código/ventana,"No duplicar padres, informes, ingeniería ni cobertura; no incluye horas de contraparte ni obras/adquisiciones del cliente","Dos sesiones de dos horas, ejercicio, registro individual y recuperación; máximo doce asistentes y sin interrumpir turnos.",José Lara Arce,12,A:2;Q:2;L:8,"Asignación y cuadrante integrado por código; entornos, usuarios y habilitaciones autorizados",RT-22.01--05; aforo propuesto,2028-04-24,2028-04-25,1.11.2.2.2;VERSION-E2,Recepción por etapa o control del periodo; no acredita ejecución,RT-22.01--05; aforo propuesto
1.11.7.2.3.1.1,"Sesión y certificación E2, perfil 3, cohorte 1",1.11,E2 Desarrollo,"Sesión y certificación E2, perfil 3, cohorte 1",Resultado de la ficha de familia y del paquete original; registro individual por código/ventana,"No duplicar padres, informes, ingeniería ni cobertura; no incluye horas de contraparte ni obras/adquisiciones del cliente","Dos sesiones de dos horas, ejercicio, registro individual y recuperación; máximo doce asistentes y sin interrumpir turnos.",José Lara Arce,12,A:2;Q:2;L:8,"Asignación y cuadrante integrado por código; entornos, usuarios y habilitaciones autorizados",RT-22.01--05; aforo propuesto,2028-05-02,2028-05-03,1.11.2.2.3;VERSION-E2,Recepción por etapa o control del periodo; no acredita ejecución,RT-22.01--05; aforo propuesto
1.11.7.2.4.1.1,"Sesión y certificación E2, perfil 4, cohorte 1",1.11,E2 Desarrollo,"Sesión y certificación E2, perfil 4, cohorte 1",Resultado de la ficha de familia y del paquete original; registro individual por código/ventana,"No duplicar padres, informes, ingeniería ni cobertura; no incluye horas de contraparte ni obras/adquisiciones del cliente","Dos sesiones de dos horas, ejercicio, registro individual y recuperación; máximo doce asistentes y sin interrumpir turnos.",José Lara Arce,12,A:2;Q:2;L:8,"Asignación y cuadrante integrado por código; entornos, usuarios y habilitaciones autorizados",RT-22.01--05; aforo propuesto,2028-04-21,2028-04-24,1.11.2.2.4;VERSION-E2,Recepción por etapa o control del periodo; no acredita ejecución,RT-22.01--05; aforo propuesto
1.11.7.2.5.1.1,"Sesión y certificación E2, perfil 5, cohorte 1",1.11,E2 Desarrollo,"Sesión y certificación E2, perfil 5, cohorte 1",Resultado de la ficha de familia y del paquete original; registro individual por código/ventana,"No duplicar padres, informes, ingeniería ni cobertura; no incluye horas de contraparte ni obras/adquisiciones del cliente","Dos sesiones de dos horas, ejercicio, registro individual y recuperación; máximo doce asistentes y sin interrumpir turnos.",José Lara Arce,12,A:2;Q:2;L:8,"Asignación y cuadrante integrado por código; entornos, usuarios y habilitaciones autorizados",RT-22.01--05; aforo propuesto,2028-04-24,2028-04-25,1.11.2.2.5;VERSION-E2,Recepción por etapa o control del periodo; no acredita ejecución,RT-22.01--05; aforo propuesto
1.11.7.2.5.1.2,"Sesión y certificación E2, perfil 5, cohorte 2",1.11,E2 Desarrollo,"Sesión y certificación E2, perfil 5, cohorte 2",Resultado de la ficha de familia y del paquete original; registro individual por código/ventana,"No duplicar padres, informes, ingeniería ni cobertura; no incluye horas de contraparte ni obras/adquisiciones del cliente","Dos sesiones de dos horas, ejercicio, registro individual y recuperación; máximo doce asistentes y sin interrumpir turnos.",José Lara Arce,12,A:2;Q:2;L:8,"Asignación y cuadrante integrado por código; entornos, usuarios y habilitaciones autorizados",RT-22.01--05; aforo propuesto,2028-05-02,2028-05-03,1.11.2.2.5;VERSION-E2,Recepción por etapa o control del periodo; no acredita ejecución,RT-22.01--05; aforo propuesto
1.11.7.2.5.1.3,"Sesión y certificación E2, perfil 5, cohorte 3",1.11,E2 Desarrollo,"Sesión y certificación E2, perfil 5, cohorte 3",Resultado de la ficha de familia y del paquete original; registro individual por código/ventana,"No duplicar padres, informes, ingeniería ni cobertura; no incluye horas de contraparte ni obras/adquisiciones del cliente","Dos sesiones de dos horas, ejercicio, registro individual y recuperación; máximo doce asistentes y sin interrumpir turnos.",José Lara Arce,12,A:2;Q:2;L:8,"Asignación y cuadrante integrado por código; entornos, usuarios y habilitaciones autorizados",RT-22.01--05; aforo propuesto,2028-05-03,2028-05-04,1.11.2.2.5;VERSION-E2,Recepción por etapa o control del periodo; no acredita ejecución,RT-22.01--05; aforo propuesto
1.11.4.2.1.1.1,"Acompañamiento E2, ola 1, día 1, zona 1",1.11,E2 Marcha blanca,"Acompañamiento E2, ola 1, día 1, zona 1",Resultado de la ficha de familia y del paquete original; registro individual por código/ventana,"No duplicar padres, informes, ingeniería ni cobertura; no incluye horas de contraparte ni obras/adquisiciones del cliente","Registro diario, turno, zona, tarea, incidencia y relevo; 8 h presencia días 1--14, luego 4 h presencia +4 h preparación.",José Lara Arce,8,L:8,"Asignación y cuadrante integrado por código; entornos, usuarios y habilitaciones autorizados",C07 13.3.5; RT-22.02,2028-06-01,2028-06-01,FORMACION-E2,Recepción por etapa o control del periodo; no acredita ejecución,C07 13.3.5; RT-22.02
1.11.4.2.1.1.2,"Acompañamiento E2, ola 1, día 1, zona 2",1.11,E2 Marcha blanca,"Acompañamiento E2, ola 1, día 1, zona 2",Resultado de la ficha de familia y del paquete original; registro individual por código/ventana,"No duplicar padres, informes, ingeniería ni cobertura; no incluye horas de contraparte ni obras/adquisiciones del cliente","Registro diario, turno, zona, tarea, incidencia y relevo; 8 h presencia días 1--14, luego 4 h presencia +4 h preparación.",José Lara Arce,8,L:8,"Asignación y cuadrante integrado por código; entornos, usuarios y habilitaciones autorizados",C07 13.3.5; RT-22.02,2028-06-01,2028-06-01,FORMACION-E2,Recepción por etapa o control del periodo; no acredita ejecución,C07 13.3.5; RT-22.02
1.11.4.2.1.2.1,"Acompañamiento E2, ola 1, día 2, zona 1",1.11,E2 Marcha blanca,"Acompañamiento E2, ola 1, día 2, zona 1",Resultado de la ficha de familia y del paquete original; registro individual por código/ventana,"No duplicar padres, informes, ingeniería ni cobertura; no incluye horas de contraparte ni obras/adquisiciones del cliente","Registro diario, turno, zona, tarea, incidencia y relevo; 8 h presencia días 1--14, luego 4 h presencia +4 h preparación.",José Lara Arce,8,L:8,"Asignación y cuadrante integrado por código; entornos, usuarios y habilitaciones autorizados",C07 13.3.5; RT-22.02,2028-06-02,2028-06-02,FORMACION-E2,Recepción por etapa o control del periodo; no acredita ejecución,C07 13.3.5; RT-22.02
1.11.4.2.1.2.2,"Acompañamiento E2, ola 1, día 2, zona 2",1.11,E2 Marcha blanca,"Acompañamiento E2, ola 1, día 2, zona 2",Resultado de la ficha de familia y del paquete original; registro individual por código/ventana,"No duplicar padres, informes, ingeniería ni cobertura; no incluye horas de contraparte ni obras/adquisiciones del cliente","Registro diario, turno, zona, tarea, incidencia y relevo; 8 h presencia días 1--14, luego 4 h presencia +4 h preparación.",José Lara Arce,8,L:8,"Asignación y cuadrante integrado por código; entornos, usuarios y habilitaciones autorizados",C07 13.3.5; RT-22.02,2028-06-02,2028-06-02,FORMACION-E2,Recepción por etapa o control del periodo; no acredita ejecución,C07 13.3.5; RT-22.02
1.11.4.2.1.3.1,"Acompañamiento E2, ola 1, día 3, zona 1",1.11,E2 Marcha blanca,"Acompañamiento E2, ola 1, día 3, zona 1",Resultado de la ficha de familia y del paquete original; registro individual por código/ventana,"No duplicar padres, informes, ingeniería ni cobertura; no incluye horas de contraparte ni obras/adquisiciones del cliente","Registro diario, turno, zona, tarea, incidencia y relevo; 8 h presencia días 1--14, luego 4 h presencia +4 h preparación.",José Lara Arce,8,L:8,"Asignación y cuadrante integrado por código; entornos, usuarios y habilitaciones autorizados",C07 13.3.5; RT-22.02,2028-06-03,2028-06-03,FORMACION-E2,Recepción por etapa o control del periodo; no acredita ejecución,C07 13.3.5; RT-22.02
1.11.4.2.1.3.2,"Acompañamiento E2, ola 1, día 3, zona 2",1.11,E2 Marcha blanca,"Acompañamiento E2, ola 1, día 3, zona 2",Resultado de la ficha de familia y del paquete original; registro individual por código/ventana,"No duplicar padres, informes, ingeniería ni cobertura; no incluye horas de contraparte ni obras/adquisiciones del cliente","Registro diario, turno, zona, tarea, incidencia y relevo; 8 h presencia días 1--14, luego 4 h presencia +4 h preparación.",José Lara Arce,8,L:8,"Asignación y cuadrante integrado por código; entornos, usuarios y habilitaciones autorizados",C07 13.3.5; RT-22.02,2028-06-03,2028-06-03,FORMACION-E2,Recepción por etapa o control del periodo; no acredita ejecución,C07 13.3.5; RT-22.02
1.11.4.2.1.4.1,"Acompañamiento E2, ola 1, día 4, zona 1",1.11,E2 Marcha blanca,"Acompañamiento E2, ola 1, día 4, zona 1",Resultado de la ficha de familia y del paquete original; registro individual por código/ventana,"No duplicar padres, informes, ingeniería ni cobertura; no incluye horas de contraparte ni obras/adquisiciones del cliente","Registro diario, turno, zona, tarea, incidencia y relevo; 8 h presencia días 1--14, luego 4 h presencia +4 h preparación.",José Lara Arce,8,L:8,"Asignación y cuadrante integrado por código; entornos, usuarios y habilitaciones autorizados",C07 13.3.5; RT-22.02,2028-06-04,2028-06-04,FORMACION-E2,Recepción por etapa o control del periodo; no acredita ejecución,C07 13.3.5; RT-22.02
1.11.4.2.1.4.2,"Acompañamiento E2, ola 1, día 4, zona 2",1.11,E2 Marcha blanca,"Acompañamiento E2, ola 1, día 4, zona 2",Resultado de la ficha de familia y del paquete original; registro individual por código/ventana,"No duplicar padres, informes, ingeniería ni cobertura; no incluye horas de contraparte ni obras/adquisiciones del cliente","Registro diario, turno, zona, tarea, incidencia y relevo; 8 h presencia días 1--14, luego 4 h presencia +4 h preparación.",José Lara Arce,8,L:8,"Asignación y cuadrante integrado por código; entornos, usuarios y habilitaciones autorizados",C07 13.3.5; RT-22.02,2028-06-04,2028-06-04,FORMACION-E2,Recepción por etapa o control del periodo; no acredita ejecución,C07 13.3.5; RT-22.02
1.11.4.2.1.5.1,"Acompañamiento E2, ola 1, día 5, zona 1",1.11,E2 Marcha blanca,"Acompañamiento E2, ola 1, día 5, zona 1",Resultado de la ficha de familia y del paquete original; registro individual por código/ventana,"No duplicar padres, informes, ingeniería ni cobertura; no incluye horas de contraparte ni obras/adquisiciones del cliente","Registro diario, turno, zona, tarea, incidencia y relevo; 8 h presencia días 1--14, luego 4 h presencia +4 h preparación.",José Lara Arce,8,L:8,"Asignación y cuadrante integrado por código; entornos, usuarios y habilitaciones autorizados",C07 13.3.5; RT-22.02,2028-06-05,2028-06-05,FORMACION-E2,Recepción por etapa o control del periodo; no acredita ejecución,C07 13.3.5; RT-22.02
1.11.4.2.1.5.2,"Acompañamiento E2, ola 1, día 5, zona 2",1.11,E2 Marcha blanca,"Acompañamiento E2, ola 1, día 5, zona 2",Resultado de la ficha de familia y del paquete original; registro individual por código/ventana,"No duplicar padres, informes, ingeniería ni cobertura; no incluye horas de contraparte ni obras/adquisiciones del cliente","Registro diario, turno, zona, tarea, incidencia y relevo; 8 h presencia días 1--14, luego 4 h presencia +4 h preparación.",José Lara Arce,8,L:8,"Asignación y cuadrante integrado por código; entornos, usuarios y habilitaciones autorizados",C07 13.3.5; RT-22.02,2028-06-05,2028-06-05,FORMACION-E2,Recepción por etapa o control del periodo; no acredita ejecución,C07 13.3.5; RT-22.02
1.11.4.2.1.6.1,"Acompañamiento E2, ola 1, día 6, zona 1",1.11,E2 Marcha blanca,"Acompañamiento E2, ola 1, día 6, zona 1",Resultado de la ficha de familia y del paquete original; registro individual por código/ventana,"No duplicar padres, informes, ingeniería ni cobertura; no incluye horas de contraparte ni obras/adquisiciones del cliente","Registro diario, turno, zona, tarea, incidencia y relevo; 8 h presencia días 1--14, luego 4 h presencia +4 h preparación.",José Lara Arce,8,L:8,"Asignación y cuadrante integrado por código; entornos, usuarios y habilitaciones autorizados",C07 13.3.5; RT-22.02,2028-06-06,2028-06-06,FORMACION-E2,Recepción por etapa o control del periodo; no acredita ejecución,C07 13.3.5; RT-22.02
1.11.4.2.1.6.2,"Acompañamiento E2, ola 1, día 6, zona 2",1.11,E2 Marcha blanca,"Acompañamiento E2, ola 1, día 6, zona 2",Resultado de la ficha de familia y del paquete original; registro individual por código/ventana,"No duplicar padres, informes, ingeniería ni cobertura; no incluye horas de contraparte ni obras/adquisiciones del cliente","Registro diario, turno, zona, tarea, incidencia y relevo; 8 h presencia días 1--14, luego 4 h presencia +4 h preparación.",José Lara Arce,8,L:8,"Asignación y cuadrante integrado por código; entornos, usuarios y habilitaciones autorizados",C07 13.3.5; RT-22.02,2028-06-06,2028-06-06,FORMACION-E2,Recepción por etapa o control del periodo; no acredita ejecución,C07 13.3.5; RT-22.02
1.11.4.2.1.7.1,"Acompañamiento E2, ola 1, día 7, zona 1",1.11,E2 Marcha blanca,"Acompañamiento E2, ola 1, día 7, zona 1",Resultado de la ficha de familia y del paquete original; registro individual por código/ventana,"No duplicar padres, informes, ingeniería ni cobertura; no incluye horas de contraparte ni obras/adquisiciones del cliente","Registro diario, turno, zona, tarea, incidencia y relevo; 8 h presencia días 1--14, luego 4 h presencia +4 h preparación.",José Lara Arce,8,L:8,"Asignación y cuadrante integrado por código; entornos, usuarios y habilitaciones autorizados",C07 13.3.5; RT-22.02,2028-06-07,2028-06-07,FORMACION-E2,Recepción por etapa o control del periodo; no acredita ejecución,C07 13.3.5; RT-22.02
1.11.4.2.1.7.2,"Acompañamiento E2, ola 1, día 7, zona 2",1.11,E2 Marcha blanca,"Acompañamiento E2, ola 1, día 7, zona 2",Resultado de la ficha de familia y del paquete original; registro individual por código/ventana,"No duplicar padres, informes, ingeniería ni cobertura; no incluye horas de contraparte ni obras/adquisiciones del cliente","Registro diario, turno, zona, tarea, incidencia y relevo; 8 h presencia días 1--14, luego 4 h presencia +4 h preparación.",José Lara Arce,8,L:8,"Asignación y cuadrante integrado por código; entornos, usuarios y habilitaciones autorizados",C07 13.3.5; RT-22.02,2028-06-07,2028-06-07,FORMACION-E2,Recepción por etapa o control del periodo; no acredita ejecución,C07 13.3.5; RT-22.02
1.11.4.2.1.8.1,"Acompañamiento E2, ola 1, día 8, zona 1",1.11,E2 Marcha blanca,"Acompañamiento E2, ola 1, día 8, zona 1",Resultado de la ficha de familia y del paquete original; registro individual por código/ventana,"No duplicar padres, informes, ingeniería ni cobertura; no incluye horas de contraparte ni obras/adquisiciones del cliente","Registro diario, turno, zona, tarea, incidencia y relevo; 8 h presencia días 1--14, luego 4 h presencia +4 h preparación.",José Lara Arce,8,L:8,"Asignación y cuadrante integrado por código; entornos, usuarios y habilitaciones autorizados",C07 13.3.5; RT-22.02,2028-06-08,2028-06-08,FORMACION-E2,Recepción por etapa o control del periodo; no acredita ejecución,C07 13.3.5; RT-22.02
1.11.4.2.1.8.2,"Acompañamiento E2, ola 1, día 8, zona 2",1.11,E2 Marcha blanca,"Acompañamiento E2, ola 1, día 8, zona 2",Resultado de la ficha de familia y del paquete original; registro individual por código/ventana,"No duplicar padres, informes, ingeniería ni cobertura; no incluye horas de contraparte ni obras/adquisiciones del cliente","Registro diario, turno, zona, tarea, incidencia y relevo; 8 h presencia días 1--14, luego 4 h presencia +4 h preparación.",José Lara Arce,8,L:8,"Asignación y cuadrante integrado por código; entornos, usuarios y habilitaciones autorizados",C07 13.3.5; RT-22.02,2028-06-08,2028-06-08,FORMACION-E2,Recepción por etapa o control del periodo; no acredita ejecución,C07 13.3.5; RT-22.02
1.11.4.2.1.9.1,"Acompañamiento E2, ola 1, día 9, zona 1",1.11,E2 Marcha blanca,"Acompañamiento E2, ola 1, día 9, zona 1",Resultado de la ficha de familia y del paquete original; registro individual por código/ventana,"No duplicar padres, informes, ingeniería ni cobertura; no incluye horas de contraparte ni obras/adquisiciones del cliente","Registro diario, turno, zona, tarea, incidencia y relevo; 8 h presencia días 1--14, luego 4 h presencia +4 h preparación.",José Lara Arce,8,L:8,"Asignación y cuadrante integrado por código; entornos, usuarios y habilitaciones autorizados",C07 13.3.5; RT-22.02,2028-06-09,2028-06-09,FORMACION-E2,Recepción por etapa o control del periodo; no acredita ejecución,C07 13.3.5; RT-22.02
1.11.4.2.1.9.2,"Acompañamiento E2, ola 1, día 9, zona 2",1.11,E2 Marcha blanca,"Acompañamiento E2, ola 1, día 9, zona 2",Resultado de la ficha de familia y del paquete original; registro individual por código/ventana,"No duplicar padres, informes, ingeniería ni cobertura; no incluye horas de contraparte ni obras/adquisiciones del cliente","Registro diario, turno, zona, tarea, incidencia y relevo; 8 h presencia días 1--14, luego 4 h presencia +4 h preparación.",José Lara Arce,8,L:8,"Asignación y cuadrante integrado por código; entornos, usuarios y habilitaciones autorizados",C07 13.3.5; RT-22.02,2028-06-09,2028-06-09,FORMACION-E2,Recepción por etapa o control del periodo; no acredita ejecución,C07 13.3.5; RT-22.02
1.11.4.2.1.10.1,"Acompañamiento E2, ola 1, día 10, zona 1",1.11,E2 Marcha blanca,"Acompañamiento E2, ola 1, día 10, zona 1",Resultado de la ficha de familia y del paquete original; registro individual por código/ventana,"No duplicar padres, informes, ingeniería ni cobertura; no incluye horas de contraparte ni obras/adquisiciones del cliente","Registro diario, turno, zona, tarea, incidencia y relevo; 8 h presencia días 1--14, luego 4 h presencia +4 h preparación.",José Lara Arce,8,L:8,"Asignación y cuadrante integrado por código; entornos, usuarios y habilitaciones autorizados",C07 13.3.5; RT-22.02,2028-06-10,2028-06-10,FORMACION-E2,Recepción por etapa o control del periodo; no acredita ejecución,C07 13.3.5; RT-22.02
1.11.4.2.1.10.2,"Acompañamiento E2, ola 1, día 10, zona 2",1.11,E2 Marcha blanca,"Acompañamiento E2, ola 1, día 10, zona 2",Resultado de la ficha de familia y del paquete original; registro individual por código/ventana,"No duplicar padres, informes, ingeniería ni cobertura; no incluye horas de contraparte ni obras/adquisiciones del cliente","Registro diario, turno, zona, tarea, incidencia y relevo; 8 h presencia días 1--14, luego 4 h presencia +4 h preparación.",José Lara Arce,8,L:8,"Asignación y cuadrante integrado por código; entornos, usuarios y habilitaciones autorizados",C07 13.3.5; RT-22.02,2028-06-10,2028-06-10,FORMACION-E2,Recepción por etapa o control del periodo; no acredita ejecución,C07 13.3.5; RT-22.02
1.11.4.2.1.11.1,"Acompañamiento E2, ola 1, día 11, zona 1",1.11,E2 Marcha blanca,"Acompañamiento E2, ola 1, día 11, zona 1",Resultado de la ficha de familia y del paquete original; registro individual por código/ventana,"No duplicar padres, informes, ingeniería ni cobertura; no incluye horas de contraparte ni obras/adquisiciones del cliente","Registro diario, turno, zona, tarea, incidencia y relevo; 8 h presencia días 1--14, luego 4 h presencia +4 h preparación.",José Lara Arce,8,L:8,"Asignación y cuadrante integrado por código; entornos, usuarios y habilitaciones autorizados",C07 13.3.5; RT-22.02,2028-06-11,2028-06-11,FORMACION-E2,Recepción por etapa o control del periodo; no acredita ejecución,C07 13.3.5; RT-22.02
1.11.4.2.1.11.2,"Acompañamiento E2, ola 1, día 11, zona 2",1.11,E2 Marcha blanca,"Acompañamiento E2, ola 1, día 11, zona 2",Resultado de la ficha de familia y del paquete original; registro individual por código/ventana,"No duplicar padres, informes, ingeniería ni cobertura; no incluye horas de contraparte ni obras/adquisiciones del cliente","Registro diario, turno, zona, tarea, incidencia y relevo; 8 h presencia días 1--14, luego 4 h presencia +4 h preparación.",José Lara Arce,8,L:8,"Asignación y cuadrante integrado por código; entornos, usuarios y habilitaciones autorizados",C07 13.3.5; RT-22.02,2028-06-11,2028-06-11,FORMACION-E2,Recepción por etapa o control del periodo; no acredita ejecución,C07 13.3.5; RT-22.02
1.11.4.2.1.12.1,"Acompañamiento E2, ola 1, día 12, zona 1",1.11,E2 Marcha blanca,"Acompañamiento E2, ola 1, día 12, zona 1",Resultado de la ficha de familia y del paquete original; registro individual por código/ventana,"No duplicar padres, informes, ingeniería ni cobertura; no incluye horas de contraparte ni obras/adquisiciones del cliente","Registro diario, turno, zona, tarea, incidencia y relevo; 8 h presencia días 1--14, luego 4 h presencia +4 h preparación.",José Lara Arce,8,L:8,"Asignación y cuadrante integrado por código; entornos, usuarios y habilitaciones autorizados",C07 13.3.5; RT-22.02,2028-06-12,2028-06-12,FORMACION-E2,Recepción por etapa o control del periodo; no acredita ejecución,C07 13.3.5; RT-22.02
1.11.4.2.1.12.2,"Acompañamiento E2, ola 1, día 12, zona 2",1.11,E2 Marcha blanca,"Acompañamiento E2, ola 1, día 12, zona 2",Resultado de la ficha de familia y del paquete original; registro individual por código/ventana,"No duplicar padres, informes, ingeniería ni cobertura; no incluye horas de contraparte ni obras/adquisiciones del cliente","Registro diario, turno, zona, tarea, incidencia y relevo; 8 h presencia días 1--14, luego 4 h presencia +4 h preparación.",José Lara Arce,8,L:8,"Asignación y cuadrante integrado por código; entornos, usuarios y habilitaciones autorizados",C07 13.3.5; RT-22.02,2028-06-12,2028-06-12,FORMACION-E2,Recepción por etapa o control del periodo; no acredita ejecución,C07 13.3.5; RT-22.02
1.11.4.2.1.13.1,"Acompañamiento E2, ola 1, día 13, zona 1",1.11,E2 Marcha blanca,"Acompañamiento E2, ola 1, día 13, zona 1",Resultado de la ficha de familia y del paquete original; registro individual por código/ventana,"No duplicar padres, informes, ingeniería ni cobertura; no incluye horas de contraparte ni obras/adquisiciones del cliente","Registro diario, turno, zona, tarea, incidencia y relevo; 8 h presencia días 1--14, luego 4 h presencia +4 h preparación.",José Lara Arce,8,L:8,"Asignación y cuadrante integrado por código; entornos, usuarios y habilitaciones autorizados",C07 13.3.5; RT-22.02,2028-06-13,2028-06-13,FORMACION-E2,Recepción por etapa o control del periodo; no acredita ejecución,C07 13.3.5; RT-22.02
1.11.4.2.1.13.2,"Acompañamiento E2, ola 1, día 13, zona 2",1.11,E2 Marcha blanca,"Acompañamiento E2, ola 1, día 13, zona 2",Resultado de la ficha de familia y del paquete original; registro individual por código/ventana,"No duplicar padres, informes, ingeniería ni cobertura; no incluye horas de contraparte ni obras/adquisiciones del cliente","Registro diario, turno, zona, tarea, incidencia y relevo; 8 h presencia días 1--14, luego 4 h presencia +4 h preparación.",José Lara Arce,8,L:8,"Asignación y cuadrante integrado por código; entornos, usuarios y habilitaciones autorizados",C07 13.3.5; RT-22.02,2028-06-13,2028-06-13,FORMACION-E2,Recepción por etapa o control del periodo; no acredita ejecución,C07 13.3.5; RT-22.02
1.11.4.2.1.14.1,"Acompañamiento E2, ola 1, día 14, zona 1",1.11,E2 Marcha blanca,"Acompañamiento E2, ola 1, día 14, zona 1",Resultado de la ficha de familia y del paquete original; registro individual por código/ventana,"No duplicar padres, informes, ingeniería ni cobertura; no incluye horas de contraparte ni obras/adquisiciones del cliente","Registro diario, turno, zona, tarea, incidencia y relevo; 8 h presencia días 1--14, luego 4 h presencia +4 h preparación.",José Lara Arce,8,L:8,"Asignación y cuadrante integrado por código; entornos, usuarios y habilitaciones autorizados",C07 13.3.5; RT-22.02,2028-06-14,2028-06-14,FORMACION-E2,Recepción por etapa o control del periodo; no acredita ejecución,C07 13.3.5; RT-22.02
1.11.4.2.1.14.2,"Acompañamiento E2, ola 1, día 14, zona 2",1.11,E2 Marcha blanca,"Acompañamiento E2, ola 1, día 14, zona 2",Resultado de la ficha de familia y del paquete original; registro individual por código/ventana,"No duplicar padres, informes, ingeniería ni cobertura; no incluye horas de contraparte ni obras/adquisiciones del cliente","Registro diario, turno, zona, tarea, incidencia y relevo; 8 h presencia días 1--14, luego 4 h presencia +4 h preparación.",José Lara Arce,8,L:8,"Asignación y cuadrante integrado por código; entornos, usuarios y habilitaciones autorizados",C07 13.3.5; RT-22.02,2028-06-14,2028-06-14,FORMACION-E2,Recepción por etapa o control del periodo; no acredita ejecución,C07 13.3.5; RT-22.02
1.11.4.2.1.15.1,"Acompañamiento E2, ola 1, día 15, zona 1",1.11,E2 Marcha blanca,"Acompañamiento E2, ola 1, día 15, zona 1",Resultado de la ficha de familia y del paquete original; registro individual por código/ventana,"No duplicar padres, informes, ingeniería ni cobertura; no incluye horas de contraparte ni obras/adquisiciones del cliente","Registro diario, turno, zona, tarea, incidencia y relevo; 8 h presencia días 1--14, luego 4 h presencia +4 h preparación.",José Lara Arce,8,L:8,"Asignación y cuadrante integrado por código; entornos, usuarios y habilitaciones autorizados",C07 13.3.5; RT-22.02,2028-06-15,2028-06-15,FORMACION-E2,Recepción por etapa o control del periodo; no acredita ejecución,C07 13.3.5; RT-22.02
1.11.4.2.1.15.2,"Acompañamiento E2, ola 1, día 15, zona 2",1.11,E2 Marcha blanca,"Acompañamiento E2, ola 1, día 15, zona 2",Resultado de la ficha de familia y del paquete original; registro individual por código/ventana,"No duplicar padres, informes, ingeniería ni cobertura; no incluye horas de contraparte ni obras/adquisiciones del cliente","Registro diario, turno, zona, tarea, incidencia y relevo; 8 h presencia días 1--14, luego 4 h presencia +4 h preparación.",José Lara Arce,8,L:8,"Asignación y cuadrante integrado por código; entornos, usuarios y habilitaciones autorizados",C07 13.3.5; RT-22.02,2028-06-15,2028-06-15,FORMACION-E2,Recepción por etapa o control del periodo; no acredita ejecución,C07 13.3.5; RT-22.02
1.11.4.2.1.16.1,"Acompañamiento E2, ola 1, día 16, zona 1",1.11,E2 Marcha blanca,"Acompañamiento E2, ola 1, día 16, zona 1",Resultado de la ficha de familia y del paquete original; registro individual por código/ventana,"No duplicar padres, informes, ingeniería ni cobertura; no incluye horas de contraparte ni obras/adquisiciones del cliente","Registro diario, turno, zona, tarea, incidencia y relevo; 8 h presencia días 1--14, luego 4 h presencia +4 h preparación.",José Lara Arce,8,L:8,"Asignación y cuadrante integrado por código; entornos, usuarios y habilitaciones autorizados",C07 13.3.5; RT-22.02,2028-06-16,2028-06-16,FORMACION-E2,Recepción por etapa o control del periodo; no acredita ejecución,C07 13.3.5; RT-22.02
1.11.4.2.1.16.2,"Acompañamiento E2, ola 1, día 16, zona 2",1.11,E2 Marcha blanca,"Acompañamiento E2, ola 1, día 16, zona 2",Resultado de la ficha de familia y del paquete original; registro individual por código/ventana,"No duplicar padres, informes, ingeniería ni cobertura; no incluye horas de contraparte ni obras/adquisiciones del cliente","Registro diario, turno, zona, tarea, incidencia y relevo; 8 h presencia días 1--14, luego 4 h presencia +4 h preparación.",José Lara Arce,8,L:8,"Asignación y cuadrante integrado por código; entornos, usuarios y habilitaciones autorizados",C07 13.3.5; RT-22.02,2028-06-16,2028-06-16,FORMACION-E2,Recepción por etapa o control del periodo; no acredita ejecución,C07 13.3.5; RT-22.02
1.11.4.2.1.17.1,"Acompañamiento E2, ola 1, día 17, zona 1",1.11,E2 Marcha blanca,"Acompañamiento E2, ola 1, día 17, zona 1",Resultado de la ficha de familia y del paquete original; registro individual por código/ventana,"No duplicar padres, informes, ingeniería ni cobertura; no incluye horas de contraparte ni obras/adquisiciones del cliente","Registro diario, turno, zona, tarea, incidencia y relevo; 8 h presencia días 1--14, luego 4 h presencia +4 h preparación.",José Lara Arce,8,L:8,"Asignación y cuadrante integrado por código; entornos, usuarios y habilitaciones autorizados",C07 13.3.5; RT-22.02,2028-06-17,2028-06-17,FORMACION-E2,Recepción por etapa o control del periodo; no acredita ejecución,C07 13.3.5; RT-22.02
1.11.4.2.1.17.2,"Acompañamiento E2, ola 1, día 17, zona 2",1.11,E2 Marcha blanca,"Acompañamiento E2, ola 1, día 17, zona 2",Resultado de la ficha de familia y del paquete original; registro individual por código/ventana,"No duplicar padres, informes, ingeniería ni cobertura; no incluye horas de contraparte ni obras/adquisiciones del cliente","Registro diario, turno, zona, tarea, incidencia y relevo; 8 h presencia días 1--14, luego 4 h presencia +4 h preparación.",José Lara Arce,8,L:8,"Asignación y cuadrante integrado por código; entornos, usuarios y habilitaciones autorizados",C07 13.3.5; RT-22.02,2028-06-17,2028-06-17,FORMACION-E2,Recepción por etapa o control del periodo; no acredita ejecución,C07 13.3.5; RT-22.02
1.11.4.2.1.18.1,"Acompañamiento E2, ola 1, día 18, zona 1",1.11,E2 Marcha blanca,"Acompañamiento E2, ola 1, día 18, zona 1",Resultado de la ficha de familia y del paquete original; registro individual por código/ventana,"No duplicar padres, informes, ingeniería ni cobertura; no incluye horas de contraparte ni obras/adquisiciones del cliente","Registro diario, turno, zona, tarea, incidencia y relevo; 8 h presencia días 1--14, luego 4 h presencia +4 h preparación.",José Lara Arce,8,L:8,"Asignación y cuadrante integrado por código; entornos, usuarios y habilitaciones autorizados",C07 13.3.5; RT-22.02,2028-06-18,2028-06-18,FORMACION-E2,Recepción por etapa o control del periodo; no acredita ejecución,C07 13.3.5; RT-22.02
1.11.4.2.1.18.2,"Acompañamiento E2, ola 1, día 18, zona 2",1.11,E2 Marcha blanca,"Acompañamiento E2, ola 1, día 18, zona 2",Resultado de la ficha de familia y del paquete original; registro individual por código/ventana,"No duplicar padres, informes, ingeniería ni cobertura; no incluye horas de contraparte ni obras/adquisiciones del cliente","Registro diario, turno, zona, tarea, incidencia y relevo; 8 h presencia días 1--14, luego 4 h presencia +4 h preparación.",José Lara Arce,8,L:8,"Asignación y cuadrante integrado por código; entornos, usuarios y habilitaciones autorizados",C07 13.3.5; RT-22.02,2028-06-18,2028-06-18,FORMACION-E2,Recepción por etapa o control del periodo; no acredita ejecución,C07 13.3.5; RT-22.02
1.11.4.2.1.19.1,"Acompañamiento E2, ola 1, día 19, zona 1",1.11,E2 Marcha blanca,"Acompañamiento E2, ola 1, día 19, zona 1",Resultado de la ficha de familia y del paquete original; registro individual por código/ventana,"No duplicar padres, informes, ingeniería ni cobertura; no incluye horas de contraparte ni obras/adquisiciones del cliente","Registro diario, turno, zona, tarea, incidencia y relevo; 8 h presencia días 1--14, luego 4 h presencia +4 h preparación.",José Lara Arce,8,L:8,"Asignación y cuadrante integrado por código; entornos, usuarios y habilitaciones autorizados",C07 13.3.5; RT-22.02,2028-06-19,2028-06-19,FORMACION-E2,Recepción por etapa o control del periodo; no acredita ejecución,C07 13.3.5; RT-22.02
1.11.4.2.1.19.2,"Acompañamiento E2, ola 1, día 19, zona 2",1.11,E2 Marcha blanca,"Acompañamiento E2, ola 1, día 19, zona 2",Resultado de la ficha de familia y del paquete original; registro individual por código/ventana,"No duplicar padres, informes, ingeniería ni cobertura; no incluye horas de contraparte ni obras/adquisiciones del cliente","Registro diario, turno, zona, tarea, incidencia y relevo; 8 h presencia días 1--14, luego 4 h presencia +4 h preparación.",José Lara Arce,8,L:8,"Asignación y cuadrante integrado por código; entornos, usuarios y habilitaciones autorizados",C07 13.3.5; RT-22.02,2028-06-19,2028-06-19,FORMACION-E2,Recepción por etapa o control del periodo; no acredita ejecución,C07 13.3.5; RT-22.02
1.11.4.2.1.20.1,"Acompañamiento E2, ola 1, día 20, zona 1",1.11,E2 Marcha blanca,"Acompañamiento E2, ola 1, día 20, zona 1",Resultado de la ficha de familia y del paquete original; registro individual por código/ventana,"No duplicar padres, informes, ingeniería ni cobertura; no incluye horas de contraparte ni obras/adquisiciones del cliente","Registro diario, turno, zona, tarea, incidencia y relevo; 8 h presencia días 1--14, luego 4 h presencia +4 h preparación.",José Lara Arce,8,L:8,"Asignación y cuadrante integrado por código; entornos, usuarios y habilitaciones autorizados",C07 13.3.5; RT-22.02,2028-06-20,2028-06-20,FORMACION-E2,Recepción por etapa o control del periodo; no acredita ejecución,C07 13.3.5; RT-22.02
1.11.4.2.1.20.2,"Acompañamiento E2, ola 1, día 20, zona 2",1.11,E2 Marcha blanca,"Acompañamiento E2, ola 1, día 20, zona 2",Resultado de la ficha de familia y del paquete original; registro individual por código/ventana,"No duplicar padres, informes, ingeniería ni cobertura; no incluye horas de contraparte ni obras/adquisiciones del cliente","Registro diario, turno, zona, tarea, incidencia y relevo; 8 h presencia días 1--14, luego 4 h presencia +4 h preparación.",José Lara Arce,8,L:8,"Asignación y cuadrante integrado por código; entornos, usuarios y habilitaciones autorizados",C07 13.3.5; RT-22.02,2028-06-20,2028-06-20,FORMACION-E2,Recepción por etapa o control del periodo; no acredita ejecución,C07 13.3.5; RT-22.02
1.11.4.2.1.21.1,"Acompañamiento E2, ola 1, día 21, zona 1",1.11,E2 Marcha blanca,"Acompañamiento E2, ola 1, día 21, zona 1",Resultado de la ficha de familia y del paquete original; registro individual por código/ventana,"No duplicar padres, informes, ingeniería ni cobertura; no incluye horas de contraparte ni obras/adquisiciones del cliente","Registro diario, turno, zona, tarea, incidencia y relevo; 8 h presencia días 1--14, luego 4 h presencia +4 h preparación.",José Lara Arce,8,L:8,"Asignación y cuadrante integrado por código; entornos, usuarios y habilitaciones autorizados",C07 13.3.5; RT-22.02,2028-06-21,2028-06-21,FORMACION-E2,Recepción por etapa o control del periodo; no acredita ejecución,C07 13.3.5; RT-22.02
1.11.4.2.1.21.2,"Acompañamiento E2, ola 1, día 21, zona 2",1.11,E2 Marcha blanca,"Acompañamiento E2, ola 1, día 21, zona 2",Resultado de la ficha de familia y del paquete original; registro individual por código/ventana,"No duplicar padres, informes, ingeniería ni cobertura; no incluye horas de contraparte ni obras/adquisiciones del cliente","Registro diario, turno, zona, tarea, incidencia y relevo; 8 h presencia días 1--14, luego 4 h presencia +4 h preparación.",José Lara Arce,8,L:8,"Asignación y cuadrante integrado por código; entornos, usuarios y habilitaciones autorizados",C07 13.3.5; RT-22.02,2028-06-21,2028-06-21,FORMACION-E2,Recepción por etapa o control del periodo; no acredita ejecución,C07 13.3.5; RT-22.02
1.11.4.2.1.22.1,"Acompañamiento E2, ola 1, día 22, zona 1",1.11,E2 Marcha blanca,"Acompañamiento E2, ola 1, día 22, zona 1",Resultado de la ficha de familia y del paquete original; registro individual por código/ventana,"No duplicar padres, informes, ingeniería ni cobertura; no incluye horas de contraparte ni obras/adquisiciones del cliente","Registro diario, turno, zona, tarea, incidencia y relevo; 8 h presencia días 1--14, luego 4 h presencia +4 h preparación.",José Lara Arce,8,L:8,"Asignación y cuadrante integrado por código; entornos, usuarios y habilitaciones autorizados",C07 13.3.5; RT-22.02,2028-06-22,2028-06-22,FORMACION-E2,Recepción por etapa o control del periodo; no acredita ejecución,C07 13.3.5; RT-22.02
1.11.4.2.1.22.2,"Acompañamiento E2, ola 1, día 22, zona 2",1.11,E2 Marcha blanca,"Acompañamiento E2, ola 1, día 22, zona 2",Resultado de la ficha de familia y del paquete original; registro individual por código/ventana,"No duplicar padres, informes, ingeniería ni cobertura; no incluye horas de contraparte ni obras/adquisiciones del cliente","Registro diario, turno, zona, tarea, incidencia y relevo; 8 h presencia días 1--14, luego 4 h presencia +4 h preparación.",José Lara Arce,8,L:8,"Asignación y cuadrante integrado por código; entornos, usuarios y habilitaciones autorizados",C07 13.3.5; RT-22.02,2028-06-22,2028-06-22,FORMACION-E2,Recepción por etapa o control del periodo; no acredita ejecución,C07 13.3.5; RT-22.02
1.11.4.2.1.23.1,"Acompañamiento E2, ola 1, día 23, zona 1",1.11,E2 Marcha blanca,"Acompañamiento E2, ola 1, día 23, zona 1",Resultado de la ficha de familia y del paquete original; registro individual por código/ventana,"No duplicar padres, informes, ingeniería ni cobertura; no incluye horas de contraparte ni obras/adquisiciones del cliente","Registro diario, turno, zona, tarea, incidencia y relevo; 8 h presencia días 1--14, luego 4 h presencia +4 h preparación.",José Lara Arce,8,L:8,"Asignación y cuadrante integrado por código; entornos, usuarios y habilitaciones autorizados",C07 13.3.5; RT-22.02,2028-06-23,2028-06-23,FORMACION-E2,Recepción por etapa o control del periodo; no acredita ejecución,C07 13.3.5; RT-22.02
1.11.4.2.1.23.2,"Acompañamiento E2, ola 1, día 23, zona 2",1.11,E2 Marcha blanca,"Acompañamiento E2, ola 1, día 23, zona 2",Resultado de la ficha de familia y del paquete original; registro individual por código/ventana,"No duplicar padres, informes, ingeniería ni cobertura; no incluye horas de contraparte ni obras/adquisiciones del cliente","Registro diario, turno, zona, tarea, incidencia y relevo; 8 h presencia días 1--14, luego 4 h presencia +4 h preparación.",José Lara Arce,8,L:8,"Asignación y cuadrante integrado por código; entornos, usuarios y habilitaciones autorizados",C07 13.3.5; RT-22.02,2028-06-23,2028-06-23,FORMACION-E2,Recepción por etapa o control del periodo; no acredita ejecución,C07 13.3.5; RT-22.02
1.11.4.2.1.24.1,"Acompañamiento E2, ola 1, día 24, zona 1",1.11,E2 Marcha blanca,"Acompañamiento E2, ola 1, día 24, zona 1",Resultado de la ficha de familia y del paquete original; registro individual por código/ventana,"No duplicar padres, informes, ingeniería ni cobertura; no incluye horas de contraparte ni obras/adquisiciones del cliente","Registro diario, turno, zona, tarea, incidencia y relevo; 8 h presencia días 1--14, luego 4 h presencia +4 h preparación.",José Lara Arce,8,L:8,"Asignación y cuadrante integrado por código; entornos, usuarios y habilitaciones autorizados",C07 13.3.5; RT-22.02,2028-06-24,2028-06-24,FORMACION-E2,Recepción por etapa o control del periodo; no acredita ejecución,C07 13.3.5; RT-22.02
1.11.4.2.1.24.2,"Acompañamiento E2, ola 1, día 24, zona 2",1.11,E2 Marcha blanca,"Acompañamiento E2, ola 1, día 24, zona 2",Resultado de la ficha de familia y del paquete original; registro individual por código/ventana,"No duplicar padres, informes, ingeniería ni cobertura; no incluye horas de contraparte ni obras/adquisiciones del cliente","Registro diario, turno, zona, tarea, incidencia y relevo; 8 h presencia días 1--14, luego 4 h presencia +4 h preparación.",José Lara Arce,8,L:8,"Asignación y cuadrante integrado por código; entornos, usuarios y habilitaciones autorizados",C07 13.3.5; RT-22.02,2028-06-24,2028-06-24,FORMACION-E2,Recepción por etapa o control del periodo; no acredita ejecución,C07 13.3.5; RT-22.02
1.11.4.2.1.25.1,"Acompañamiento E2, ola 1, día 25, zona 1",1.11,E2 Marcha blanca,"Acompañamiento E2, ola 1, día 25, zona 1",Resultado de la ficha de familia y del paquete original; registro individual por código/ventana,"No duplicar padres, informes, ingeniería ni cobertura; no incluye horas de contraparte ni obras/adquisiciones del cliente","Registro diario, turno, zona, tarea, incidencia y relevo; 8 h presencia días 1--14, luego 4 h presencia +4 h preparación.",José Lara Arce,8,L:8,"Asignación y cuadrante integrado por código; entornos, usuarios y habilitaciones autorizados",C07 13.3.5; RT-22.02,2028-06-25,2028-06-25,FORMACION-E2,Recepción por etapa o control del periodo; no acredita ejecución,C07 13.3.5; RT-22.02
1.11.4.2.1.25.2,"Acompañamiento E2, ola 1, día 25, zona 2",1.11,E2 Marcha blanca,"Acompañamiento E2, ola 1, día 25, zona 2",Resultado de la ficha de familia y del paquete original; registro individual por código/ventana,"No duplicar padres, informes, ingeniería ni cobertura; no incluye horas de contraparte ni obras/adquisiciones del cliente","Registro diario, turno, zona, tarea, incidencia y relevo; 8 h presencia días 1--14, luego 4 h presencia +4 h preparación.",José Lara Arce,8,L:8,"Asignación y cuadrante integrado por código; entornos, usuarios y habilitaciones autorizados",C07 13.3.5; RT-22.02,2028-06-25,2028-06-25,FORMACION-E2,Recepción por etapa o control del periodo; no acredita ejecución,C07 13.3.5; RT-22.02
1.11.4.2.1.26.1,"Acompañamiento E2, ola 1, día 26, zona 1",1.11,E2 Marcha blanca,"Acompañamiento E2, ola 1, día 26, zona 1",Resultado de la ficha de familia y del paquete original; registro individual por código/ventana,"No duplicar padres, informes, ingeniería ni cobertura; no incluye horas de contraparte ni obras/adquisiciones del cliente","Registro diario, turno, zona, tarea, incidencia y relevo; 8 h presencia días 1--14, luego 4 h presencia +4 h preparación.",José Lara Arce,8,L:8,"Asignación y cuadrante integrado por código; entornos, usuarios y habilitaciones autorizados",C07 13.3.5; RT-22.02,2028-06-26,2028-06-26,FORMACION-E2,Recepción por etapa o control del periodo; no acredita ejecución,C07 13.3.5; RT-22.02
1.11.4.2.1.26.2,"Acompañamiento E2, ola 1, día 26, zona 2",1.11,E2 Marcha blanca,"Acompañamiento E2, ola 1, día 26, zona 2",Resultado de la ficha de familia y del paquete original; registro individual por código/ventana,"No duplicar padres, informes, ingeniería ni cobertura; no incluye horas de contraparte ni obras/adquisiciones del cliente","Registro diario, turno, zona, tarea, incidencia y relevo; 8 h presencia días 1--14, luego 4 h presencia +4 h preparación.",José Lara Arce,8,L:8,"Asignación y cuadrante integrado por código; entornos, usuarios y habilitaciones autorizados",C07 13.3.5; RT-22.02,2028-06-26,2028-06-26,FORMACION-E2,Recepción por etapa o control del periodo; no acredita ejecución,C07 13.3.5; RT-22.02
1.11.4.2.1.27.1,"Acompañamiento E2, ola 1, día 27, zona 1",1.11,E2 Marcha blanca,"Acompañamiento E2, ola 1, día 27, zona 1",Resultado de la ficha de familia y del paquete original; registro individual por código/ventana,"No duplicar padres, informes, ingeniería ni cobertura; no incluye horas de contraparte ni obras/adquisiciones del cliente","Registro diario, turno, zona, tarea, incidencia y relevo; 8 h presencia días 1--14, luego 4 h presencia +4 h preparación.",José Lara Arce,8,L:8,"Asignación y cuadrante integrado por código; entornos, usuarios y habilitaciones autorizados",C07 13.3.5; RT-22.02,2028-06-27,2028-06-27,FORMACION-E2,Recepción por etapa o control del periodo; no acredita ejecución,C07 13.3.5; RT-22.02
1.11.4.2.1.27.2,"Acompañamiento E2, ola 1, día 27, zona 2",1.11,E2 Marcha blanca,"Acompañamiento E2, ola 1, día 27, zona 2",Resultado de la ficha de familia y del paquete original; registro individual por código/ventana,"No duplicar padres, informes, ingeniería ni cobertura; no incluye horas de contraparte ni obras/adquisiciones del cliente","Registro diario, turno, zona, tarea, incidencia y relevo; 8 h presencia días 1--14, luego 4 h presencia +4 h preparación.",José Lara Arce,8,L:8,"Asignación y cuadrante integrado por código; entornos, usuarios y habilitaciones autorizados",C07 13.3.5; RT-22.02,2028-06-27,2028-06-27,FORMACION-E2,Recepción por etapa o control del periodo; no acredita ejecución,C07 13.3.5; RT-22.02
1.11.4.2.1.28.1,"Acompañamiento E2, ola 1, día 28, zona 1",1.11,E2 Marcha blanca,"Acompañamiento E2, ola 1, día 28, zona 1",Resultado de la ficha de familia y del paquete original; registro individual por código/ventana,"No duplicar padres, informes, ingeniería ni cobertura; no incluye horas de contraparte ni obras/adquisiciones del cliente","Registro diario, turno, zona, tarea, incidencia y relevo; 8 h presencia días 1--14, luego 4 h presencia +4 h preparación.",José Lara Arce,8,L:8,"Asignación y cuadrante integrado por código; entornos, usuarios y habilitaciones autorizados",C07 13.3.5; RT-22.02,2028-06-28,2028-06-28,FORMACION-E2,Recepción por etapa o control del periodo; no acredita ejecución,C07 13.3.5; RT-22.02
1.11.4.2.1.28.2,"Acompañamiento E2, ola 1, día 28, zona 2",1.11,E2 Marcha blanca,"Acompañamiento E2, ola 1, día 28, zona 2",Resultado de la ficha de familia y del paquete original; registro individual por código/ventana,"No duplicar padres, informes, ingeniería ni cobertura; no incluye horas de contraparte ni obras/adquisiciones del cliente","Registro diario, turno, zona, tarea, incidencia y relevo; 8 h presencia días 1--14, luego 4 h presencia +4 h preparación.",José Lara Arce,8,L:8,"Asignación y cuadrante integrado por código; entornos, usuarios y habilitaciones autorizados",C07 13.3.5; RT-22.02,2028-06-28,2028-06-28,FORMACION-E2,Recepción por etapa o control del periodo; no acredita ejecución,C07 13.3.5; RT-22.02
1.11.4.2.2.1.1,"Acompañamiento E2, ola 2, día 1, zona 1",1.11,E2 Marcha blanca,"Acompañamiento E2, ola 2, día 1, zona 1",Resultado de la ficha de familia y del paquete original; registro individual por código/ventana,"No duplicar padres, informes, ingeniería ni cobertura; no incluye horas de contraparte ni obras/adquisiciones del cliente","Registro diario, turno, zona, tarea, incidencia y relevo; 8 h presencia días 1--14, luego 4 h presencia +4 h preparación.",José Lara Arce,8,L:8,"Asignación y cuadrante integrado por código; entornos, usuarios y habilitaciones autorizados",C07 13.3.5; RT-22.02,2028-06-01,2028-06-01,FORMACION-E2,Recepción por etapa o control del periodo; no acredita ejecución,C07 13.3.5; RT-22.02
1.11.4.2.2.1.2,"Acompañamiento E2, ola 2, día 1, zona 2",1.11,E2 Marcha blanca,"Acompañamiento E2, ola 2, día 1, zona 2",Resultado de la ficha de familia y del paquete original; registro individual por código/ventana,"No duplicar padres, informes, ingeniería ni cobertura; no incluye horas de contraparte ni obras/adquisiciones del cliente","Registro diario, turno, zona, tarea, incidencia y relevo; 8 h presencia días 1--14, luego 4 h presencia +4 h preparación.",José Lara Arce,8,L:8,"Asignación y cuadrante integrado por código; entornos, usuarios y habilitaciones autorizados",C07 13.3.5; RT-22.02,2028-06-01,2028-06-01,FORMACION-E2,Recepción por etapa o control del periodo; no acredita ejecución,C07 13.3.5; RT-22.02
1.11.4.2.2.2.1,"Acompañamiento E2, ola 2, día 2, zona 1",1.11,E2 Marcha blanca,"Acompañamiento E2, ola 2, día 2, zona 1",Resultado de la ficha de familia y del paquete original; registro individual por código/ventana,"No duplicar padres, informes, ingeniería ni cobertura; no incluye horas de contraparte ni obras/adquisiciones del cliente","Registro diario, turno, zona, tarea, incidencia y relevo; 8 h presencia días 1--14, luego 4 h presencia +4 h preparación.",José Lara Arce,8,L:8,"Asignación y cuadrante integrado por código; entornos, usuarios y habilitaciones autorizados",C07 13.3.5; RT-22.02,2028-06-02,2028-06-02,FORMACION-E2,Recepción por etapa o control del periodo; no acredita ejecución,C07 13.3.5; RT-22.02
1.11.4.2.2.2.2,"Acompañamiento E2, ola 2, día 2, zona 2",1.11,E2 Marcha blanca,"Acompañamiento E2, ola 2, día 2, zona 2",Resultado de la ficha de familia y del paquete original; registro individual por código/ventana,"No duplicar padres, informes, ingeniería ni cobertura; no incluye horas de contraparte ni obras/adquisiciones del cliente","Registro diario, turno, zona, tarea, incidencia y relevo; 8 h presencia días 1--14, luego 4 h presencia +4 h preparación.",José Lara Arce,8,L:8,"Asignación y cuadrante integrado por código; entornos, usuarios y habilitaciones autorizados",C07 13.3.5; RT-22.02,2028-06-02,2028-06-02,FORMACION-E2,Recepción por etapa o control del periodo; no acredita ejecución,C07 13.3.5; RT-22.02
1.11.4.2.2.3.1,"Acompañamiento E2, ola 2, día 3, zona 1",1.11,E2 Marcha blanca,"Acompañamiento E2, ola 2, día 3, zona 1",Resultado de la ficha de familia y del paquete original; registro individual por código/ventana,"No duplicar padres, informes, ingeniería ni cobertura; no incluye horas de contraparte ni obras/adquisiciones del cliente","Registro diario, turno, zona, tarea, incidencia y relevo; 8 h presencia días 1--14, luego 4 h presencia +4 h preparación.",José Lara Arce,8,L:8,"Asignación y cuadrante integrado por código; entornos, usuarios y habilitaciones autorizados",C07 13.3.5; RT-22.02,2028-06-03,2028-06-03,FORMACION-E2,Recepción por etapa o control del periodo; no acredita ejecución,C07 13.3.5; RT-22.02
1.11.4.2.2.3.2,"Acompañamiento E2, ola 2, día 3, zona 2",1.11,E2 Marcha blanca,"Acompañamiento E2, ola 2, día 3, zona 2",Resultado de la ficha de familia y del paquete original; registro individual por código/ventana,"No duplicar padres, informes, ingeniería ni cobertura; no incluye horas de contraparte ni obras/adquisiciones del cliente","Registro diario, turno, zona, tarea, incidencia y relevo; 8 h presencia días 1--14, luego 4 h presencia +4 h preparación.",José Lara Arce,8,L:8,"Asignación y cuadrante integrado por código; entornos, usuarios y habilitaciones autorizados",C07 13.3.5; RT-22.02,2028-06-03,2028-06-03,FORMACION-E2,Recepción por etapa o control del periodo; no acredita ejecución,C07 13.3.5; RT-22.02
1.11.4.2.2.4.1,"Acompañamiento E2, ola 2, día 4, zona 1",1.11,E2 Marcha blanca,"Acompañamiento E2, ola 2, día 4, zona 1",Resultado de la ficha de familia y del paquete original; registro individual por código/ventana,"No duplicar padres, informes, ingeniería ni cobertura; no incluye horas de contraparte ni obras/adquisiciones del cliente","Registro diario, turno, zona, tarea, incidencia y relevo; 8 h presencia días 1--14, luego 4 h presencia +4 h preparación.",José Lara Arce,8,L:8,"Asignación y cuadrante integrado por código; entornos, usuarios y habilitaciones autorizados",C07 13.3.5; RT-22.02,2028-06-04,2028-06-04,FORMACION-E2,Recepción por etapa o control del periodo; no acredita ejecución,C07 13.3.5; RT-22.02
1.11.4.2.2.4.2,"Acompañamiento E2, ola 2, día 4, zona 2",1.11,E2 Marcha blanca,"Acompañamiento E2, ola 2, día 4, zona 2",Resultado de la ficha de familia y del paquete original; registro individual por código/ventana,"No duplicar padres, informes, ingeniería ni cobertura; no incluye horas de contraparte ni obras/adquisiciones del cliente","Registro diario, turno, zona, tarea, incidencia y relevo; 8 h presencia días 1--14, luego 4 h presencia +4 h preparación.",José Lara Arce,8,L:8,"Asignación y cuadrante integrado por código; entornos, usuarios y habilitaciones autorizados",C07 13.3.5; RT-22.02,2028-06-04,2028-06-04,FORMACION-E2,Recepción por etapa o control del periodo; no acredita ejecución,C07 13.3.5; RT-22.02
1.11.4.2.2.5.1,"Acompañamiento E2, ola 2, día 5, zona 1",1.11,E2 Marcha blanca,"Acompañamiento E2, ola 2, día 5, zona 1",Resultado de la ficha de familia y del paquete original; registro individual por código/ventana,"No duplicar padres, informes, ingeniería ni cobertura; no incluye horas de contraparte ni obras/adquisiciones del cliente","Registro diario, turno, zona, tarea, incidencia y relevo; 8 h presencia días 1--14, luego 4 h presencia +4 h preparación.",José Lara Arce,8,L:8,"Asignación y cuadrante integrado por código; entornos, usuarios y habilitaciones autorizados",C07 13.3.5; RT-22.02,2028-06-05,2028-06-05,FORMACION-E2,Recepción por etapa o control del periodo; no acredita ejecución,C07 13.3.5; RT-22.02
1.11.4.2.2.5.2,"Acompañamiento E2, ola 2, día 5, zona 2",1.11,E2 Marcha blanca,"Acompañamiento E2, ola 2, día 5, zona 2",Resultado de la ficha de familia y del paquete original; registro individual por código/ventana,"No duplicar padres, informes, ingeniería ni cobertura; no incluye horas de contraparte ni obras/adquisiciones del cliente","Registro diario, turno, zona, tarea, incidencia y relevo; 8 h presencia días 1--14, luego 4 h presencia +4 h preparación.",José Lara Arce,8,L:8,"Asignación y cuadrante integrado por código; entornos, usuarios y habilitaciones autorizados",C07 13.3.5; RT-22.02,2028-06-05,2028-06-05,FORMACION-E2,Recepción por etapa o control del periodo; no acredita ejecución,C07 13.3.5; RT-22.02
1.11.4.2.2.6.1,"Acompañamiento E2, ola 2, día 6, zona 1",1.11,E2 Marcha blanca,"Acompañamiento E2, ola 2, día 6, zona 1",Resultado de la ficha de familia y del paquete original; registro individual por código/ventana,"No duplicar padres, informes, ingeniería ni cobertura; no incluye horas de contraparte ni obras/adquisiciones del cliente","Registro diario, turno, zona, tarea, incidencia y relevo; 8 h presencia días 1--14, luego 4 h presencia +4 h preparación.",José Lara Arce,8,L:8,"Asignación y cuadrante integrado por código; entornos, usuarios y habilitaciones autorizados",C07 13.3.5; RT-22.02,2028-06-06,2028-06-06,FORMACION-E2,Recepción por etapa o control del periodo; no acredita ejecución,C07 13.3.5; RT-22.02
1.11.4.2.2.6.2,"Acompañamiento E2, ola 2, día 6, zona 2",1.11,E2 Marcha blanca,"Acompañamiento E2, ola 2, día 6, zona 2",Resultado de la ficha de familia y del paquete original; registro individual por código/ventana,"No duplicar padres, informes, ingeniería ni cobertura; no incluye horas de contraparte ni obras/adquisiciones del cliente","Registro diario, turno, zona, tarea, incidencia y relevo; 8 h presencia días 1--14, luego 4 h presencia +4 h preparación.",José Lara Arce,8,L:8,"Asignación y cuadrante integrado por código; entornos, usuarios y habilitaciones autorizados",C07 13.3.5; RT-22.02,2028-06-06,2028-06-06,FORMACION-E2,Recepción por etapa o control del periodo; no acredita ejecución,C07 13.3.5; RT-22.02
1.11.4.2.2.7.1,"Acompañamiento E2, ola 2, día 7, zona 1",1.11,E2 Marcha blanca,"Acompañamiento E2, ola 2, día 7, zona 1",Resultado de la ficha de familia y del paquete original; registro individual por código/ventana,"No duplicar padres, informes, ingeniería ni cobertura; no incluye horas de contraparte ni obras/adquisiciones del cliente","Registro diario, turno, zona, tarea, incidencia y relevo; 8 h presencia días 1--14, luego 4 h presencia +4 h preparación.",José Lara Arce,8,L:8,"Asignación y cuadrante integrado por código; entornos, usuarios y habilitaciones autorizados",C07 13.3.5; RT-22.02,2028-06-07,2028-06-07,FORMACION-E2,Recepción por etapa o control del periodo; no acredita ejecución,C07 13.3.5; RT-22.02
1.11.4.2.2.7.2,"Acompañamiento E2, ola 2, día 7, zona 2",1.11,E2 Marcha blanca,"Acompañamiento E2, ola 2, día 7, zona 2",Resultado de la ficha de familia y del paquete original; registro individual por código/ventana,"No duplicar padres, informes, ingeniería ni cobertura; no incluye horas de contraparte ni obras/adquisiciones del cliente","Registro diario, turno, zona, tarea, incidencia y relevo; 8 h presencia días 1--14, luego 4 h presencia +4 h preparación.",José Lara Arce,8,L:8,"Asignación y cuadrante integrado por código; entornos, usuarios y habilitaciones autorizados",C07 13.3.5; RT-22.02,2028-06-07,2028-06-07,FORMACION-E2,Recepción por etapa o control del periodo; no acredita ejecución,C07 13.3.5; RT-22.02
1.11.4.2.2.8.1,"Acompañamiento E2, ola 2, día 8, zona 1",1.11,E2 Marcha blanca,"Acompañamiento E2, ola 2, día 8, zona 1",Resultado de la ficha de familia y del paquete original; registro individual por código/ventana,"No duplicar padres, informes, ingeniería ni cobertura; no incluye horas de contraparte ni obras/adquisiciones del cliente","Registro diario, turno, zona, tarea, incidencia y relevo; 8 h presencia días 1--14, luego 4 h presencia +4 h preparación.",José Lara Arce,8,L:8,"Asignación y cuadrante integrado por código; entornos, usuarios y habilitaciones autorizados",C07 13.3.5; RT-22.02,2028-06-08,2028-06-08,FORMACION-E2,Recepción por etapa o control del periodo; no acredita ejecución,C07 13.3.5; RT-22.02
1.11.4.2.2.8.2,"Acompañamiento E2, ola 2, día 8, zona 2",1.11,E2 Marcha blanca,"Acompañamiento E2, ola 2, día 8, zona 2",Resultado de la ficha de familia y del paquete original; registro individual por código/ventana,"No duplicar padres, informes, ingeniería ni cobertura; no incluye horas de contraparte ni obras/adquisiciones del cliente","Registro diario, turno, zona, tarea, incidencia y relevo; 8 h presencia días 1--14, luego 4 h presencia +4 h preparación.",José Lara Arce,8,L:8,"Asignación y cuadrante integrado por código; entornos, usuarios y habilitaciones autorizados",C07 13.3.5; RT-22.02,2028-06-08,2028-06-08,FORMACION-E2,Recepción por etapa o control del periodo; no acredita ejecución,C07 13.3.5; RT-22.02
1.11.4.2.2.9.1,"Acompañamiento E2, ola 2, día 9, zona 1",1.11,E2 Marcha blanca,"Acompañamiento E2, ola 2, día 9, zona 1",Resultado de la ficha de familia y del paquete original; registro individual por código/ventana,"No duplicar padres, informes, ingeniería ni cobertura; no incluye horas de contraparte ni obras/adquisiciones del cliente","Registro diario, turno, zona, tarea, incidencia y relevo; 8 h presencia días 1--14, luego 4 h presencia +4 h preparación.",José Lara Arce,8,L:8,"Asignación y cuadrante integrado por código; entornos, usuarios y habilitaciones autorizados",C07 13.3.5; RT-22.02,2028-06-09,2028-06-09,FORMACION-E2,Recepción por etapa o control del periodo; no acredita ejecución,C07 13.3.5; RT-22.02
1.11.4.2.2.9.2,"Acompañamiento E2, ola 2, día 9, zona 2",1.11,E2 Marcha blanca,"Acompañamiento E2, ola 2, día 9, zona 2",Resultado de la ficha de familia y del paquete original; registro individual por código/ventana,"No duplicar padres, informes, ingeniería ni cobertura; no incluye horas de contraparte ni obras/adquisiciones del cliente","Registro diario, turno, zona, tarea, incidencia y relevo; 8 h presencia días 1--14, luego 4 h presencia +4 h preparación.",José Lara Arce,8,L:8,"Asignación y cuadrante integrado por código; entornos, usuarios y habilitaciones autorizados",C07 13.3.5; RT-22.02,2028-06-09,2028-06-09,FORMACION-E2,Recepción por etapa o control del periodo; no acredita ejecución,C07 13.3.5; RT-22.02
1.11.4.2.2.10.1,"Acompañamiento E2, ola 2, día 10, zona 1",1.11,E2 Marcha blanca,"Acompañamiento E2, ola 2, día 10, zona 1",Resultado de la ficha de familia y del paquete original; registro individual por código/ventana,"No duplicar padres, informes, ingeniería ni cobertura; no incluye horas de contraparte ni obras/adquisiciones del cliente","Registro diario, turno, zona, tarea, incidencia y relevo; 8 h presencia días 1--14, luego 4 h presencia +4 h preparación.",José Lara Arce,8,L:8,"Asignación y cuadrante integrado por código; entornos, usuarios y habilitaciones autorizados",C07 13.3.5; RT-22.02,2028-06-10,2028-06-10,FORMACION-E2,Recepción por etapa o control del periodo; no acredita ejecución,C07 13.3.5; RT-22.02
1.11.4.2.2.10.2,"Acompañamiento E2, ola 2, día 10, zona 2",1.11,E2 Marcha blanca,"Acompañamiento E2, ola 2, día 10, zona 2",Resultado de la ficha de familia y del paquete original; registro individual por código/ventana,"No duplicar padres, informes, ingeniería ni cobertura; no incluye horas de contraparte ni obras/adquisiciones del cliente","Registro diario, turno, zona, tarea, incidencia y relevo; 8 h presencia días 1--14, luego 4 h presencia +4 h preparación.",José Lara Arce,8,L:8,"Asignación y cuadrante integrado por código; entornos, usuarios y habilitaciones autorizados",C07 13.3.5; RT-22.02,2028-06-10,2028-06-10,FORMACION-E2,Recepción por etapa o control del periodo; no acredita ejecución,C07 13.3.5; RT-22.02
1.11.4.2.2.11.1,"Acompañamiento E2, ola 2, día 11, zona 1",1.11,E2 Marcha blanca,"Acompañamiento E2, ola 2, día 11, zona 1",Resultado de la ficha de familia y del paquete original; registro individual por código/ventana,"No duplicar padres, informes, ingeniería ni cobertura; no incluye horas de contraparte ni obras/adquisiciones del cliente","Registro diario, turno, zona, tarea, incidencia y relevo; 8 h presencia días 1--14, luego 4 h presencia +4 h preparación.",José Lara Arce,8,L:8,"Asignación y cuadrante integrado por código; entornos, usuarios y habilitaciones autorizados",C07 13.3.5; RT-22.02,2028-06-11,2028-06-11,FORMACION-E2,Recepción por etapa o control del periodo; no acredita ejecución,C07 13.3.5; RT-22.02
1.11.4.2.2.11.2,"Acompañamiento E2, ola 2, día 11, zona 2",1.11,E2 Marcha blanca,"Acompañamiento E2, ola 2, día 11, zona 2",Resultado de la ficha de familia y del paquete original; registro individual por código/ventana,"No duplicar padres, informes, ingeniería ni cobertura; no incluye horas de contraparte ni obras/adquisiciones del cliente","Registro diario, turno, zona, tarea, incidencia y relevo; 8 h presencia días 1--14, luego 4 h presencia +4 h preparación.",José Lara Arce,8,L:8,"Asignación y cuadrante integrado por código; entornos, usuarios y habilitaciones autorizados",C07 13.3.5; RT-22.02,2028-06-11,2028-06-11,FORMACION-E2,Recepción por etapa o control del periodo; no acredita ejecución,C07 13.3.5; RT-22.02
1.11.4.2.2.12.1,"Acompañamiento E2, ola 2, día 12, zona 1",1.11,E2 Marcha blanca,"Acompañamiento E2, ola 2, día 12, zona 1",Resultado de la ficha de familia y del paquete original; registro individual por código/ventana,"No duplicar padres, informes, ingeniería ni cobertura; no incluye horas de contraparte ni obras/adquisiciones del cliente","Registro diario, turno, zona, tarea, incidencia y relevo; 8 h presencia días 1--14, luego 4 h presencia +4 h preparación.",José Lara Arce,8,L:8,"Asignación y cuadrante integrado por código; entornos, usuarios y habilitaciones autorizados",C07 13.3.5; RT-22.02,2028-06-12,2028-06-12,FORMACION-E2,Recepción por etapa o control del periodo; no acredita ejecución,C07 13.3.5; RT-22.02
1.11.4.2.2.12.2,"Acompañamiento E2, ola 2, día 12, zona 2",1.11,E2 Marcha blanca,"Acompañamiento E2, ola 2, día 12, zona 2",Resultado de la ficha de familia y del paquete original; registro individual por código/ventana,"No duplicar padres, informes, ingeniería ni cobertura; no incluye horas de contraparte ni obras/adquisiciones del cliente","Registro diario, turno, zona, tarea, incidencia y relevo; 8 h presencia días 1--14, luego 4 h presencia +4 h preparación.",José Lara Arce,8,L:8,"Asignación y cuadrante integrado por código; entornos, usuarios y habilitaciones autorizados",C07 13.3.5; RT-22.02,2028-06-12,2028-06-12,FORMACION-E2,Recepción por etapa o control del periodo; no acredita ejecución,C07 13.3.5; RT-22.02
1.11.4.2.2.13.1,"Acompañamiento E2, ola 2, día 13, zona 1",1.11,E2 Marcha blanca,"Acompañamiento E2, ola 2, día 13, zona 1",Resultado de la ficha de familia y del paquete original; registro individual por código/ventana,"No duplicar padres, informes, ingeniería ni cobertura; no incluye horas de contraparte ni obras/adquisiciones del cliente","Registro diario, turno, zona, tarea, incidencia y relevo; 8 h presencia días 1--14, luego 4 h presencia +4 h preparación.",José Lara Arce,8,L:8,"Asignación y cuadrante integrado por código; entornos, usuarios y habilitaciones autorizados",C07 13.3.5; RT-22.02,2028-06-13,2028-06-13,FORMACION-E2,Recepción por etapa o control del periodo; no acredita ejecución,C07 13.3.5; RT-22.02
1.11.4.2.2.13.2,"Acompañamiento E2, ola 2, día 13, zona 2",1.11,E2 Marcha blanca,"Acompañamiento E2, ola 2, día 13, zona 2",Resultado de la ficha de familia y del paquete original; registro individual por código/ventana,"No duplicar padres, informes, ingeniería ni cobertura; no incluye horas de contraparte ni obras/adquisiciones del cliente","Registro diario, turno, zona, tarea, incidencia y relevo; 8 h presencia días 1--14, luego 4 h presencia +4 h preparación.",José Lara Arce,8,L:8,"Asignación y cuadrante integrado por código; entornos, usuarios y habilitaciones autorizados",C07 13.3.5; RT-22.02,2028-06-13,2028-06-13,FORMACION-E2,Recepción por etapa o control del periodo; no acredita ejecución,C07 13.3.5; RT-22.02
1.11.4.2.2.14.1,"Acompañamiento E2, ola 2, día 14, zona 1",1.11,E2 Marcha blanca,"Acompañamiento E2, ola 2, día 14, zona 1",Resultado de la ficha de familia y del paquete original; registro individual por código/ventana,"No duplicar padres, informes, ingeniería ni cobertura; no incluye horas de contraparte ni obras/adquisiciones del cliente","Registro diario, turno, zona, tarea, incidencia y relevo; 8 h presencia días 1--14, luego 4 h presencia +4 h preparación.",José Lara Arce,8,L:8,"Asignación y cuadrante integrado por código; entornos, usuarios y habilitaciones autorizados",C07 13.3.5; RT-22.02,2028-06-14,2028-06-14,FORMACION-E2,Recepción por etapa o control del periodo; no acredita ejecución,C07 13.3.5; RT-22.02
1.11.4.2.2.14.2,"Acompañamiento E2, ola 2, día 14, zona 2",1.11,E2 Marcha blanca,"Acompañamiento E2, ola 2, día 14, zona 2",Resultado de la ficha de familia y del paquete original; registro individual por código/ventana,"No duplicar padres, informes, ingeniería ni cobertura; no incluye horas de contraparte ni obras/adquisiciones del cliente","Registro diario, turno, zona, tarea, incidencia y relevo; 8 h presencia días 1--14, luego 4 h presencia +4 h preparación.",José Lara Arce,8,L:8,"Asignación y cuadrante integrado por código; entornos, usuarios y habilitaciones autorizados",C07 13.3.5; RT-22.02,2028-06-14,2028-06-14,FORMACION-E2,Recepción por etapa o control del periodo; no acredita ejecución,C07 13.3.5; RT-22.02
1.11.4.2.2.15.1,"Acompañamiento E2, ola 2, día 15, zona 1",1.11,E2 Marcha blanca,"Acompañamiento E2, ola 2, día 15, zona 1",Resultado de la ficha de familia y del paquete original; registro individual por código/ventana,"No duplicar padres, informes, ingeniería ni cobertura; no incluye horas de contraparte ni obras/adquisiciones del cliente","Registro diario, turno, zona, tarea, incidencia y relevo; 8 h presencia días 1--14, luego 4 h presencia +4 h preparación.",José Lara Arce,8,L:8,"Asignación y cuadrante integrado por código; entornos, usuarios y habilitaciones autorizados",C07 13.3.5; RT-22.02,2028-06-15,2028-06-15,FORMACION-E2,Recepción por etapa o control del periodo; no acredita ejecución,C07 13.3.5; RT-22.02
1.11.4.2.2.15.2,"Acompañamiento E2, ola 2, día 15, zona 2",1.11,E2 Marcha blanca,"Acompañamiento E2, ola 2, día 15, zona 2",Resultado de la ficha de familia y del paquete original; registro individual por código/ventana,"No duplicar padres, informes, ingeniería ni cobertura; no incluye horas de contraparte ni obras/adquisiciones del cliente","Registro diario, turno, zona, tarea, incidencia y relevo; 8 h presencia días 1--14, luego 4 h presencia +4 h preparación.",José Lara Arce,8,L:8,"Asignación y cuadrante integrado por código; entornos, usuarios y habilitaciones autorizados",C07 13.3.5; RT-22.02,2028-06-15,2028-06-15,FORMACION-E2,Recepción por etapa o control del periodo; no acredita ejecución,C07 13.3.5; RT-22.02
1.11.4.2.2.16.1,"Acompañamiento E2, ola 2, día 16, zona 1",1.11,E2 Marcha blanca,"Acompañamiento E2, ola 2, día 16, zona 1",Resultado de la ficha de familia y del paquete original; registro individual por código/ventana,"No duplicar padres, informes, ingeniería ni cobertura; no incluye horas de contraparte ni obras/adquisiciones del cliente","Registro diario, turno, zona, tarea, incidencia y relevo; 8 h presencia días 1--14, luego 4 h presencia +4 h preparación.",José Lara Arce,8,L:8,"Asignación y cuadrante integrado por código; entornos, usuarios y habilitaciones autorizados",C07 13.3.5; RT-22.02,2028-06-16,2028-06-16,FORMACION-E2,Recepción por etapa o control del periodo; no acredita ejecución,C07 13.3.5; RT-22.02
1.11.4.2.2.16.2,"Acompañamiento E2, ola 2, día 16, zona 2",1.11,E2 Marcha blanca,"Acompañamiento E2, ola 2, día 16, zona 2",Resultado de la ficha de familia y del paquete original; registro individual por código/ventana,"No duplicar padres, informes, ingeniería ni cobertura; no incluye horas de contraparte ni obras/adquisiciones del cliente","Registro diario, turno, zona, tarea, incidencia y relevo; 8 h presencia días 1--14, luego 4 h presencia +4 h preparación.",José Lara Arce,8,L:8,"Asignación y cuadrante integrado por código; entornos, usuarios y habilitaciones autorizados",C07 13.3.5; RT-22.02,2028-06-16,2028-06-16,FORMACION-E2,Recepción por etapa o control del periodo; no acredita ejecución,C07 13.3.5; RT-22.02
1.11.4.2.2.17.1,"Acompañamiento E2, ola 2, día 17, zona 1",1.11,E2 Marcha blanca,"Acompañamiento E2, ola 2, día 17, zona 1",Resultado de la ficha de familia y del paquete original; registro individual por código/ventana,"No duplicar padres, informes, ingeniería ni cobertura; no incluye horas de contraparte ni obras/adquisiciones del cliente","Registro diario, turno, zona, tarea, incidencia y relevo; 8 h presencia días 1--14, luego 4 h presencia +4 h preparación.",José Lara Arce,8,L:8,"Asignación y cuadrante integrado por código; entornos, usuarios y habilitaciones autorizados",C07 13.3.5; RT-22.02,2028-06-17,2028-06-17,FORMACION-E2,Recepción por etapa o control del periodo; no acredita ejecución,C07 13.3.5; RT-22.02
1.11.4.2.2.17.2,"Acompañamiento E2, ola 2, día 17, zona 2",1.11,E2 Marcha blanca,"Acompañamiento E2, ola 2, día 17, zona 2",Resultado de la ficha de familia y del paquete original; registro individual por código/ventana,"No duplicar padres, informes, ingeniería ni cobertura; no incluye horas de contraparte ni obras/adquisiciones del cliente","Registro diario, turno, zona, tarea, incidencia y relevo; 8 h presencia días 1--14, luego 4 h presencia +4 h preparación.",José Lara Arce,8,L:8,"Asignación y cuadrante integrado por código; entornos, usuarios y habilitaciones autorizados",C07 13.3.5; RT-22.02,2028-06-17,2028-06-17,FORMACION-E2,Recepción por etapa o control del periodo; no acredita ejecución,C07 13.3.5; RT-22.02
1.11.4.2.2.18.1,"Acompañamiento E2, ola 2, día 18, zona 1",1.11,E2 Marcha blanca,"Acompañamiento E2, ola 2, día 18, zona 1",Resultado de la ficha de familia y del paquete original; registro individual por código/ventana,"No duplicar padres, informes, ingeniería ni cobertura; no incluye horas de contraparte ni obras/adquisiciones del cliente","Registro diario, turno, zona, tarea, incidencia y relevo; 8 h presencia días 1--14, luego 4 h presencia +4 h preparación.",José Lara Arce,8,L:8,"Asignación y cuadrante integrado por código; entornos, usuarios y habilitaciones autorizados",C07 13.3.5; RT-22.02,2028-06-18,2028-06-18,FORMACION-E2,Recepción por etapa o control del periodo; no acredita ejecución,C07 13.3.5; RT-22.02
1.11.4.2.2.18.2,"Acompañamiento E2, ola 2, día 18, zona 2",1.11,E2 Marcha blanca,"Acompañamiento E2, ola 2, día 18, zona 2",Resultado de la ficha de familia y del paquete original; registro individual por código/ventana,"No duplicar padres, informes, ingeniería ni cobertura; no incluye horas de contraparte ni obras/adquisiciones del cliente","Registro diario, turno, zona, tarea, incidencia y relevo; 8 h presencia días 1--14, luego 4 h presencia +4 h preparación.",José Lara Arce,8,L:8,"Asignación y cuadrante integrado por código; entornos, usuarios y habilitaciones autorizados",C07 13.3.5; RT-22.02,2028-06-18,2028-06-18,FORMACION-E2,Recepción por etapa o control del periodo; no acredita ejecución,C07 13.3.5; RT-22.02
1.11.4.2.2.19.1,"Acompañamiento E2, ola 2, día 19, zona 1",1.11,E2 Marcha blanca,"Acompañamiento E2, ola 2, día 19, zona 1",Resultado de la ficha de familia y del paquete original; registro individual por código/ventana,"No duplicar padres, informes, ingeniería ni cobertura; no incluye horas de contraparte ni obras/adquisiciones del cliente","Registro diario, turno, zona, tarea, incidencia y relevo; 8 h presencia días 1--14, luego 4 h presencia +4 h preparación.",José Lara Arce,8,L:8,"Asignación y cuadrante integrado por código; entornos, usuarios y habilitaciones autorizados",C07 13.3.5; RT-22.02,2028-06-19,2028-06-19,FORMACION-E2,Recepción por etapa o control del periodo; no acredita ejecución,C07 13.3.5; RT-22.02
1.11.4.2.2.19.2,"Acompañamiento E2, ola 2, día 19, zona 2",1.11,E2 Marcha blanca,"Acompañamiento E2, ola 2, día 19, zona 2",Resultado de la ficha de familia y del paquete original; registro individual por código/ventana,"No duplicar padres, informes, ingeniería ni cobertura; no incluye horas de contraparte ni obras/adquisiciones del cliente","Registro diario, turno, zona, tarea, incidencia y relevo; 8 h presencia días 1--14, luego 4 h presencia +4 h preparación.",José Lara Arce,8,L:8,"Asignación y cuadrante integrado por código; entornos, usuarios y habilitaciones autorizados",C07 13.3.5; RT-22.02,2028-06-19,2028-06-19,FORMACION-E2,Recepción por etapa o control del periodo; no acredita ejecución,C07 13.3.5; RT-22.02
1.11.4.2.2.20.1,"Acompañamiento E2, ola 2, día 20, zona 1",1.11,E2 Marcha blanca,"Acompañamiento E2, ola 2, día 20, zona 1",Resultado de la ficha de familia y del paquete original; registro individual por código/ventana,"No duplicar padres, informes, ingeniería ni cobertura; no incluye horas de contraparte ni obras/adquisiciones del cliente","Registro diario, turno, zona, tarea, incidencia y relevo; 8 h presencia días 1--14, luego 4 h presencia +4 h preparación.",José Lara Arce,8,L:8,"Asignación y cuadrante integrado por código; entornos, usuarios y habilitaciones autorizados",C07 13.3.5; RT-22.02,2028-06-20,2028-06-20,FORMACION-E2,Recepción por etapa o control del periodo; no acredita ejecución,C07 13.3.5; RT-22.02
1.11.4.2.2.20.2,"Acompañamiento E2, ola 2, día 20, zona 2",1.11,E2 Marcha blanca,"Acompañamiento E2, ola 2, día 20, zona 2",Resultado de la ficha de familia y del paquete original; registro individual por código/ventana,"No duplicar padres, informes, ingeniería ni cobertura; no incluye horas de contraparte ni obras/adquisiciones del cliente","Registro diario, turno, zona, tarea, incidencia y relevo; 8 h presencia días 1--14, luego 4 h presencia +4 h preparación.",José Lara Arce,8,L:8,"Asignación y cuadrante integrado por código; entornos, usuarios y habilitaciones autorizados",C07 13.3.5; RT-22.02,2028-06-20,2028-06-20,FORMACION-E2,Recepción por etapa o control del periodo; no acredita ejecución,C07 13.3.5; RT-22.02
1.11.4.2.2.21.1,"Acompañamiento E2, ola 2, día 21, zona 1",1.11,E2 Marcha blanca,"Acompañamiento E2, ola 2, día 21, zona 1",Resultado de la ficha de familia y del paquete original; registro individual por código/ventana,"No duplicar padres, informes, ingeniería ni cobertura; no incluye horas de contraparte ni obras/adquisiciones del cliente","Registro diario, turno, zona, tarea, incidencia y relevo; 8 h presencia días 1--14, luego 4 h presencia +4 h preparación.",José Lara Arce,8,L:8,"Asignación y cuadrante integrado por código; entornos, usuarios y habilitaciones autorizados",C07 13.3.5; RT-22.02,2028-06-21,2028-06-21,FORMACION-E2,Recepción por etapa o control del periodo; no acredita ejecución,C07 13.3.5; RT-22.02
1.11.4.2.2.21.2,"Acompañamiento E2, ola 2, día 21, zona 2",1.11,E2 Marcha blanca,"Acompañamiento E2, ola 2, día 21, zona 2",Resultado de la ficha de familia y del paquete original; registro individual por código/ventana,"No duplicar padres, informes, ingeniería ni cobertura; no incluye horas de contraparte ni obras/adquisiciones del cliente","Registro diario, turno, zona, tarea, incidencia y relevo; 8 h presencia días 1--14, luego 4 h presencia +4 h preparación.",José Lara Arce,8,L:8,"Asignación y cuadrante integrado por código; entornos, usuarios y habilitaciones autorizados",C07 13.3.5; RT-22.02,2028-06-21,2028-06-21,FORMACION-E2,Recepción por etapa o control del periodo; no acredita ejecución,C07 13.3.5; RT-22.02
1.11.4.2.2.22.1,"Acompañamiento E2, ola 2, día 22, zona 1",1.11,E2 Marcha blanca,"Acompañamiento E2, ola 2, día 22, zona 1",Resultado de la ficha de familia y del paquete original; registro individual por código/ventana,"No duplicar padres, informes, ingeniería ni cobertura; no incluye horas de contraparte ni obras/adquisiciones del cliente","Registro diario, turno, zona, tarea, incidencia y relevo; 8 h presencia días 1--14, luego 4 h presencia +4 h preparación.",José Lara Arce,8,L:8,"Asignación y cuadrante integrado por código; entornos, usuarios y habilitaciones autorizados",C07 13.3.5; RT-22.02,2028-06-22,2028-06-22,FORMACION-E2,Recepción por etapa o control del periodo; no acredita ejecución,C07 13.3.5; RT-22.02
1.11.4.2.2.22.2,"Acompañamiento E2, ola 2, día 22, zona 2",1.11,E2 Marcha blanca,"Acompañamiento E2, ola 2, día 22, zona 2",Resultado de la ficha de familia y del paquete original; registro individual por código/ventana,"No duplicar padres, informes, ingeniería ni cobertura; no incluye horas de contraparte ni obras/adquisiciones del cliente","Registro diario, turno, zona, tarea, incidencia y relevo; 8 h presencia días 1--14, luego 4 h presencia +4 h preparación.",José Lara Arce,8,L:8,"Asignación y cuadrante integrado por código; entornos, usuarios y habilitaciones autorizados",C07 13.3.5; RT-22.02,2028-06-22,2028-06-22,FORMACION-E2,Recepción por etapa o control del periodo; no acredita ejecución,C07 13.3.5; RT-22.02
1.11.4.2.2.23.1,"Acompañamiento E2, ola 2, día 23, zona 1",1.11,E2 Marcha blanca,"Acompañamiento E2, ola 2, día 23, zona 1",Resultado de la ficha de familia y del paquete original; registro individual por código/ventana,"No duplicar padres, informes, ingeniería ni cobertura; no incluye horas de contraparte ni obras/adquisiciones del cliente","Registro diario, turno, zona, tarea, incidencia y relevo; 8 h presencia días 1--14, luego 4 h presencia +4 h preparación.",José Lara Arce,8,L:8,"Asignación y cuadrante integrado por código; entornos, usuarios y habilitaciones autorizados",C07 13.3.5; RT-22.02,2028-06-23,2028-06-23,FORMACION-E2,Recepción por etapa o control del periodo; no acredita ejecución,C07 13.3.5; RT-22.02
1.11.4.2.2.23.2,"Acompañamiento E2, ola 2, día 23, zona 2",1.11,E2 Marcha blanca,"Acompañamiento E2, ola 2, día 23, zona 2",Resultado de la ficha de familia y del paquete original; registro individual por código/ventana,"No duplicar padres, informes, ingeniería ni cobertura; no incluye horas de contraparte ni obras/adquisiciones del cliente","Registro diario, turno, zona, tarea, incidencia y relevo; 8 h presencia días 1--14, luego 4 h presencia +4 h preparación.",José Lara Arce,8,L:8,"Asignación y cuadrante integrado por código; entornos, usuarios y habilitaciones autorizados",C07 13.3.5; RT-22.02,2028-06-23,2028-06-23,FORMACION-E2,Recepción por etapa o control del periodo; no acredita ejecución,C07 13.3.5; RT-22.02
1.11.4.2.2.24.1,"Acompañamiento E2, ola 2, día 24, zona 1",1.11,E2 Marcha blanca,"Acompañamiento E2, ola 2, día 24, zona 1",Resultado de la ficha de familia y del paquete original; registro individual por código/ventana,"No duplicar padres, informes, ingeniería ni cobertura; no incluye horas de contraparte ni obras/adquisiciones del cliente","Registro diario, turno, zona, tarea, incidencia y relevo; 8 h presencia días 1--14, luego 4 h presencia +4 h preparación.",José Lara Arce,8,L:8,"Asignación y cuadrante integrado por código; entornos, usuarios y habilitaciones autorizados",C07 13.3.5; RT-22.02,2028-06-24,2028-06-24,FORMACION-E2,Recepción por etapa o control del periodo; no acredita ejecución,C07 13.3.5; RT-22.02
1.11.4.2.2.24.2,"Acompañamiento E2, ola 2, día 24, zona 2",1.11,E2 Marcha blanca,"Acompañamiento E2, ola 2, día 24, zona 2",Resultado de la ficha de familia y del paquete original; registro individual por código/ventana,"No duplicar padres, informes, ingeniería ni cobertura; no incluye horas de contraparte ni obras/adquisiciones del cliente","Registro diario, turno, zona, tarea, incidencia y relevo; 8 h presencia días 1--14, luego 4 h presencia +4 h preparación.",José Lara Arce,8,L:8,"Asignación y cuadrante integrado por código; entornos, usuarios y habilitaciones autorizados",C07 13.3.5; RT-22.02,2028-06-24,2028-06-24,FORMACION-E2,Recepción por etapa o control del periodo; no acredita ejecución,C07 13.3.5; RT-22.02
1.11.4.2.2.25.1,"Acompañamiento E2, ola 2, día 25, zona 1",1.11,E2 Marcha blanca,"Acompañamiento E2, ola 2, día 25, zona 1",Resultado de la ficha de familia y del paquete original; registro individual por código/ventana,"No duplicar padres, informes, ingeniería ni cobertura; no incluye horas de contraparte ni obras/adquisiciones del cliente","Registro diario, turno, zona, tarea, incidencia y relevo; 8 h presencia días 1--14, luego 4 h presencia +4 h preparación.",José Lara Arce,8,L:8,"Asignación y cuadrante integrado por código; entornos, usuarios y habilitaciones autorizados",C07 13.3.5; RT-22.02,2028-06-25,2028-06-25,FORMACION-E2,Recepción por etapa o control del periodo; no acredita ejecución,C07 13.3.5; RT-22.02
1.11.4.2.2.25.2,"Acompañamiento E2, ola 2, día 25, zona 2",1.11,E2 Marcha blanca,"Acompañamiento E2, ola 2, día 25, zona 2",Resultado de la ficha de familia y del paquete original; registro individual por código/ventana,"No duplicar padres, informes, ingeniería ni cobertura; no incluye horas de contraparte ni obras/adquisiciones del cliente","Registro diario, turno, zona, tarea, incidencia y relevo; 8 h presencia días 1--14, luego 4 h presencia +4 h preparación.",José Lara Arce,8,L:8,"Asignación y cuadrante integrado por código; entornos, usuarios y habilitaciones autorizados",C07 13.3.5; RT-22.02,2028-06-25,2028-06-25,FORMACION-E2,Recepción por etapa o control del periodo; no acredita ejecución,C07 13.3.5; RT-22.02
1.11.4.2.2.26.1,"Acompañamiento E2, ola 2, día 26, zona 1",1.11,E2 Marcha blanca,"Acompañamiento E2, ola 2, día 26, zona 1",Resultado de la ficha de familia y del paquete original; registro individual por código/ventana,"No duplicar padres, informes, ingeniería ni cobertura; no incluye horas de contraparte ni obras/adquisiciones del cliente","Registro diario, turno, zona, tarea, incidencia y relevo; 8 h presencia días 1--14, luego 4 h presencia +4 h preparación.",José Lara Arce,8,L:8,"Asignación y cuadrante integrado por código; entornos, usuarios y habilitaciones autorizados",C07 13.3.5; RT-22.02,2028-06-26,2028-06-26,FORMACION-E2,Recepción por etapa o control del periodo; no acredita ejecución,C07 13.3.5; RT-22.02
1.11.4.2.2.26.2,"Acompañamiento E2, ola 2, día 26, zona 2",1.11,E2 Marcha blanca,"Acompañamiento E2, ola 2, día 26, zona 2",Resultado de la ficha de familia y del paquete original; registro individual por código/ventana,"No duplicar padres, informes, ingeniería ni cobertura; no incluye horas de contraparte ni obras/adquisiciones del cliente","Registro diario, turno, zona, tarea, incidencia y relevo; 8 h presencia días 1--14, luego 4 h presencia +4 h preparación.",José Lara Arce,8,L:8,"Asignación y cuadrante integrado por código; entornos, usuarios y habilitaciones autorizados",C07 13.3.5; RT-22.02,2028-06-26,2028-06-26,FORMACION-E2,Recepción por etapa o control del periodo; no acredita ejecución,C07 13.3.5; RT-22.02
1.11.4.2.2.27.1,"Acompañamiento E2, ola 2, día 27, zona 1",1.11,E2 Marcha blanca,"Acompañamiento E2, ola 2, día 27, zona 1",Resultado de la ficha de familia y del paquete original; registro individual por código/ventana,"No duplicar padres, informes, ingeniería ni cobertura; no incluye horas de contraparte ni obras/adquisiciones del cliente","Registro diario, turno, zona, tarea, incidencia y relevo; 8 h presencia días 1--14, luego 4 h presencia +4 h preparación.",José Lara Arce,8,L:8,"Asignación y cuadrante integrado por código; entornos, usuarios y habilitaciones autorizados",C07 13.3.5; RT-22.02,2028-06-27,2028-06-27,FORMACION-E2,Recepción por etapa o control del periodo; no acredita ejecución,C07 13.3.5; RT-22.02
1.11.4.2.2.27.2,"Acompañamiento E2, ola 2, día 27, zona 2",1.11,E2 Marcha blanca,"Acompañamiento E2, ola 2, día 27, zona 2",Resultado de la ficha de familia y del paquete original; registro individual por código/ventana,"No duplicar padres, informes, ingeniería ni cobertura; no incluye horas de contraparte ni obras/adquisiciones del cliente","Registro diario, turno, zona, tarea, incidencia y relevo; 8 h presencia días 1--14, luego 4 h presencia +4 h preparación.",José Lara Arce,8,L:8,"Asignación y cuadrante integrado por código; entornos, usuarios y habilitaciones autorizados",C07 13.3.5; RT-22.02,2028-06-27,2028-06-27,FORMACION-E2,Recepción por etapa o control del periodo; no acredita ejecución,C07 13.3.5; RT-22.02
1.11.4.2.2.28.1,"Acompañamiento E2, ola 2, día 28, zona 1",1.11,E2 Marcha blanca,"Acompañamiento E2, ola 2, día 28, zona 1",Resultado de la ficha de familia y del paquete original; registro individual por código/ventana,"No duplicar padres, informes, ingeniería ni cobertura; no incluye horas de contraparte ni obras/adquisiciones del cliente","Registro diario, turno, zona, tarea, incidencia y relevo; 8 h presencia días 1--14, luego 4 h presencia +4 h preparación.",José Lara Arce,8,L:8,"Asignación y cuadrante integrado por código; entornos, usuarios y habilitaciones autorizados",C07 13.3.5; RT-22.02,2028-06-28,2028-06-28,FORMACION-E2,Recepción por etapa o control del periodo; no acredita ejecución,C07 13.3.5; RT-22.02
1.11.4.2.2.28.2,"Acompañamiento E2, ola 2, día 28, zona 2",1.11,E2 Marcha blanca,"Acompañamiento E2, ola 2, día 28, zona 2",Resultado de la ficha de familia y del paquete original; registro individual por código/ventana,"No duplicar padres, informes, ingeniería ni cobertura; no incluye horas de contraparte ni obras/adquisiciones del cliente","Registro diario, turno, zona, tarea, incidencia y relevo; 8 h presencia días 1--14, luego 4 h presencia +4 h preparación.",José Lara Arce,8,L:8,"Asignación y cuadrante integrado por código; entornos, usuarios y habilitaciones autorizados",C07 13.3.5; RT-22.02,2028-06-28,2028-06-28,FORMACION-E2,Recepción por etapa o control del periodo; no acredita ejecución,C07 13.3.5; RT-22.02
1.11.4.2.3.1.1,"Acompañamiento E2, ola 3, día 1, zona 1",1.11,E2 Marcha blanca,"Acompañamiento E2, ola 3, día 1, zona 1",Resultado de la ficha de familia y del paquete original; registro individual por código/ventana,"No duplicar padres, informes, ingeniería ni cobertura; no incluye horas de contraparte ni obras/adquisiciones del cliente","Registro diario, turno, zona, tarea, incidencia y relevo; 8 h presencia días 1--14, luego 4 h presencia +4 h preparación.",José Lara Arce,8,L:8,"Asignación y cuadrante integrado por código; entornos, usuarios y habilitaciones autorizados",C07 13.3.5; RT-22.02,2028-06-01,2028-06-01,FORMACION-E2,Recepción por etapa o control del periodo; no acredita ejecución,C07 13.3.5; RT-22.02
1.11.4.2.3.1.2,"Acompañamiento E2, ola 3, día 1, zona 2",1.11,E2 Marcha blanca,"Acompañamiento E2, ola 3, día 1, zona 2",Resultado de la ficha de familia y del paquete original; registro individual por código/ventana,"No duplicar padres, informes, ingeniería ni cobertura; no incluye horas de contraparte ni obras/adquisiciones del cliente","Registro diario, turno, zona, tarea, incidencia y relevo; 8 h presencia días 1--14, luego 4 h presencia +4 h preparación.",José Lara Arce,8,L:8,"Asignación y cuadrante integrado por código; entornos, usuarios y habilitaciones autorizados",C07 13.3.5; RT-22.02,2028-06-01,2028-06-01,FORMACION-E2,Recepción por etapa o control del periodo; no acredita ejecución,C07 13.3.5; RT-22.02
1.11.4.2.3.2.1,"Acompañamiento E2, ola 3, día 2, zona 1",1.11,E2 Marcha blanca,"Acompañamiento E2, ola 3, día 2, zona 1",Resultado de la ficha de familia y del paquete original; registro individual por código/ventana,"No duplicar padres, informes, ingeniería ni cobertura; no incluye horas de contraparte ni obras/adquisiciones del cliente","Registro diario, turno, zona, tarea, incidencia y relevo; 8 h presencia días 1--14, luego 4 h presencia +4 h preparación.",José Lara Arce,8,L:8,"Asignación y cuadrante integrado por código; entornos, usuarios y habilitaciones autorizados",C07 13.3.5; RT-22.02,2028-06-02,2028-06-02,FORMACION-E2,Recepción por etapa o control del periodo; no acredita ejecución,C07 13.3.5; RT-22.02
1.11.4.2.3.2.2,"Acompañamiento E2, ola 3, día 2, zona 2",1.11,E2 Marcha blanca,"Acompañamiento E2, ola 3, día 2, zona 2",Resultado de la ficha de familia y del paquete original; registro individual por código/ventana,"No duplicar padres, informes, ingeniería ni cobertura; no incluye horas de contraparte ni obras/adquisiciones del cliente","Registro diario, turno, zona, tarea, incidencia y relevo; 8 h presencia días 1--14, luego 4 h presencia +4 h preparación.",José Lara Arce,8,L:8,"Asignación y cuadrante integrado por código; entornos, usuarios y habilitaciones autorizados",C07 13.3.5; RT-22.02,2028-06-02,2028-06-02,FORMACION-E2,Recepción por etapa o control del periodo; no acredita ejecución,C07 13.3.5; RT-22.02
1.11.4.2.3.3.1,"Acompañamiento E2, ola 3, día 3, zona 1",1.11,E2 Marcha blanca,"Acompañamiento E2, ola 3, día 3, zona 1",Resultado de la ficha de familia y del paquete original; registro individual por código/ventana,"No duplicar padres, informes, ingeniería ni cobertura; no incluye horas de contraparte ni obras/adquisiciones del cliente","Registro diario, turno, zona, tarea, incidencia y relevo; 8 h presencia días 1--14, luego 4 h presencia +4 h preparación.",José Lara Arce,8,L:8,"Asignación y cuadrante integrado por código; entornos, usuarios y habilitaciones autorizados",C07 13.3.5; RT-22.02,2028-06-03,2028-06-03,FORMACION-E2,Recepción por etapa o control del periodo; no acredita ejecución,C07 13.3.5; RT-22.02
1.11.4.2.3.3.2,"Acompañamiento E2, ola 3, día 3, zona 2",1.11,E2 Marcha blanca,"Acompañamiento E2, ola 3, día 3, zona 2",Resultado de la ficha de familia y del paquete original; registro individual por código/ventana,"No duplicar padres, informes, ingeniería ni cobertura; no incluye horas de contraparte ni obras/adquisiciones del cliente","Registro diario, turno, zona, tarea, incidencia y relevo; 8 h presencia días 1--14, luego 4 h presencia +4 h preparación.",José Lara Arce,8,L:8,"Asignación y cuadrante integrado por código; entornos, usuarios y habilitaciones autorizados",C07 13.3.5; RT-22.02,2028-06-03,2028-06-03,FORMACION-E2,Recepción por etapa o control del periodo; no acredita ejecución,C07 13.3.5; RT-22.02
1.11.4.2.3.4.1,"Acompañamiento E2, ola 3, día 4, zona 1",1.11,E2 Marcha blanca,"Acompañamiento E2, ola 3, día 4, zona 1",Resultado de la ficha de familia y del paquete original; registro individual por código/ventana,"No duplicar padres, informes, ingeniería ni cobertura; no incluye horas de contraparte ni obras/adquisiciones del cliente","Registro diario, turno, zona, tarea, incidencia y relevo; 8 h presencia días 1--14, luego 4 h presencia +4 h preparación.",José Lara Arce,8,L:8,"Asignación y cuadrante integrado por código; entornos, usuarios y habilitaciones autorizados",C07 13.3.5; RT-22.02,2028-06-04,2028-06-04,FORMACION-E2,Recepción por etapa o control del periodo; no acredita ejecución,C07 13.3.5; RT-22.02
1.11.4.2.3.4.2,"Acompañamiento E2, ola 3, día 4, zona 2",1.11,E2 Marcha blanca,"Acompañamiento E2, ola 3, día 4, zona 2",Resultado de la ficha de familia y del paquete original; registro individual por código/ventana,"No duplicar padres, informes, ingeniería ni cobertura; no incluye horas de contraparte ni obras/adquisiciones del cliente","Registro diario, turno, zona, tarea, incidencia y relevo; 8 h presencia días 1--14, luego 4 h presencia +4 h preparación.",José Lara Arce,8,L:8,"Asignación y cuadrante integrado por código; entornos, usuarios y habilitaciones autorizados",C07 13.3.5; RT-22.02,2028-06-04,2028-06-04,FORMACION-E2,Recepción por etapa o control del periodo; no acredita ejecución,C07 13.3.5; RT-22.02
1.11.4.2.3.5.1,"Acompañamiento E2, ola 3, día 5, zona 1",1.11,E2 Marcha blanca,"Acompañamiento E2, ola 3, día 5, zona 1",Resultado de la ficha de familia y del paquete original; registro individual por código/ventana,"No duplicar padres, informes, ingeniería ni cobertura; no incluye horas de contraparte ni obras/adquisiciones del cliente","Registro diario, turno, zona, tarea, incidencia y relevo; 8 h presencia días 1--14, luego 4 h presencia +4 h preparación.",José Lara Arce,8,L:8,"Asignación y cuadrante integrado por código; entornos, usuarios y habilitaciones autorizados",C07 13.3.5; RT-22.02,2028-06-05,2028-06-05,FORMACION-E2,Recepción por etapa o control del periodo; no acredita ejecución,C07 13.3.5; RT-22.02
1.11.4.2.3.5.2,"Acompañamiento E2, ola 3, día 5, zona 2",1.11,E2 Marcha blanca,"Acompañamiento E2, ola 3, día 5, zona 2",Resultado de la ficha de familia y del paquete original; registro individual por código/ventana,"No duplicar padres, informes, ingeniería ni cobertura; no incluye horas de contraparte ni obras/adquisiciones del cliente","Registro diario, turno, zona, tarea, incidencia y relevo; 8 h presencia días 1--14, luego 4 h presencia +4 h preparación.",José Lara Arce,8,L:8,"Asignación y cuadrante integrado por código; entornos, usuarios y habilitaciones autorizados",C07 13.3.5; RT-22.02,2028-06-05,2028-06-05,FORMACION-E2,Recepción por etapa o control del periodo; no acredita ejecución,C07 13.3.5; RT-22.02
1.11.4.2.3.6.1,"Acompañamiento E2, ola 3, día 6, zona 1",1.11,E2 Marcha blanca,"Acompañamiento E2, ola 3, día 6, zona 1",Resultado de la ficha de familia y del paquete original; registro individual por código/ventana,"No duplicar padres, informes, ingeniería ni cobertura; no incluye horas de contraparte ni obras/adquisiciones del cliente","Registro diario, turno, zona, tarea, incidencia y relevo; 8 h presencia días 1--14, luego 4 h presencia +4 h preparación.",José Lara Arce,8,L:8,"Asignación y cuadrante integrado por código; entornos, usuarios y habilitaciones autorizados",C07 13.3.5; RT-22.02,2028-06-06,2028-06-06,FORMACION-E2,Recepción por etapa o control del periodo; no acredita ejecución,C07 13.3.5; RT-22.02
1.11.4.2.3.6.2,"Acompañamiento E2, ola 3, día 6, zona 2",1.11,E2 Marcha blanca,"Acompañamiento E2, ola 3, día 6, zona 2",Resultado de la ficha de familia y del paquete original; registro individual por código/ventana,"No duplicar padres, informes, ingeniería ni cobertura; no incluye horas de contraparte ni obras/adquisiciones del cliente","Registro diario, turno, zona, tarea, incidencia y relevo; 8 h presencia días 1--14, luego 4 h presencia +4 h preparación.",José Lara Arce,8,L:8,"Asignación y cuadrante integrado por código; entornos, usuarios y habilitaciones autorizados",C07 13.3.5; RT-22.02,2028-06-06,2028-06-06,FORMACION-E2,Recepción por etapa o control del periodo; no acredita ejecución,C07 13.3.5; RT-22.02
1.11.4.2.3.7.1,"Acompañamiento E2, ola 3, día 7, zona 1",1.11,E2 Marcha blanca,"Acompañamiento E2, ola 3, día 7, zona 1",Resultado de la ficha de familia y del paquete original; registro individual por código/ventana,"No duplicar padres, informes, ingeniería ni cobertura; no incluye horas de contraparte ni obras/adquisiciones del cliente","Registro diario, turno, zona, tarea, incidencia y relevo; 8 h presencia días 1--14, luego 4 h presencia +4 h preparación.",José Lara Arce,8,L:8,"Asignación y cuadrante integrado por código; entornos, usuarios y habilitaciones autorizados",C07 13.3.5; RT-22.02,2028-06-07,2028-06-07,FORMACION-E2,Recepción por etapa o control del periodo; no acredita ejecución,C07 13.3.5; RT-22.02
1.11.4.2.3.7.2,"Acompañamiento E2, ola 3, día 7, zona 2",1.11,E2 Marcha blanca,"Acompañamiento E2, ola 3, día 7, zona 2",Resultado de la ficha de familia y del paquete original; registro individual por código/ventana,"No duplicar padres, informes, ingeniería ni cobertura; no incluye horas de contraparte ni obras/adquisiciones del cliente","Registro diario, turno, zona, tarea, incidencia y relevo; 8 h presencia días 1--14, luego 4 h presencia +4 h preparación.",José Lara Arce,8,L:8,"Asignación y cuadrante integrado por código; entornos, usuarios y habilitaciones autorizados",C07 13.3.5; RT-22.02,2028-06-07,2028-06-07,FORMACION-E2,Recepción por etapa o control del periodo; no acredita ejecución,C07 13.3.5; RT-22.02
1.11.4.2.3.8.1,"Acompañamiento E2, ola 3, día 8, zona 1",1.11,E2 Marcha blanca,"Acompañamiento E2, ola 3, día 8, zona 1",Resultado de la ficha de familia y del paquete original; registro individual por código/ventana,"No duplicar padres, informes, ingeniería ni cobertura; no incluye horas de contraparte ni obras/adquisiciones del cliente","Registro diario, turno, zona, tarea, incidencia y relevo; 8 h presencia días 1--14, luego 4 h presencia +4 h preparación.",José Lara Arce,8,L:8,"Asignación y cuadrante integrado por código; entornos, usuarios y habilitaciones autorizados",C07 13.3.5; RT-22.02,2028-06-08,2028-06-08,FORMACION-E2,Recepción por etapa o control del periodo; no acredita ejecución,C07 13.3.5; RT-22.02
1.11.4.2.3.8.2,"Acompañamiento E2, ola 3, día 8, zona 2",1.11,E2 Marcha blanca,"Acompañamiento E2, ola 3, día 8, zona 2",Resultado de la ficha de familia y del paquete original; registro individual por código/ventana,"No duplicar padres, informes, ingeniería ni cobertura; no incluye horas de contraparte ni obras/adquisiciones del cliente","Registro diario, turno, zona, tarea, incidencia y relevo; 8 h presencia días 1--14, luego 4 h presencia +4 h preparación.",José Lara Arce,8,L:8,"Asignación y cuadrante integrado por código; entornos, usuarios y habilitaciones autorizados",C07 13.3.5; RT-22.02,2028-06-08,2028-06-08,FORMACION-E2,Recepción por etapa o control del periodo; no acredita ejecución,C07 13.3.5; RT-22.02
1.11.4.2.3.9.1,"Acompañamiento E2, ola 3, día 9, zona 1",1.11,E2 Marcha blanca,"Acompañamiento E2, ola 3, día 9, zona 1",Resultado de la ficha de familia y del paquete original; registro individual por código/ventana,"No duplicar padres, informes, ingeniería ni cobertura; no incluye horas de contraparte ni obras/adquisiciones del cliente","Registro diario, turno, zona, tarea, incidencia y relevo; 8 h presencia días 1--14, luego 4 h presencia +4 h preparación.",José Lara Arce,8,L:8,"Asignación y cuadrante integrado por código; entornos, usuarios y habilitaciones autorizados",C07 13.3.5; RT-22.02,2028-06-09,2028-06-09,FORMACION-E2,Recepción por etapa o control del periodo; no acredita ejecución,C07 13.3.5; RT-22.02
1.11.4.2.3.9.2,"Acompañamiento E2, ola 3, día 9, zona 2",1.11,E2 Marcha blanca,"Acompañamiento E2, ola 3, día 9, zona 2",Resultado de la ficha de familia y del paquete original; registro individual por código/ventana,"No duplicar padres, informes, ingeniería ni cobertura; no incluye horas de contraparte ni obras/adquisiciones del cliente","Registro diario, turno, zona, tarea, incidencia y relevo; 8 h presencia días 1--14, luego 4 h presencia +4 h preparación.",José Lara Arce,8,L:8,"Asignación y cuadrante integrado por código; entornos, usuarios y habilitaciones autorizados",C07 13.3.5; RT-22.02,2028-06-09,2028-06-09,FORMACION-E2,Recepción por etapa o control del periodo; no acredita ejecución,C07 13.3.5; RT-22.02
1.11.4.2.3.10.1,"Acompañamiento E2, ola 3, día 10, zona 1",1.11,E2 Marcha blanca,"Acompañamiento E2, ola 3, día 10, zona 1",Resultado de la ficha de familia y del paquete original; registro individual por código/ventana,"No duplicar padres, informes, ingeniería ni cobertura; no incluye horas de contraparte ni obras/adquisiciones del cliente","Registro diario, turno, zona, tarea, incidencia y relevo; 8 h presencia días 1--14, luego 4 h presencia +4 h preparación.",José Lara Arce,8,L:8,"Asignación y cuadrante integrado por código; entornos, usuarios y habilitaciones autorizados",C07 13.3.5; RT-22.02,2028-06-10,2028-06-10,FORMACION-E2,Recepción por etapa o control del periodo; no acredita ejecución,C07 13.3.5; RT-22.02
1.11.4.2.3.10.2,"Acompañamiento E2, ola 3, día 10, zona 2",1.11,E2 Marcha blanca,"Acompañamiento E2, ola 3, día 10, zona 2",Resultado de la ficha de familia y del paquete original; registro individual por código/ventana,"No duplicar padres, informes, ingeniería ni cobertura; no incluye horas de contraparte ni obras/adquisiciones del cliente","Registro diario, turno, zona, tarea, incidencia y relevo; 8 h presencia días 1--14, luego 4 h presencia +4 h preparación.",José Lara Arce,8,L:8,"Asignación y cuadrante integrado por código; entornos, usuarios y habilitaciones autorizados",C07 13.3.5; RT-22.02,2028-06-10,2028-06-10,FORMACION-E2,Recepción por etapa o control del periodo; no acredita ejecución,C07 13.3.5; RT-22.02
1.11.4.2.3.11.1,"Acompañamiento E2, ola 3, día 11, zona 1",1.11,E2 Marcha blanca,"Acompañamiento E2, ola 3, día 11, zona 1",Resultado de la ficha de familia y del paquete original; registro individual por código/ventana,"No duplicar padres, informes, ingeniería ni cobertura; no incluye horas de contraparte ni obras/adquisiciones del cliente","Registro diario, turno, zona, tarea, incidencia y relevo; 8 h presencia días 1--14, luego 4 h presencia +4 h preparación.",José Lara Arce,8,L:8,"Asignación y cuadrante integrado por código; entornos, usuarios y habilitaciones autorizados",C07 13.3.5; RT-22.02,2028-06-11,2028-06-11,FORMACION-E2,Recepción por etapa o control del periodo; no acredita ejecución,C07 13.3.5; RT-22.02
1.11.4.2.3.11.2,"Acompañamiento E2, ola 3, día 11, zona 2",1.11,E2 Marcha blanca,"Acompañamiento E2, ola 3, día 11, zona 2",Resultado de la ficha de familia y del paquete original; registro individual por código/ventana,"No duplicar padres, informes, ingeniería ni cobertura; no incluye horas de contraparte ni obras/adquisiciones del cliente","Registro diario, turno, zona, tarea, incidencia y relevo; 8 h presencia días 1--14, luego 4 h presencia +4 h preparación.",José Lara Arce,8,L:8,"Asignación y cuadrante integrado por código; entornos, usuarios y habilitaciones autorizados",C07 13.3.5; RT-22.02,2028-06-11,2028-06-11,FORMACION-E2,Recepción por etapa o control del periodo; no acredita ejecución,C07 13.3.5; RT-22.02
1.11.4.2.3.12.1,"Acompañamiento E2, ola 3, día 12, zona 1",1.11,E2 Marcha blanca,"Acompañamiento E2, ola 3, día 12, zona 1",Resultado de la ficha de familia y del paquete original; registro individual por código/ventana,"No duplicar padres, informes, ingeniería ni cobertura; no incluye horas de contraparte ni obras/adquisiciones del cliente","Registro diario, turno, zona, tarea, incidencia y relevo; 8 h presencia días 1--14, luego 4 h presencia +4 h preparación.",José Lara Arce,8,L:8,"Asignación y cuadrante integrado por código; entornos, usuarios y habilitaciones autorizados",C07 13.3.5; RT-22.02,2028-06-12,2028-06-12,FORMACION-E2,Recepción por etapa o control del periodo; no acredita ejecución,C07 13.3.5; RT-22.02
1.11.4.2.3.12.2,"Acompañamiento E2, ola 3, día 12, zona 2",1.11,E2 Marcha blanca,"Acompañamiento E2, ola 3, día 12, zona 2",Resultado de la ficha de familia y del paquete original; registro individual por código/ventana,"No duplicar padres, informes, ingeniería ni cobertura; no incluye horas de contraparte ni obras/adquisiciones del cliente","Registro diario, turno, zona, tarea, incidencia y relevo; 8 h presencia días 1--14, luego 4 h presencia +4 h preparación.",José Lara Arce,8,L:8,"Asignación y cuadrante integrado por código; entornos, usuarios y habilitaciones autorizados",C07 13.3.5; RT-22.02,2028-06-12,2028-06-12,FORMACION-E2,Recepción por etapa o control del periodo; no acredita ejecución,C07 13.3.5; RT-22.02
1.11.4.2.3.13.1,"Acompañamiento E2, ola 3, día 13, zona 1",1.11,E2 Marcha blanca,"Acompañamiento E2, ola 3, día 13, zona 1",Resultado de la ficha de familia y del paquete original; registro individual por código/ventana,"No duplicar padres, informes, ingeniería ni cobertura; no incluye horas de contraparte ni obras/adquisiciones del cliente","Registro diario, turno, zona, tarea, incidencia y relevo; 8 h presencia días 1--14, luego 4 h presencia +4 h preparación.",José Lara Arce,8,L:8,"Asignación y cuadrante integrado por código; entornos, usuarios y habilitaciones autorizados",C07 13.3.5; RT-22.02,2028-06-13,2028-06-13,FORMACION-E2,Recepción por etapa o control del periodo; no acredita ejecución,C07 13.3.5; RT-22.02
1.11.4.2.3.13.2,"Acompañamiento E2, ola 3, día 13, zona 2",1.11,E2 Marcha blanca,"Acompañamiento E2, ola 3, día 13, zona 2",Resultado de la ficha de familia y del paquete original; registro individual por código/ventana,"No duplicar padres, informes, ingeniería ni cobertura; no incluye horas de contraparte ni obras/adquisiciones del cliente","Registro diario, turno, zona, tarea, incidencia y relevo; 8 h presencia días 1--14, luego 4 h presencia +4 h preparación.",José Lara Arce,8,L:8,"Asignación y cuadrante integrado por código; entornos, usuarios y habilitaciones autorizados",C07 13.3.5; RT-22.02,2028-06-13,2028-06-13,FORMACION-E2,Recepción por etapa o control del periodo; no acredita ejecución,C07 13.3.5; RT-22.02
1.11.4.2.3.14.1,"Acompañamiento E2, ola 3, día 14, zona 1",1.11,E2 Marcha blanca,"Acompañamiento E2, ola 3, día 14, zona 1",Resultado de la ficha de familia y del paquete original; registro individual por código/ventana,"No duplicar padres, informes, ingeniería ni cobertura; no incluye horas de contraparte ni obras/adquisiciones del cliente","Registro diario, turno, zona, tarea, incidencia y relevo; 8 h presencia días 1--14, luego 4 h presencia +4 h preparación.",José Lara Arce,8,L:8,"Asignación y cuadrante integrado por código; entornos, usuarios y habilitaciones autorizados",C07 13.3.5; RT-22.02,2028-06-14,2028-06-14,FORMACION-E2,Recepción por etapa o control del periodo; no acredita ejecución,C07 13.3.5; RT-22.02
1.11.4.2.3.14.2,"Acompañamiento E2, ola 3, día 14, zona 2",1.11,E2 Marcha blanca,"Acompañamiento E2, ola 3, día 14, zona 2",Resultado de la ficha de familia y del paquete original; registro individual por código/ventana,"No duplicar padres, informes, ingeniería ni cobertura; no incluye horas de contraparte ni obras/adquisiciones del cliente","Registro diario, turno, zona, tarea, incidencia y relevo; 8 h presencia días 1--14, luego 4 h presencia +4 h preparación.",José Lara Arce,8,L:8,"Asignación y cuadrante integrado por código; entornos, usuarios y habilitaciones autorizados",C07 13.3.5; RT-22.02,2028-06-14,2028-06-14,FORMACION-E2,Recepción por etapa o control del periodo; no acredita ejecución,C07 13.3.5; RT-22.02
1.11.4.2.3.15.1,"Acompañamiento E2, ola 3, día 15, zona 1",1.11,E2 Marcha blanca,"Acompañamiento E2, ola 3, día 15, zona 1",Resultado de la ficha de familia y del paquete original; registro individual por código/ventana,"No duplicar padres, informes, ingeniería ni cobertura; no incluye horas de contraparte ni obras/adquisiciones del cliente","Registro diario, turno, zona, tarea, incidencia y relevo; 8 h presencia días 1--14, luego 4 h presencia +4 h preparación.",José Lara Arce,8,L:8,"Asignación y cuadrante integrado por código; entornos, usuarios y habilitaciones autorizados",C07 13.3.5; RT-22.02,2028-06-15,2028-06-15,FORMACION-E2,Recepción por etapa o control del periodo; no acredita ejecución,C07 13.3.5; RT-22.02
1.11.4.2.3.15.2,"Acompañamiento E2, ola 3, día 15, zona 2",1.11,E2 Marcha blanca,"Acompañamiento E2, ola 3, día 15, zona 2",Resultado de la ficha de familia y del paquete original; registro individual por código/ventana,"No duplicar padres, informes, ingeniería ni cobertura; no incluye horas de contraparte ni obras/adquisiciones del cliente","Registro diario, turno, zona, tarea, incidencia y relevo; 8 h presencia días 1--14, luego 4 h presencia +4 h preparación.",José Lara Arce,8,L:8,"Asignación y cuadrante integrado por código; entornos, usuarios y habilitaciones autorizados",C07 13.3.5; RT-22.02,2028-06-15,2028-06-15,FORMACION-E2,Recepción por etapa o control del periodo; no acredita ejecución,C07 13.3.5; RT-22.02
1.11.4.2.3.16.1,"Acompañamiento E2, ola 3, día 16, zona 1",1.11,E2 Marcha blanca,"Acompañamiento E2, ola 3, día 16, zona 1",Resultado de la ficha de familia y del paquete original; registro individual por código/ventana,"No duplicar padres, informes, ingeniería ni cobertura; no incluye horas de contraparte ni obras/adquisiciones del cliente","Registro diario, turno, zona, tarea, incidencia y relevo; 8 h presencia días 1--14, luego 4 h presencia +4 h preparación.",José Lara Arce,8,L:8,"Asignación y cuadrante integrado por código; entornos, usuarios y habilitaciones autorizados",C07 13.3.5; RT-22.02,2028-06-16,2028-06-16,FORMACION-E2,Recepción por etapa o control del periodo; no acredita ejecución,C07 13.3.5; RT-22.02
1.11.4.2.3.16.2,"Acompañamiento E2, ola 3, día 16, zona 2",1.11,E2 Marcha blanca,"Acompañamiento E2, ola 3, día 16, zona 2",Resultado de la ficha de familia y del paquete original; registro individual por código/ventana,"No duplicar padres, informes, ingeniería ni cobertura; no incluye horas de contraparte ni obras/adquisiciones del cliente","Registro diario, turno, zona, tarea, incidencia y relevo; 8 h presencia días 1--14, luego 4 h presencia +4 h preparación.",José Lara Arce,8,L:8,"Asignación y cuadrante integrado por código; entornos, usuarios y habilitaciones autorizados",C07 13.3.5; RT-22.02,2028-06-16,2028-06-16,FORMACION-E2,Recepción por etapa o control del periodo; no acredita ejecución,C07 13.3.5; RT-22.02
1.11.4.2.3.17.1,"Acompañamiento E2, ola 3, día 17, zona 1",1.11,E2 Marcha blanca,"Acompañamiento E2, ola 3, día 17, zona 1",Resultado de la ficha de familia y del paquete original; registro individual por código/ventana,"No duplicar padres, informes, ingeniería ni cobertura; no incluye horas de contraparte ni obras/adquisiciones del cliente","Registro diario, turno, zona, tarea, incidencia y relevo; 8 h presencia días 1--14, luego 4 h presencia +4 h preparación.",José Lara Arce,8,L:8,"Asignación y cuadrante integrado por código; entornos, usuarios y habilitaciones autorizados",C07 13.3.5; RT-22.02,2028-06-17,2028-06-17,FORMACION-E2,Recepción por etapa o control del periodo; no acredita ejecución,C07 13.3.5; RT-22.02
1.11.4.2.3.17.2,"Acompañamiento E2, ola 3, día 17, zona 2",1.11,E2 Marcha blanca,"Acompañamiento E2, ola 3, día 17, zona 2",Resultado de la ficha de familia y del paquete original; registro individual por código/ventana,"No duplicar padres, informes, ingeniería ni cobertura; no incluye horas de contraparte ni obras/adquisiciones del cliente","Registro diario, turno, zona, tarea, incidencia y relevo; 8 h presencia días 1--14, luego 4 h presencia +4 h preparación.",José Lara Arce,8,L:8,"Asignación y cuadrante integrado por código; entornos, usuarios y habilitaciones autorizados",C07 13.3.5; RT-22.02,2028-06-17,2028-06-17,FORMACION-E2,Recepción por etapa o control del periodo; no acredita ejecución,C07 13.3.5; RT-22.02
1.11.4.2.3.18.1,"Acompañamiento E2, ola 3, día 18, zona 1",1.11,E2 Marcha blanca,"Acompañamiento E2, ola 3, día 18, zona 1",Resultado de la ficha de familia y del paquete original; registro individual por código/ventana,"No duplicar padres, informes, ingeniería ni cobertura; no incluye horas de contraparte ni obras/adquisiciones del cliente","Registro diario, turno, zona, tarea, incidencia y relevo; 8 h presencia días 1--14, luego 4 h presencia +4 h preparación.",José Lara Arce,8,L:8,"Asignación y cuadrante integrado por código; entornos, usuarios y habilitaciones autorizados",C07 13.3.5; RT-22.02,2028-06-18,2028-06-18,FORMACION-E2,Recepción por etapa o control del periodo; no acredita ejecución,C07 13.3.5; RT-22.02
1.11.4.2.3.18.2,"Acompañamiento E2, ola 3, día 18, zona 2",1.11,E2 Marcha blanca,"Acompañamiento E2, ola 3, día 18, zona 2",Resultado de la ficha de familia y del paquete original; registro individual por código/ventana,"No duplicar padres, informes, ingeniería ni cobertura; no incluye horas de contraparte ni obras/adquisiciones del cliente","Registro diario, turno, zona, tarea, incidencia y relevo; 8 h presencia días 1--14, luego 4 h presencia +4 h preparación.",José Lara Arce,8,L:8,"Asignación y cuadrante integrado por código; entornos, usuarios y habilitaciones autorizados",C07 13.3.5; RT-22.02,2028-06-18,2028-06-18,FORMACION-E2,Recepción por etapa o control del periodo; no acredita ejecución,C07 13.3.5; RT-22.02
1.11.4.2.3.19.1,"Acompañamiento E2, ola 3, día 19, zona 1",1.11,E2 Marcha blanca,"Acompañamiento E2, ola 3, día 19, zona 1",Resultado de la ficha de familia y del paquete original; registro individual por código/ventana,"No duplicar padres, informes, ingeniería ni cobertura; no incluye horas de contraparte ni obras/adquisiciones del cliente","Registro diario, turno, zona, tarea, incidencia y relevo; 8 h presencia días 1--14, luego 4 h presencia +4 h preparación.",José Lara Arce,8,L:8,"Asignación y cuadrante integrado por código; entornos, usuarios y habilitaciones autorizados",C07 13.3.5; RT-22.02,2028-06-19,2028-06-19,FORMACION-E2,Recepción por etapa o control del periodo; no acredita ejecución,C07 13.3.5; RT-22.02
1.11.4.2.3.19.2,"Acompañamiento E2, ola 3, día 19, zona 2",1.11,E2 Marcha blanca,"Acompañamiento E2, ola 3, día 19, zona 2",Resultado de la ficha de familia y del paquete original; registro individual por código/ventana,"No duplicar padres, informes, ingeniería ni cobertura; no incluye horas de contraparte ni obras/adquisiciones del cliente","Registro diario, turno, zona, tarea, incidencia y relevo; 8 h presencia días 1--14, luego 4 h presencia +4 h preparación.",José Lara Arce,8,L:8,"Asignación y cuadrante integrado por código; entornos, usuarios y habilitaciones autorizados",C07 13.3.5; RT-22.02,2028-06-19,2028-06-19,FORMACION-E2,Recepción por etapa o control del periodo; no acredita ejecución,C07 13.3.5; RT-22.02
1.11.4.2.3.20.1,"Acompañamiento E2, ola 3, día 20, zona 1",1.11,E2 Marcha blanca,"Acompañamiento E2, ola 3, día 20, zona 1",Resultado de la ficha de familia y del paquete original; registro individual por código/ventana,"No duplicar padres, informes, ingeniería ni cobertura; no incluye horas de contraparte ni obras/adquisiciones del cliente","Registro diario, turno, zona, tarea, incidencia y relevo; 8 h presencia días 1--14, luego 4 h presencia +4 h preparación.",José Lara Arce,8,L:8,"Asignación y cuadrante integrado por código; entornos, usuarios y habilitaciones autorizados",C07 13.3.5; RT-22.02,2028-06-20,2028-06-20,FORMACION-E2,Recepción por etapa o control del periodo; no acredita ejecución,C07 13.3.5; RT-22.02
1.11.4.2.3.20.2,"Acompañamiento E2, ola 3, día 20, zona 2",1.11,E2 Marcha blanca,"Acompañamiento E2, ola 3, día 20, zona 2",Resultado de la ficha de familia y del paquete original; registro individual por código/ventana,"No duplicar padres, informes, ingeniería ni cobertura; no incluye horas de contraparte ni obras/adquisiciones del cliente","Registro diario, turno, zona, tarea, incidencia y relevo; 8 h presencia días 1--14, luego 4 h presencia +4 h preparación.",José Lara Arce,8,L:8,"Asignación y cuadrante integrado por código; entornos, usuarios y habilitaciones autorizados",C07 13.3.5; RT-22.02,2028-06-20,2028-06-20,FORMACION-E2,Recepción por etapa o control del periodo; no acredita ejecución,C07 13.3.5; RT-22.02
1.11.4.2.3.21.1,"Acompañamiento E2, ola 3, día 21, zona 1",1.11,E2 Marcha blanca,"Acompañamiento E2, ola 3, día 21, zona 1",Resultado de la ficha de familia y del paquete original; registro individual por código/ventana,"No duplicar padres, informes, ingeniería ni cobertura; no incluye horas de contraparte ni obras/adquisiciones del cliente","Registro diario, turno, zona, tarea, incidencia y relevo; 8 h presencia días 1--14, luego 4 h presencia +4 h preparación.",José Lara Arce,8,L:8,"Asignación y cuadrante integrado por código; entornos, usuarios y habilitaciones autorizados",C07 13.3.5; RT-22.02,2028-06-21,2028-06-21,FORMACION-E2,Recepción por etapa o control del periodo; no acredita ejecución,C07 13.3.5; RT-22.02
1.11.4.2.3.21.2,"Acompañamiento E2, ola 3, día 21, zona 2",1.11,E2 Marcha blanca,"Acompañamiento E2, ola 3, día 21, zona 2",Resultado de la ficha de familia y del paquete original; registro individual por código/ventana,"No duplicar padres, informes, ingeniería ni cobertura; no incluye horas de contraparte ni obras/adquisiciones del cliente","Registro diario, turno, zona, tarea, incidencia y relevo; 8 h presencia días 1--14, luego 4 h presencia +4 h preparación.",José Lara Arce,8,L:8,"Asignación y cuadrante integrado por código; entornos, usuarios y habilitaciones autorizados",C07 13.3.5; RT-22.02,2028-06-21,2028-06-21,FORMACION-E2,Recepción por etapa o control del periodo; no acredita ejecución,C07 13.3.5; RT-22.02
1.11.4.2.3.22.1,"Acompañamiento E2, ola 3, día 22, zona 1",1.11,E2 Marcha blanca,"Acompañamiento E2, ola 3, día 22, zona 1",Resultado de la ficha de familia y del paquete original; registro individual por código/ventana,"No duplicar padres, informes, ingeniería ni cobertura; no incluye horas de contraparte ni obras/adquisiciones del cliente","Registro diario, turno, zona, tarea, incidencia y relevo; 8 h presencia días 1--14, luego 4 h presencia +4 h preparación.",José Lara Arce,8,L:8,"Asignación y cuadrante integrado por código; entornos, usuarios y habilitaciones autorizados",C07 13.3.5; RT-22.02,2028-06-22,2028-06-22,FORMACION-E2,Recepción por etapa o control del periodo; no acredita ejecución,C07 13.3.5; RT-22.02
1.11.4.2.3.22.2,"Acompañamiento E2, ola 3, día 22, zona 2",1.11,E2 Marcha blanca,"Acompañamiento E2, ola 3, día 22, zona 2",Resultado de la ficha de familia y del paquete original; registro individual por código/ventana,"No duplicar padres, informes, ingeniería ni cobertura; no incluye horas de contraparte ni obras/adquisiciones del cliente","Registro diario, turno, zona, tarea, incidencia y relevo; 8 h presencia días 1--14, luego 4 h presencia +4 h preparación.",José Lara Arce,8,L:8,"Asignación y cuadrante integrado por código; entornos, usuarios y habilitaciones autorizados",C07 13.3.5; RT-22.02,2028-06-22,2028-06-22,FORMACION-E2,Recepción por etapa o control del periodo; no acredita ejecución,C07 13.3.5; RT-22.02
1.11.4.2.3.23.1,"Acompañamiento E2, ola 3, día 23, zona 1",1.11,E2 Marcha blanca,"Acompañamiento E2, ola 3, día 23, zona 1",Resultado de la ficha de familia y del paquete original; registro individual por código/ventana,"No duplicar padres, informes, ingeniería ni cobertura; no incluye horas de contraparte ni obras/adquisiciones del cliente","Registro diario, turno, zona, tarea, incidencia y relevo; 8 h presencia días 1--14, luego 4 h presencia +4 h preparación.",José Lara Arce,8,L:8,"Asignación y cuadrante integrado por código; entornos, usuarios y habilitaciones autorizados",C07 13.3.5; RT-22.02,2028-06-23,2028-06-23,FORMACION-E2,Recepción por etapa o control del periodo; no acredita ejecución,C07 13.3.5; RT-22.02
1.11.4.2.3.23.2,"Acompañamiento E2, ola 3, día 23, zona 2",1.11,E2 Marcha blanca,"Acompañamiento E2, ola 3, día 23, zona 2",Resultado de la ficha de familia y del paquete original; registro individual por código/ventana,"No duplicar padres, informes, ingeniería ni cobertura; no incluye horas de contraparte ni obras/adquisiciones del cliente","Registro diario, turno, zona, tarea, incidencia y relevo; 8 h presencia días 1--14, luego 4 h presencia +4 h preparación.",José Lara Arce,8,L:8,"Asignación y cuadrante integrado por código; entornos, usuarios y habilitaciones autorizados",C07 13.3.5; RT-22.02,2028-06-23,2028-06-23,FORMACION-E2,Recepción por etapa o control del periodo; no acredita ejecución,C07 13.3.5; RT-22.02
1.11.4.2.3.24.1,"Acompañamiento E2, ola 3, día 24, zona 1",1.11,E2 Marcha blanca,"Acompañamiento E2, ola 3, día 24, zona 1",Resultado de la ficha de familia y del paquete original; registro individual por código/ventana,"No duplicar padres, informes, ingeniería ni cobertura; no incluye horas de contraparte ni obras/adquisiciones del cliente","Registro diario, turno, zona, tarea, incidencia y relevo; 8 h presencia días 1--14, luego 4 h presencia +4 h preparación.",José Lara Arce,8,L:8,"Asignación y cuadrante integrado por código; entornos, usuarios y habilitaciones autorizados",C07 13.3.5; RT-22.02,2028-06-24,2028-06-24,FORMACION-E2,Recepción por etapa o control del periodo; no acredita ejecución,C07 13.3.5; RT-22.02
1.11.4.2.3.24.2,"Acompañamiento E2, ola 3, día 24, zona 2",1.11,E2 Marcha blanca,"Acompañamiento E2, ola 3, día 24, zona 2",Resultado de la ficha de familia y del paquete original; registro individual por código/ventana,"No duplicar padres, informes, ingeniería ni cobertura; no incluye horas de contraparte ni obras/adquisiciones del cliente","Registro diario, turno, zona, tarea, incidencia y relevo; 8 h presencia días 1--14, luego 4 h presencia +4 h preparación.",José Lara Arce,8,L:8,"Asignación y cuadrante integrado por código; entornos, usuarios y habilitaciones autorizados",C07 13.3.5; RT-22.02,2028-06-24,2028-06-24,FORMACION-E2,Recepción por etapa o control del periodo; no acredita ejecución,C07 13.3.5; RT-22.02
1.11.4.2.3.25.1,"Acompañamiento E2, ola 3, día 25, zona 1",1.11,E2 Marcha blanca,"Acompañamiento E2, ola 3, día 25, zona 1",Resultado de la ficha de familia y del paquete original; registro individual por código/ventana,"No duplicar padres, informes, ingeniería ni cobertura; no incluye horas de contraparte ni obras/adquisiciones del cliente","Registro diario, turno, zona, tarea, incidencia y relevo; 8 h presencia días 1--14, luego 4 h presencia +4 h preparación.",José Lara Arce,8,L:8,"Asignación y cuadrante integrado por código; entornos, usuarios y habilitaciones autorizados",C07 13.3.5; RT-22.02,2028-06-25,2028-06-25,FORMACION-E2,Recepción por etapa o control del periodo; no acredita ejecución,C07 13.3.5; RT-22.02
1.11.4.2.3.25.2,"Acompañamiento E2, ola 3, día 25, zona 2",1.11,E2 Marcha blanca,"Acompañamiento E2, ola 3, día 25, zona 2",Resultado de la ficha de familia y del paquete original; registro individual por código/ventana,"No duplicar padres, informes, ingeniería ni cobertura; no incluye horas de contraparte ni obras/adquisiciones del cliente","Registro diario, turno, zona, tarea, incidencia y relevo; 8 h presencia días 1--14, luego 4 h presencia +4 h preparación.",José Lara Arce,8,L:8,"Asignación y cuadrante integrado por código; entornos, usuarios y habilitaciones autorizados",C07 13.3.5; RT-22.02,2028-06-25,2028-06-25,FORMACION-E2,Recepción por etapa o control del periodo; no acredita ejecución,C07 13.3.5; RT-22.02
1.11.4.2.3.26.1,"Acompañamiento E2, ola 3, día 26, zona 1",1.11,E2 Marcha blanca,"Acompañamiento E2, ola 3, día 26, zona 1",Resultado de la ficha de familia y del paquete original; registro individual por código/ventana,"No duplicar padres, informes, ingeniería ni cobertura; no incluye horas de contraparte ni obras/adquisiciones del cliente","Registro diario, turno, zona, tarea, incidencia y relevo; 8 h presencia días 1--14, luego 4 h presencia +4 h preparación.",José Lara Arce,8,L:8,"Asignación y cuadrante integrado por código; entornos, usuarios y habilitaciones autorizados",C07 13.3.5; RT-22.02,2028-06-26,2028-06-26,FORMACION-E2,Recepción por etapa o control del periodo; no acredita ejecución,C07 13.3.5; RT-22.02
1.11.4.2.3.26.2,"Acompañamiento E2, ola 3, día 26, zona 2",1.11,E2 Marcha blanca,"Acompañamiento E2, ola 3, día 26, zona 2",Resultado de la ficha de familia y del paquete original; registro individual por código/ventana,"No duplicar padres, informes, ingeniería ni cobertura; no incluye horas de contraparte ni obras/adquisiciones del cliente","Registro diario, turno, zona, tarea, incidencia y relevo; 8 h presencia días 1--14, luego 4 h presencia +4 h preparación.",José Lara Arce,8,L:8,"Asignación y cuadrante integrado por código; entornos, usuarios y habilitaciones autorizados",C07 13.3.5; RT-22.02,2028-06-26,2028-06-26,FORMACION-E2,Recepción por etapa o control del periodo; no acredita ejecución,C07 13.3.5; RT-22.02
1.11.4.2.3.27.1,"Acompañamiento E2, ola 3, día 27, zona 1",1.11,E2 Marcha blanca,"Acompañamiento E2, ola 3, día 27, zona 1",Resultado de la ficha de familia y del paquete original; registro individual por código/ventana,"No duplicar padres, informes, ingeniería ni cobertura; no incluye horas de contraparte ni obras/adquisiciones del cliente","Registro diario, turno, zona, tarea, incidencia y relevo; 8 h presencia días 1--14, luego 4 h presencia +4 h preparación.",José Lara Arce,8,L:8,"Asignación y cuadrante integrado por código; entornos, usuarios y habilitaciones autorizados",C07 13.3.5; RT-22.02,2028-06-27,2028-06-27,FORMACION-E2,Recepción por etapa o control del periodo; no acredita ejecución,C07 13.3.5; RT-22.02
1.11.4.2.3.27.2,"Acompañamiento E2, ola 3, día 27, zona 2",1.11,E2 Marcha blanca,"Acompañamiento E2, ola 3, día 27, zona 2",Resultado de la ficha de familia y del paquete original; registro individual por código/ventana,"No duplicar padres, informes, ingeniería ni cobertura; no incluye horas de contraparte ni obras/adquisiciones del cliente","Registro diario, turno, zona, tarea, incidencia y relevo; 8 h presencia días 1--14, luego 4 h presencia +4 h preparación.",José Lara Arce,8,L:8,"Asignación y cuadrante integrado por código; entornos, usuarios y habilitaciones autorizados",C07 13.3.5; RT-22.02,2028-06-27,2028-06-27,FORMACION-E2,Recepción por etapa o control del periodo; no acredita ejecución,C07 13.3.5; RT-22.02
1.11.4.2.3.28.1,"Acompañamiento E2, ola 3, día 28, zona 1",1.11,E2 Marcha blanca,"Acompañamiento E2, ola 3, día 28, zona 1",Resultado de la ficha de familia y del paquete original; registro individual por código/ventana,"No duplicar padres, informes, ingeniería ni cobertura; no incluye horas de contraparte ni obras/adquisiciones del cliente","Registro diario, turno, zona, tarea, incidencia y relevo; 8 h presencia días 1--14, luego 4 h presencia +4 h preparación.",José Lara Arce,8,L:8,"Asignación y cuadrante integrado por código; entornos, usuarios y habilitaciones autorizados",C07 13.3.5; RT-22.02,2028-06-28,2028-06-28,FORMACION-E2,Recepción por etapa o control del periodo; no acredita ejecución,C07 13.3.5; RT-22.02
1.11.4.2.3.28.2,"Acompañamiento E2, ola 3, día 28, zona 2",1.11,E2 Marcha blanca,"Acompañamiento E2, ola 3, día 28, zona 2",Resultado de la ficha de familia y del paquete original; registro individual por código/ventana,"No duplicar padres, informes, ingeniería ni cobertura; no incluye horas de contraparte ni obras/adquisiciones del cliente","Registro diario, turno, zona, tarea, incidencia y relevo; 8 h presencia días 1--14, luego 4 h presencia +4 h preparación.",José Lara Arce,8,L:8,"Asignación y cuadrante integrado por código; entornos, usuarios y habilitaciones autorizados",C07 13.3.5; RT-22.02,2028-06-28,2028-06-28,FORMACION-E2,Recepción por etapa o control del periodo; no acredita ejecución,C07 13.3.5; RT-22.02
1.11.4.2.4.1.1,"Acompañamiento E2, ola 4, día 1, zona 1",1.11,E2 Marcha blanca,"Acompañamiento E2, ola 4, día 1, zona 1",Resultado de la ficha de familia y del paquete original; registro individual por código/ventana,"No duplicar padres, informes, ingeniería ni cobertura; no incluye horas de contraparte ni obras/adquisiciones del cliente","Registro diario, turno, zona, tarea, incidencia y relevo; 8 h presencia días 1--14, luego 4 h presencia +4 h preparación.",José Lara Arce,8,L:8,"Asignación y cuadrante integrado por código; entornos, usuarios y habilitaciones autorizados",C07 13.3.5; RT-22.02,2028-06-01,2028-06-01,FORMACION-E2,Recepción por etapa o control del periodo; no acredita ejecución,C07 13.3.5; RT-22.02
1.11.4.2.4.1.2,"Acompañamiento E2, ola 4, día 1, zona 2",1.11,E2 Marcha blanca,"Acompañamiento E2, ola 4, día 1, zona 2",Resultado de la ficha de familia y del paquete original; registro individual por código/ventana,"No duplicar padres, informes, ingeniería ni cobertura; no incluye horas de contraparte ni obras/adquisiciones del cliente","Registro diario, turno, zona, tarea, incidencia y relevo; 8 h presencia días 1--14, luego 4 h presencia +4 h preparación.",José Lara Arce,8,L:8,"Asignación y cuadrante integrado por código; entornos, usuarios y habilitaciones autorizados",C07 13.3.5; RT-22.02,2028-06-01,2028-06-01,FORMACION-E2,Recepción por etapa o control del periodo; no acredita ejecución,C07 13.3.5; RT-22.02
1.11.4.2.4.2.1,"Acompañamiento E2, ola 4, día 2, zona 1",1.11,E2 Marcha blanca,"Acompañamiento E2, ola 4, día 2, zona 1",Resultado de la ficha de familia y del paquete original; registro individual por código/ventana,"No duplicar padres, informes, ingeniería ni cobertura; no incluye horas de contraparte ni obras/adquisiciones del cliente","Registro diario, turno, zona, tarea, incidencia y relevo; 8 h presencia días 1--14, luego 4 h presencia +4 h preparación.",José Lara Arce,8,L:8,"Asignación y cuadrante integrado por código; entornos, usuarios y habilitaciones autorizados",C07 13.3.5; RT-22.02,2028-06-02,2028-06-02,FORMACION-E2,Recepción por etapa o control del periodo; no acredita ejecución,C07 13.3.5; RT-22.02
1.11.4.2.4.2.2,"Acompañamiento E2, ola 4, día 2, zona 2",1.11,E2 Marcha blanca,"Acompañamiento E2, ola 4, día 2, zona 2",Resultado de la ficha de familia y del paquete original; registro individual por código/ventana,"No duplicar padres, informes, ingeniería ni cobertura; no incluye horas de contraparte ni obras/adquisiciones del cliente","Registro diario, turno, zona, tarea, incidencia y relevo; 8 h presencia días 1--14, luego 4 h presencia +4 h preparación.",José Lara Arce,8,L:8,"Asignación y cuadrante integrado por código; entornos, usuarios y habilitaciones autorizados",C07 13.3.5; RT-22.02,2028-06-02,2028-06-02,FORMACION-E2,Recepción por etapa o control del periodo; no acredita ejecución,C07 13.3.5; RT-22.02
1.11.4.2.4.3.1,"Acompañamiento E2, ola 4, día 3, zona 1",1.11,E2 Marcha blanca,"Acompañamiento E2, ola 4, día 3, zona 1",Resultado de la ficha de familia y del paquete original; registro individual por código/ventana,"No duplicar padres, informes, ingeniería ni cobertura; no incluye horas de contraparte ni obras/adquisiciones del cliente","Registro diario, turno, zona, tarea, incidencia y relevo; 8 h presencia días 1--14, luego 4 h presencia +4 h preparación.",José Lara Arce,8,L:8,"Asignación y cuadrante integrado por código; entornos, usuarios y habilitaciones autorizados",C07 13.3.5; RT-22.02,2028-06-03,2028-06-03,FORMACION-E2,Recepción por etapa o control del periodo; no acredita ejecución,C07 13.3.5; RT-22.02
1.11.4.2.4.3.2,"Acompañamiento E2, ola 4, día 3, zona 2",1.11,E2 Marcha blanca,"Acompañamiento E2, ola 4, día 3, zona 2",Resultado de la ficha de familia y del paquete original; registro individual por código/ventana,"No duplicar padres, informes, ingeniería ni cobertura; no incluye horas de contraparte ni obras/adquisiciones del cliente","Registro diario, turno, zona, tarea, incidencia y relevo; 8 h presencia días 1--14, luego 4 h presencia +4 h preparación.",José Lara Arce,8,L:8,"Asignación y cuadrante integrado por código; entornos, usuarios y habilitaciones autorizados",C07 13.3.5; RT-22.02,2028-06-03,2028-06-03,FORMACION-E2,Recepción por etapa o control del periodo; no acredita ejecución,C07 13.3.5; RT-22.02
1.11.4.2.4.4.1,"Acompañamiento E2, ola 4, día 4, zona 1",1.11,E2 Marcha blanca,"Acompañamiento E2, ola 4, día 4, zona 1",Resultado de la ficha de familia y del paquete original; registro individual por código/ventana,"No duplicar padres, informes, ingeniería ni cobertura; no incluye horas de contraparte ni obras/adquisiciones del cliente","Registro diario, turno, zona, tarea, incidencia y relevo; 8 h presencia días 1--14, luego 4 h presencia +4 h preparación.",José Lara Arce,8,L:8,"Asignación y cuadrante integrado por código; entornos, usuarios y habilitaciones autorizados",C07 13.3.5; RT-22.02,2028-06-04,2028-06-04,FORMACION-E2,Recepción por etapa o control del periodo; no acredita ejecución,C07 13.3.5; RT-22.02
1.11.4.2.4.4.2,"Acompañamiento E2, ola 4, día 4, zona 2",1.11,E2 Marcha blanca,"Acompañamiento E2, ola 4, día 4, zona 2",Resultado de la ficha de familia y del paquete original; registro individual por código/ventana,"No duplicar padres, informes, ingeniería ni cobertura; no incluye horas de contraparte ni obras/adquisiciones del cliente","Registro diario, turno, zona, tarea, incidencia y relevo; 8 h presencia días 1--14, luego 4 h presencia +4 h preparación.",José Lara Arce,8,L:8,"Asignación y cuadrante integrado por código; entornos, usuarios y habilitaciones autorizados",C07 13.3.5; RT-22.02,2028-06-04,2028-06-04,FORMACION-E2,Recepción por etapa o control del periodo; no acredita ejecución,C07 13.3.5; RT-22.02
1.11.4.2.4.5.1,"Acompañamiento E2, ola 4, día 5, zona 1",1.11,E2 Marcha blanca,"Acompañamiento E2, ola 4, día 5, zona 1",Resultado de la ficha de familia y del paquete original; registro individual por código/ventana,"No duplicar padres, informes, ingeniería ni cobertura; no incluye horas de contraparte ni obras/adquisiciones del cliente","Registro diario, turno, zona, tarea, incidencia y relevo; 8 h presencia días 1--14, luego 4 h presencia +4 h preparación.",José Lara Arce,8,L:8,"Asignación y cuadrante integrado por código; entornos, usuarios y habilitaciones autorizados",C07 13.3.5; RT-22.02,2028-06-05,2028-06-05,FORMACION-E2,Recepción por etapa o control del periodo; no acredita ejecución,C07 13.3.5; RT-22.02
1.11.4.2.4.5.2,"Acompañamiento E2, ola 4, día 5, zona 2",1.11,E2 Marcha blanca,"Acompañamiento E2, ola 4, día 5, zona 2",Resultado de la ficha de familia y del paquete original; registro individual por código/ventana,"No duplicar padres, informes, ingeniería ni cobertura; no incluye horas de contraparte ni obras/adquisiciones del cliente","Registro diario, turno, zona, tarea, incidencia y relevo; 8 h presencia días 1--14, luego 4 h presencia +4 h preparación.",José Lara Arce,8,L:8,"Asignación y cuadrante integrado por código; entornos, usuarios y habilitaciones autorizados",C07 13.3.5; RT-22.02,2028-06-05,2028-06-05,FORMACION-E2,Recepción por etapa o control del periodo; no acredita ejecución,C07 13.3.5; RT-22.02
1.11.4.2.4.6.1,"Acompañamiento E2, ola 4, día 6, zona 1",1.11,E2 Marcha blanca,"Acompañamiento E2, ola 4, día 6, zona 1",Resultado de la ficha de familia y del paquete original; registro individual por código/ventana,"No duplicar padres, informes, ingeniería ni cobertura; no incluye horas de contraparte ni obras/adquisiciones del cliente","Registro diario, turno, zona, tarea, incidencia y relevo; 8 h presencia días 1--14, luego 4 h presencia +4 h preparación.",José Lara Arce,8,L:8,"Asignación y cuadrante integrado por código; entornos, usuarios y habilitaciones autorizados",C07 13.3.5; RT-22.02,2028-06-06,2028-06-06,FORMACION-E2,Recepción por etapa o control del periodo; no acredita ejecución,C07 13.3.5; RT-22.02
1.11.4.2.4.6.2,"Acompañamiento E2, ola 4, día 6, zona 2",1.11,E2 Marcha blanca,"Acompañamiento E2, ola 4, día 6, zona 2",Resultado de la ficha de familia y del paquete original; registro individual por código/ventana,"No duplicar padres, informes, ingeniería ni cobertura; no incluye horas de contraparte ni obras/adquisiciones del cliente","Registro diario, turno, zona, tarea, incidencia y relevo; 8 h presencia días 1--14, luego 4 h presencia +4 h preparación.",José Lara Arce,8,L:8,"Asignación y cuadrante integrado por código; entornos, usuarios y habilitaciones autorizados",C07 13.3.5; RT-22.02,2028-06-06,2028-06-06,FORMACION-E2,Recepción por etapa o control del periodo; no acredita ejecución,C07 13.3.5; RT-22.02
1.11.4.2.4.7.1,"Acompañamiento E2, ola 4, día 7, zona 1",1.11,E2 Marcha blanca,"Acompañamiento E2, ola 4, día 7, zona 1",Resultado de la ficha de familia y del paquete original; registro individual por código/ventana,"No duplicar padres, informes, ingeniería ni cobertura; no incluye horas de contraparte ni obras/adquisiciones del cliente","Registro diario, turno, zona, tarea, incidencia y relevo; 8 h presencia días 1--14, luego 4 h presencia +4 h preparación.",José Lara Arce,8,L:8,"Asignación y cuadrante integrado por código; entornos, usuarios y habilitaciones autorizados",C07 13.3.5; RT-22.02,2028-06-07,2028-06-07,FORMACION-E2,Recepción por etapa o control del periodo; no acredita ejecución,C07 13.3.5; RT-22.02
1.11.4.2.4.7.2,"Acompañamiento E2, ola 4, día 7, zona 2",1.11,E2 Marcha blanca,"Acompañamiento E2, ola 4, día 7, zona 2",Resultado de la ficha de familia y del paquete original; registro individual por código/ventana,"No duplicar padres, informes, ingeniería ni cobertura; no incluye horas de contraparte ni obras/adquisiciones del cliente","Registro diario, turno, zona, tarea, incidencia y relevo; 8 h presencia días 1--14, luego 4 h presencia +4 h preparación.",José Lara Arce,8,L:8,"Asignación y cuadrante integrado por código; entornos, usuarios y habilitaciones autorizados",C07 13.3.5; RT-22.02,2028-06-07,2028-06-07,FORMACION-E2,Recepción por etapa o control del periodo; no acredita ejecución,C07 13.3.5; RT-22.02
1.11.4.2.4.8.1,"Acompañamiento E2, ola 4, día 8, zona 1",1.11,E2 Marcha blanca,"Acompañamiento E2, ola 4, día 8, zona 1",Resultado de la ficha de familia y del paquete original; registro individual por código/ventana,"No duplicar padres, informes, ingeniería ni cobertura; no incluye horas de contraparte ni obras/adquisiciones del cliente","Registro diario, turno, zona, tarea, incidencia y relevo; 8 h presencia días 1--14, luego 4 h presencia +4 h preparación.",José Lara Arce,8,L:8,"Asignación y cuadrante integrado por código; entornos, usuarios y habilitaciones autorizados",C07 13.3.5; RT-22.02,2028-06-08,2028-06-08,FORMACION-E2,Recepción por etapa o control del periodo; no acredita ejecución,C07 13.3.5; RT-22.02
1.11.4.2.4.8.2,"Acompañamiento E2, ola 4, día 8, zona 2",1.11,E2 Marcha blanca,"Acompañamiento E2, ola 4, día 8, zona 2",Resultado de la ficha de familia y del paquete original; registro individual por código/ventana,"No duplicar padres, informes, ingeniería ni cobertura; no incluye horas de contraparte ni obras/adquisiciones del cliente","Registro diario, turno, zona, tarea, incidencia y relevo; 8 h presencia días 1--14, luego 4 h presencia +4 h preparación.",José Lara Arce,8,L:8,"Asignación y cuadrante integrado por código; entornos, usuarios y habilitaciones autorizados",C07 13.3.5; RT-22.02,2028-06-08,2028-06-08,FORMACION-E2,Recepción por etapa o control del periodo; no acredita ejecución,C07 13.3.5; RT-22.02
1.11.4.2.4.9.1,"Acompañamiento E2, ola 4, día 9, zona 1",1.11,E2 Marcha blanca,"Acompañamiento E2, ola 4, día 9, zona 1",Resultado de la ficha de familia y del paquete original; registro individual por código/ventana,"No duplicar padres, informes, ingeniería ni cobertura; no incluye horas de contraparte ni obras/adquisiciones del cliente","Registro diario, turno, zona, tarea, incidencia y relevo; 8 h presencia días 1--14, luego 4 h presencia +4 h preparación.",José Lara Arce,8,L:8,"Asignación y cuadrante integrado por código; entornos, usuarios y habilitaciones autorizados",C07 13.3.5; RT-22.02,2028-06-09,2028-06-09,FORMACION-E2,Recepción por etapa o control del periodo; no acredita ejecución,C07 13.3.5; RT-22.02
1.11.4.2.4.9.2,"Acompañamiento E2, ola 4, día 9, zona 2",1.11,E2 Marcha blanca,"Acompañamiento E2, ola 4, día 9, zona 2",Resultado de la ficha de familia y del paquete original; registro individual por código/ventana,"No duplicar padres, informes, ingeniería ni cobertura; no incluye horas de contraparte ni obras/adquisiciones del cliente","Registro diario, turno, zona, tarea, incidencia y relevo; 8 h presencia días 1--14, luego 4 h presencia +4 h preparación.",José Lara Arce,8,L:8,"Asignación y cuadrante integrado por código; entornos, usuarios y habilitaciones autorizados",C07 13.3.5; RT-22.02,2028-06-09,2028-06-09,FORMACION-E2,Recepción por etapa o control del periodo; no acredita ejecución,C07 13.3.5; RT-22.02
1.11.4.2.4.10.1,"Acompañamiento E2, ola 4, día 10, zona 1",1.11,E2 Marcha blanca,"Acompañamiento E2, ola 4, día 10, zona 1",Resultado de la ficha de familia y del paquete original; registro individual por código/ventana,"No duplicar padres, informes, ingeniería ni cobertura; no incluye horas de contraparte ni obras/adquisiciones del cliente","Registro diario, turno, zona, tarea, incidencia y relevo; 8 h presencia días 1--14, luego 4 h presencia +4 h preparación.",José Lara Arce,8,L:8,"Asignación y cuadrante integrado por código; entornos, usuarios y habilitaciones autorizados",C07 13.3.5; RT-22.02,2028-06-10,2028-06-10,FORMACION-E2,Recepción por etapa o control del periodo; no acredita ejecución,C07 13.3.5; RT-22.02
1.11.4.2.4.10.2,"Acompañamiento E2, ola 4, día 10, zona 2",1.11,E2 Marcha blanca,"Acompañamiento E2, ola 4, día 10, zona 2",Resultado de la ficha de familia y del paquete original; registro individual por código/ventana,"No duplicar padres, informes, ingeniería ni cobertura; no incluye horas de contraparte ni obras/adquisiciones del cliente","Registro diario, turno, zona, tarea, incidencia y relevo; 8 h presencia días 1--14, luego 4 h presencia +4 h preparación.",José Lara Arce,8,L:8,"Asignación y cuadrante integrado por código; entornos, usuarios y habilitaciones autorizados",C07 13.3.5; RT-22.02,2028-06-10,2028-06-10,FORMACION-E2,Recepción por etapa o control del periodo; no acredita ejecución,C07 13.3.5; RT-22.02
1.11.4.2.4.11.1,"Acompañamiento E2, ola 4, día 11, zona 1",1.11,E2 Marcha blanca,"Acompañamiento E2, ola 4, día 11, zona 1",Resultado de la ficha de familia y del paquete original; registro individual por código/ventana,"No duplicar padres, informes, ingeniería ni cobertura; no incluye horas de contraparte ni obras/adquisiciones del cliente","Registro diario, turno, zona, tarea, incidencia y relevo; 8 h presencia días 1--14, luego 4 h presencia +4 h preparación.",José Lara Arce,8,L:8,"Asignación y cuadrante integrado por código; entornos, usuarios y habilitaciones autorizados",C07 13.3.5; RT-22.02,2028-06-11,2028-06-11,FORMACION-E2,Recepción por etapa o control del periodo; no acredita ejecución,C07 13.3.5; RT-22.02
1.11.4.2.4.11.2,"Acompañamiento E2, ola 4, día 11, zona 2",1.11,E2 Marcha blanca,"Acompañamiento E2, ola 4, día 11, zona 2",Resultado de la ficha de familia y del paquete original; registro individual por código/ventana,"No duplicar padres, informes, ingeniería ni cobertura; no incluye horas de contraparte ni obras/adquisiciones del cliente","Registro diario, turno, zona, tarea, incidencia y relevo; 8 h presencia días 1--14, luego 4 h presencia +4 h preparación.",José Lara Arce,8,L:8,"Asignación y cuadrante integrado por código; entornos, usuarios y habilitaciones autorizados",C07 13.3.5; RT-22.02,2028-06-11,2028-06-11,FORMACION-E2,Recepción por etapa o control del periodo; no acredita ejecución,C07 13.3.5; RT-22.02
1.11.4.2.4.12.1,"Acompañamiento E2, ola 4, día 12, zona 1",1.11,E2 Marcha blanca,"Acompañamiento E2, ola 4, día 12, zona 1",Resultado de la ficha de familia y del paquete original; registro individual por código/ventana,"No duplicar padres, informes, ingeniería ni cobertura; no incluye horas de contraparte ni obras/adquisiciones del cliente","Registro diario, turno, zona, tarea, incidencia y relevo; 8 h presencia días 1--14, luego 4 h presencia +4 h preparación.",José Lara Arce,8,L:8,"Asignación y cuadrante integrado por código; entornos, usuarios y habilitaciones autorizados",C07 13.3.5; RT-22.02,2028-06-12,2028-06-12,FORMACION-E2,Recepción por etapa o control del periodo; no acredita ejecución,C07 13.3.5; RT-22.02
1.11.4.2.4.12.2,"Acompañamiento E2, ola 4, día 12, zona 2",1.11,E2 Marcha blanca,"Acompañamiento E2, ola 4, día 12, zona 2",Resultado de la ficha de familia y del paquete original; registro individual por código/ventana,"No duplicar padres, informes, ingeniería ni cobertura; no incluye horas de contraparte ni obras/adquisiciones del cliente","Registro diario, turno, zona, tarea, incidencia y relevo; 8 h presencia días 1--14, luego 4 h presencia +4 h preparación.",José Lara Arce,8,L:8,"Asignación y cuadrante integrado por código; entornos, usuarios y habilitaciones autorizados",C07 13.3.5; RT-22.02,2028-06-12,2028-06-12,FORMACION-E2,Recepción por etapa o control del periodo; no acredita ejecución,C07 13.3.5; RT-22.02
1.11.4.2.4.13.1,"Acompañamiento E2, ola 4, día 13, zona 1",1.11,E2 Marcha blanca,"Acompañamiento E2, ola 4, día 13, zona 1",Resultado de la ficha de familia y del paquete original; registro individual por código/ventana,"No duplicar padres, informes, ingeniería ni cobertura; no incluye horas de contraparte ni obras/adquisiciones del cliente","Registro diario, turno, zona, tarea, incidencia y relevo; 8 h presencia días 1--14, luego 4 h presencia +4 h preparación.",José Lara Arce,8,L:8,"Asignación y cuadrante integrado por código; entornos, usuarios y habilitaciones autorizados",C07 13.3.5; RT-22.02,2028-06-13,2028-06-13,FORMACION-E2,Recepción por etapa o control del periodo; no acredita ejecución,C07 13.3.5; RT-22.02
1.11.4.2.4.13.2,"Acompañamiento E2, ola 4, día 13, zona 2",1.11,E2 Marcha blanca,"Acompañamiento E2, ola 4, día 13, zona 2",Resultado de la ficha de familia y del paquete original; registro individual por código/ventana,"No duplicar padres, informes, ingeniería ni cobertura; no incluye horas de contraparte ni obras/adquisiciones del cliente","Registro diario, turno, zona, tarea, incidencia y relevo; 8 h presencia días 1--14, luego 4 h presencia +4 h preparación.",José Lara Arce,8,L:8,"Asignación y cuadrante integrado por código; entornos, usuarios y habilitaciones autorizados",C07 13.3.5; RT-22.02,2028-06-13,2028-06-13,FORMACION-E2,Recepción por etapa o control del periodo; no acredita ejecución,C07 13.3.5; RT-22.02
1.11.4.2.4.14.1,"Acompañamiento E2, ola 4, día 14, zona 1",1.11,E2 Marcha blanca,"Acompañamiento E2, ola 4, día 14, zona 1",Resultado de la ficha de familia y del paquete original; registro individual por código/ventana,"No duplicar padres, informes, ingeniería ni cobertura; no incluye horas de contraparte ni obras/adquisiciones del cliente","Registro diario, turno, zona, tarea, incidencia y relevo; 8 h presencia días 1--14, luego 4 h presencia +4 h preparación.",José Lara Arce,8,L:8,"Asignación y cuadrante integrado por código; entornos, usuarios y habilitaciones autorizados",C07 13.3.5; RT-22.02,2028-06-14,2028-06-14,FORMACION-E2,Recepción por etapa o control del periodo; no acredita ejecución,C07 13.3.5; RT-22.02
1.11.4.2.4.14.2,"Acompañamiento E2, ola 4, día 14, zona 2",1.11,E2 Marcha blanca,"Acompañamiento E2, ola 4, día 14, zona 2",Resultado de la ficha de familia y del paquete original; registro individual por código/ventana,"No duplicar padres, informes, ingeniería ni cobertura; no incluye horas de contraparte ni obras/adquisiciones del cliente","Registro diario, turno, zona, tarea, incidencia y relevo; 8 h presencia días 1--14, luego 4 h presencia +4 h preparación.",José Lara Arce,8,L:8,"Asignación y cuadrante integrado por código; entornos, usuarios y habilitaciones autorizados",C07 13.3.5; RT-22.02,2028-06-14,2028-06-14,FORMACION-E2,Recepción por etapa o control del periodo; no acredita ejecución,C07 13.3.5; RT-22.02
1.11.4.2.4.15.1,"Acompañamiento E2, ola 4, día 15, zona 1",1.11,E2 Marcha blanca,"Acompañamiento E2, ola 4, día 15, zona 1",Resultado de la ficha de familia y del paquete original; registro individual por código/ventana,"No duplicar padres, informes, ingeniería ni cobertura; no incluye horas de contraparte ni obras/adquisiciones del cliente","Registro diario, turno, zona, tarea, incidencia y relevo; 8 h presencia días 1--14, luego 4 h presencia +4 h preparación.",José Lara Arce,8,L:8,"Asignación y cuadrante integrado por código; entornos, usuarios y habilitaciones autorizados",C07 13.3.5; RT-22.02,2028-06-15,2028-06-15,FORMACION-E2,Recepción por etapa o control del periodo; no acredita ejecución,C07 13.3.5; RT-22.02
1.11.4.2.4.15.2,"Acompañamiento E2, ola 4, día 15, zona 2",1.11,E2 Marcha blanca,"Acompañamiento E2, ola 4, día 15, zona 2",Resultado de la ficha de familia y del paquete original; registro individual por código/ventana,"No duplicar padres, informes, ingeniería ni cobertura; no incluye horas de contraparte ni obras/adquisiciones del cliente","Registro diario, turno, zona, tarea, incidencia y relevo; 8 h presencia días 1--14, luego 4 h presencia +4 h preparación.",José Lara Arce,8,L:8,"Asignación y cuadrante integrado por código; entornos, usuarios y habilitaciones autorizados",C07 13.3.5; RT-22.02,2028-06-15,2028-06-15,FORMACION-E2,Recepción por etapa o control del periodo; no acredita ejecución,C07 13.3.5; RT-22.02
1.11.4.2.4.16.1,"Acompañamiento E2, ola 4, día 16, zona 1",1.11,E2 Marcha blanca,"Acompañamiento E2, ola 4, día 16, zona 1",Resultado de la ficha de familia y del paquete original; registro individual por código/ventana,"No duplicar padres, informes, ingeniería ni cobertura; no incluye horas de contraparte ni obras/adquisiciones del cliente","Registro diario, turno, zona, tarea, incidencia y relevo; 8 h presencia días 1--14, luego 4 h presencia +4 h preparación.",José Lara Arce,8,L:8,"Asignación y cuadrante integrado por código; entornos, usuarios y habilitaciones autorizados",C07 13.3.5; RT-22.02,2028-06-16,2028-06-16,FORMACION-E2,Recepción por etapa o control del periodo; no acredita ejecución,C07 13.3.5; RT-22.02
1.11.4.2.4.16.2,"Acompañamiento E2, ola 4, día 16, zona 2",1.11,E2 Marcha blanca,"Acompañamiento E2, ola 4, día 16, zona 2",Resultado de la ficha de familia y del paquete original; registro individual por código/ventana,"No duplicar padres, informes, ingeniería ni cobertura; no incluye horas de contraparte ni obras/adquisiciones del cliente","Registro diario, turno, zona, tarea, incidencia y relevo; 8 h presencia días 1--14, luego 4 h presencia +4 h preparación.",José Lara Arce,8,L:8,"Asignación y cuadrante integrado por código; entornos, usuarios y habilitaciones autorizados",C07 13.3.5; RT-22.02,2028-06-16,2028-06-16,FORMACION-E2,Recepción por etapa o control del periodo; no acredita ejecución,C07 13.3.5; RT-22.02
1.11.4.2.4.17.1,"Acompañamiento E2, ola 4, día 17, zona 1",1.11,E2 Marcha blanca,"Acompañamiento E2, ola 4, día 17, zona 1",Resultado de la ficha de familia y del paquete original; registro individual por código/ventana,"No duplicar padres, informes, ingeniería ni cobertura; no incluye horas de contraparte ni obras/adquisiciones del cliente","Registro diario, turno, zona, tarea, incidencia y relevo; 8 h presencia días 1--14, luego 4 h presencia +4 h preparación.",José Lara Arce,8,L:8,"Asignación y cuadrante integrado por código; entornos, usuarios y habilitaciones autorizados",C07 13.3.5; RT-22.02,2028-06-17,2028-06-17,FORMACION-E2,Recepción por etapa o control del periodo; no acredita ejecución,C07 13.3.5; RT-22.02
1.11.4.2.4.17.2,"Acompañamiento E2, ola 4, día 17, zona 2",1.11,E2 Marcha blanca,"Acompañamiento E2, ola 4, día 17, zona 2",Resultado de la ficha de familia y del paquete original; registro individual por código/ventana,"No duplicar padres, informes, ingeniería ni cobertura; no incluye horas de contraparte ni obras/adquisiciones del cliente","Registro diario, turno, zona, tarea, incidencia y relevo; 8 h presencia días 1--14, luego 4 h presencia +4 h preparación.",José Lara Arce,8,L:8,"Asignación y cuadrante integrado por código; entornos, usuarios y habilitaciones autorizados",C07 13.3.5; RT-22.02,2028-06-17,2028-06-17,FORMACION-E2,Recepción por etapa o control del periodo; no acredita ejecución,C07 13.3.5; RT-22.02
1.11.4.2.4.18.1,"Acompañamiento E2, ola 4, día 18, zona 1",1.11,E2 Marcha blanca,"Acompañamiento E2, ola 4, día 18, zona 1",Resultado de la ficha de familia y del paquete original; registro individual por código/ventana,"No duplicar padres, informes, ingeniería ni cobertura; no incluye horas de contraparte ni obras/adquisiciones del cliente","Registro diario, turno, zona, tarea, incidencia y relevo; 8 h presencia días 1--14, luego 4 h presencia +4 h preparación.",José Lara Arce,8,L:8,"Asignación y cuadrante integrado por código; entornos, usuarios y habilitaciones autorizados",C07 13.3.5; RT-22.02,2028-06-18,2028-06-18,FORMACION-E2,Recepción por etapa o control del periodo; no acredita ejecución,C07 13.3.5; RT-22.02
1.11.4.2.4.18.2,"Acompañamiento E2, ola 4, día 18, zona 2",1.11,E2 Marcha blanca,"Acompañamiento E2, ola 4, día 18, zona 2",Resultado de la ficha de familia y del paquete original; registro individual por código/ventana,"No duplicar padres, informes, ingeniería ni cobertura; no incluye horas de contraparte ni obras/adquisiciones del cliente","Registro diario, turno, zona, tarea, incidencia y relevo; 8 h presencia días 1--14, luego 4 h presencia +4 h preparación.",José Lara Arce,8,L:8,"Asignación y cuadrante integrado por código; entornos, usuarios y habilitaciones autorizados",C07 13.3.5; RT-22.02,2028-06-18,2028-06-18,FORMACION-E2,Recepción por etapa o control del periodo; no acredita ejecución,C07 13.3.5; RT-22.02
1.11.4.2.4.19.1,"Acompañamiento E2, ola 4, día 19, zona 1",1.11,E2 Marcha blanca,"Acompañamiento E2, ola 4, día 19, zona 1",Resultado de la ficha de familia y del paquete original; registro individual por código/ventana,"No duplicar padres, informes, ingeniería ni cobertura; no incluye horas de contraparte ni obras/adquisiciones del cliente","Registro diario, turno, zona, tarea, incidencia y relevo; 8 h presencia días 1--14, luego 4 h presencia +4 h preparación.",José Lara Arce,8,L:8,"Asignación y cuadrante integrado por código; entornos, usuarios y habilitaciones autorizados",C07 13.3.5; RT-22.02,2028-06-19,2028-06-19,FORMACION-E2,Recepción por etapa o control del periodo; no acredita ejecución,C07 13.3.5; RT-22.02
1.11.4.2.4.19.2,"Acompañamiento E2, ola 4, día 19, zona 2",1.11,E2 Marcha blanca,"Acompañamiento E2, ola 4, día 19, zona 2",Resultado de la ficha de familia y del paquete original; registro individual por código/ventana,"No duplicar padres, informes, ingeniería ni cobertura; no incluye horas de contraparte ni obras/adquisiciones del cliente","Registro diario, turno, zona, tarea, incidencia y relevo; 8 h presencia días 1--14, luego 4 h presencia +4 h preparación.",José Lara Arce,8,L:8,"Asignación y cuadrante integrado por código; entornos, usuarios y habilitaciones autorizados",C07 13.3.5; RT-22.02,2028-06-19,2028-06-19,FORMACION-E2,Recepción por etapa o control del periodo; no acredita ejecución,C07 13.3.5; RT-22.02
1.11.4.2.4.20.1,"Acompañamiento E2, ola 4, día 20, zona 1",1.11,E2 Marcha blanca,"Acompañamiento E2, ola 4, día 20, zona 1",Resultado de la ficha de familia y del paquete original; registro individual por código/ventana,"No duplicar padres, informes, ingeniería ni cobertura; no incluye horas de contraparte ni obras/adquisiciones del cliente","Registro diario, turno, zona, tarea, incidencia y relevo; 8 h presencia días 1--14, luego 4 h presencia +4 h preparación.",José Lara Arce,8,L:8,"Asignación y cuadrante integrado por código; entornos, usuarios y habilitaciones autorizados",C07 13.3.5; RT-22.02,2028-06-20,2028-06-20,FORMACION-E2,Recepción por etapa o control del periodo; no acredita ejecución,C07 13.3.5; RT-22.02
1.11.4.2.4.20.2,"Acompañamiento E2, ola 4, día 20, zona 2",1.11,E2 Marcha blanca,"Acompañamiento E2, ola 4, día 20, zona 2",Resultado de la ficha de familia y del paquete original; registro individual por código/ventana,"No duplicar padres, informes, ingeniería ni cobertura; no incluye horas de contraparte ni obras/adquisiciones del cliente","Registro diario, turno, zona, tarea, incidencia y relevo; 8 h presencia días 1--14, luego 4 h presencia +4 h preparación.",José Lara Arce,8,L:8,"Asignación y cuadrante integrado por código; entornos, usuarios y habilitaciones autorizados",C07 13.3.5; RT-22.02,2028-06-20,2028-06-20,FORMACION-E2,Recepción por etapa o control del periodo; no acredita ejecución,C07 13.3.5; RT-22.02
1.11.4.2.4.21.1,"Acompañamiento E2, ola 4, día 21, zona 1",1.11,E2 Marcha blanca,"Acompañamiento E2, ola 4, día 21, zona 1",Resultado de la ficha de familia y del paquete original; registro individual por código/ventana,"No duplicar padres, informes, ingeniería ni cobertura; no incluye horas de contraparte ni obras/adquisiciones del cliente","Registro diario, turno, zona, tarea, incidencia y relevo; 8 h presencia días 1--14, luego 4 h presencia +4 h preparación.",José Lara Arce,8,L:8,"Asignación y cuadrante integrado por código; entornos, usuarios y habilitaciones autorizados",C07 13.3.5; RT-22.02,2028-06-21,2028-06-21,FORMACION-E2,Recepción por etapa o control del periodo; no acredita ejecución,C07 13.3.5; RT-22.02
1.11.4.2.4.21.2,"Acompañamiento E2, ola 4, día 21, zona 2",1.11,E2 Marcha blanca,"Acompañamiento E2, ola 4, día 21, zona 2",Resultado de la ficha de familia y del paquete original; registro individual por código/ventana,"No duplicar padres, informes, ingeniería ni cobertura; no incluye horas de contraparte ni obras/adquisiciones del cliente","Registro diario, turno, zona, tarea, incidencia y relevo; 8 h presencia días 1--14, luego 4 h presencia +4 h preparación.",José Lara Arce,8,L:8,"Asignación y cuadrante integrado por código; entornos, usuarios y habilitaciones autorizados",C07 13.3.5; RT-22.02,2028-06-21,2028-06-21,FORMACION-E2,Recepción por etapa o control del periodo; no acredita ejecución,C07 13.3.5; RT-22.02
1.11.4.2.4.22.1,"Acompañamiento E2, ola 4, día 22, zona 1",1.11,E2 Marcha blanca,"Acompañamiento E2, ola 4, día 22, zona 1",Resultado de la ficha de familia y del paquete original; registro individual por código/ventana,"No duplicar padres, informes, ingeniería ni cobertura; no incluye horas de contraparte ni obras/adquisiciones del cliente","Registro diario, turno, zona, tarea, incidencia y relevo; 8 h presencia días 1--14, luego 4 h presencia +4 h preparación.",José Lara Arce,8,L:8,"Asignación y cuadrante integrado por código; entornos, usuarios y habilitaciones autorizados",C07 13.3.5; RT-22.02,2028-06-22,2028-06-22,FORMACION-E2,Recepción por etapa o control del periodo; no acredita ejecución,C07 13.3.5; RT-22.02
1.11.4.2.4.22.2,"Acompañamiento E2, ola 4, día 22, zona 2",1.11,E2 Marcha blanca,"Acompañamiento E2, ola 4, día 22, zona 2",Resultado de la ficha de familia y del paquete original; registro individual por código/ventana,"No duplicar padres, informes, ingeniería ni cobertura; no incluye horas de contraparte ni obras/adquisiciones del cliente","Registro diario, turno, zona, tarea, incidencia y relevo; 8 h presencia días 1--14, luego 4 h presencia +4 h preparación.",José Lara Arce,8,L:8,"Asignación y cuadrante integrado por código; entornos, usuarios y habilitaciones autorizados",C07 13.3.5; RT-22.02,2028-06-22,2028-06-22,FORMACION-E2,Recepción por etapa o control del periodo; no acredita ejecución,C07 13.3.5; RT-22.02
1.11.4.2.4.23.1,"Acompañamiento E2, ola 4, día 23, zona 1",1.11,E2 Marcha blanca,"Acompañamiento E2, ola 4, día 23, zona 1",Resultado de la ficha de familia y del paquete original; registro individual por código/ventana,"No duplicar padres, informes, ingeniería ni cobertura; no incluye horas de contraparte ni obras/adquisiciones del cliente","Registro diario, turno, zona, tarea, incidencia y relevo; 8 h presencia días 1--14, luego 4 h presencia +4 h preparación.",José Lara Arce,8,L:8,"Asignación y cuadrante integrado por código; entornos, usuarios y habilitaciones autorizados",C07 13.3.5; RT-22.02,2028-06-23,2028-06-23,FORMACION-E2,Recepción por etapa o control del periodo; no acredita ejecución,C07 13.3.5; RT-22.02
1.11.4.2.4.23.2,"Acompañamiento E2, ola 4, día 23, zona 2",1.11,E2 Marcha blanca,"Acompañamiento E2, ola 4, día 23, zona 2",Resultado de la ficha de familia y del paquete original; registro individual por código/ventana,"No duplicar padres, informes, ingeniería ni cobertura; no incluye horas de contraparte ni obras/adquisiciones del cliente","Registro diario, turno, zona, tarea, incidencia y relevo; 8 h presencia días 1--14, luego 4 h presencia +4 h preparación.",José Lara Arce,8,L:8,"Asignación y cuadrante integrado por código; entornos, usuarios y habilitaciones autorizados",C07 13.3.5; RT-22.02,2028-06-23,2028-06-23,FORMACION-E2,Recepción por etapa o control del periodo; no acredita ejecución,C07 13.3.5; RT-22.02
1.11.4.2.4.24.1,"Acompañamiento E2, ola 4, día 24, zona 1",1.11,E2 Marcha blanca,"Acompañamiento E2, ola 4, día 24, zona 1",Resultado de la ficha de familia y del paquete original; registro individual por código/ventana,"No duplicar padres, informes, ingeniería ni cobertura; no incluye horas de contraparte ni obras/adquisiciones del cliente","Registro diario, turno, zona, tarea, incidencia y relevo; 8 h presencia días 1--14, luego 4 h presencia +4 h preparación.",José Lara Arce,8,L:8,"Asignación y cuadrante integrado por código; entornos, usuarios y habilitaciones autorizados",C07 13.3.5; RT-22.02,2028-06-24,2028-06-24,FORMACION-E2,Recepción por etapa o control del periodo; no acredita ejecución,C07 13.3.5; RT-22.02
1.11.4.2.4.24.2,"Acompañamiento E2, ola 4, día 24, zona 2",1.11,E2 Marcha blanca,"Acompañamiento E2, ola 4, día 24, zona 2",Resultado de la ficha de familia y del paquete original; registro individual por código/ventana,"No duplicar padres, informes, ingeniería ni cobertura; no incluye horas de contraparte ni obras/adquisiciones del cliente","Registro diario, turno, zona, tarea, incidencia y relevo; 8 h presencia días 1--14, luego 4 h presencia +4 h preparación.",José Lara Arce,8,L:8,"Asignación y cuadrante integrado por código; entornos, usuarios y habilitaciones autorizados",C07 13.3.5; RT-22.02,2028-06-24,2028-06-24,FORMACION-E2,Recepción por etapa o control del periodo; no acredita ejecución,C07 13.3.5; RT-22.02
1.11.4.2.4.25.1,"Acompañamiento E2, ola 4, día 25, zona 1",1.11,E2 Marcha blanca,"Acompañamiento E2, ola 4, día 25, zona 1",Resultado de la ficha de familia y del paquete original; registro individual por código/ventana,"No duplicar padres, informes, ingeniería ni cobertura; no incluye horas de contraparte ni obras/adquisiciones del cliente","Registro diario, turno, zona, tarea, incidencia y relevo; 8 h presencia días 1--14, luego 4 h presencia +4 h preparación.",José Lara Arce,8,L:8,"Asignación y cuadrante integrado por código; entornos, usuarios y habilitaciones autorizados",C07 13.3.5; RT-22.02,2028-06-25,2028-06-25,FORMACION-E2,Recepción por etapa o control del periodo; no acredita ejecución,C07 13.3.5; RT-22.02
1.11.4.2.4.25.2,"Acompañamiento E2, ola 4, día 25, zona 2",1.11,E2 Marcha blanca,"Acompañamiento E2, ola 4, día 25, zona 2",Resultado de la ficha de familia y del paquete original; registro individual por código/ventana,"No duplicar padres, informes, ingeniería ni cobertura; no incluye horas de contraparte ni obras/adquisiciones del cliente","Registro diario, turno, zona, tarea, incidencia y relevo; 8 h presencia días 1--14, luego 4 h presencia +4 h preparación.",José Lara Arce,8,L:8,"Asignación y cuadrante integrado por código; entornos, usuarios y habilitaciones autorizados",C07 13.3.5; RT-22.02,2028-06-25,2028-06-25,FORMACION-E2,Recepción por etapa o control del periodo; no acredita ejecución,C07 13.3.5; RT-22.02
1.11.4.2.4.26.1,"Acompañamiento E2, ola 4, día 26, zona 1",1.11,E2 Marcha blanca,"Acompañamiento E2, ola 4, día 26, zona 1",Resultado de la ficha de familia y del paquete original; registro individual por código/ventana,"No duplicar padres, informes, ingeniería ni cobertura; no incluye horas de contraparte ni obras/adquisiciones del cliente","Registro diario, turno, zona, tarea, incidencia y relevo; 8 h presencia días 1--14, luego 4 h presencia +4 h preparación.",José Lara Arce,8,L:8,"Asignación y cuadrante integrado por código; entornos, usuarios y habilitaciones autorizados",C07 13.3.5; RT-22.02,2028-06-26,2028-06-26,FORMACION-E2,Recepción por etapa o control del periodo; no acredita ejecución,C07 13.3.5; RT-22.02
1.11.4.2.4.26.2,"Acompañamiento E2, ola 4, día 26, zona 2",1.11,E2 Marcha blanca,"Acompañamiento E2, ola 4, día 26, zona 2",Resultado de la ficha de familia y del paquete original; registro individual por código/ventana,"No duplicar padres, informes, ingeniería ni cobertura; no incluye horas de contraparte ni obras/adquisiciones del cliente","Registro diario, turno, zona, tarea, incidencia y relevo; 8 h presencia días 1--14, luego 4 h presencia +4 h preparación.",José Lara Arce,8,L:8,"Asignación y cuadrante integrado por código; entornos, usuarios y habilitaciones autorizados",C07 13.3.5; RT-22.02,2028-06-26,2028-06-26,FORMACION-E2,Recepción por etapa o control del periodo; no acredita ejecución,C07 13.3.5; RT-22.02
1.11.4.2.4.27.1,"Acompañamiento E2, ola 4, día 27, zona 1",1.11,E2 Marcha blanca,"Acompañamiento E2, ola 4, día 27, zona 1",Resultado de la ficha de familia y del paquete original; registro individual por código/ventana,"No duplicar padres, informes, ingeniería ni cobertura; no incluye horas de contraparte ni obras/adquisiciones del cliente","Registro diario, turno, zona, tarea, incidencia y relevo; 8 h presencia días 1--14, luego 4 h presencia +4 h preparación.",José Lara Arce,8,L:8,"Asignación y cuadrante integrado por código; entornos, usuarios y habilitaciones autorizados",C07 13.3.5; RT-22.02,2028-06-27,2028-06-27,FORMACION-E2,Recepción por etapa o control del periodo; no acredita ejecución,C07 13.3.5; RT-22.02
1.11.4.2.4.27.2,"Acompañamiento E2, ola 4, día 27, zona 2",1.11,E2 Marcha blanca,"Acompañamiento E2, ola 4, día 27, zona 2",Resultado de la ficha de familia y del paquete original; registro individual por código/ventana,"No duplicar padres, informes, ingeniería ni cobertura; no incluye horas de contraparte ni obras/adquisiciones del cliente","Registro diario, turno, zona, tarea, incidencia y relevo; 8 h presencia días 1--14, luego 4 h presencia +4 h preparación.",José Lara Arce,8,L:8,"Asignación y cuadrante integrado por código; entornos, usuarios y habilitaciones autorizados",C07 13.3.5; RT-22.02,2028-06-27,2028-06-27,FORMACION-E2,Recepción por etapa o control del periodo; no acredita ejecución,C07 13.3.5; RT-22.02
1.11.4.2.4.28.1,"Acompañamiento E2, ola 4, día 28, zona 1",1.11,E2 Marcha blanca,"Acompañamiento E2, ola 4, día 28, zona 1",Resultado de la ficha de familia y del paquete original; registro individual por código/ventana,"No duplicar padres, informes, ingeniería ni cobertura; no incluye horas de contraparte ni obras/adquisiciones del cliente","Registro diario, turno, zona, tarea, incidencia y relevo; 8 h presencia días 1--14, luego 4 h presencia +4 h preparación.",José Lara Arce,8,L:8,"Asignación y cuadrante integrado por código; entornos, usuarios y habilitaciones autorizados",C07 13.3.5; RT-22.02,2028-06-28,2028-06-28,FORMACION-E2,Recepción por etapa o control del periodo; no acredita ejecución,C07 13.3.5; RT-22.02
1.11.4.2.4.28.2,"Acompañamiento E2, ola 4, día 28, zona 2",1.11,E2 Marcha blanca,"Acompañamiento E2, ola 4, día 28, zona 2",Resultado de la ficha de familia y del paquete original; registro individual por código/ventana,"No duplicar padres, informes, ingeniería ni cobertura; no incluye horas de contraparte ni obras/adquisiciones del cliente","Registro diario, turno, zona, tarea, incidencia y relevo; 8 h presencia días 1--14, luego 4 h presencia +4 h preparación.",José Lara Arce,8,L:8,"Asignación y cuadrante integrado por código; entornos, usuarios y habilitaciones autorizados",C07 13.3.5; RT-22.02,2028-06-28,2028-06-28,FORMACION-E2,Recepción por etapa o control del periodo; no acredita ejecución,C07 13.3.5; RT-22.02
1.11.6.2.1.1,"Estabilización presencial E2, día 1, zona 1",1.11,Operación,"Estabilización presencial E2, día 1, zona 1",Resultado de la ficha de familia y del paquete original; registro individual por código/ventana,"No duplicar padres, informes, ingeniería ni cobertura; no incluye horas de contraparte ni obras/adquisiciones del cliente","Dos puestos diarios, pantalanes y varadero, 28 días consecutivos, incluidos fines de semana; relevo e incidencias registrados.",José Lara Arce,8,O:8,"Asignación y cuadrante integrado por código; entornos, usuarios y habilitaciones autorizados",C07 13.3.9; presencia adicional a conciliación,2028-08-01,2028-08-01,CORTE-E2;MARCHA-E2,Recepción por etapa o control del periodo; no acredita ejecución,C07 13.3.9; presencia adicional a conciliación
1.11.6.2.1.2,"Estabilización presencial E2, día 1, zona 2",1.11,Operación,"Estabilización presencial E2, día 1, zona 2",Resultado de la ficha de familia y del paquete original; registro individual por código/ventana,"No duplicar padres, informes, ingeniería ni cobertura; no incluye horas de contraparte ni obras/adquisiciones del cliente","Dos puestos diarios, pantalanes y varadero, 28 días consecutivos, incluidos fines de semana; relevo e incidencias registrados.",José Lara Arce,8,O:8,"Asignación y cuadrante integrado por código; entornos, usuarios y habilitaciones autorizados",C07 13.3.9; presencia adicional a conciliación,2028-08-01,2028-08-01,CORTE-E2;MARCHA-E2,Recepción por etapa o control del periodo; no acredita ejecución,C07 13.3.9; presencia adicional a conciliación
1.11.6.2.2.1,"Estabilización presencial E2, día 2, zona 1",1.11,Operación,"Estabilización presencial E2, día 2, zona 1",Resultado de la ficha de familia y del paquete original; registro individual por código/ventana,"No duplicar padres, informes, ingeniería ni cobertura; no incluye horas de contraparte ni obras/adquisiciones del cliente","Dos puestos diarios, pantalanes y varadero, 28 días consecutivos, incluidos fines de semana; relevo e incidencias registrados.",José Lara Arce,8,O:8,"Asignación y cuadrante integrado por código; entornos, usuarios y habilitaciones autorizados",C07 13.3.9; presencia adicional a conciliación,2028-08-02,2028-08-02,CORTE-E2;MARCHA-E2,Recepción por etapa o control del periodo; no acredita ejecución,C07 13.3.9; presencia adicional a conciliación
1.11.6.2.2.2,"Estabilización presencial E2, día 2, zona 2",1.11,Operación,"Estabilización presencial E2, día 2, zona 2",Resultado de la ficha de familia y del paquete original; registro individual por código/ventana,"No duplicar padres, informes, ingeniería ni cobertura; no incluye horas de contraparte ni obras/adquisiciones del cliente","Dos puestos diarios, pantalanes y varadero, 28 días consecutivos, incluidos fines de semana; relevo e incidencias registrados.",José Lara Arce,8,O:8,"Asignación y cuadrante integrado por código; entornos, usuarios y habilitaciones autorizados",C07 13.3.9; presencia adicional a conciliación,2028-08-02,2028-08-02,CORTE-E2;MARCHA-E2,Recepción por etapa o control del periodo; no acredita ejecución,C07 13.3.9; presencia adicional a conciliación
1.11.6.2.3.1,"Estabilización presencial E2, día 3, zona 1",1.11,Operación,"Estabilización presencial E2, día 3, zona 1",Resultado de la ficha de familia y del paquete original; registro individual por código/ventana,"No duplicar padres, informes, ingeniería ni cobertura; no incluye horas de contraparte ni obras/adquisiciones del cliente","Dos puestos diarios, pantalanes y varadero, 28 días consecutivos, incluidos fines de semana; relevo e incidencias registrados.",José Lara Arce,8,O:8,"Asignación y cuadrante integrado por código; entornos, usuarios y habilitaciones autorizados",C07 13.3.9; presencia adicional a conciliación,2028-08-03,2028-08-03,CORTE-E2;MARCHA-E2,Recepción por etapa o control del periodo; no acredita ejecución,C07 13.3.9; presencia adicional a conciliación
1.11.6.2.3.2,"Estabilización presencial E2, día 3, zona 2",1.11,Operación,"Estabilización presencial E2, día 3, zona 2",Resultado de la ficha de familia y del paquete original; registro individual por código/ventana,"No duplicar padres, informes, ingeniería ni cobertura; no incluye horas de contraparte ni obras/adquisiciones del cliente","Dos puestos diarios, pantalanes y varadero, 28 días consecutivos, incluidos fines de semana; relevo e incidencias registrados.",José Lara Arce,8,O:8,"Asignación y cuadrante integrado por código; entornos, usuarios y habilitaciones autorizados",C07 13.3.9; presencia adicional a conciliación,2028-08-03,2028-08-03,CORTE-E2;MARCHA-E2,Recepción por etapa o control del periodo; no acredita ejecución,C07 13.3.9; presencia adicional a conciliación
1.11.6.2.4.1,"Estabilización presencial E2, día 4, zona 1",1.11,Operación,"Estabilización presencial E2, día 4, zona 1",Resultado de la ficha de familia y del paquete original; registro individual por código/ventana,"No duplicar padres, informes, ingeniería ni cobertura; no incluye horas de contraparte ni obras/adquisiciones del cliente","Dos puestos diarios, pantalanes y varadero, 28 días consecutivos, incluidos fines de semana; relevo e incidencias registrados.",José Lara Arce,8,O:8,"Asignación y cuadrante integrado por código; entornos, usuarios y habilitaciones autorizados",C07 13.3.9; presencia adicional a conciliación,2028-08-04,2028-08-04,CORTE-E2;MARCHA-E2,Recepción por etapa o control del periodo; no acredita ejecución,C07 13.3.9; presencia adicional a conciliación
1.11.6.2.4.2,"Estabilización presencial E2, día 4, zona 2",1.11,Operación,"Estabilización presencial E2, día 4, zona 2",Resultado de la ficha de familia y del paquete original; registro individual por código/ventana,"No duplicar padres, informes, ingeniería ni cobertura; no incluye horas de contraparte ni obras/adquisiciones del cliente","Dos puestos diarios, pantalanes y varadero, 28 días consecutivos, incluidos fines de semana; relevo e incidencias registrados.",José Lara Arce,8,O:8,"Asignación y cuadrante integrado por código; entornos, usuarios y habilitaciones autorizados",C07 13.3.9; presencia adicional a conciliación,2028-08-04,2028-08-04,CORTE-E2;MARCHA-E2,Recepción por etapa o control del periodo; no acredita ejecución,C07 13.3.9; presencia adicional a conciliación
1.11.6.2.5.1,"Estabilización presencial E2, día 5, zona 1",1.11,Operación,"Estabilización presencial E2, día 5, zona 1",Resultado de la ficha de familia y del paquete original; registro individual por código/ventana,"No duplicar padres, informes, ingeniería ni cobertura; no incluye horas de contraparte ni obras/adquisiciones del cliente","Dos puestos diarios, pantalanes y varadero, 28 días consecutivos, incluidos fines de semana; relevo e incidencias registrados.",José Lara Arce,8,O:8,"Asignación y cuadrante integrado por código; entornos, usuarios y habilitaciones autorizados",C07 13.3.9; presencia adicional a conciliación,2028-08-05,2028-08-05,CORTE-E2;MARCHA-E2,Recepción por etapa o control del periodo; no acredita ejecución,C07 13.3.9; presencia adicional a conciliación
1.11.6.2.5.2,"Estabilización presencial E2, día 5, zona 2",1.11,Operación,"Estabilización presencial E2, día 5, zona 2",Resultado de la ficha de familia y del paquete original; registro individual por código/ventana,"No duplicar padres, informes, ingeniería ni cobertura; no incluye horas de contraparte ni obras/adquisiciones del cliente","Dos puestos diarios, pantalanes y varadero, 28 días consecutivos, incluidos fines de semana; relevo e incidencias registrados.",José Lara Arce,8,O:8,"Asignación y cuadrante integrado por código; entornos, usuarios y habilitaciones autorizados",C07 13.3.9; presencia adicional a conciliación,2028-08-05,2028-08-05,CORTE-E2;MARCHA-E2,Recepción por etapa o control del periodo; no acredita ejecución,C07 13.3.9; presencia adicional a conciliación
1.11.6.2.6.1,"Estabilización presencial E2, día 6, zona 1",1.11,Operación,"Estabilización presencial E2, día 6, zona 1",Resultado de la ficha de familia y del paquete original; registro individual por código/ventana,"No duplicar padres, informes, ingeniería ni cobertura; no incluye horas de contraparte ni obras/adquisiciones del cliente","Dos puestos diarios, pantalanes y varadero, 28 días consecutivos, incluidos fines de semana; relevo e incidencias registrados.",José Lara Arce,8,O:8,"Asignación y cuadrante integrado por código; entornos, usuarios y habilitaciones autorizados",C07 13.3.9; presencia adicional a conciliación,2028-08-06,2028-08-06,CORTE-E2;MARCHA-E2,Recepción por etapa o control del periodo; no acredita ejecución,C07 13.3.9; presencia adicional a conciliación
1.11.6.2.6.2,"Estabilización presencial E2, día 6, zona 2",1.11,Operación,"Estabilización presencial E2, día 6, zona 2",Resultado de la ficha de familia y del paquete original; registro individual por código/ventana,"No duplicar padres, informes, ingeniería ni cobertura; no incluye horas de contraparte ni obras/adquisiciones del cliente","Dos puestos diarios, pantalanes y varadero, 28 días consecutivos, incluidos fines de semana; relevo e incidencias registrados.",José Lara Arce,8,O:8,"Asignación y cuadrante integrado por código; entornos, usuarios y habilitaciones autorizados",C07 13.3.9; presencia adicional a conciliación,2028-08-06,2028-08-06,CORTE-E2;MARCHA-E2,Recepción por etapa o control del periodo; no acredita ejecución,C07 13.3.9; presencia adicional a conciliación
1.11.6.2.7.1,"Estabilización presencial E2, día 7, zona 1",1.11,Operación,"Estabilización presencial E2, día 7, zona 1",Resultado de la ficha de familia y del paquete original; registro individual por código/ventana,"No duplicar padres, informes, ingeniería ni cobertura; no incluye horas de contraparte ni obras/adquisiciones del cliente","Dos puestos diarios, pantalanes y varadero, 28 días consecutivos, incluidos fines de semana; relevo e incidencias registrados.",José Lara Arce,8,O:8,"Asignación y cuadrante integrado por código; entornos, usuarios y habilitaciones autorizados",C07 13.3.9; presencia adicional a conciliación,2028-08-07,2028-08-07,CORTE-E2;MARCHA-E2,Recepción por etapa o control del periodo; no acredita ejecución,C07 13.3.9; presencia adicional a conciliación
1.11.6.2.7.2,"Estabilización presencial E2, día 7, zona 2",1.11,Operación,"Estabilización presencial E2, día 7, zona 2",Resultado de la ficha de familia y del paquete original; registro individual por código/ventana,"No duplicar padres, informes, ingeniería ni cobertura; no incluye horas de contraparte ni obras/adquisiciones del cliente","Dos puestos diarios, pantalanes y varadero, 28 días consecutivos, incluidos fines de semana; relevo e incidencias registrados.",José Lara Arce,8,O:8,"Asignación y cuadrante integrado por código; entornos, usuarios y habilitaciones autorizados",C07 13.3.9; presencia adicional a conciliación,2028-08-07,2028-08-07,CORTE-E2;MARCHA-E2,Recepción por etapa o control del periodo; no acredita ejecución,C07 13.3.9; presencia adicional a conciliación
1.11.6.2.8.1,"Estabilización presencial E2, día 8, zona 1",1.11,Operación,"Estabilización presencial E2, día 8, zona 1",Resultado de la ficha de familia y del paquete original; registro individual por código/ventana,"No duplicar padres, informes, ingeniería ni cobertura; no incluye horas de contraparte ni obras/adquisiciones del cliente","Dos puestos diarios, pantalanes y varadero, 28 días consecutivos, incluidos fines de semana; relevo e incidencias registrados.",José Lara Arce,8,O:8,"Asignación y cuadrante integrado por código; entornos, usuarios y habilitaciones autorizados",C07 13.3.9; presencia adicional a conciliación,2028-08-08,2028-08-08,CORTE-E2;MARCHA-E2,Recepción por etapa o control del periodo; no acredita ejecución,C07 13.3.9; presencia adicional a conciliación
1.11.6.2.8.2,"Estabilización presencial E2, día 8, zona 2",1.11,Operación,"Estabilización presencial E2, día 8, zona 2",Resultado de la ficha de familia y del paquete original; registro individual por código/ventana,"No duplicar padres, informes, ingeniería ni cobertura; no incluye horas de contraparte ni obras/adquisiciones del cliente","Dos puestos diarios, pantalanes y varadero, 28 días consecutivos, incluidos fines de semana; relevo e incidencias registrados.",José Lara Arce,8,O:8,"Asignación y cuadrante integrado por código; entornos, usuarios y habilitaciones autorizados",C07 13.3.9; presencia adicional a conciliación,2028-08-08,2028-08-08,CORTE-E2;MARCHA-E2,Recepción por etapa o control del periodo; no acredita ejecución,C07 13.3.9; presencia adicional a conciliación
1.11.6.2.9.1,"Estabilización presencial E2, día 9, zona 1",1.11,Operación,"Estabilización presencial E2, día 9, zona 1",Resultado de la ficha de familia y del paquete original; registro individual por código/ventana,"No duplicar padres, informes, ingeniería ni cobertura; no incluye horas de contraparte ni obras/adquisiciones del cliente","Dos puestos diarios, pantalanes y varadero, 28 días consecutivos, incluidos fines de semana; relevo e incidencias registrados.",José Lara Arce,8,O:8,"Asignación y cuadrante integrado por código; entornos, usuarios y habilitaciones autorizados",C07 13.3.9; presencia adicional a conciliación,2028-08-09,2028-08-09,CORTE-E2;MARCHA-E2,Recepción por etapa o control del periodo; no acredita ejecución,C07 13.3.9; presencia adicional a conciliación
1.11.6.2.9.2,"Estabilización presencial E2, día 9, zona 2",1.11,Operación,"Estabilización presencial E2, día 9, zona 2",Resultado de la ficha de familia y del paquete original; registro individual por código/ventana,"No duplicar padres, informes, ingeniería ni cobertura; no incluye horas de contraparte ni obras/adquisiciones del cliente","Dos puestos diarios, pantalanes y varadero, 28 días consecutivos, incluidos fines de semana; relevo e incidencias registrados.",José Lara Arce,8,O:8,"Asignación y cuadrante integrado por código; entornos, usuarios y habilitaciones autorizados",C07 13.3.9; presencia adicional a conciliación,2028-08-09,2028-08-09,CORTE-E2;MARCHA-E2,Recepción por etapa o control del periodo; no acredita ejecución,C07 13.3.9; presencia adicional a conciliación
1.11.6.2.10.1,"Estabilización presencial E2, día 10, zona 1",1.11,Operación,"Estabilización presencial E2, día 10, zona 1",Resultado de la ficha de familia y del paquete original; registro individual por código/ventana,"No duplicar padres, informes, ingeniería ni cobertura; no incluye horas de contraparte ni obras/adquisiciones del cliente","Dos puestos diarios, pantalanes y varadero, 28 días consecutivos, incluidos fines de semana; relevo e incidencias registrados.",José Lara Arce,8,O:8,"Asignación y cuadrante integrado por código; entornos, usuarios y habilitaciones autorizados",C07 13.3.9; presencia adicional a conciliación,2028-08-10,2028-08-10,CORTE-E2;MARCHA-E2,Recepción por etapa o control del periodo; no acredita ejecución,C07 13.3.9; presencia adicional a conciliación
1.11.6.2.10.2,"Estabilización presencial E2, día 10, zona 2",1.11,Operación,"Estabilización presencial E2, día 10, zona 2",Resultado de la ficha de familia y del paquete original; registro individual por código/ventana,"No duplicar padres, informes, ingeniería ni cobertura; no incluye horas de contraparte ni obras/adquisiciones del cliente","Dos puestos diarios, pantalanes y varadero, 28 días consecutivos, incluidos fines de semana; relevo e incidencias registrados.",José Lara Arce,8,O:8,"Asignación y cuadrante integrado por código; entornos, usuarios y habilitaciones autorizados",C07 13.3.9; presencia adicional a conciliación,2028-08-10,2028-08-10,CORTE-E2;MARCHA-E2,Recepción por etapa o control del periodo; no acredita ejecución,C07 13.3.9; presencia adicional a conciliación
1.11.6.2.11.1,"Estabilización presencial E2, día 11, zona 1",1.11,Operación,"Estabilización presencial E2, día 11, zona 1",Resultado de la ficha de familia y del paquete original; registro individual por código/ventana,"No duplicar padres, informes, ingeniería ni cobertura; no incluye horas de contraparte ni obras/adquisiciones del cliente","Dos puestos diarios, pantalanes y varadero, 28 días consecutivos, incluidos fines de semana; relevo e incidencias registrados.",José Lara Arce,8,O:8,"Asignación y cuadrante integrado por código; entornos, usuarios y habilitaciones autorizados",C07 13.3.9; presencia adicional a conciliación,2028-08-11,2028-08-11,CORTE-E2;MARCHA-E2,Recepción por etapa o control del periodo; no acredita ejecución,C07 13.3.9; presencia adicional a conciliación
1.11.6.2.11.2,"Estabilización presencial E2, día 11, zona 2",1.11,Operación,"Estabilización presencial E2, día 11, zona 2",Resultado de la ficha de familia y del paquete original; registro individual por código/ventana,"No duplicar padres, informes, ingeniería ni cobertura; no incluye horas de contraparte ni obras/adquisiciones del cliente","Dos puestos diarios, pantalanes y varadero, 28 días consecutivos, incluidos fines de semana; relevo e incidencias registrados.",José Lara Arce,8,O:8,"Asignación y cuadrante integrado por código; entornos, usuarios y habilitaciones autorizados",C07 13.3.9; presencia adicional a conciliación,2028-08-11,2028-08-11,CORTE-E2;MARCHA-E2,Recepción por etapa o control del periodo; no acredita ejecución,C07 13.3.9; presencia adicional a conciliación
1.11.6.2.12.1,"Estabilización presencial E2, día 12, zona 1",1.11,Operación,"Estabilización presencial E2, día 12, zona 1",Resultado de la ficha de familia y del paquete original; registro individual por código/ventana,"No duplicar padres, informes, ingeniería ni cobertura; no incluye horas de contraparte ni obras/adquisiciones del cliente","Dos puestos diarios, pantalanes y varadero, 28 días consecutivos, incluidos fines de semana; relevo e incidencias registrados.",José Lara Arce,8,O:8,"Asignación y cuadrante integrado por código; entornos, usuarios y habilitaciones autorizados",C07 13.3.9; presencia adicional a conciliación,2028-08-12,2028-08-12,CORTE-E2;MARCHA-E2,Recepción por etapa o control del periodo; no acredita ejecución,C07 13.3.9; presencia adicional a conciliación
1.11.6.2.12.2,"Estabilización presencial E2, día 12, zona 2",1.11,Operación,"Estabilización presencial E2, día 12, zona 2",Resultado de la ficha de familia y del paquete original; registro individual por código/ventana,"No duplicar padres, informes, ingeniería ni cobertura; no incluye horas de contraparte ni obras/adquisiciones del cliente","Dos puestos diarios, pantalanes y varadero, 28 días consecutivos, incluidos fines de semana; relevo e incidencias registrados.",José Lara Arce,8,O:8,"Asignación y cuadrante integrado por código; entornos, usuarios y habilitaciones autorizados",C07 13.3.9; presencia adicional a conciliación,2028-08-12,2028-08-12,CORTE-E2;MARCHA-E2,Recepción por etapa o control del periodo; no acredita ejecución,C07 13.3.9; presencia adicional a conciliación
1.11.6.2.13.1,"Estabilización presencial E2, día 13, zona 1",1.11,Operación,"Estabilización presencial E2, día 13, zona 1",Resultado de la ficha de familia y del paquete original; registro individual por código/ventana,"No duplicar padres, informes, ingeniería ni cobertura; no incluye horas de contraparte ni obras/adquisiciones del cliente","Dos puestos diarios, pantalanes y varadero, 28 días consecutivos, incluidos fines de semana; relevo e incidencias registrados.",José Lara Arce,8,O:8,"Asignación y cuadrante integrado por código; entornos, usuarios y habilitaciones autorizados",C07 13.3.9; presencia adicional a conciliación,2028-08-13,2028-08-13,CORTE-E2;MARCHA-E2,Recepción por etapa o control del periodo; no acredita ejecución,C07 13.3.9; presencia adicional a conciliación
1.11.6.2.13.2,"Estabilización presencial E2, día 13, zona 2",1.11,Operación,"Estabilización presencial E2, día 13, zona 2",Resultado de la ficha de familia y del paquete original; registro individual por código/ventana,"No duplicar padres, informes, ingeniería ni cobertura; no incluye horas de contraparte ni obras/adquisiciones del cliente","Dos puestos diarios, pantalanes y varadero, 28 días consecutivos, incluidos fines de semana; relevo e incidencias registrados.",José Lara Arce,8,O:8,"Asignación y cuadrante integrado por código; entornos, usuarios y habilitaciones autorizados",C07 13.3.9; presencia adicional a conciliación,2028-08-13,2028-08-13,CORTE-E2;MARCHA-E2,Recepción por etapa o control del periodo; no acredita ejecución,C07 13.3.9; presencia adicional a conciliación
1.11.6.2.14.1,"Estabilización presencial E2, día 14, zona 1",1.11,Operación,"Estabilización presencial E2, día 14, zona 1",Resultado de la ficha de familia y del paquete original; registro individual por código/ventana,"No duplicar padres, informes, ingeniería ni cobertura; no incluye horas de contraparte ni obras/adquisiciones del cliente","Dos puestos diarios, pantalanes y varadero, 28 días consecutivos, incluidos fines de semana; relevo e incidencias registrados.",José Lara Arce,8,O:8,"Asignación y cuadrante integrado por código; entornos, usuarios y habilitaciones autorizados",C07 13.3.9; presencia adicional a conciliación,2028-08-14,2028-08-14,CORTE-E2;MARCHA-E2,Recepción por etapa o control del periodo; no acredita ejecución,C07 13.3.9; presencia adicional a conciliación
1.11.6.2.14.2,"Estabilización presencial E2, día 14, zona 2",1.11,Operación,"Estabilización presencial E2, día 14, zona 2",Resultado de la ficha de familia y del paquete original; registro individual por código/ventana,"No duplicar padres, informes, ingeniería ni cobertura; no incluye horas de contraparte ni obras/adquisiciones del cliente","Dos puestos diarios, pantalanes y varadero, 28 días consecutivos, incluidos fines de semana; relevo e incidencias registrados.",José Lara Arce,8,O:8,"Asignación y cuadrante integrado por código; entornos, usuarios y habilitaciones autorizados",C07 13.3.9; presencia adicional a conciliación,2028-08-14,2028-08-14,CORTE-E2;MARCHA-E2,Recepción por etapa o control del periodo; no acredita ejecución,C07 13.3.9; presencia adicional a conciliación
1.11.6.2.15.1,"Estabilización presencial E2, día 15, zona 1",1.11,Operación,"Estabilización presencial E2, día 15, zona 1",Resultado de la ficha de familia y del paquete original; registro individual por código/ventana,"No duplicar padres, informes, ingeniería ni cobertura; no incluye horas de contraparte ni obras/adquisiciones del cliente","Dos puestos diarios, pantalanes y varadero, 28 días consecutivos, incluidos fines de semana; relevo e incidencias registrados.",José Lara Arce,8,O:8,"Asignación y cuadrante integrado por código; entornos, usuarios y habilitaciones autorizados",C07 13.3.9; presencia adicional a conciliación,2028-08-15,2028-08-15,CORTE-E2;MARCHA-E2,Recepción por etapa o control del periodo; no acredita ejecución,C07 13.3.9; presencia adicional a conciliación
1.11.6.2.15.2,"Estabilización presencial E2, día 15, zona 2",1.11,Operación,"Estabilización presencial E2, día 15, zona 2",Resultado de la ficha de familia y del paquete original; registro individual por código/ventana,"No duplicar padres, informes, ingeniería ni cobertura; no incluye horas de contraparte ni obras/adquisiciones del cliente","Dos puestos diarios, pantalanes y varadero, 28 días consecutivos, incluidos fines de semana; relevo e incidencias registrados.",José Lara Arce,8,O:8,"Asignación y cuadrante integrado por código; entornos, usuarios y habilitaciones autorizados",C07 13.3.9; presencia adicional a conciliación,2028-08-15,2028-08-15,CORTE-E2;MARCHA-E2,Recepción por etapa o control del periodo; no acredita ejecución,C07 13.3.9; presencia adicional a conciliación
1.11.6.2.16.1,"Estabilización presencial E2, día 16, zona 1",1.11,Operación,"Estabilización presencial E2, día 16, zona 1",Resultado de la ficha de familia y del paquete original; registro individual por código/ventana,"No duplicar padres, informes, ingeniería ni cobertura; no incluye horas de contraparte ni obras/adquisiciones del cliente","Dos puestos diarios, pantalanes y varadero, 28 días consecutivos, incluidos fines de semana; relevo e incidencias registrados.",José Lara Arce,8,O:8,"Asignación y cuadrante integrado por código; entornos, usuarios y habilitaciones autorizados",C07 13.3.9; presencia adicional a conciliación,2028-08-16,2028-08-16,CORTE-E2;MARCHA-E2,Recepción por etapa o control del periodo; no acredita ejecución,C07 13.3.9; presencia adicional a conciliación
1.11.6.2.16.2,"Estabilización presencial E2, día 16, zona 2",1.11,Operación,"Estabilización presencial E2, día 16, zona 2",Resultado de la ficha de familia y del paquete original; registro individual por código/ventana,"No duplicar padres, informes, ingeniería ni cobertura; no incluye horas de contraparte ni obras/adquisiciones del cliente","Dos puestos diarios, pantalanes y varadero, 28 días consecutivos, incluidos fines de semana; relevo e incidencias registrados.",José Lara Arce,8,O:8,"Asignación y cuadrante integrado por código; entornos, usuarios y habilitaciones autorizados",C07 13.3.9; presencia adicional a conciliación,2028-08-16,2028-08-16,CORTE-E2;MARCHA-E2,Recepción por etapa o control del periodo; no acredita ejecución,C07 13.3.9; presencia adicional a conciliación
1.11.6.2.17.1,"Estabilización presencial E2, día 17, zona 1",1.11,Operación,"Estabilización presencial E2, día 17, zona 1",Resultado de la ficha de familia y del paquete original; registro individual por código/ventana,"No duplicar padres, informes, ingeniería ni cobertura; no incluye horas de contraparte ni obras/adquisiciones del cliente","Dos puestos diarios, pantalanes y varadero, 28 días consecutivos, incluidos fines de semana; relevo e incidencias registrados.",José Lara Arce,8,O:8,"Asignación y cuadrante integrado por código; entornos, usuarios y habilitaciones autorizados",C07 13.3.9; presencia adicional a conciliación,2028-08-17,2028-08-17,CORTE-E2;MARCHA-E2,Recepción por etapa o control del periodo; no acredita ejecución,C07 13.3.9; presencia adicional a conciliación
1.11.6.2.17.2,"Estabilización presencial E2, día 17, zona 2",1.11,Operación,"Estabilización presencial E2, día 17, zona 2",Resultado de la ficha de familia y del paquete original; registro individual por código/ventana,"No duplicar padres, informes, ingeniería ni cobertura; no incluye horas de contraparte ni obras/adquisiciones del cliente","Dos puestos diarios, pantalanes y varadero, 28 días consecutivos, incluidos fines de semana; relevo e incidencias registrados.",José Lara Arce,8,O:8,"Asignación y cuadrante integrado por código; entornos, usuarios y habilitaciones autorizados",C07 13.3.9; presencia adicional a conciliación,2028-08-17,2028-08-17,CORTE-E2;MARCHA-E2,Recepción por etapa o control del periodo; no acredita ejecución,C07 13.3.9; presencia adicional a conciliación
1.11.6.2.18.1,"Estabilización presencial E2, día 18, zona 1",1.11,Operación,"Estabilización presencial E2, día 18, zona 1",Resultado de la ficha de familia y del paquete original; registro individual por código/ventana,"No duplicar padres, informes, ingeniería ni cobertura; no incluye horas de contraparte ni obras/adquisiciones del cliente","Dos puestos diarios, pantalanes y varadero, 28 días consecutivos, incluidos fines de semana; relevo e incidencias registrados.",José Lara Arce,8,O:8,"Asignación y cuadrante integrado por código; entornos, usuarios y habilitaciones autorizados",C07 13.3.9; presencia adicional a conciliación,2028-08-18,2028-08-18,CORTE-E2;MARCHA-E2,Recepción por etapa o control del periodo; no acredita ejecución,C07 13.3.9; presencia adicional a conciliación
1.11.6.2.18.2,"Estabilización presencial E2, día 18, zona 2",1.11,Operación,"Estabilización presencial E2, día 18, zona 2",Resultado de la ficha de familia y del paquete original; registro individual por código/ventana,"No duplicar padres, informes, ingeniería ni cobertura; no incluye horas de contraparte ni obras/adquisiciones del cliente","Dos puestos diarios, pantalanes y varadero, 28 días consecutivos, incluidos fines de semana; relevo e incidencias registrados.",José Lara Arce,8,O:8,"Asignación y cuadrante integrado por código; entornos, usuarios y habilitaciones autorizados",C07 13.3.9; presencia adicional a conciliación,2028-08-18,2028-08-18,CORTE-E2;MARCHA-E2,Recepción por etapa o control del periodo; no acredita ejecución,C07 13.3.9; presencia adicional a conciliación
1.11.6.2.19.1,"Estabilización presencial E2, día 19, zona 1",1.11,Operación,"Estabilización presencial E2, día 19, zona 1",Resultado de la ficha de familia y del paquete original; registro individual por código/ventana,"No duplicar padres, informes, ingeniería ni cobertura; no incluye horas de contraparte ni obras/adquisiciones del cliente","Dos puestos diarios, pantalanes y varadero, 28 días consecutivos, incluidos fines de semana; relevo e incidencias registrados.",José Lara Arce,8,O:8,"Asignación y cuadrante integrado por código; entornos, usuarios y habilitaciones autorizados",C07 13.3.9; presencia adicional a conciliación,2028-08-19,2028-08-19,CORTE-E2;MARCHA-E2,Recepción por etapa o control del periodo; no acredita ejecución,C07 13.3.9; presencia adicional a conciliación
1.11.6.2.19.2,"Estabilización presencial E2, día 19, zona 2",1.11,Operación,"Estabilización presencial E2, día 19, zona 2",Resultado de la ficha de familia y del paquete original; registro individual por código/ventana,"No duplicar padres, informes, ingeniería ni cobertura; no incluye horas de contraparte ni obras/adquisiciones del cliente","Dos puestos diarios, pantalanes y varadero, 28 días consecutivos, incluidos fines de semana; relevo e incidencias registrados.",José Lara Arce,8,O:8,"Asignación y cuadrante integrado por código; entornos, usuarios y habilitaciones autorizados",C07 13.3.9; presencia adicional a conciliación,2028-08-19,2028-08-19,CORTE-E2;MARCHA-E2,Recepción por etapa o control del periodo; no acredita ejecución,C07 13.3.9; presencia adicional a conciliación
1.11.6.2.20.1,"Estabilización presencial E2, día 20, zona 1",1.11,Operación,"Estabilización presencial E2, día 20, zona 1",Resultado de la ficha de familia y del paquete original; registro individual por código/ventana,"No duplicar padres, informes, ingeniería ni cobertura; no incluye horas de contraparte ni obras/adquisiciones del cliente","Dos puestos diarios, pantalanes y varadero, 28 días consecutivos, incluidos fines de semana; relevo e incidencias registrados.",José Lara Arce,8,O:8,"Asignación y cuadrante integrado por código; entornos, usuarios y habilitaciones autorizados",C07 13.3.9; presencia adicional a conciliación,2028-08-20,2028-08-20,CORTE-E2;MARCHA-E2,Recepción por etapa o control del periodo; no acredita ejecución,C07 13.3.9; presencia adicional a conciliación
1.11.6.2.20.2,"Estabilización presencial E2, día 20, zona 2",1.11,Operación,"Estabilización presencial E2, día 20, zona 2",Resultado de la ficha de familia y del paquete original; registro individual por código/ventana,"No duplicar padres, informes, ingeniería ni cobertura; no incluye horas de contraparte ni obras/adquisiciones del cliente","Dos puestos diarios, pantalanes y varadero, 28 días consecutivos, incluidos fines de semana; relevo e incidencias registrados.",José Lara Arce,8,O:8,"Asignación y cuadrante integrado por código; entornos, usuarios y habilitaciones autorizados",C07 13.3.9; presencia adicional a conciliación,2028-08-20,2028-08-20,CORTE-E2;MARCHA-E2,Recepción por etapa o control del periodo; no acredita ejecución,C07 13.3.9; presencia adicional a conciliación
1.11.6.2.21.1,"Estabilización presencial E2, día 21, zona 1",1.11,Operación,"Estabilización presencial E2, día 21, zona 1",Resultado de la ficha de familia y del paquete original; registro individual por código/ventana,"No duplicar padres, informes, ingeniería ni cobertura; no incluye horas de contraparte ni obras/adquisiciones del cliente","Dos puestos diarios, pantalanes y varadero, 28 días consecutivos, incluidos fines de semana; relevo e incidencias registrados.",José Lara Arce,8,O:8,"Asignación y cuadrante integrado por código; entornos, usuarios y habilitaciones autorizados",C07 13.3.9; presencia adicional a conciliación,2028-08-21,2028-08-21,CORTE-E2;MARCHA-E2,Recepción por etapa o control del periodo; no acredita ejecución,C07 13.3.9; presencia adicional a conciliación
1.11.6.2.21.2,"Estabilización presencial E2, día 21, zona 2",1.11,Operación,"Estabilización presencial E2, día 21, zona 2",Resultado de la ficha de familia y del paquete original; registro individual por código/ventana,"No duplicar padres, informes, ingeniería ni cobertura; no incluye horas de contraparte ni obras/adquisiciones del cliente","Dos puestos diarios, pantalanes y varadero, 28 días consecutivos, incluidos fines de semana; relevo e incidencias registrados.",José Lara Arce,8,O:8,"Asignación y cuadrante integrado por código; entornos, usuarios y habilitaciones autorizados",C07 13.3.9; presencia adicional a conciliación,2028-08-21,2028-08-21,CORTE-E2;MARCHA-E2,Recepción por etapa o control del periodo; no acredita ejecución,C07 13.3.9; presencia adicional a conciliación
1.11.6.2.22.1,"Estabilización presencial E2, día 22, zona 1",1.11,Operación,"Estabilización presencial E2, día 22, zona 1",Resultado de la ficha de familia y del paquete original; registro individual por código/ventana,"No duplicar padres, informes, ingeniería ni cobertura; no incluye horas de contraparte ni obras/adquisiciones del cliente","Dos puestos diarios, pantalanes y varadero, 28 días consecutivos, incluidos fines de semana; relevo e incidencias registrados.",José Lara Arce,8,O:8,"Asignación y cuadrante integrado por código; entornos, usuarios y habilitaciones autorizados",C07 13.3.9; presencia adicional a conciliación,2028-08-22,2028-08-22,CORTE-E2;MARCHA-E2,Recepción por etapa o control del periodo; no acredita ejecución,C07 13.3.9; presencia adicional a conciliación
1.11.6.2.22.2,"Estabilización presencial E2, día 22, zona 2",1.11,Operación,"Estabilización presencial E2, día 22, zona 2",Resultado de la ficha de familia y del paquete original; registro individual por código/ventana,"No duplicar padres, informes, ingeniería ni cobertura; no incluye horas de contraparte ni obras/adquisiciones del cliente","Dos puestos diarios, pantalanes y varadero, 28 días consecutivos, incluidos fines de semana; relevo e incidencias registrados.",José Lara Arce,8,O:8,"Asignación y cuadrante integrado por código; entornos, usuarios y habilitaciones autorizados",C07 13.3.9; presencia adicional a conciliación,2028-08-22,2028-08-22,CORTE-E2;MARCHA-E2,Recepción por etapa o control del periodo; no acredita ejecución,C07 13.3.9; presencia adicional a conciliación
1.11.6.2.23.1,"Estabilización presencial E2, día 23, zona 1",1.11,Operación,"Estabilización presencial E2, día 23, zona 1",Resultado de la ficha de familia y del paquete original; registro individual por código/ventana,"No duplicar padres, informes, ingeniería ni cobertura; no incluye horas de contraparte ni obras/adquisiciones del cliente","Dos puestos diarios, pantalanes y varadero, 28 días consecutivos, incluidos fines de semana; relevo e incidencias registrados.",José Lara Arce,8,O:8,"Asignación y cuadrante integrado por código; entornos, usuarios y habilitaciones autorizados",C07 13.3.9; presencia adicional a conciliación,2028-08-23,2028-08-23,CORTE-E2;MARCHA-E2,Recepción por etapa o control del periodo; no acredita ejecución,C07 13.3.9; presencia adicional a conciliación
1.11.6.2.23.2,"Estabilización presencial E2, día 23, zona 2",1.11,Operación,"Estabilización presencial E2, día 23, zona 2",Resultado de la ficha de familia y del paquete original; registro individual por código/ventana,"No duplicar padres, informes, ingeniería ni cobertura; no incluye horas de contraparte ni obras/adquisiciones del cliente","Dos puestos diarios, pantalanes y varadero, 28 días consecutivos, incluidos fines de semana; relevo e incidencias registrados.",José Lara Arce,8,O:8,"Asignación y cuadrante integrado por código; entornos, usuarios y habilitaciones autorizados",C07 13.3.9; presencia adicional a conciliación,2028-08-23,2028-08-23,CORTE-E2;MARCHA-E2,Recepción por etapa o control del periodo; no acredita ejecución,C07 13.3.9; presencia adicional a conciliación
1.11.6.2.24.1,"Estabilización presencial E2, día 24, zona 1",1.11,Operación,"Estabilización presencial E2, día 24, zona 1",Resultado de la ficha de familia y del paquete original; registro individual por código/ventana,"No duplicar padres, informes, ingeniería ni cobertura; no incluye horas de contraparte ni obras/adquisiciones del cliente","Dos puestos diarios, pantalanes y varadero, 28 días consecutivos, incluidos fines de semana; relevo e incidencias registrados.",José Lara Arce,8,O:8,"Asignación y cuadrante integrado por código; entornos, usuarios y habilitaciones autorizados",C07 13.3.9; presencia adicional a conciliación,2028-08-24,2028-08-24,CORTE-E2;MARCHA-E2,Recepción por etapa o control del periodo; no acredita ejecución,C07 13.3.9; presencia adicional a conciliación
1.11.6.2.24.2,"Estabilización presencial E2, día 24, zona 2",1.11,Operación,"Estabilización presencial E2, día 24, zona 2",Resultado de la ficha de familia y del paquete original; registro individual por código/ventana,"No duplicar padres, informes, ingeniería ni cobertura; no incluye horas de contraparte ni obras/adquisiciones del cliente","Dos puestos diarios, pantalanes y varadero, 28 días consecutivos, incluidos fines de semana; relevo e incidencias registrados.",José Lara Arce,8,O:8,"Asignación y cuadrante integrado por código; entornos, usuarios y habilitaciones autorizados",C07 13.3.9; presencia adicional a conciliación,2028-08-24,2028-08-24,CORTE-E2;MARCHA-E2,Recepción por etapa o control del periodo; no acredita ejecución,C07 13.3.9; presencia adicional a conciliación
1.11.6.2.25.1,"Estabilización presencial E2, día 25, zona 1",1.11,Operación,"Estabilización presencial E2, día 25, zona 1",Resultado de la ficha de familia y del paquete original; registro individual por código/ventana,"No duplicar padres, informes, ingeniería ni cobertura; no incluye horas de contraparte ni obras/adquisiciones del cliente","Dos puestos diarios, pantalanes y varadero, 28 días consecutivos, incluidos fines de semana; relevo e incidencias registrados.",José Lara Arce,8,O:8,"Asignación y cuadrante integrado por código; entornos, usuarios y habilitaciones autorizados",C07 13.3.9; presencia adicional a conciliación,2028-08-25,2028-08-25,CORTE-E2;MARCHA-E2,Recepción por etapa o control del periodo; no acredita ejecución,C07 13.3.9; presencia adicional a conciliación
1.11.6.2.25.2,"Estabilización presencial E2, día 25, zona 2",1.11,Operación,"Estabilización presencial E2, día 25, zona 2",Resultado de la ficha de familia y del paquete original; registro individual por código/ventana,"No duplicar padres, informes, ingeniería ni cobertura; no incluye horas de contraparte ni obras/adquisiciones del cliente","Dos puestos diarios, pantalanes y varadero, 28 días consecutivos, incluidos fines de semana; relevo e incidencias registrados.",José Lara Arce,8,O:8,"Asignación y cuadrante integrado por código; entornos, usuarios y habilitaciones autorizados",C07 13.3.9; presencia adicional a conciliación,2028-08-25,2028-08-25,CORTE-E2;MARCHA-E2,Recepción por etapa o control del periodo; no acredita ejecución,C07 13.3.9; presencia adicional a conciliación
1.11.6.2.26.1,"Estabilización presencial E2, día 26, zona 1",1.11,Operación,"Estabilización presencial E2, día 26, zona 1",Resultado de la ficha de familia y del paquete original; registro individual por código/ventana,"No duplicar padres, informes, ingeniería ni cobertura; no incluye horas de contraparte ni obras/adquisiciones del cliente","Dos puestos diarios, pantalanes y varadero, 28 días consecutivos, incluidos fines de semana; relevo e incidencias registrados.",José Lara Arce,8,O:8,"Asignación y cuadrante integrado por código; entornos, usuarios y habilitaciones autorizados",C07 13.3.9; presencia adicional a conciliación,2028-08-26,2028-08-26,CORTE-E2;MARCHA-E2,Recepción por etapa o control del periodo; no acredita ejecución,C07 13.3.9; presencia adicional a conciliación
1.11.6.2.26.2,"Estabilización presencial E2, día 26, zona 2",1.11,Operación,"Estabilización presencial E2, día 26, zona 2",Resultado de la ficha de familia y del paquete original; registro individual por código/ventana,"No duplicar padres, informes, ingeniería ni cobertura; no incluye horas de contraparte ni obras/adquisiciones del cliente","Dos puestos diarios, pantalanes y varadero, 28 días consecutivos, incluidos fines de semana; relevo e incidencias registrados.",José Lara Arce,8,O:8,"Asignación y cuadrante integrado por código; entornos, usuarios y habilitaciones autorizados",C07 13.3.9; presencia adicional a conciliación,2028-08-26,2028-08-26,CORTE-E2;MARCHA-E2,Recepción por etapa o control del periodo; no acredita ejecución,C07 13.3.9; presencia adicional a conciliación
1.11.6.2.27.1,"Estabilización presencial E2, día 27, zona 1",1.11,Operación,"Estabilización presencial E2, día 27, zona 1",Resultado de la ficha de familia y del paquete original; registro individual por código/ventana,"No duplicar padres, informes, ingeniería ni cobertura; no incluye horas de contraparte ni obras/adquisiciones del cliente","Dos puestos diarios, pantalanes y varadero, 28 días consecutivos, incluidos fines de semana; relevo e incidencias registrados.",José Lara Arce,8,O:8,"Asignación y cuadrante integrado por código; entornos, usuarios y habilitaciones autorizados",C07 13.3.9; presencia adicional a conciliación,2028-08-27,2028-08-27,CORTE-E2;MARCHA-E2,Recepción por etapa o control del periodo; no acredita ejecución,C07 13.3.9; presencia adicional a conciliación
1.11.6.2.27.2,"Estabilización presencial E2, día 27, zona 2",1.11,Operación,"Estabilización presencial E2, día 27, zona 2",Resultado de la ficha de familia y del paquete original; registro individual por código/ventana,"No duplicar padres, informes, ingeniería ni cobertura; no incluye horas de contraparte ni obras/adquisiciones del cliente","Dos puestos diarios, pantalanes y varadero, 28 días consecutivos, incluidos fines de semana; relevo e incidencias registrados.",José Lara Arce,8,O:8,"Asignación y cuadrante integrado por código; entornos, usuarios y habilitaciones autorizados",C07 13.3.9; presencia adicional a conciliación,2028-08-27,2028-08-27,CORTE-E2;MARCHA-E2,Recepción por etapa o control del periodo; no acredita ejecución,C07 13.3.9; presencia adicional a conciliación
1.11.6.2.28.1,"Estabilización presencial E2, día 28, zona 1",1.11,Operación,"Estabilización presencial E2, día 28, zona 1",Resultado de la ficha de familia y del paquete original; registro individual por código/ventana,"No duplicar padres, informes, ingeniería ni cobertura; no incluye horas de contraparte ni obras/adquisiciones del cliente","Dos puestos diarios, pantalanes y varadero, 28 días consecutivos, incluidos fines de semana; relevo e incidencias registrados.",José Lara Arce,8,O:8,"Asignación y cuadrante integrado por código; entornos, usuarios y habilitaciones autorizados",C07 13.3.9; presencia adicional a conciliación,2028-08-28,2028-08-28,CORTE-E2;MARCHA-E2,Recepción por etapa o control del periodo; no acredita ejecución,C07 13.3.9; presencia adicional a conciliación
1.11.6.2.28.2,"Estabilización presencial E2, día 28, zona 2",1.11,Operación,"Estabilización presencial E2, día 28, zona 2",Resultado de la ficha de familia y del paquete original; registro individual por código/ventana,"No duplicar padres, informes, ingeniería ni cobertura; no incluye horas de contraparte ni obras/adquisiciones del cliente","Dos puestos diarios, pantalanes y varadero, 28 días consecutivos, incluidos fines de semana; relevo e incidencias registrados.",José Lara Arce,8,O:8,"Asignación y cuadrante integrado por código; entornos, usuarios y habilitaciones autorizados",C07 13.3.9; presencia adicional a conciliación,2028-08-28,2028-08-28,CORTE-E2;MARCHA-E2,Recepción por etapa o control del periodo; no acredita ejecución,C07 13.3.9; presencia adicional a conciliación
1.12.10.24.1.1.1,"Incorporación estacional mes 24, perfil 1, cohorte 1",1.12,Operación,"Incorporación estacional mes 24, perfil 1, cohorte 1",Resultado de la ficha de familia y del paquete original; registro individual por código/ventana,"No duplicar padres, informes, ingeniería ni cobertura; no incluye horas de contraparte ni obras/adquisiciones del cliente","Incorporación y certificación antes del 15 de diciembre, incluidos monitores; 300 plazas anuales reservadas, ampliación sin costo si se requiere.",José Lara Arce,12,A:2;Q:2;L:8,"Asignación y cuadrante integrado por código; entornos, usuarios y habilitaciones autorizados",RT-22.04/06; estacionalidad,2028-11-02,2028-11-03,SERVICIO-ACTIVO,Recepción por etapa o control del periodo; no acredita ejecución,RT-22.04/06; estacionalidad
1.12.10.24.1.1.2,"Incorporación estacional mes 24, perfil 1, cohorte 2",1.12,Operación,"Incorporación estacional mes 24, perfil 1, cohorte 2",Resultado de la ficha de familia y del paquete original; registro individual por código/ventana,"No duplicar padres, informes, ingeniería ni cobertura; no incluye horas de contraparte ni obras/adquisiciones del cliente","Incorporación y certificación antes del 15 de diciembre, incluidos monitores; 300 plazas anuales reservadas, ampliación sin costo si se requiere.",José Lara Arce,12,A:2;Q:2;L:8,"Asignación y cuadrante integrado por código; entornos, usuarios y habilitaciones autorizados",RT-22.04/06; estacionalidad,2028-11-09,2028-11-13,SERVICIO-ACTIVO,Recepción por etapa o control del periodo; no acredita ejecución,RT-22.04/06; estacionalidad
1.12.10.24.1.1.3,"Incorporación estacional mes 24, perfil 1, cohorte 3",1.12,Operación,"Incorporación estacional mes 24, perfil 1, cohorte 3",Resultado de la ficha de familia y del paquete original; registro individual por código/ventana,"No duplicar padres, informes, ingeniería ni cobertura; no incluye horas de contraparte ni obras/adquisiciones del cliente","Incorporación y certificación antes del 15 de diciembre, incluidos monitores; 300 plazas anuales reservadas, ampliación sin costo si se requiere.",José Lara Arce,12,A:2;Q:2;L:8,"Asignación y cuadrante integrado por código; entornos, usuarios y habilitaciones autorizados",RT-22.04/06; estacionalidad,2028-11-10,2028-11-14,SERVICIO-ACTIVO,Recepción por etapa o control del periodo; no acredita ejecución,RT-22.04/06; estacionalidad
1.12.10.24.1.1.4,"Incorporación estacional mes 24, perfil 1, cohorte 4",1.12,Operación,"Incorporación estacional mes 24, perfil 1, cohorte 4",Resultado de la ficha de familia y del paquete original; registro individual por código/ventana,"No duplicar padres, informes, ingeniería ni cobertura; no incluye horas de contraparte ni obras/adquisiciones del cliente","Incorporación y certificación antes del 15 de diciembre, incluidos monitores; 300 plazas anuales reservadas, ampliación sin costo si se requiere.",José Lara Arce,12,A:2;Q:2;L:8,"Asignación y cuadrante integrado por código; entornos, usuarios y habilitaciones autorizados",RT-22.04/06; estacionalidad,2028-11-06,2028-11-08,SERVICIO-ACTIVO,Recepción por etapa o control del periodo; no acredita ejecución,RT-22.04/06; estacionalidad
1.12.10.24.1.1.5,"Incorporación estacional mes 24, perfil 1, cohorte 5",1.12,Operación,"Incorporación estacional mes 24, perfil 1, cohorte 5",Resultado de la ficha de familia y del paquete original; registro individual por código/ventana,"No duplicar padres, informes, ingeniería ni cobertura; no incluye horas de contraparte ni obras/adquisiciones del cliente","Incorporación y certificación antes del 15 de diciembre, incluidos monitores; 300 plazas anuales reservadas, ampliación sin costo si se requiere.",José Lara Arce,12,A:2;Q:2;L:8,"Asignación y cuadrante integrado por código; entornos, usuarios y habilitaciones autorizados",RT-22.04/06; estacionalidad,2028-11-07,2028-11-09,SERVICIO-ACTIVO,Recepción por etapa o control del periodo; no acredita ejecución,RT-22.04/06; estacionalidad
1.12.10.24.1.1.6,"Incorporación estacional mes 24, perfil 1, cohorte 6",1.12,Operación,"Incorporación estacional mes 24, perfil 1, cohorte 6",Resultado de la ficha de familia y del paquete original; registro individual por código/ventana,"No duplicar padres, informes, ingeniería ni cobertura; no incluye horas de contraparte ni obras/adquisiciones del cliente","Incorporación y certificación antes del 15 de diciembre, incluidos monitores; 300 plazas anuales reservadas, ampliación sin costo si se requiere.",José Lara Arce,12,A:2;Q:2;L:8,"Asignación y cuadrante integrado por código; entornos, usuarios y habilitaciones autorizados",RT-22.04/06; estacionalidad,2028-11-09,2028-11-10,SERVICIO-ACTIVO,Recepción por etapa o control del periodo; no acredita ejecución,RT-22.04/06; estacionalidad
1.12.10.24.1.1.7,"Incorporación estacional mes 24, perfil 1, cohorte 7",1.12,Operación,"Incorporación estacional mes 24, perfil 1, cohorte 7",Resultado de la ficha de familia y del paquete original; registro individual por código/ventana,"No duplicar padres, informes, ingeniería ni cobertura; no incluye horas de contraparte ni obras/adquisiciones del cliente","Incorporación y certificación antes del 15 de diciembre, incluidos monitores; 300 plazas anuales reservadas, ampliación sin costo si se requiere.",José Lara Arce,12,A:2;Q:2;L:8,"Asignación y cuadrante integrado por código; entornos, usuarios y habilitaciones autorizados",RT-22.04/06; estacionalidad,2028-11-10,2028-11-13,SERVICIO-ACTIVO,Recepción por etapa o control del periodo; no acredita ejecución,RT-22.04/06; estacionalidad
1.12.10.24.1.1.8,"Incorporación estacional mes 24, perfil 1, cohorte 8",1.12,Operación,"Incorporación estacional mes 24, perfil 1, cohorte 8",Resultado de la ficha de familia y del paquete original; registro individual por código/ventana,"No duplicar padres, informes, ingeniería ni cobertura; no incluye horas de contraparte ni obras/adquisiciones del cliente","Incorporación y certificación antes del 15 de diciembre, incluidos monitores; 300 plazas anuales reservadas, ampliación sin costo si se requiere.",José Lara Arce,12,A:2;Q:2;L:8,"Asignación y cuadrante integrado por código; entornos, usuarios y habilitaciones autorizados",RT-22.04/06; estacionalidad,2028-11-13,2028-11-14,SERVICIO-ACTIVO,Recepción por etapa o control del periodo; no acredita ejecución,RT-22.04/06; estacionalidad
1.12.10.24.1.1.9,"Incorporación estacional mes 24, perfil 1, cohorte 9",1.12,Operación,"Incorporación estacional mes 24, perfil 1, cohorte 9",Resultado de la ficha de familia y del paquete original; registro individual por código/ventana,"No duplicar padres, informes, ingeniería ni cobertura; no incluye horas de contraparte ni obras/adquisiciones del cliente","Incorporación y certificación antes del 15 de diciembre, incluidos monitores; 300 plazas anuales reservadas, ampliación sin costo si se requiere.",José Lara Arce,12,A:2;Q:2;L:8,"Asignación y cuadrante integrado por código; entornos, usuarios y habilitaciones autorizados",RT-22.04/06; estacionalidad,2028-11-14,2028-11-15,SERVICIO-ACTIVO,Recepción por etapa o control del periodo; no acredita ejecución,RT-22.04/06; estacionalidad
1.12.10.24.1.1.10,"Incorporación estacional mes 24, perfil 1, cohorte 10",1.12,Operación,"Incorporación estacional mes 24, perfil 1, cohorte 10",Resultado de la ficha de familia y del paquete original; registro individual por código/ventana,"No duplicar padres, informes, ingeniería ni cobertura; no incluye horas de contraparte ni obras/adquisiciones del cliente","Incorporación y certificación antes del 15 de diciembre, incluidos monitores; 300 plazas anuales reservadas, ampliación sin costo si se requiere.",José Lara Arce,12,A:2;Q:2;L:8,"Asignación y cuadrante integrado por código; entornos, usuarios y habilitaciones autorizados",RT-22.04/06; estacionalidad,2028-11-03,2028-11-06,SERVICIO-ACTIVO,Recepción por etapa o control del periodo; no acredita ejecución,RT-22.04/06; estacionalidad
1.12.10.24.1.1.11,"Incorporación estacional mes 24, perfil 1, cohorte 11",1.12,Operación,"Incorporación estacional mes 24, perfil 1, cohorte 11",Resultado de la ficha de familia y del paquete original; registro individual por código/ventana,"No duplicar padres, informes, ingeniería ni cobertura; no incluye horas de contraparte ni obras/adquisiciones del cliente","Incorporación y certificación antes del 15 de diciembre, incluidos monitores; 300 plazas anuales reservadas, ampliación sin costo si se requiere.",José Lara Arce,12,A:2;Q:2;L:8,"Asignación y cuadrante integrado por código; entornos, usuarios y habilitaciones autorizados",RT-22.04/06; estacionalidad,2028-11-06,2028-11-07,SERVICIO-ACTIVO,Recepción por etapa o control del periodo; no acredita ejecución,RT-22.04/06; estacionalidad
1.12.10.24.1.1.12,"Incorporación estacional mes 24, perfil 1, cohorte 12",1.12,Operación,"Incorporación estacional mes 24, perfil 1, cohorte 12",Resultado de la ficha de familia y del paquete original; registro individual por código/ventana,"No duplicar padres, informes, ingeniería ni cobertura; no incluye horas de contraparte ni obras/adquisiciones del cliente","Incorporación y certificación antes del 15 de diciembre, incluidos monitores; 300 plazas anuales reservadas, ampliación sin costo si se requiere.",José Lara Arce,12,A:2;Q:2;L:8,"Asignación y cuadrante integrado por código; entornos, usuarios y habilitaciones autorizados",RT-22.04/06; estacionalidad,2028-11-07,2028-11-08,SERVICIO-ACTIVO,Recepción por etapa o control del periodo; no acredita ejecución,RT-22.04/06; estacionalidad
1.12.10.24.1.1.13,"Incorporación estacional mes 24, perfil 1, cohorte 13",1.12,Operación,"Incorporación estacional mes 24, perfil 1, cohorte 13",Resultado de la ficha de familia y del paquete original; registro individual por código/ventana,"No duplicar padres, informes, ingeniería ni cobertura; no incluye horas de contraparte ni obras/adquisiciones del cliente","Incorporación y certificación antes del 15 de diciembre, incluidos monitores; 300 plazas anuales reservadas, ampliación sin costo si se requiere.",José Lara Arce,12,A:2;Q:2;L:8,"Asignación y cuadrante integrado por código; entornos, usuarios y habilitaciones autorizados",RT-22.04/06; estacionalidad,2028-11-08,2028-11-09,SERVICIO-ACTIVO,Recepción por etapa o control del periodo; no acredita ejecución,RT-22.04/06; estacionalidad
1.12.10.24.1.1.14,"Incorporación estacional mes 24, perfil 1, cohorte 14",1.12,Operación,"Incorporación estacional mes 24, perfil 1, cohorte 14",Resultado de la ficha de familia y del paquete original; registro individual por código/ventana,"No duplicar padres, informes, ingeniería ni cobertura; no incluye horas de contraparte ni obras/adquisiciones del cliente","Incorporación y certificación antes del 15 de diciembre, incluidos monitores; 300 plazas anuales reservadas, ampliación sin costo si se requiere.",José Lara Arce,12,A:2;Q:2;L:8,"Asignación y cuadrante integrado por código; entornos, usuarios y habilitaciones autorizados",RT-22.04/06; estacionalidad,2028-11-09,2028-11-10,SERVICIO-ACTIVO,Recepción por etapa o control del periodo; no acredita ejecución,RT-22.04/06; estacionalidad
1.12.10.24.1.1.15,"Incorporación estacional mes 24, perfil 1, cohorte 15",1.12,Operación,"Incorporación estacional mes 24, perfil 1, cohorte 15",Resultado de la ficha de familia y del paquete original; registro individual por código/ventana,"No duplicar padres, informes, ingeniería ni cobertura; no incluye horas de contraparte ni obras/adquisiciones del cliente","Incorporación y certificación antes del 15 de diciembre, incluidos monitores; 300 plazas anuales reservadas, ampliación sin costo si se requiere.",José Lara Arce,12,A:2;Q:2;L:8,"Asignación y cuadrante integrado por código; entornos, usuarios y habilitaciones autorizados",RT-22.04/06; estacionalidad,2028-11-03,2028-11-06,SERVICIO-ACTIVO,Recepción por etapa o control del periodo; no acredita ejecución,RT-22.04/06; estacionalidad
1.12.10.24.1.1.16,"Incorporación estacional mes 24, perfil 1, cohorte 16",1.12,Operación,"Incorporación estacional mes 24, perfil 1, cohorte 16",Resultado de la ficha de familia y del paquete original; registro individual por código/ventana,"No duplicar padres, informes, ingeniería ni cobertura; no incluye horas de contraparte ni obras/adquisiciones del cliente","Incorporación y certificación antes del 15 de diciembre, incluidos monitores; 300 plazas anuales reservadas, ampliación sin costo si se requiere.",José Lara Arce,12,A:2;Q:2;L:8,"Asignación y cuadrante integrado por código; entornos, usuarios y habilitaciones autorizados",RT-22.04/06; estacionalidad,2028-11-06,2028-11-07,SERVICIO-ACTIVO,Recepción por etapa o control del periodo; no acredita ejecución,RT-22.04/06; estacionalidad
1.12.10.24.1.1.17,"Incorporación estacional mes 24, perfil 1, cohorte 17",1.12,Operación,"Incorporación estacional mes 24, perfil 1, cohorte 17",Resultado de la ficha de familia y del paquete original; registro individual por código/ventana,"No duplicar padres, informes, ingeniería ni cobertura; no incluye horas de contraparte ni obras/adquisiciones del cliente","Incorporación y certificación antes del 15 de diciembre, incluidos monitores; 300 plazas anuales reservadas, ampliación sin costo si se requiere.",José Lara Arce,12,A:2;Q:2;L:8,"Asignación y cuadrante integrado por código; entornos, usuarios y habilitaciones autorizados",RT-22.04/06; estacionalidad,2028-11-07,2028-11-08,SERVICIO-ACTIVO,Recepción por etapa o control del periodo; no acredita ejecución,RT-22.04/06; estacionalidad
1.12.10.24.1.1.18,"Incorporación estacional mes 24, perfil 1, cohorte 18",1.12,Operación,"Incorporación estacional mes 24, perfil 1, cohorte 18",Resultado de la ficha de familia y del paquete original; registro individual por código/ventana,"No duplicar padres, informes, ingeniería ni cobertura; no incluye horas de contraparte ni obras/adquisiciones del cliente","Incorporación y certificación antes del 15 de diciembre, incluidos monitores; 300 plazas anuales reservadas, ampliación sin costo si se requiere.",José Lara Arce,12,A:2;Q:2;L:8,"Asignación y cuadrante integrado por código; entornos, usuarios y habilitaciones autorizados",RT-22.04/06; estacionalidad,2028-11-08,2028-11-10,SERVICIO-ACTIVO,Recepción por etapa o control del periodo; no acredita ejecución,RT-22.04/06; estacionalidad
1.12.10.24.2.1.1,"Incorporación estacional mes 24, perfil 2, cohorte 1",1.12,Operación,"Incorporación estacional mes 24, perfil 2, cohorte 1",Resultado de la ficha de familia y del paquete original; registro individual por código/ventana,"No duplicar padres, informes, ingeniería ni cobertura; no incluye horas de contraparte ni obras/adquisiciones del cliente","Incorporación y certificación antes del 15 de diciembre, incluidos monitores; 300 plazas anuales reservadas, ampliación sin costo si se requiere.",José Lara Arce,12,A:2;Q:2;L:8,"Asignación y cuadrante integrado por código; entornos, usuarios y habilitaciones autorizados",RT-22.04/06; estacionalidad,2028-11-15,2028-11-17,SERVICIO-ACTIVO,Recepción por etapa o control del periodo; no acredita ejecución,RT-22.04/06; estacionalidad
1.12.10.24.2.1.2,"Incorporación estacional mes 24, perfil 2, cohorte 2",1.12,Operación,"Incorporación estacional mes 24, perfil 2, cohorte 2",Resultado de la ficha de familia y del paquete original; registro individual por código/ventana,"No duplicar padres, informes, ingeniería ni cobertura; no incluye horas de contraparte ni obras/adquisiciones del cliente","Incorporación y certificación antes del 15 de diciembre, incluidos monitores; 300 plazas anuales reservadas, ampliación sin costo si se requiere.",José Lara Arce,12,A:2;Q:2;L:8,"Asignación y cuadrante integrado por código; entornos, usuarios y habilitaciones autorizados",RT-22.04/06; estacionalidad,2028-11-16,2028-11-20,SERVICIO-ACTIVO,Recepción por etapa o control del periodo; no acredita ejecución,RT-22.04/06; estacionalidad
1.12.10.24.3.1.1,"Incorporación estacional mes 24, perfil 3, cohorte 1",1.12,Operación,"Incorporación estacional mes 24, perfil 3, cohorte 1",Resultado de la ficha de familia y del paquete original; registro individual por código/ventana,"No duplicar padres, informes, ingeniería ni cobertura; no incluye horas de contraparte ni obras/adquisiciones del cliente","Incorporación y certificación antes del 15 de diciembre, incluidos monitores; 300 plazas anuales reservadas, ampliación sin costo si se requiere.",José Lara Arce,12,A:2;Q:2;L:8,"Asignación y cuadrante integrado por código; entornos, usuarios y habilitaciones autorizados",RT-22.04/06; estacionalidad,2028-11-17,2028-11-20,SERVICIO-ACTIVO,Recepción por etapa o control del periodo; no acredita ejecución,RT-22.04/06; estacionalidad
1.12.10.24.4.1.1,"Incorporación estacional mes 24, perfil 4, cohorte 1",1.12,Operación,"Incorporación estacional mes 24, perfil 4, cohorte 1",Resultado de la ficha de familia y del paquete original; registro individual por código/ventana,"No duplicar padres, informes, ingeniería ni cobertura; no incluye horas de contraparte ni obras/adquisiciones del cliente","Incorporación y certificación antes del 15 de diciembre, incluidos monitores; 300 plazas anuales reservadas, ampliación sin costo si se requiere.",José Lara Arce,12,A:2;Q:2;L:8,"Asignación y cuadrante integrado por código; entornos, usuarios y habilitaciones autorizados",RT-22.04/06; estacionalidad,2028-11-17,2028-11-21,SERVICIO-ACTIVO,Recepción por etapa o control del periodo; no acredita ejecución,RT-22.04/06; estacionalidad
1.12.10.24.5.1.1,"Incorporación estacional mes 24, perfil 5, cohorte 1",1.12,Operación,"Incorporación estacional mes 24, perfil 5, cohorte 1",Resultado de la ficha de familia y del paquete original; registro individual por código/ventana,"No duplicar padres, informes, ingeniería ni cobertura; no incluye horas de contraparte ni obras/adquisiciones del cliente","Incorporación y certificación antes del 15 de diciembre, incluidos monitores; 300 plazas anuales reservadas, ampliación sin costo si se requiere.",José Lara Arce,12,A:2;Q:2;L:8,"Asignación y cuadrante integrado por código; entornos, usuarios y habilitaciones autorizados",RT-22.04/06; estacionalidad,2028-11-20,2028-11-21,SERVICIO-ACTIVO,Recepción por etapa o control del periodo; no acredita ejecución,RT-22.04/06; estacionalidad
1.12.10.24.5.1.2,"Incorporación estacional mes 24, perfil 5, cohorte 2",1.12,Operación,"Incorporación estacional mes 24, perfil 5, cohorte 2",Resultado de la ficha de familia y del paquete original; registro individual por código/ventana,"No duplicar padres, informes, ingeniería ni cobertura; no incluye horas de contraparte ni obras/adquisiciones del cliente","Incorporación y certificación antes del 15 de diciembre, incluidos monitores; 300 plazas anuales reservadas, ampliación sin costo si se requiere.",José Lara Arce,12,A:2;Q:2;L:8,"Asignación y cuadrante integrado por código; entornos, usuarios y habilitaciones autorizados",RT-22.04/06; estacionalidad,2028-11-20,2028-11-21,SERVICIO-ACTIVO,Recepción por etapa o control del periodo; no acredita ejecución,RT-22.04/06; estacionalidad
1.12.10.24.5.1.3,"Incorporación estacional mes 24, perfil 5, cohorte 3",1.12,Operación,"Incorporación estacional mes 24, perfil 5, cohorte 3",Resultado de la ficha de familia y del paquete original; registro individual por código/ventana,"No duplicar padres, informes, ingeniería ni cobertura; no incluye horas de contraparte ni obras/adquisiciones del cliente","Incorporación y certificación antes del 15 de diciembre, incluidos monitores; 300 plazas anuales reservadas, ampliación sin costo si se requiere.",José Lara Arce,12,A:2;Q:2;L:8,"Asignación y cuadrante integrado por código; entornos, usuarios y habilitaciones autorizados",RT-22.04/06; estacionalidad,2028-11-21,2028-11-22,SERVICIO-ACTIVO,Recepción por etapa o control del periodo; no acredita ejecución,RT-22.04/06; estacionalidad
1.12.10.36.1.1.1,"Incorporación estacional mes 36, perfil 1, cohorte 1",1.12,Operación,"Incorporación estacional mes 36, perfil 1, cohorte 1",Resultado de la ficha de familia y del paquete original; registro individual por código/ventana,"No duplicar padres, informes, ingeniería ni cobertura; no incluye horas de contraparte ni obras/adquisiciones del cliente","Incorporación y certificación antes del 15 de diciembre, incluidos monitores; 300 plazas anuales reservadas, ampliación sin costo si se requiere.",José Lara Arce,12,A:2;Q:2;L:8,"Asignación y cuadrante integrado por código; entornos, usuarios y habilitaciones autorizados",RT-22.04/06; estacionalidad,2029-11-05,2029-11-06,SERVICIO-ACTIVO,Recepción por etapa o control del periodo; no acredita ejecución,RT-22.04/06; estacionalidad
1.12.10.36.1.1.2,"Incorporación estacional mes 36, perfil 1, cohorte 2",1.12,Operación,"Incorporación estacional mes 36, perfil 1, cohorte 2",Resultado de la ficha de familia y del paquete original; registro individual por código/ventana,"No duplicar padres, informes, ingeniería ni cobertura; no incluye horas de contraparte ni obras/adquisiciones del cliente","Incorporación y certificación antes del 15 de diciembre, incluidos monitores; 300 plazas anuales reservadas, ampliación sin costo si se requiere.",José Lara Arce,12,A:2;Q:2;L:8,"Asignación y cuadrante integrado por código; entornos, usuarios y habilitaciones autorizados",RT-22.04/06; estacionalidad,2029-11-12,2029-11-14,SERVICIO-ACTIVO,Recepción por etapa o control del periodo; no acredita ejecución,RT-22.04/06; estacionalidad
1.12.10.36.1.1.3,"Incorporación estacional mes 36, perfil 1, cohorte 3",1.12,Operación,"Incorporación estacional mes 36, perfil 1, cohorte 3",Resultado de la ficha de familia y del paquete original; registro individual por código/ventana,"No duplicar padres, informes, ingeniería ni cobertura; no incluye horas de contraparte ni obras/adquisiciones del cliente","Incorporación y certificación antes del 15 de diciembre, incluidos monitores; 300 plazas anuales reservadas, ampliación sin costo si se requiere.",José Lara Arce,12,A:2;Q:2;L:8,"Asignación y cuadrante integrado por código; entornos, usuarios y habilitaciones autorizados",RT-22.04/06; estacionalidad,2029-11-13,2029-11-15,SERVICIO-ACTIVO,Recepción por etapa o control del periodo; no acredita ejecución,RT-22.04/06; estacionalidad
1.12.10.36.1.1.4,"Incorporación estacional mes 36, perfil 1, cohorte 4",1.12,Operación,"Incorporación estacional mes 36, perfil 1, cohorte 4",Resultado de la ficha de familia y del paquete original; registro individual por código/ventana,"No duplicar padres, informes, ingeniería ni cobertura; no incluye horas de contraparte ni obras/adquisiciones del cliente","Incorporación y certificación antes del 15 de diciembre, incluidos monitores; 300 plazas anuales reservadas, ampliación sin costo si se requiere.",José Lara Arce,12,A:2;Q:2;L:8,"Asignación y cuadrante integrado por código; entornos, usuarios y habilitaciones autorizados",RT-22.04/06; estacionalidad,2029-11-07,2029-11-09,SERVICIO-ACTIVO,Recepción por etapa o control del periodo; no acredita ejecución,RT-22.04/06; estacionalidad
1.12.10.36.1.1.5,"Incorporación estacional mes 36, perfil 1, cohorte 5",1.12,Operación,"Incorporación estacional mes 36, perfil 1, cohorte 5",Resultado de la ficha de familia y del paquete original; registro individual por código/ventana,"No duplicar padres, informes, ingeniería ni cobertura; no incluye horas de contraparte ni obras/adquisiciones del cliente","Incorporación y certificación antes del 15 de diciembre, incluidos monitores; 300 plazas anuales reservadas, ampliación sin costo si se requiere.",José Lara Arce,12,A:2;Q:2;L:8,"Asignación y cuadrante integrado por código; entornos, usuarios y habilitaciones autorizados",RT-22.04/06; estacionalidad,2029-11-08,2029-11-12,SERVICIO-ACTIVO,Recepción por etapa o control del periodo; no acredita ejecución,RT-22.04/06; estacionalidad
1.12.10.36.1.1.6,"Incorporación estacional mes 36, perfil 1, cohorte 6",1.12,Operación,"Incorporación estacional mes 36, perfil 1, cohorte 6",Resultado de la ficha de familia y del paquete original; registro individual por código/ventana,"No duplicar padres, informes, ingeniería ni cobertura; no incluye horas de contraparte ni obras/adquisiciones del cliente","Incorporación y certificación antes del 15 de diciembre, incluidos monitores; 300 plazas anuales reservadas, ampliación sin costo si se requiere.",José Lara Arce,12,A:2;Q:2;L:8,"Asignación y cuadrante integrado por código; entornos, usuarios y habilitaciones autorizados",RT-22.04/06; estacionalidad,2029-11-12,2029-11-13,SERVICIO-ACTIVO,Recepción por etapa o control del periodo; no acredita ejecución,RT-22.04/06; estacionalidad
1.12.10.36.1.1.7,"Incorporación estacional mes 36, perfil 1, cohorte 7",1.12,Operación,"Incorporación estacional mes 36, perfil 1, cohorte 7",Resultado de la ficha de familia y del paquete original; registro individual por código/ventana,"No duplicar padres, informes, ingeniería ni cobertura; no incluye horas de contraparte ni obras/adquisiciones del cliente","Incorporación y certificación antes del 15 de diciembre, incluidos monitores; 300 plazas anuales reservadas, ampliación sin costo si se requiere.",José Lara Arce,12,A:2;Q:2;L:8,"Asignación y cuadrante integrado por código; entornos, usuarios y habilitaciones autorizados",RT-22.04/06; estacionalidad,2029-11-13,2029-11-14,SERVICIO-ACTIVO,Recepción por etapa o control del periodo; no acredita ejecución,RT-22.04/06; estacionalidad
1.12.10.36.1.1.8,"Incorporación estacional mes 36, perfil 1, cohorte 8",1.12,Operación,"Incorporación estacional mes 36, perfil 1, cohorte 8",Resultado de la ficha de familia y del paquete original; registro individual por código/ventana,"No duplicar padres, informes, ingeniería ni cobertura; no incluye horas de contraparte ni obras/adquisiciones del cliente","Incorporación y certificación antes del 15 de diciembre, incluidos monitores; 300 plazas anuales reservadas, ampliación sin costo si se requiere.",José Lara Arce,12,A:2;Q:2;L:8,"Asignación y cuadrante integrado por código; entornos, usuarios y habilitaciones autorizados",RT-22.04/06; estacionalidad,2029-11-14,2029-11-15,SERVICIO-ACTIVO,Recepción por etapa o control del periodo; no acredita ejecución,RT-22.04/06; estacionalidad
1.12.10.36.1.1.9,"Incorporación estacional mes 36, perfil 1, cohorte 9",1.12,Operación,"Incorporación estacional mes 36, perfil 1, cohorte 9",Resultado de la ficha de familia y del paquete original; registro individual por código/ventana,"No duplicar padres, informes, ingeniería ni cobertura; no incluye horas de contraparte ni obras/adquisiciones del cliente","Incorporación y certificación antes del 15 de diciembre, incluidos monitores; 300 plazas anuales reservadas, ampliación sin costo si se requiere.",José Lara Arce,12,A:2;Q:2;L:8,"Asignación y cuadrante integrado por código; entornos, usuarios y habilitaciones autorizados",RT-22.04/06; estacionalidad,2029-11-15,2029-11-16,SERVICIO-ACTIVO,Recepción por etapa o control del periodo; no acredita ejecución,RT-22.04/06; estacionalidad
1.12.10.36.1.1.10,"Incorporación estacional mes 36, perfil 1, cohorte 10",1.12,Operación,"Incorporación estacional mes 36, perfil 1, cohorte 10",Resultado de la ficha de familia y del paquete original; registro individual por código/ventana,"No duplicar padres, informes, ingeniería ni cobertura; no incluye horas de contraparte ni obras/adquisiciones del cliente","Incorporación y certificación antes del 15 de diciembre, incluidos monitores; 300 plazas anuales reservadas, ampliación sin costo si se requiere.",José Lara Arce,12,A:2;Q:2;L:8,"Asignación y cuadrante integrado por código; entornos, usuarios y habilitaciones autorizados",RT-22.04/06; estacionalidad,2029-11-06,2029-11-07,SERVICIO-ACTIVO,Recepción por etapa o control del periodo; no acredita ejecución,RT-22.04/06; estacionalidad
1.12.10.36.1.1.11,"Incorporación estacional mes 36, perfil 1, cohorte 11",1.12,Operación,"Incorporación estacional mes 36, perfil 1, cohorte 11",Resultado de la ficha de familia y del paquete original; registro individual por código/ventana,"No duplicar padres, informes, ingeniería ni cobertura; no incluye horas de contraparte ni obras/adquisiciones del cliente","Incorporación y certificación antes del 15 de diciembre, incluidos monitores; 300 plazas anuales reservadas, ampliación sin costo si se requiere.",José Lara Arce,12,A:2;Q:2;L:8,"Asignación y cuadrante integrado por código; entornos, usuarios y habilitaciones autorizados",RT-22.04/06; estacionalidad,2029-11-07,2029-11-08,SERVICIO-ACTIVO,Recepción por etapa o control del periodo; no acredita ejecución,RT-22.04/06; estacionalidad
1.12.10.36.1.1.12,"Incorporación estacional mes 36, perfil 1, cohorte 12",1.12,Operación,"Incorporación estacional mes 36, perfil 1, cohorte 12",Resultado de la ficha de familia y del paquete original; registro individual por código/ventana,"No duplicar padres, informes, ingeniería ni cobertura; no incluye horas de contraparte ni obras/adquisiciones del cliente","Incorporación y certificación antes del 15 de diciembre, incluidos monitores; 300 plazas anuales reservadas, ampliación sin costo si se requiere.",José Lara Arce,12,A:2;Q:2;L:8,"Asignación y cuadrante integrado por código; entornos, usuarios y habilitaciones autorizados",RT-22.04/06; estacionalidad,2029-11-08,2029-11-09,SERVICIO-ACTIVO,Recepción por etapa o control del periodo; no acredita ejecución,RT-22.04/06; estacionalidad
1.12.10.36.1.1.13,"Incorporación estacional mes 36, perfil 1, cohorte 13",1.12,Operación,"Incorporación estacional mes 36, perfil 1, cohorte 13",Resultado de la ficha de familia y del paquete original; registro individual por código/ventana,"No duplicar padres, informes, ingeniería ni cobertura; no incluye horas de contraparte ni obras/adquisiciones del cliente","Incorporación y certificación antes del 15 de diciembre, incluidos monitores; 300 plazas anuales reservadas, ampliación sin costo si se requiere.",José Lara Arce,12,A:2;Q:2;L:8,"Asignación y cuadrante integrado por código; entornos, usuarios y habilitaciones autorizados",RT-22.04/06; estacionalidad,2029-11-09,2029-11-12,SERVICIO-ACTIVO,Recepción por etapa o control del periodo; no acredita ejecución,RT-22.04/06; estacionalidad
1.12.10.36.1.1.14,"Incorporación estacional mes 36, perfil 1, cohorte 14",1.12,Operación,"Incorporación estacional mes 36, perfil 1, cohorte 14",Resultado de la ficha de familia y del paquete original; registro individual por código/ventana,"No duplicar padres, informes, ingeniería ni cobertura; no incluye horas de contraparte ni obras/adquisiciones del cliente","Incorporación y certificación antes del 15 de diciembre, incluidos monitores; 300 plazas anuales reservadas, ampliación sin costo si se requiere.",José Lara Arce,12,A:2;Q:2;L:8,"Asignación y cuadrante integrado por código; entornos, usuarios y habilitaciones autorizados",RT-22.04/06; estacionalidad,2029-11-12,2029-11-13,SERVICIO-ACTIVO,Recepción por etapa o control del periodo; no acredita ejecución,RT-22.04/06; estacionalidad
1.12.10.36.1.1.15,"Incorporación estacional mes 36, perfil 1, cohorte 15",1.12,Operación,"Incorporación estacional mes 36, perfil 1, cohorte 15",Resultado de la ficha de familia y del paquete original; registro individual por código/ventana,"No duplicar padres, informes, ingeniería ni cobertura; no incluye horas de contraparte ni obras/adquisiciones del cliente","Incorporación y certificación antes del 15 de diciembre, incluidos monitores; 300 plazas anuales reservadas, ampliación sin costo si se requiere.",José Lara Arce,12,A:2;Q:2;L:8,"Asignación y cuadrante integrado por código; entornos, usuarios y habilitaciones autorizados",RT-22.04/06; estacionalidad,2029-11-06,2029-11-07,SERVICIO-ACTIVO,Recepción por etapa o control del periodo; no acredita ejecución,RT-22.04/06; estacionalidad
1.12.10.36.1.1.16,"Incorporación estacional mes 36, perfil 1, cohorte 16",1.12,Operación,"Incorporación estacional mes 36, perfil 1, cohorte 16",Resultado de la ficha de familia y del paquete original; registro individual por código/ventana,"No duplicar padres, informes, ingeniería ni cobertura; no incluye horas de contraparte ni obras/adquisiciones del cliente","Incorporación y certificación antes del 15 de diciembre, incluidos monitores; 300 plazas anuales reservadas, ampliación sin costo si se requiere.",José Lara Arce,12,A:2;Q:2;L:8,"Asignación y cuadrante integrado por código; entornos, usuarios y habilitaciones autorizados",RT-22.04/06; estacionalidad,2029-11-07,2029-11-08,SERVICIO-ACTIVO,Recepción por etapa o control del periodo; no acredita ejecución,RT-22.04/06; estacionalidad
1.12.10.36.1.1.17,"Incorporación estacional mes 36, perfil 1, cohorte 17",1.12,Operación,"Incorporación estacional mes 36, perfil 1, cohorte 17",Resultado de la ficha de familia y del paquete original; registro individual por código/ventana,"No duplicar padres, informes, ingeniería ni cobertura; no incluye horas de contraparte ni obras/adquisiciones del cliente","Incorporación y certificación antes del 15 de diciembre, incluidos monitores; 300 plazas anuales reservadas, ampliación sin costo si se requiere.",José Lara Arce,12,A:2;Q:2;L:8,"Asignación y cuadrante integrado por código; entornos, usuarios y habilitaciones autorizados",RT-22.04/06; estacionalidad,2029-11-08,2029-11-09,SERVICIO-ACTIVO,Recepción por etapa o control del periodo; no acredita ejecución,RT-22.04/06; estacionalidad
1.12.10.36.1.1.18,"Incorporación estacional mes 36, perfil 1, cohorte 18",1.12,Operación,"Incorporación estacional mes 36, perfil 1, cohorte 18",Resultado de la ficha de familia y del paquete original; registro individual por código/ventana,"No duplicar padres, informes, ingeniería ni cobertura; no incluye horas de contraparte ni obras/adquisiciones del cliente","Incorporación y certificación antes del 15 de diciembre, incluidos monitores; 300 plazas anuales reservadas, ampliación sin costo si se requiere.",José Lara Arce,12,A:2;Q:2;L:8,"Asignación y cuadrante integrado por código; entornos, usuarios y habilitaciones autorizados",RT-22.04/06; estacionalidad,2029-11-09,2029-11-13,SERVICIO-ACTIVO,Recepción por etapa o control del periodo; no acredita ejecución,RT-22.04/06; estacionalidad
1.12.10.36.2.1.1,"Incorporación estacional mes 36, perfil 2, cohorte 1",1.12,Operación,"Incorporación estacional mes 36, perfil 2, cohorte 1",Resultado de la ficha de familia y del paquete original; registro individual por código/ventana,"No duplicar padres, informes, ingeniería ni cobertura; no incluye horas de contraparte ni obras/adquisiciones del cliente","Incorporación y certificación antes del 15 de diciembre, incluidos monitores; 300 plazas anuales reservadas, ampliación sin costo si se requiere.",José Lara Arce,12,A:2;Q:2;L:8,"Asignación y cuadrante integrado por código; entornos, usuarios y habilitaciones autorizados",RT-22.04/06; estacionalidad,2029-11-16,2029-11-19,SERVICIO-ACTIVO,Recepción por etapa o control del periodo; no acredita ejecución,RT-22.04/06; estacionalidad
1.12.10.36.2.1.2,"Incorporación estacional mes 36, perfil 2, cohorte 2",1.12,Operación,"Incorporación estacional mes 36, perfil 2, cohorte 2",Resultado de la ficha de familia y del paquete original; registro individual por código/ventana,"No duplicar padres, informes, ingeniería ni cobertura; no incluye horas de contraparte ni obras/adquisiciones del cliente","Incorporación y certificación antes del 15 de diciembre, incluidos monitores; 300 plazas anuales reservadas, ampliación sin costo si se requiere.",José Lara Arce,12,A:2;Q:2;L:8,"Asignación y cuadrante integrado por código; entornos, usuarios y habilitaciones autorizados",RT-22.04/06; estacionalidad,2029-11-16,2029-11-20,SERVICIO-ACTIVO,Recepción por etapa o control del periodo; no acredita ejecución,RT-22.04/06; estacionalidad
1.12.10.36.3.1.1,"Incorporación estacional mes 36, perfil 3, cohorte 1",1.12,Operación,"Incorporación estacional mes 36, perfil 3, cohorte 1",Resultado de la ficha de familia y del paquete original; registro individual por código/ventana,"No duplicar padres, informes, ingeniería ni cobertura; no incluye horas de contraparte ni obras/adquisiciones del cliente","Incorporación y certificación antes del 15 de diciembre, incluidos monitores; 300 plazas anuales reservadas, ampliación sin costo si se requiere.",José Lara Arce,12,A:2;Q:2;L:8,"Asignación y cuadrante integrado por código; entornos, usuarios y habilitaciones autorizados",RT-22.04/06; estacionalidad,2029-11-19,2029-11-20,SERVICIO-ACTIVO,Recepción por etapa o control del periodo; no acredita ejecución,RT-22.04/06; estacionalidad
1.12.10.36.4.1.1,"Incorporación estacional mes 36, perfil 4, cohorte 1",1.12,Operación,"Incorporación estacional mes 36, perfil 4, cohorte 1",Resultado de la ficha de familia y del paquete original; registro individual por código/ventana,"No duplicar padres, informes, ingeniería ni cobertura; no incluye horas de contraparte ni obras/adquisiciones del cliente","Incorporación y certificación antes del 15 de diciembre, incluidos monitores; 300 plazas anuales reservadas, ampliación sin costo si se requiere.",José Lara Arce,12,A:2;Q:2;L:8,"Asignación y cuadrante integrado por código; entornos, usuarios y habilitaciones autorizados",RT-22.04/06; estacionalidad,2029-11-19,2029-11-21,SERVICIO-ACTIVO,Recepción por etapa o control del periodo; no acredita ejecución,RT-22.04/06; estacionalidad
1.12.10.36.5.1.1,"Incorporación estacional mes 36, perfil 5, cohorte 1",1.12,Operación,"Incorporación estacional mes 36, perfil 5, cohorte 1",Resultado de la ficha de familia y del paquete original; registro individual por código/ventana,"No duplicar padres, informes, ingeniería ni cobertura; no incluye horas de contraparte ni obras/adquisiciones del cliente","Incorporación y certificación antes del 15 de diciembre, incluidos monitores; 300 plazas anuales reservadas, ampliación sin costo si se requiere.",José Lara Arce,12,A:2;Q:2;L:8,"Asignación y cuadrante integrado por código; entornos, usuarios y habilitaciones autorizados",RT-22.04/06; estacionalidad,2029-11-20,2029-11-21,SERVICIO-ACTIVO,Recepción por etapa o control del periodo; no acredita ejecución,RT-22.04/06; estacionalidad
1.12.10.36.5.1.2,"Incorporación estacional mes 36, perfil 5, cohorte 2",1.12,Operación,"Incorporación estacional mes 36, perfil 5, cohorte 2",Resultado de la ficha de familia y del paquete original; registro individual por código/ventana,"No duplicar padres, informes, ingeniería ni cobertura; no incluye horas de contraparte ni obras/adquisiciones del cliente","Incorporación y certificación antes del 15 de diciembre, incluidos monitores; 300 plazas anuales reservadas, ampliación sin costo si se requiere.",José Lara Arce,12,A:2;Q:2;L:8,"Asignación y cuadrante integrado por código; entornos, usuarios y habilitaciones autorizados",RT-22.04/06; estacionalidad,2029-11-20,2029-11-22,SERVICIO-ACTIVO,Recepción por etapa o control del periodo; no acredita ejecución,RT-22.04/06; estacionalidad
1.12.10.36.5.1.3,"Incorporación estacional mes 36, perfil 5, cohorte 3",1.12,Operación,"Incorporación estacional mes 36, perfil 5, cohorte 3",Resultado de la ficha de familia y del paquete original; registro individual por código/ventana,"No duplicar padres, informes, ingeniería ni cobertura; no incluye horas de contraparte ni obras/adquisiciones del cliente","Incorporación y certificación antes del 15 de diciembre, incluidos monitores; 300 plazas anuales reservadas, ampliación sin costo si se requiere.",José Lara Arce,12,A:2;Q:2;L:8,"Asignación y cuadrante integrado por código; entornos, usuarios y habilitaciones autorizados",RT-22.04/06; estacionalidad,2029-11-20,2029-11-22,SERVICIO-ACTIVO,Recepción por etapa o control del periodo; no acredita ejecución,RT-22.04/06; estacionalidad
1.12.10.48.1.1.1,"Incorporación estacional mes 48, perfil 1, cohorte 1",1.12,Operación,"Incorporación estacional mes 48, perfil 1, cohorte 1",Resultado de la ficha de familia y del paquete original; registro individual por código/ventana,"No duplicar padres, informes, ingeniería ni cobertura; no incluye horas de contraparte ni obras/adquisiciones del cliente","Incorporación y certificación antes del 15 de diciembre, incluidos monitores; 300 plazas anuales reservadas, ampliación sin costo si se requiere.",José Lara Arce,12,A:2;Q:2;L:8,"Asignación y cuadrante integrado por código; entornos, usuarios y habilitaciones autorizados",RT-22.04/06; estacionalidad,2030-11-04,2030-11-05,SERVICIO-ACTIVO,Recepción por etapa o control del periodo; no acredita ejecución,RT-22.04/06; estacionalidad
1.12.10.48.1.1.2,"Incorporación estacional mes 48, perfil 1, cohorte 2",1.12,Operación,"Incorporación estacional mes 48, perfil 1, cohorte 2",Resultado de la ficha de familia y del paquete original; registro individual por código/ventana,"No duplicar padres, informes, ingeniería ni cobertura; no incluye horas de contraparte ni obras/adquisiciones del cliente","Incorporación y certificación antes del 15 de diciembre, incluidos monitores; 300 plazas anuales reservadas, ampliación sin costo si se requiere.",José Lara Arce,12,A:2;Q:2;L:8,"Asignación y cuadrante integrado por código; entornos, usuarios y habilitaciones autorizados",RT-22.04/06; estacionalidad,2030-11-11,2030-11-13,SERVICIO-ACTIVO,Recepción por etapa o control del periodo; no acredita ejecución,RT-22.04/06; estacionalidad
1.12.10.48.1.1.3,"Incorporación estacional mes 48, perfil 1, cohorte 3",1.12,Operación,"Incorporación estacional mes 48, perfil 1, cohorte 3",Resultado de la ficha de familia y del paquete original; registro individual por código/ventana,"No duplicar padres, informes, ingeniería ni cobertura; no incluye horas de contraparte ni obras/adquisiciones del cliente","Incorporación y certificación antes del 15 de diciembre, incluidos monitores; 300 plazas anuales reservadas, ampliación sin costo si se requiere.",José Lara Arce,12,A:2;Q:2;L:8,"Asignación y cuadrante integrado por código; entornos, usuarios y habilitaciones autorizados",RT-22.04/06; estacionalidad,2030-11-12,2030-11-14,SERVICIO-ACTIVO,Recepción por etapa o control del periodo; no acredita ejecución,RT-22.04/06; estacionalidad
1.12.10.48.1.1.4,"Incorporación estacional mes 48, perfil 1, cohorte 4",1.12,Operación,"Incorporación estacional mes 48, perfil 1, cohorte 4",Resultado de la ficha de familia y del paquete original; registro individual por código/ventana,"No duplicar padres, informes, ingeniería ni cobertura; no incluye horas de contraparte ni obras/adquisiciones del cliente","Incorporación y certificación antes del 15 de diciembre, incluidos monitores; 300 plazas anuales reservadas, ampliación sin costo si se requiere.",José Lara Arce,12,A:2;Q:2;L:8,"Asignación y cuadrante integrado por código; entornos, usuarios y habilitaciones autorizados",RT-22.04/06; estacionalidad,2030-11-06,2030-11-08,SERVICIO-ACTIVO,Recepción por etapa o control del periodo; no acredita ejecución,RT-22.04/06; estacionalidad
1.12.10.48.1.1.5,"Incorporación estacional mes 48, perfil 1, cohorte 5",1.12,Operación,"Incorporación estacional mes 48, perfil 1, cohorte 5",Resultado de la ficha de familia y del paquete original; registro individual por código/ventana,"No duplicar padres, informes, ingeniería ni cobertura; no incluye horas de contraparte ni obras/adquisiciones del cliente","Incorporación y certificación antes del 15 de diciembre, incluidos monitores; 300 plazas anuales reservadas, ampliación sin costo si se requiere.",José Lara Arce,12,A:2;Q:2;L:8,"Asignación y cuadrante integrado por código; entornos, usuarios y habilitaciones autorizados",RT-22.04/06; estacionalidad,2030-11-07,2030-11-11,SERVICIO-ACTIVO,Recepción por etapa o control del periodo; no acredita ejecución,RT-22.04/06; estacionalidad
1.12.10.48.1.1.6,"Incorporación estacional mes 48, perfil 1, cohorte 6",1.12,Operación,"Incorporación estacional mes 48, perfil 1, cohorte 6",Resultado de la ficha de familia y del paquete original; registro individual por código/ventana,"No duplicar padres, informes, ingeniería ni cobertura; no incluye horas de contraparte ni obras/adquisiciones del cliente","Incorporación y certificación antes del 15 de diciembre, incluidos monitores; 300 plazas anuales reservadas, ampliación sin costo si se requiere.",José Lara Arce,12,A:2;Q:2;L:8,"Asignación y cuadrante integrado por código; entornos, usuarios y habilitaciones autorizados",RT-22.04/06; estacionalidad,2030-11-11,2030-11-12,SERVICIO-ACTIVO,Recepción por etapa o control del periodo; no acredita ejecución,RT-22.04/06; estacionalidad
1.12.10.48.1.1.7,"Incorporación estacional mes 48, perfil 1, cohorte 7",1.12,Operación,"Incorporación estacional mes 48, perfil 1, cohorte 7",Resultado de la ficha de familia y del paquete original; registro individual por código/ventana,"No duplicar padres, informes, ingeniería ni cobertura; no incluye horas de contraparte ni obras/adquisiciones del cliente","Incorporación y certificación antes del 15 de diciembre, incluidos monitores; 300 plazas anuales reservadas, ampliación sin costo si se requiere.",José Lara Arce,12,A:2;Q:2;L:8,"Asignación y cuadrante integrado por código; entornos, usuarios y habilitaciones autorizados",RT-22.04/06; estacionalidad,2030-11-12,2030-11-13,SERVICIO-ACTIVO,Recepción por etapa o control del periodo; no acredita ejecución,RT-22.04/06; estacionalidad
1.12.10.48.1.1.8,"Incorporación estacional mes 48, perfil 1, cohorte 8",1.12,Operación,"Incorporación estacional mes 48, perfil 1, cohorte 8",Resultado de la ficha de familia y del paquete original; registro individual por código/ventana,"No duplicar padres, informes, ingeniería ni cobertura; no incluye horas de contraparte ni obras/adquisiciones del cliente","Incorporación y certificación antes del 15 de diciembre, incluidos monitores; 300 plazas anuales reservadas, ampliación sin costo si se requiere.",José Lara Arce,12,A:2;Q:2;L:8,"Asignación y cuadrante integrado por código; entornos, usuarios y habilitaciones autorizados",RT-22.04/06; estacionalidad,2030-11-13,2030-11-14,SERVICIO-ACTIVO,Recepción por etapa o control del periodo; no acredita ejecución,RT-22.04/06; estacionalidad
1.12.10.48.1.1.9,"Incorporación estacional mes 48, perfil 1, cohorte 9",1.12,Operación,"Incorporación estacional mes 48, perfil 1, cohorte 9",Resultado de la ficha de familia y del paquete original; registro individual por código/ventana,"No duplicar padres, informes, ingeniería ni cobertura; no incluye horas de contraparte ni obras/adquisiciones del cliente","Incorporación y certificación antes del 15 de diciembre, incluidos monitores; 300 plazas anuales reservadas, ampliación sin costo si se requiere.",José Lara Arce,12,A:2;Q:2;L:8,"Asignación y cuadrante integrado por código; entornos, usuarios y habilitaciones autorizados",RT-22.04/06; estacionalidad,2030-11-14,2030-11-15,SERVICIO-ACTIVO,Recepción por etapa o control del periodo; no acredita ejecución,RT-22.04/06; estacionalidad
1.12.10.48.1.1.10,"Incorporación estacional mes 48, perfil 1, cohorte 10",1.12,Operación,"Incorporación estacional mes 48, perfil 1, cohorte 10",Resultado de la ficha de familia y del paquete original; registro individual por código/ventana,"No duplicar padres, informes, ingeniería ni cobertura; no incluye horas de contraparte ni obras/adquisiciones del cliente","Incorporación y certificación antes del 15 de diciembre, incluidos monitores; 300 plazas anuales reservadas, ampliación sin costo si se requiere.",José Lara Arce,12,A:2;Q:2;L:8,"Asignación y cuadrante integrado por código; entornos, usuarios y habilitaciones autorizados",RT-22.04/06; estacionalidad,2030-11-05,2030-11-06,SERVICIO-ACTIVO,Recepción por etapa o control del periodo; no acredita ejecución,RT-22.04/06; estacionalidad
1.12.10.48.1.1.11,"Incorporación estacional mes 48, perfil 1, cohorte 11",1.12,Operación,"Incorporación estacional mes 48, perfil 1, cohorte 11",Resultado de la ficha de familia y del paquete original; registro individual por código/ventana,"No duplicar padres, informes, ingeniería ni cobertura; no incluye horas de contraparte ni obras/adquisiciones del cliente","Incorporación y certificación antes del 15 de diciembre, incluidos monitores; 300 plazas anuales reservadas, ampliación sin costo si se requiere.",José Lara Arce,12,A:2;Q:2;L:8,"Asignación y cuadrante integrado por código; entornos, usuarios y habilitaciones autorizados",RT-22.04/06; estacionalidad,2030-11-06,2030-11-07,SERVICIO-ACTIVO,Recepción por etapa o control del periodo; no acredita ejecución,RT-22.04/06; estacionalidad
1.12.10.48.1.1.12,"Incorporación estacional mes 48, perfil 1, cohorte 12",1.12,Operación,"Incorporación estacional mes 48, perfil 1, cohorte 12",Resultado de la ficha de familia y del paquete original; registro individual por código/ventana,"No duplicar padres, informes, ingeniería ni cobertura; no incluye horas de contraparte ni obras/adquisiciones del cliente","Incorporación y certificación antes del 15 de diciembre, incluidos monitores; 300 plazas anuales reservadas, ampliación sin costo si se requiere.",José Lara Arce,12,A:2;Q:2;L:8,"Asignación y cuadrante integrado por código; entornos, usuarios y habilitaciones autorizados",RT-22.04/06; estacionalidad,2030-11-07,2030-11-08,SERVICIO-ACTIVO,Recepción por etapa o control del periodo; no acredita ejecución,RT-22.04/06; estacionalidad
1.12.10.48.1.1.13,"Incorporación estacional mes 48, perfil 1, cohorte 13",1.12,Operación,"Incorporación estacional mes 48, perfil 1, cohorte 13",Resultado de la ficha de familia y del paquete original; registro individual por código/ventana,"No duplicar padres, informes, ingeniería ni cobertura; no incluye horas de contraparte ni obras/adquisiciones del cliente","Incorporación y certificación antes del 15 de diciembre, incluidos monitores; 300 plazas anuales reservadas, ampliación sin costo si se requiere.",José Lara Arce,12,A:2;Q:2;L:8,"Asignación y cuadrante integrado por código; entornos, usuarios y habilitaciones autorizados",RT-22.04/06; estacionalidad,2030-11-08,2030-11-11,SERVICIO-ACTIVO,Recepción por etapa o control del periodo; no acredita ejecución,RT-22.04/06; estacionalidad
1.12.10.48.1.1.14,"Incorporación estacional mes 48, perfil 1, cohorte 14",1.12,Operación,"Incorporación estacional mes 48, perfil 1, cohorte 14",Resultado de la ficha de familia y del paquete original; registro individual por código/ventana,"No duplicar padres, informes, ingeniería ni cobertura; no incluye horas de contraparte ni obras/adquisiciones del cliente","Incorporación y certificación antes del 15 de diciembre, incluidos monitores; 300 plazas anuales reservadas, ampliación sin costo si se requiere.",José Lara Arce,12,A:2;Q:2;L:8,"Asignación y cuadrante integrado por código; entornos, usuarios y habilitaciones autorizados",RT-22.04/06; estacionalidad,2030-11-11,2030-11-12,SERVICIO-ACTIVO,Recepción por etapa o control del periodo; no acredita ejecución,RT-22.04/06; estacionalidad
1.12.10.48.1.1.15,"Incorporación estacional mes 48, perfil 1, cohorte 15",1.12,Operación,"Incorporación estacional mes 48, perfil 1, cohorte 15",Resultado de la ficha de familia y del paquete original; registro individual por código/ventana,"No duplicar padres, informes, ingeniería ni cobertura; no incluye horas de contraparte ni obras/adquisiciones del cliente","Incorporación y certificación antes del 15 de diciembre, incluidos monitores; 300 plazas anuales reservadas, ampliación sin costo si se requiere.",José Lara Arce,12,A:2;Q:2;L:8,"Asignación y cuadrante integrado por código; entornos, usuarios y habilitaciones autorizados",RT-22.04/06; estacionalidad,2030-11-05,2030-11-06,SERVICIO-ACTIVO,Recepción por etapa o control del periodo; no acredita ejecución,RT-22.04/06; estacionalidad
1.12.10.48.1.1.16,"Incorporación estacional mes 48, perfil 1, cohorte 16",1.12,Operación,"Incorporación estacional mes 48, perfil 1, cohorte 16",Resultado de la ficha de familia y del paquete original; registro individual por código/ventana,"No duplicar padres, informes, ingeniería ni cobertura; no incluye horas de contraparte ni obras/adquisiciones del cliente","Incorporación y certificación antes del 15 de diciembre, incluidos monitores; 300 plazas anuales reservadas, ampliación sin costo si se requiere.",José Lara Arce,12,A:2;Q:2;L:8,"Asignación y cuadrante integrado por código; entornos, usuarios y habilitaciones autorizados",RT-22.04/06; estacionalidad,2030-11-06,2030-11-07,SERVICIO-ACTIVO,Recepción por etapa o control del periodo; no acredita ejecución,RT-22.04/06; estacionalidad
1.12.10.48.1.1.17,"Incorporación estacional mes 48, perfil 1, cohorte 17",1.12,Operación,"Incorporación estacional mes 48, perfil 1, cohorte 17",Resultado de la ficha de familia y del paquete original; registro individual por código/ventana,"No duplicar padres, informes, ingeniería ni cobertura; no incluye horas de contraparte ni obras/adquisiciones del cliente","Incorporación y certificación antes del 15 de diciembre, incluidos monitores; 300 plazas anuales reservadas, ampliación sin costo si se requiere.",José Lara Arce,12,A:2;Q:2;L:8,"Asignación y cuadrante integrado por código; entornos, usuarios y habilitaciones autorizados",RT-22.04/06; estacionalidad,2030-11-07,2030-11-08,SERVICIO-ACTIVO,Recepción por etapa o control del periodo; no acredita ejecución,RT-22.04/06; estacionalidad
1.12.10.48.1.1.18,"Incorporación estacional mes 48, perfil 1, cohorte 18",1.12,Operación,"Incorporación estacional mes 48, perfil 1, cohorte 18",Resultado de la ficha de familia y del paquete original; registro individual por código/ventana,"No duplicar padres, informes, ingeniería ni cobertura; no incluye horas de contraparte ni obras/adquisiciones del cliente","Incorporación y certificación antes del 15 de diciembre, incluidos monitores; 300 plazas anuales reservadas, ampliación sin costo si se requiere.",José Lara Arce,12,A:2;Q:2;L:8,"Asignación y cuadrante integrado por código; entornos, usuarios y habilitaciones autorizados",RT-22.04/06; estacionalidad,2030-11-08,2030-11-12,SERVICIO-ACTIVO,Recepción por etapa o control del periodo; no acredita ejecución,RT-22.04/06; estacionalidad
1.12.10.48.2.1.1,"Incorporación estacional mes 48, perfil 2, cohorte 1",1.12,Operación,"Incorporación estacional mes 48, perfil 2, cohorte 1",Resultado de la ficha de familia y del paquete original; registro individual por código/ventana,"No duplicar padres, informes, ingeniería ni cobertura; no incluye horas de contraparte ni obras/adquisiciones del cliente","Incorporación y certificación antes del 15 de diciembre, incluidos monitores; 300 plazas anuales reservadas, ampliación sin costo si se requiere.",José Lara Arce,12,A:2;Q:2;L:8,"Asignación y cuadrante integrado por código; entornos, usuarios y habilitaciones autorizados",RT-22.04/06; estacionalidad,2030-11-15,2030-11-19,SERVICIO-ACTIVO,Recepción por etapa o control del periodo; no acredita ejecución,RT-22.04/06; estacionalidad
1.12.10.48.2.1.2,"Incorporación estacional mes 48, perfil 2, cohorte 2",1.12,Operación,"Incorporación estacional mes 48, perfil 2, cohorte 2",Resultado de la ficha de familia y del paquete original; registro individual por código/ventana,"No duplicar padres, informes, ingeniería ni cobertura; no incluye horas de contraparte ni obras/adquisiciones del cliente","Incorporación y certificación antes del 15 de diciembre, incluidos monitores; 300 plazas anuales reservadas, ampliación sin costo si se requiere.",José Lara Arce,12,A:2;Q:2;L:8,"Asignación y cuadrante integrado por código; entornos, usuarios y habilitaciones autorizados",RT-22.04/06; estacionalidad,2030-11-18,2030-11-20,SERVICIO-ACTIVO,Recepción por etapa o control del periodo; no acredita ejecución,RT-22.04/06; estacionalidad
1.12.10.48.3.1.1,"Incorporación estacional mes 48, perfil 3, cohorte 1",1.12,Operación,"Incorporación estacional mes 48, perfil 3, cohorte 1",Resultado de la ficha de familia y del paquete original; registro individual por código/ventana,"No duplicar padres, informes, ingeniería ni cobertura; no incluye horas de contraparte ni obras/adquisiciones del cliente","Incorporación y certificación antes del 15 de diciembre, incluidos monitores; 300 plazas anuales reservadas, ampliación sin costo si se requiere.",José Lara Arce,12,A:2;Q:2;L:8,"Asignación y cuadrante integrado por código; entornos, usuarios y habilitaciones autorizados",RT-22.04/06; estacionalidad,2030-11-19,2030-11-20,SERVICIO-ACTIVO,Recepción por etapa o control del periodo; no acredita ejecución,RT-22.04/06; estacionalidad
1.12.10.48.4.1.1,"Incorporación estacional mes 48, perfil 4, cohorte 1",1.12,Operación,"Incorporación estacional mes 48, perfil 4, cohorte 1",Resultado de la ficha de familia y del paquete original; registro individual por código/ventana,"No duplicar padres, informes, ingeniería ni cobertura; no incluye horas de contraparte ni obras/adquisiciones del cliente","Incorporación y certificación antes del 15 de diciembre, incluidos monitores; 300 plazas anuales reservadas, ampliación sin costo si se requiere.",José Lara Arce,12,A:2;Q:2;L:8,"Asignación y cuadrante integrado por código; entornos, usuarios y habilitaciones autorizados",RT-22.04/06; estacionalidad,2030-11-19,2030-11-21,SERVICIO-ACTIVO,Recepción por etapa o control del periodo; no acredita ejecución,RT-22.04/06; estacionalidad
1.12.10.48.5.1.1,"Incorporación estacional mes 48, perfil 5, cohorte 1",1.12,Operación,"Incorporación estacional mes 48, perfil 5, cohorte 1",Resultado de la ficha de familia y del paquete original; registro individual por código/ventana,"No duplicar padres, informes, ingeniería ni cobertura; no incluye horas de contraparte ni obras/adquisiciones del cliente","Incorporación y certificación antes del 15 de diciembre, incluidos monitores; 300 plazas anuales reservadas, ampliación sin costo si se requiere.",José Lara Arce,12,A:2;Q:2;L:8,"Asignación y cuadrante integrado por código; entornos, usuarios y habilitaciones autorizados",RT-22.04/06; estacionalidad,2030-11-20,2030-11-21,SERVICIO-ACTIVO,Recepción por etapa o control del periodo; no acredita ejecución,RT-22.04/06; estacionalidad
1.12.10.48.5.1.2,"Incorporación estacional mes 48, perfil 5, cohorte 2",1.12,Operación,"Incorporación estacional mes 48, perfil 5, cohorte 2",Resultado de la ficha de familia y del paquete original; registro individual por código/ventana,"No duplicar padres, informes, ingeniería ni cobertura; no incluye horas de contraparte ni obras/adquisiciones del cliente","Incorporación y certificación antes del 15 de diciembre, incluidos monitores; 300 plazas anuales reservadas, ampliación sin costo si se requiere.",José Lara Arce,12,A:2;Q:2;L:8,"Asignación y cuadrante integrado por código; entornos, usuarios y habilitaciones autorizados",RT-22.04/06; estacionalidad,2030-11-20,2030-11-21,SERVICIO-ACTIVO,Recepción por etapa o control del periodo; no acredita ejecución,RT-22.04/06; estacionalidad
1.12.10.48.5.1.3,"Incorporación estacional mes 48, perfil 5, cohorte 3",1.12,Operación,"Incorporación estacional mes 48, perfil 5, cohorte 3",Resultado de la ficha de familia y del paquete original; registro individual por código/ventana,"No duplicar padres, informes, ingeniería ni cobertura; no incluye horas de contraparte ni obras/adquisiciones del cliente","Incorporación y certificación antes del 15 de diciembre, incluidos monitores; 300 plazas anuales reservadas, ampliación sin costo si se requiere.",José Lara Arce,12,A:2;Q:2;L:8,"Asignación y cuadrante integrado por código; entornos, usuarios y habilitaciones autorizados",RT-22.04/06; estacionalidad,2030-11-21,2030-11-22,SERVICIO-ACTIVO,Recepción por etapa o control del periodo; no acredita ejecución,RT-22.04/06; estacionalidad
1.12.12.correctiva.21,"Capacidad reservada de ingeniería correctiva, mes 21",1.12,Operación,"Capacidad reservada de ingeniería correctiva, mes 21",Resultado de la ficha de familia y del paquete original; registro individual por código/ventana,"No duplicar padres, informes, ingeniería ni cobertura; no incluye horas de contraparte ni obras/adquisiciones del cliente","Backlog, estimación, autorización, versión y evidencia; se liquida sólo el trabajo realizado, sin cobrar dos veces actividades ya presupuestadas.",Nikolai Navea,80,D:16;Q:16;V:40;I:8,"Asignación y cuadrante integrado por código; entornos, usuarios y habilitaciones autorizados",RT-21.19--22; Art.78,2028-08-18,2028-08-24,SERVICIO-ACTIVO,Recepción por etapa o control del periodo; no acredita ejecución,RT-21.19--22; Art.78
1.12.12.normativa.21,"Capacidad reservada de ingeniería normativa, mes 21",1.12,Operación,"Capacidad reservada de ingeniería normativa, mes 21",Resultado de la ficha de familia y del paquete original; registro individual por código/ventana,"No duplicar padres, informes, ingeniería ni cobertura; no incluye horas de contraparte ni obras/adquisiciones del cliente","Backlog, estimación, autorización, versión y evidencia; se liquida sólo el trabajo realizado, sin cobrar dos veces actividades ya presupuestadas.",Nikolai Navea,48,A:8;S:8;Q:8;V:24,"Asignación y cuadrante integrado por código; entornos, usuarios y habilitaciones autorizados",RT-21.19--22; Art.78,2028-08-18,2028-08-22,SERVICIO-ACTIVO,Recepción por etapa o control del periodo; no acredita ejecución,RT-21.19--22; Art.78
1.12.12.evolutiva.21,"Capacidad reservada de ingeniería evolutiva, mes 21",1.12,Operación,"Capacidad reservada de ingeniería evolutiva, mes 21",Resultado de la ficha de familia y del paquete original; registro individual por código/ventana,"No duplicar padres, informes, ingeniería ni cobertura; no incluye horas de contraparte ni obras/adquisiciones del cliente","Backlog, estimación, autorización, versión y evidencia; se liquida sólo el trabajo realizado, sin cobrar dos veces actividades ya presupuestadas.",Nikolai Navea,80,A:16;D:8;S:4;Q:8;V:40;I:4,"Asignación y cuadrante integrado por código; entornos, usuarios y habilitaciones autorizados",RT-21.19--22; Art.78,2028-08-16,2028-08-21,SERVICIO-ACTIVO,Recepción por etapa o control del periodo; no acredita ejecución,RT-21.19--22; Art.78
1.12.12.deuda.21,"Capacidad reservada de ingeniería deuda, mes 21",1.12,Operación,"Capacidad reservada de ingeniería deuda, mes 21",Resultado de la ficha de familia y del paquete original; registro individual por código/ventana,"No duplicar padres, informes, ingeniería ni cobertura; no incluye horas de contraparte ni obras/adquisiciones del cliente","Backlog, estimación, autorización, versión y evidencia; se liquida sólo el trabajo realizado, sin cobrar dos veces actividades ya presupuestadas.",Nikolai Navea,32,D:8;Q:8;V:16,"Asignación y cuadrante integrado por código; entornos, usuarios y habilitaciones autorizados",RT-21.19--22; Art.78,2028-08-16,2028-08-21,SERVICIO-ACTIVO,Recepción por etapa o control del periodo; no acredita ejecución,RT-21.19--22; Art.78
1.12.12.correctiva.22,"Capacidad reservada de ingeniería correctiva, mes 22",1.12,Operación,"Capacidad reservada de ingeniería correctiva, mes 22",Resultado de la ficha de familia y del paquete original; registro individual por código/ventana,"No duplicar padres, informes, ingeniería ni cobertura; no incluye horas de contraparte ni obras/adquisiciones del cliente","Backlog, estimación, autorización, versión y evidencia; se liquida sólo el trabajo realizado, sin cobrar dos veces actividades ya presupuestadas.",Nikolai Navea,80,D:16;Q:16;V:40;I:8,"Asignación y cuadrante integrado por código; entornos, usuarios y habilitaciones autorizados",RT-21.19--22; Art.78,2028-09-20,2028-09-26,SERVICIO-ACTIVO,Recepción por etapa o control del periodo; no acredita ejecución,RT-21.19--22; Art.78
1.12.12.normativa.22,"Capacidad reservada de ingeniería normativa, mes 22",1.12,Operación,"Capacidad reservada de ingeniería normativa, mes 22",Resultado de la ficha de familia y del paquete original; registro individual por código/ventana,"No duplicar padres, informes, ingeniería ni cobertura; no incluye horas de contraparte ni obras/adquisiciones del cliente","Backlog, estimación, autorización, versión y evidencia; se liquida sólo el trabajo realizado, sin cobrar dos veces actividades ya presupuestadas.",Nikolai Navea,48,A:8;S:8;Q:8;V:24,"Asignación y cuadrante integrado por código; entornos, usuarios y habilitaciones autorizados",RT-21.19--22; Art.78,2028-09-20,2028-09-22,SERVICIO-ACTIVO,Recepción por etapa o control del periodo; no acredita ejecución,RT-21.19--22; Art.78
1.12.12.evolutiva.22,"Capacidad reservada de ingeniería evolutiva, mes 22",1.12,Operación,"Capacidad reservada de ingeniería evolutiva, mes 22",Resultado de la ficha de familia y del paquete original; registro individual por código/ventana,"No duplicar padres, informes, ingeniería ni cobertura; no incluye horas de contraparte ni obras/adquisiciones del cliente","Backlog, estimación, autorización, versión y evidencia; se liquida sólo el trabajo realizado, sin cobrar dos veces actividades ya presupuestadas.",Nikolai Navea,80,A:16;D:8;S:4;Q:8;V:40;I:4,"Asignación y cuadrante integrado por código; entornos, usuarios y habilitaciones autorizados",RT-21.19--22; Art.78,2028-09-22,2028-09-27,SERVICIO-ACTIVO,Recepción por etapa o control del periodo; no acredita ejecución,RT-21.19--22; Art.78
1.12.12.deuda.22,"Capacidad reservada de ingeniería deuda, mes 22",1.12,Operación,"Capacidad reservada de ingeniería deuda, mes 22",Resultado de la ficha de familia y del paquete original; registro individual por código/ventana,"No duplicar padres, informes, ingeniería ni cobertura; no incluye horas de contraparte ni obras/adquisiciones del cliente","Backlog, estimación, autorización, versión y evidencia; se liquida sólo el trabajo realizado, sin cobrar dos veces actividades ya presupuestadas.",Nikolai Navea,32,D:8;Q:8;V:16,"Asignación y cuadrante integrado por código; entornos, usuarios y habilitaciones autorizados",RT-21.19--22; Art.78,2028-09-22,2028-09-27,SERVICIO-ACTIVO,Recepción por etapa o control del periodo; no acredita ejecución,RT-21.19--22; Art.78
1.12.12.correctiva.23,"Capacidad reservada de ingeniería correctiva, mes 23",1.12,Operación,"Capacidad reservada de ingeniería correctiva, mes 23",Resultado de la ficha de familia y del paquete original; registro individual por código/ventana,"No duplicar padres, informes, ingeniería ni cobertura; no incluye horas de contraparte ni obras/adquisiciones del cliente","Backlog, estimación, autorización, versión y evidencia; se liquida sólo el trabajo realizado, sin cobrar dos veces actividades ya presupuestadas.",Nikolai Navea,80,D:16;Q:16;V:40;I:8,"Asignación y cuadrante integrado por código; entornos, usuarios y habilitaciones autorizados",RT-21.19--22; Art.78,2028-10-16,2028-10-20,SERVICIO-ACTIVO,Recepción por etapa o control del periodo; no acredita ejecución,RT-21.19--22; Art.78
1.12.12.normativa.23,"Capacidad reservada de ingeniería normativa, mes 23",1.12,Operación,"Capacidad reservada de ingeniería normativa, mes 23",Resultado de la ficha de familia y del paquete original; registro individual por código/ventana,"No duplicar padres, informes, ingeniería ni cobertura; no incluye horas de contraparte ni obras/adquisiciones del cliente","Backlog, estimación, autorización, versión y evidencia; se liquida sólo el trabajo realizado, sin cobrar dos veces actividades ya presupuestadas.",Nikolai Navea,48,A:8;S:8;Q:8;V:24,"Asignación y cuadrante integrado por código; entornos, usuarios y habilitaciones autorizados",RT-21.19--22; Art.78,2028-10-16,2028-10-18,SERVICIO-ACTIVO,Recepción por etapa o control del periodo; no acredita ejecución,RT-21.19--22; Art.78
1.12.12.evolutiva.23,"Capacidad reservada de ingeniería evolutiva, mes 23",1.12,Operación,"Capacidad reservada de ingeniería evolutiva, mes 23",Resultado de la ficha de familia y del paquete original; registro individual por código/ventana,"No duplicar padres, informes, ingeniería ni cobertura; no incluye horas de contraparte ni obras/adquisiciones del cliente","Backlog, estimación, autorización, versión y evidencia; se liquida sólo el trabajo realizado, sin cobrar dos veces actividades ya presupuestadas.",Nikolai Navea,80,A:16;D:8;S:4;Q:8;V:40;I:4,"Asignación y cuadrante integrado por código; entornos, usuarios y habilitaciones autorizados",RT-21.19--22; Art.78,2028-10-18,2028-10-23,SERVICIO-ACTIVO,Recepción por etapa o control del periodo; no acredita ejecución,RT-21.19--22; Art.78
1.12.12.deuda.23,"Capacidad reservada de ingeniería deuda, mes 23",1.12,Operación,"Capacidad reservada de ingeniería deuda, mes 23",Resultado de la ficha de familia y del paquete original; registro individual por código/ventana,"No duplicar padres, informes, ingeniería ni cobertura; no incluye horas de contraparte ni obras/adquisiciones del cliente","Backlog, estimación, autorización, versión y evidencia; se liquida sólo el trabajo realizado, sin cobrar dos veces actividades ya presupuestadas.",Nikolai Navea,32,D:8;Q:8;V:16,"Asignación y cuadrante integrado por código; entornos, usuarios y habilitaciones autorizados",RT-21.19--22; Art.78,2028-10-18,2028-10-23,SERVICIO-ACTIVO,Recepción por etapa o control del periodo; no acredita ejecución,RT-21.19--22; Art.78
1.12.12.correctiva.24,"Capacidad reservada de ingeniería correctiva, mes 24",1.12,Operación,"Capacidad reservada de ingeniería correctiva, mes 24",Resultado de la ficha de familia y del paquete original; registro individual por código/ventana,"No duplicar padres, informes, ingeniería ni cobertura; no incluye horas de contraparte ni obras/adquisiciones del cliente","Backlog, estimación, autorización, versión y evidencia; se liquida sólo el trabajo realizado, sin cobrar dos veces actividades ya presupuestadas.",Nikolai Navea,80,D:16;Q:16;V:40;I:8,"Asignación y cuadrante integrado por código; entornos, usuarios y habilitaciones autorizados",RT-21.19--22; Art.78,2028-11-16,2028-11-22,SERVICIO-ACTIVO,Recepción por etapa o control del periodo; no acredita ejecución,RT-21.19--22; Art.78
1.12.12.normativa.24,"Capacidad reservada de ingeniería normativa, mes 24",1.12,Operación,"Capacidad reservada de ingeniería normativa, mes 24",Resultado de la ficha de familia y del paquete original; registro individual por código/ventana,"No duplicar padres, informes, ingeniería ni cobertura; no incluye horas de contraparte ni obras/adquisiciones del cliente","Backlog, estimación, autorización, versión y evidencia; se liquida sólo el trabajo realizado, sin cobrar dos veces actividades ya presupuestadas.",Nikolai Navea,48,A:8;S:8;Q:8;V:24,"Asignación y cuadrante integrado por código; entornos, usuarios y habilitaciones autorizados",RT-21.19--22; Art.78,2028-11-16,2028-11-20,SERVICIO-ACTIVO,Recepción por etapa o control del periodo; no acredita ejecución,RT-21.19--22; Art.78
1.12.12.evolutiva.24,"Capacidad reservada de ingeniería evolutiva, mes 24",1.12,Operación,"Capacidad reservada de ingeniería evolutiva, mes 24",Resultado de la ficha de familia y del paquete original; registro individual por código/ventana,"No duplicar padres, informes, ingeniería ni cobertura; no incluye horas de contraparte ni obras/adquisiciones del cliente","Backlog, estimación, autorización, versión y evidencia; se liquida sólo el trabajo realizado, sin cobrar dos veces actividades ya presupuestadas.",Nikolai Navea,80,A:16;D:8;S:4;Q:8;V:40;I:4,"Asignación y cuadrante integrado por código; entornos, usuarios y habilitaciones autorizados",RT-21.19--22; Art.78,2028-11-20,2028-11-23,SERVICIO-ACTIVO,Recepción por etapa o control del periodo; no acredita ejecución,RT-21.19--22; Art.78
1.12.12.deuda.24,"Capacidad reservada de ingeniería deuda, mes 24",1.12,Operación,"Capacidad reservada de ingeniería deuda, mes 24",Resultado de la ficha de familia y del paquete original; registro individual por código/ventana,"No duplicar padres, informes, ingeniería ni cobertura; no incluye horas de contraparte ni obras/adquisiciones del cliente","Backlog, estimación, autorización, versión y evidencia; se liquida sólo el trabajo realizado, sin cobrar dos veces actividades ya presupuestadas.",Nikolai Navea,32,D:8;Q:8;V:16,"Asignación y cuadrante integrado por código; entornos, usuarios y habilitaciones autorizados",RT-21.19--22; Art.78,2028-11-20,2028-11-23,SERVICIO-ACTIVO,Recepción por etapa o control del periodo; no acredita ejecución,RT-21.19--22; Art.78
1.12.12.correctiva.25,"Capacidad reservada de ingeniería correctiva, mes 25",1.12,Operación,"Capacidad reservada de ingeniería correctiva, mes 25",Resultado de la ficha de familia y del paquete original; registro individual por código/ventana,"No duplicar padres, informes, ingeniería ni cobertura; no incluye horas de contraparte ni obras/adquisiciones del cliente","Backlog, estimación, autorización, versión y evidencia; se liquida sólo el trabajo realizado, sin cobrar dos veces actividades ya presupuestadas.",Nikolai Navea,80,D:16;Q:16;V:40;I:8,"Asignación y cuadrante integrado por código; entornos, usuarios y habilitaciones autorizados",RT-21.19--22; Art.78,2028-12-18,2028-12-22,SERVICIO-ACTIVO,Recepción por etapa o control del periodo; no acredita ejecución,RT-21.19--22; Art.78
1.12.12.normativa.25,"Capacidad reservada de ingeniería normativa, mes 25",1.12,Operación,"Capacidad reservada de ingeniería normativa, mes 25",Resultado de la ficha de familia y del paquete original; registro individual por código/ventana,"No duplicar padres, informes, ingeniería ni cobertura; no incluye horas de contraparte ni obras/adquisiciones del cliente","Backlog, estimación, autorización, versión y evidencia; se liquida sólo el trabajo realizado, sin cobrar dos veces actividades ya presupuestadas.",Nikolai Navea,48,A:8;S:8;Q:8;V:24,"Asignación y cuadrante integrado por código; entornos, usuarios y habilitaciones autorizados",RT-21.19--22; Art.78,2028-12-18,2028-12-20,SERVICIO-ACTIVO,Recepción por etapa o control del periodo; no acredita ejecución,RT-21.19--22; Art.78
1.12.12.evolutiva.25,"Capacidad reservada de ingeniería evolutiva, mes 25",1.12,Operación,"Capacidad reservada de ingeniería evolutiva, mes 25",Resultado de la ficha de familia y del paquete original; registro individual por código/ventana,"No duplicar padres, informes, ingeniería ni cobertura; no incluye horas de contraparte ni obras/adquisiciones del cliente","Backlog, estimación, autorización, versión y evidencia; se liquida sólo el trabajo realizado, sin cobrar dos veces actividades ya presupuestadas.",Nikolai Navea,80,A:16;D:8;S:4;Q:8;V:40;I:4,"Asignación y cuadrante integrado por código; entornos, usuarios y habilitaciones autorizados",RT-21.19--22; Art.78,2028-12-20,2028-12-26,SERVICIO-ACTIVO,Recepción por etapa o control del periodo; no acredita ejecución,RT-21.19--22; Art.78
1.12.12.deuda.25,"Capacidad reservada de ingeniería deuda, mes 25",1.12,Operación,"Capacidad reservada de ingeniería deuda, mes 25",Resultado de la ficha de familia y del paquete original; registro individual por código/ventana,"No duplicar padres, informes, ingeniería ni cobertura; no incluye horas de contraparte ni obras/adquisiciones del cliente","Backlog, estimación, autorización, versión y evidencia; se liquida sólo el trabajo realizado, sin cobrar dos veces actividades ya presupuestadas.",Nikolai Navea,32,D:8;Q:8;V:16,"Asignación y cuadrante integrado por código; entornos, usuarios y habilitaciones autorizados",RT-21.19--22; Art.78,2028-12-20,2028-12-26,SERVICIO-ACTIVO,Recepción por etapa o control del periodo; no acredita ejecución,RT-21.19--22; Art.78
1.12.12.correctiva.26,"Capacidad reservada de ingeniería correctiva, mes 26",1.12,Operación,"Capacidad reservada de ingeniería correctiva, mes 26",Resultado de la ficha de familia y del paquete original; registro individual por código/ventana,"No duplicar padres, informes, ingeniería ni cobertura; no incluye horas de contraparte ni obras/adquisiciones del cliente","Backlog, estimación, autorización, versión y evidencia; se liquida sólo el trabajo realizado, sin cobrar dos veces actividades ya presupuestadas.",Nikolai Navea,80,D:16;Q:16;V:40;I:8,"Asignación y cuadrante integrado por código; entornos, usuarios y habilitaciones autorizados",RT-21.19--22; Art.78,2029-01-16,2029-01-22,SERVICIO-ACTIVO,Recepción por etapa o control del periodo; no acredita ejecución,RT-21.19--22; Art.78
1.12.12.normativa.26,"Capacidad reservada de ingeniería normativa, mes 26",1.12,Operación,"Capacidad reservada de ingeniería normativa, mes 26",Resultado de la ficha de familia y del paquete original; registro individual por código/ventana,"No duplicar padres, informes, ingeniería ni cobertura; no incluye horas de contraparte ni obras/adquisiciones del cliente","Backlog, estimación, autorización, versión y evidencia; se liquida sólo el trabajo realizado, sin cobrar dos veces actividades ya presupuestadas.",Nikolai Navea,48,A:8;S:8;Q:8;V:24,"Asignación y cuadrante integrado por código; entornos, usuarios y habilitaciones autorizados",RT-21.19--22; Art.78,2029-01-16,2029-01-18,SERVICIO-ACTIVO,Recepción por etapa o control del periodo; no acredita ejecución,RT-21.19--22; Art.78
1.12.12.evolutiva.26,"Capacidad reservada de ingeniería evolutiva, mes 26",1.12,Operación,"Capacidad reservada de ingeniería evolutiva, mes 26",Resultado de la ficha de familia y del paquete original; registro individual por código/ventana,"No duplicar padres, informes, ingeniería ni cobertura; no incluye horas de contraparte ni obras/adquisiciones del cliente","Backlog, estimación, autorización, versión y evidencia; se liquida sólo el trabajo realizado, sin cobrar dos veces actividades ya presupuestadas.",Nikolai Navea,80,A:16;D:8;S:4;Q:8;V:40;I:4,"Asignación y cuadrante integrado por código; entornos, usuarios y habilitaciones autorizados",RT-21.19--22; Art.78,2029-01-18,2029-01-23,SERVICIO-ACTIVO,Recepción por etapa o control del periodo; no acredita ejecución,RT-21.19--22; Art.78
1.12.12.deuda.26,"Capacidad reservada de ingeniería deuda, mes 26",1.12,Operación,"Capacidad reservada de ingeniería deuda, mes 26",Resultado de la ficha de familia y del paquete original; registro individual por código/ventana,"No duplicar padres, informes, ingeniería ni cobertura; no incluye horas de contraparte ni obras/adquisiciones del cliente","Backlog, estimación, autorización, versión y evidencia; se liquida sólo el trabajo realizado, sin cobrar dos veces actividades ya presupuestadas.",Nikolai Navea,32,D:8;Q:8;V:16,"Asignación y cuadrante integrado por código; entornos, usuarios y habilitaciones autorizados",RT-21.19--22; Art.78,2029-01-18,2029-01-23,SERVICIO-ACTIVO,Recepción por etapa o control del periodo; no acredita ejecución,RT-21.19--22; Art.78
1.12.12.correctiva.27,"Capacidad reservada de ingeniería correctiva, mes 27",1.12,Operación,"Capacidad reservada de ingeniería correctiva, mes 27",Resultado de la ficha de familia y del paquete original; registro individual por código/ventana,"No duplicar padres, informes, ingeniería ni cobertura; no incluye horas de contraparte ni obras/adquisiciones del cliente","Backlog, estimación, autorización, versión y evidencia; se liquida sólo el trabajo realizado, sin cobrar dos veces actividades ya presupuestadas.",Nikolai Navea,80,D:16;Q:16;V:40;I:8,"Asignación y cuadrante integrado por código; entornos, usuarios y habilitaciones autorizados",RT-21.19--22; Art.78,2029-02-16,2029-02-22,SERVICIO-ACTIVO,Recepción por etapa o control del periodo; no acredita ejecución,RT-21.19--22; Art.78
1.12.12.normativa.27,"Capacidad reservada de ingeniería normativa, mes 27",1.12,Operación,"Capacidad reservada de ingeniería normativa, mes 27",Resultado de la ficha de familia y del paquete original; registro individual por código/ventana,"No duplicar padres, informes, ingeniería ni cobertura; no incluye horas de contraparte ni obras/adquisiciones del cliente","Backlog, estimación, autorización, versión y evidencia; se liquida sólo el trabajo realizado, sin cobrar dos veces actividades ya presupuestadas.",Nikolai Navea,48,A:8;S:8;Q:8;V:24,"Asignación y cuadrante integrado por código; entornos, usuarios y habilitaciones autorizados",RT-21.19--22; Art.78,2029-02-16,2029-02-20,SERVICIO-ACTIVO,Recepción por etapa o control del periodo; no acredita ejecución,RT-21.19--22; Art.78
1.12.12.evolutiva.27,"Capacidad reservada de ingeniería evolutiva, mes 27",1.12,Operación,"Capacidad reservada de ingeniería evolutiva, mes 27",Resultado de la ficha de familia y del paquete original; registro individual por código/ventana,"No duplicar padres, informes, ingeniería ni cobertura; no incluye horas de contraparte ni obras/adquisiciones del cliente","Backlog, estimación, autorización, versión y evidencia; se liquida sólo el trabajo realizado, sin cobrar dos veces actividades ya presupuestadas.",Nikolai Navea,80,A:16;D:8;S:4;Q:8;V:40;I:4,"Asignación y cuadrante integrado por código; entornos, usuarios y habilitaciones autorizados",RT-21.19--22; Art.78,2029-02-20,2029-02-23,SERVICIO-ACTIVO,Recepción por etapa o control del periodo; no acredita ejecución,RT-21.19--22; Art.78
1.12.12.deuda.27,"Capacidad reservada de ingeniería deuda, mes 27",1.12,Operación,"Capacidad reservada de ingeniería deuda, mes 27",Resultado de la ficha de familia y del paquete original; registro individual por código/ventana,"No duplicar padres, informes, ingeniería ni cobertura; no incluye horas de contraparte ni obras/adquisiciones del cliente","Backlog, estimación, autorización, versión y evidencia; se liquida sólo el trabajo realizado, sin cobrar dos veces actividades ya presupuestadas.",Nikolai Navea,32,D:8;Q:8;V:16,"Asignación y cuadrante integrado por código; entornos, usuarios y habilitaciones autorizados",RT-21.19--22; Art.78,2029-02-20,2029-02-23,SERVICIO-ACTIVO,Recepción por etapa o control del periodo; no acredita ejecución,RT-21.19--22; Art.78
1.12.12.correctiva.28,"Capacidad reservada de ingeniería correctiva, mes 28",1.12,Operación,"Capacidad reservada de ingeniería correctiva, mes 28",Resultado de la ficha de familia y del paquete original; registro individual por código/ventana,"No duplicar padres, informes, ingeniería ni cobertura; no incluye horas de contraparte ni obras/adquisiciones del cliente","Backlog, estimación, autorización, versión y evidencia; se liquida sólo el trabajo realizado, sin cobrar dos veces actividades ya presupuestadas.",Nikolai Navea,80,D:16;Q:16;V:40;I:8,"Asignación y cuadrante integrado por código; entornos, usuarios y habilitaciones autorizados",RT-21.19--22; Art.78,2029-03-16,2029-03-22,SERVICIO-ACTIVO,Recepción por etapa o control del periodo; no acredita ejecución,RT-21.19--22; Art.78
1.12.12.normativa.28,"Capacidad reservada de ingeniería normativa, mes 28",1.12,Operación,"Capacidad reservada de ingeniería normativa, mes 28",Resultado de la ficha de familia y del paquete original; registro individual por código/ventana,"No duplicar padres, informes, ingeniería ni cobertura; no incluye horas de contraparte ni obras/adquisiciones del cliente","Backlog, estimación, autorización, versión y evidencia; se liquida sólo el trabajo realizado, sin cobrar dos veces actividades ya presupuestadas.",Nikolai Navea,48,A:8;S:8;Q:8;V:24,"Asignación y cuadrante integrado por código; entornos, usuarios y habilitaciones autorizados",RT-21.19--22; Art.78,2029-03-16,2029-03-20,SERVICIO-ACTIVO,Recepción por etapa o control del periodo; no acredita ejecución,RT-21.19--22; Art.78
1.12.12.evolutiva.28,"Capacidad reservada de ingeniería evolutiva, mes 28",1.12,Operación,"Capacidad reservada de ingeniería evolutiva, mes 28",Resultado de la ficha de familia y del paquete original; registro individual por código/ventana,"No duplicar padres, informes, ingeniería ni cobertura; no incluye horas de contraparte ni obras/adquisiciones del cliente","Backlog, estimación, autorización, versión y evidencia; se liquida sólo el trabajo realizado, sin cobrar dos veces actividades ya presupuestadas.",Nikolai Navea,80,A:16;D:8;S:4;Q:8;V:40;I:4,"Asignación y cuadrante integrado por código; entornos, usuarios y habilitaciones autorizados",RT-21.19--22; Art.78,2029-03-20,2029-03-23,SERVICIO-ACTIVO,Recepción por etapa o control del periodo; no acredita ejecución,RT-21.19--22; Art.78
1.12.12.deuda.28,"Capacidad reservada de ingeniería deuda, mes 28",1.12,Operación,"Capacidad reservada de ingeniería deuda, mes 28",Resultado de la ficha de familia y del paquete original; registro individual por código/ventana,"No duplicar padres, informes, ingeniería ni cobertura; no incluye horas de contraparte ni obras/adquisiciones del cliente","Backlog, estimación, autorización, versión y evidencia; se liquida sólo el trabajo realizado, sin cobrar dos veces actividades ya presupuestadas.",Nikolai Navea,32,D:8;Q:8;V:16,"Asignación y cuadrante integrado por código; entornos, usuarios y habilitaciones autorizados",RT-21.19--22; Art.78,2029-03-20,2029-03-23,SERVICIO-ACTIVO,Recepción por etapa o control del periodo; no acredita ejecución,RT-21.19--22; Art.78
1.12.12.correctiva.29,"Capacidad reservada de ingeniería correctiva, mes 29",1.12,Operación,"Capacidad reservada de ingeniería correctiva, mes 29",Resultado de la ficha de familia y del paquete original; registro individual por código/ventana,"No duplicar padres, informes, ingeniería ni cobertura; no incluye horas de contraparte ni obras/adquisiciones del cliente","Backlog, estimación, autorización, versión y evidencia; se liquida sólo el trabajo realizado, sin cobrar dos veces actividades ya presupuestadas.",Nikolai Navea,80,D:16;Q:16;V:40;I:8,"Asignación y cuadrante integrado por código; entornos, usuarios y habilitaciones autorizados",RT-21.19--22; Art.78,2029-04-16,2029-04-20,SERVICIO-ACTIVO,Recepción por etapa o control del periodo; no acredita ejecución,RT-21.19--22; Art.78
1.12.12.normativa.29,"Capacidad reservada de ingeniería normativa, mes 29",1.12,Operación,"Capacidad reservada de ingeniería normativa, mes 29",Resultado de la ficha de familia y del paquete original; registro individual por código/ventana,"No duplicar padres, informes, ingeniería ni cobertura; no incluye horas de contraparte ni obras/adquisiciones del cliente","Backlog, estimación, autorización, versión y evidencia; se liquida sólo el trabajo realizado, sin cobrar dos veces actividades ya presupuestadas.",Nikolai Navea,48,A:8;S:8;Q:8;V:24,"Asignación y cuadrante integrado por código; entornos, usuarios y habilitaciones autorizados",RT-21.19--22; Art.78,2029-04-16,2029-04-18,SERVICIO-ACTIVO,Recepción por etapa o control del periodo; no acredita ejecución,RT-21.19--22; Art.78
1.12.12.evolutiva.29,"Capacidad reservada de ingeniería evolutiva, mes 29",1.12,Operación,"Capacidad reservada de ingeniería evolutiva, mes 29",Resultado de la ficha de familia y del paquete original; registro individual por código/ventana,"No duplicar padres, informes, ingeniería ni cobertura; no incluye horas de contraparte ni obras/adquisiciones del cliente","Backlog, estimación, autorización, versión y evidencia; se liquida sólo el trabajo realizado, sin cobrar dos veces actividades ya presupuestadas.",Nikolai Navea,80,A:16;D:8;S:4;Q:8;V:40;I:4,"Asignación y cuadrante integrado por código; entornos, usuarios y habilitaciones autorizados",RT-21.19--22; Art.78,2029-04-18,2029-04-23,SERVICIO-ACTIVO,Recepción por etapa o control del periodo; no acredita ejecución,RT-21.19--22; Art.78
1.12.12.deuda.29,"Capacidad reservada de ingeniería deuda, mes 29",1.12,Operación,"Capacidad reservada de ingeniería deuda, mes 29",Resultado de la ficha de familia y del paquete original; registro individual por código/ventana,"No duplicar padres, informes, ingeniería ni cobertura; no incluye horas de contraparte ni obras/adquisiciones del cliente","Backlog, estimación, autorización, versión y evidencia; se liquida sólo el trabajo realizado, sin cobrar dos veces actividades ya presupuestadas.",Nikolai Navea,32,D:8;Q:8;V:16,"Asignación y cuadrante integrado por código; entornos, usuarios y habilitaciones autorizados",RT-21.19--22; Art.78,2029-04-18,2029-04-23,SERVICIO-ACTIVO,Recepción por etapa o control del periodo; no acredita ejecución,RT-21.19--22; Art.78
1.12.12.correctiva.30,"Capacidad reservada de ingeniería correctiva, mes 30",1.12,Operación,"Capacidad reservada de ingeniería correctiva, mes 30",Resultado de la ficha de familia y del paquete original; registro individual por código/ventana,"No duplicar padres, informes, ingeniería ni cobertura; no incluye horas de contraparte ni obras/adquisiciones del cliente","Backlog, estimación, autorización, versión y evidencia; se liquida sólo el trabajo realizado, sin cobrar dos veces actividades ya presupuestadas.",Nikolai Navea,80,D:16;Q:16;V:40;I:8,"Asignación y cuadrante integrado por código; entornos, usuarios y habilitaciones autorizados",RT-21.19--22; Art.78,2029-05-16,2029-05-23,SERVICIO-ACTIVO,Recepción por etapa o control del periodo; no acredita ejecución,RT-21.19--22; Art.78
1.12.12.normativa.30,"Capacidad reservada de ingeniería normativa, mes 30",1.12,Operación,"Capacidad reservada de ingeniería normativa, mes 30",Resultado de la ficha de familia y del paquete original; registro individual por código/ventana,"No duplicar padres, informes, ingeniería ni cobertura; no incluye horas de contraparte ni obras/adquisiciones del cliente","Backlog, estimación, autorización, versión y evidencia; se liquida sólo el trabajo realizado, sin cobrar dos veces actividades ya presupuestadas.",Nikolai Navea,48,A:8;S:8;Q:8;V:24,"Asignación y cuadrante integrado por código; entornos, usuarios y habilitaciones autorizados",RT-21.19--22; Art.78,2029-05-16,2029-05-18,SERVICIO-ACTIVO,Recepción por etapa o control del periodo; no acredita ejecución,RT-21.19--22; Art.78
1.12.12.evolutiva.30,"Capacidad reservada de ingeniería evolutiva, mes 30",1.12,Operación,"Capacidad reservada de ingeniería evolutiva, mes 30",Resultado de la ficha de familia y del paquete original; registro individual por código/ventana,"No duplicar padres, informes, ingeniería ni cobertura; no incluye horas de contraparte ni obras/adquisiciones del cliente","Backlog, estimación, autorización, versión y evidencia; se liquida sólo el trabajo realizado, sin cobrar dos veces actividades ya presupuestadas.",Nikolai Navea,80,A:16;D:8;S:4;Q:8;V:40;I:4,"Asignación y cuadrante integrado por código; entornos, usuarios y habilitaciones autorizados",RT-21.19--22; Art.78,2029-05-18,2029-05-24,SERVICIO-ACTIVO,Recepción por etapa o control del periodo; no acredita ejecución,RT-21.19--22; Art.78
1.12.12.deuda.30,"Capacidad reservada de ingeniería deuda, mes 30",1.12,Operación,"Capacidad reservada de ingeniería deuda, mes 30",Resultado de la ficha de familia y del paquete original; registro individual por código/ventana,"No duplicar padres, informes, ingeniería ni cobertura; no incluye horas de contraparte ni obras/adquisiciones del cliente","Backlog, estimación, autorización, versión y evidencia; se liquida sólo el trabajo realizado, sin cobrar dos veces actividades ya presupuestadas.",Nikolai Navea,32,D:8;Q:8;V:16,"Asignación y cuadrante integrado por código; entornos, usuarios y habilitaciones autorizados",RT-21.19--22; Art.78,2029-05-18,2029-05-24,SERVICIO-ACTIVO,Recepción por etapa o control del periodo; no acredita ejecución,RT-21.19--22; Art.78
1.12.12.correctiva.31,"Capacidad reservada de ingeniería correctiva, mes 31",1.12,Operación,"Capacidad reservada de ingeniería correctiva, mes 31",Resultado de la ficha de familia y del paquete original; registro individual por código/ventana,"No duplicar padres, informes, ingeniería ni cobertura; no incluye horas de contraparte ni obras/adquisiciones del cliente","Backlog, estimación, autorización, versión y evidencia; se liquida sólo el trabajo realizado, sin cobrar dos veces actividades ya presupuestadas.",Nikolai Navea,80,D:16;Q:16;V:40;I:8,"Asignación y cuadrante integrado por código; entornos, usuarios y habilitaciones autorizados",RT-21.19--22; Art.78,2029-06-18,2029-06-25,SERVICIO-ACTIVO,Recepción por etapa o control del periodo; no acredita ejecución,RT-21.19--22; Art.78
1.12.12.normativa.31,"Capacidad reservada de ingeniería normativa, mes 31",1.12,Operación,"Capacidad reservada de ingeniería normativa, mes 31",Resultado de la ficha de familia y del paquete original; registro individual por código/ventana,"No duplicar padres, informes, ingeniería ni cobertura; no incluye horas de contraparte ni obras/adquisiciones del cliente","Backlog, estimación, autorización, versión y evidencia; se liquida sólo el trabajo realizado, sin cobrar dos veces actividades ya presupuestadas.",Nikolai Navea,48,A:8;S:8;Q:8;V:24,"Asignación y cuadrante integrado por código; entornos, usuarios y habilitaciones autorizados",RT-21.19--22; Art.78,2029-06-18,2029-06-21,SERVICIO-ACTIVO,Recepción por etapa o control del periodo; no acredita ejecución,RT-21.19--22; Art.78
1.12.12.evolutiva.31,"Capacidad reservada de ingeniería evolutiva, mes 31",1.12,Operación,"Capacidad reservada de ingeniería evolutiva, mes 31",Resultado de la ficha de familia y del paquete original; registro individual por código/ventana,"No duplicar padres, informes, ingeniería ni cobertura; no incluye horas de contraparte ni obras/adquisiciones del cliente","Backlog, estimación, autorización, versión y evidencia; se liquida sólo el trabajo realizado, sin cobrar dos veces actividades ya presupuestadas.",Nikolai Navea,80,A:16;D:8;S:4;Q:8;V:40;I:4,"Asignación y cuadrante integrado por código; entornos, usuarios y habilitaciones autorizados",RT-21.19--22; Art.78,2029-06-21,2029-06-26,SERVICIO-ACTIVO,Recepción por etapa o control del periodo; no acredita ejecución,RT-21.19--22; Art.78
1.12.12.deuda.31,"Capacidad reservada de ingeniería deuda, mes 31",1.12,Operación,"Capacidad reservada de ingeniería deuda, mes 31",Resultado de la ficha de familia y del paquete original; registro individual por código/ventana,"No duplicar padres, informes, ingeniería ni cobertura; no incluye horas de contraparte ni obras/adquisiciones del cliente","Backlog, estimación, autorización, versión y evidencia; se liquida sólo el trabajo realizado, sin cobrar dos veces actividades ya presupuestadas.",Nikolai Navea,32,D:8;Q:8;V:16,"Asignación y cuadrante integrado por código; entornos, usuarios y habilitaciones autorizados",RT-21.19--22; Art.78,2029-06-21,2029-06-26,SERVICIO-ACTIVO,Recepción por etapa o control del periodo; no acredita ejecución,RT-21.19--22; Art.78
1.12.12.correctiva.32,"Capacidad reservada de ingeniería correctiva, mes 32",1.12,Operación,"Capacidad reservada de ingeniería correctiva, mes 32",Resultado de la ficha de familia y del paquete original; registro individual por código/ventana,"No duplicar padres, informes, ingeniería ni cobertura; no incluye horas de contraparte ni obras/adquisiciones del cliente","Backlog, estimación, autorización, versión y evidencia; se liquida sólo el trabajo realizado, sin cobrar dos veces actividades ya presupuestadas.",Nikolai Navea,80,D:16;Q:16;V:40;I:8,"Asignación y cuadrante integrado por código; entornos, usuarios y habilitaciones autorizados",RT-21.19--22; Art.78,2029-07-17,2029-07-23,SERVICIO-ACTIVO,Recepción por etapa o control del periodo; no acredita ejecución,RT-21.19--22; Art.78
1.12.12.normativa.32,"Capacidad reservada de ingeniería normativa, mes 32",1.12,Operación,"Capacidad reservada de ingeniería normativa, mes 32",Resultado de la ficha de familia y del paquete original; registro individual por código/ventana,"No duplicar padres, informes, ingeniería ni cobertura; no incluye horas de contraparte ni obras/adquisiciones del cliente","Backlog, estimación, autorización, versión y evidencia; se liquida sólo el trabajo realizado, sin cobrar dos veces actividades ya presupuestadas.",Nikolai Navea,48,A:8;S:8;Q:8;V:24,"Asignación y cuadrante integrado por código; entornos, usuarios y habilitaciones autorizados",RT-21.19--22; Art.78,2029-07-17,2029-07-19,SERVICIO-ACTIVO,Recepción por etapa o control del periodo; no acredita ejecución,RT-21.19--22; Art.78
1.12.12.evolutiva.32,"Capacidad reservada de ingeniería evolutiva, mes 32",1.12,Operación,"Capacidad reservada de ingeniería evolutiva, mes 32",Resultado de la ficha de familia y del paquete original; registro individual por código/ventana,"No duplicar padres, informes, ingeniería ni cobertura; no incluye horas de contraparte ni obras/adquisiciones del cliente","Backlog, estimación, autorización, versión y evidencia; se liquida sólo el trabajo realizado, sin cobrar dos veces actividades ya presupuestadas.",Nikolai Navea,80,A:16;D:8;S:4;Q:8;V:40;I:4,"Asignación y cuadrante integrado por código; entornos, usuarios y habilitaciones autorizados",RT-21.19--22; Art.78,2029-07-19,2029-07-24,SERVICIO-ACTIVO,Recepción por etapa o control del periodo; no acredita ejecución,RT-21.19--22; Art.78
1.12.12.deuda.32,"Capacidad reservada de ingeniería deuda, mes 32",1.12,Operación,"Capacidad reservada de ingeniería deuda, mes 32",Resultado de la ficha de familia y del paquete original; registro individual por código/ventana,"No duplicar padres, informes, ingeniería ni cobertura; no incluye horas de contraparte ni obras/adquisiciones del cliente","Backlog, estimación, autorización, versión y evidencia; se liquida sólo el trabajo realizado, sin cobrar dos veces actividades ya presupuestadas.",Nikolai Navea,32,D:8;Q:8;V:16,"Asignación y cuadrante integrado por código; entornos, usuarios y habilitaciones autorizados",RT-21.19--22; Art.78,2029-07-19,2029-07-24,SERVICIO-ACTIVO,Recepción por etapa o control del periodo; no acredita ejecución,RT-21.19--22; Art.78
1.12.12.correctiva.33,"Capacidad reservada de ingeniería correctiva, mes 33",1.12,Operación,"Capacidad reservada de ingeniería correctiva, mes 33",Resultado de la ficha de familia y del paquete original; registro individual por código/ventana,"No duplicar padres, informes, ingeniería ni cobertura; no incluye horas de contraparte ni obras/adquisiciones del cliente","Backlog, estimación, autorización, versión y evidencia; se liquida sólo el trabajo realizado, sin cobrar dos veces actividades ya presupuestadas.",Nikolai Navea,80,D:16;Q:16;V:40;I:8,"Asignación y cuadrante integrado por código; entornos, usuarios y habilitaciones autorizados",RT-21.19--22; Art.78,2029-08-16,2029-08-22,SERVICIO-ACTIVO,Recepción por etapa o control del periodo; no acredita ejecución,RT-21.19--22; Art.78
1.12.12.normativa.33,"Capacidad reservada de ingeniería normativa, mes 33",1.12,Operación,"Capacidad reservada de ingeniería normativa, mes 33",Resultado de la ficha de familia y del paquete original; registro individual por código/ventana,"No duplicar padres, informes, ingeniería ni cobertura; no incluye horas de contraparte ni obras/adquisiciones del cliente","Backlog, estimación, autorización, versión y evidencia; se liquida sólo el trabajo realizado, sin cobrar dos veces actividades ya presupuestadas.",Nikolai Navea,48,A:8;S:8;Q:8;V:24,"Asignación y cuadrante integrado por código; entornos, usuarios y habilitaciones autorizados",RT-21.19--22; Art.78,2029-08-16,2029-08-20,SERVICIO-ACTIVO,Recepción por etapa o control del periodo; no acredita ejecución,RT-21.19--22; Art.78
1.12.12.evolutiva.33,"Capacidad reservada de ingeniería evolutiva, mes 33",1.12,Operación,"Capacidad reservada de ingeniería evolutiva, mes 33",Resultado de la ficha de familia y del paquete original; registro individual por código/ventana,"No duplicar padres, informes, ingeniería ni cobertura; no incluye horas de contraparte ni obras/adquisiciones del cliente","Backlog, estimación, autorización, versión y evidencia; se liquida sólo el trabajo realizado, sin cobrar dos veces actividades ya presupuestadas.",Nikolai Navea,80,A:16;D:8;S:4;Q:8;V:40;I:4,"Asignación y cuadrante integrado por código; entornos, usuarios y habilitaciones autorizados",RT-21.19--22; Art.78,2029-08-20,2029-08-23,SERVICIO-ACTIVO,Recepción por etapa o control del periodo; no acredita ejecución,RT-21.19--22; Art.78
1.12.12.deuda.33,"Capacidad reservada de ingeniería deuda, mes 33",1.12,Operación,"Capacidad reservada de ingeniería deuda, mes 33",Resultado de la ficha de familia y del paquete original; registro individual por código/ventana,"No duplicar padres, informes, ingeniería ni cobertura; no incluye horas de contraparte ni obras/adquisiciones del cliente","Backlog, estimación, autorización, versión y evidencia; se liquida sólo el trabajo realizado, sin cobrar dos veces actividades ya presupuestadas.",Nikolai Navea,32,D:8;Q:8;V:16,"Asignación y cuadrante integrado por código; entornos, usuarios y habilitaciones autorizados",RT-21.19--22; Art.78,2029-08-20,2029-08-23,SERVICIO-ACTIVO,Recepción por etapa o control del periodo; no acredita ejecución,RT-21.19--22; Art.78
1.12.12.correctiva.34,"Capacidad reservada de ingeniería correctiva, mes 34",1.12,Operación,"Capacidad reservada de ingeniería correctiva, mes 34",Resultado de la ficha de familia y del paquete original; registro individual por código/ventana,"No duplicar padres, informes, ingeniería ni cobertura; no incluye horas de contraparte ni obras/adquisiciones del cliente","Backlog, estimación, autorización, versión y evidencia; se liquida sólo el trabajo realizado, sin cobrar dos veces actividades ya presupuestadas.",Nikolai Navea,80,D:16;Q:16;V:40;I:8,"Asignación y cuadrante integrado por código; entornos, usuarios y habilitaciones autorizados",RT-21.19--22; Art.78,2029-09-20,2029-09-26,SERVICIO-ACTIVO,Recepción por etapa o control del periodo; no acredita ejecución,RT-21.19--22; Art.78
1.12.12.normativa.34,"Capacidad reservada de ingeniería normativa, mes 34",1.12,Operación,"Capacidad reservada de ingeniería normativa, mes 34",Resultado de la ficha de familia y del paquete original; registro individual por código/ventana,"No duplicar padres, informes, ingeniería ni cobertura; no incluye horas de contraparte ni obras/adquisiciones del cliente","Backlog, estimación, autorización, versión y evidencia; se liquida sólo el trabajo realizado, sin cobrar dos veces actividades ya presupuestadas.",Nikolai Navea,48,A:8;S:8;Q:8;V:24,"Asignación y cuadrante integrado por código; entornos, usuarios y habilitaciones autorizados",RT-21.19--22; Art.78,2029-09-20,2029-09-24,SERVICIO-ACTIVO,Recepción por etapa o control del periodo; no acredita ejecución,RT-21.19--22; Art.78
1.12.12.evolutiva.34,"Capacidad reservada de ingeniería evolutiva, mes 34",1.12,Operación,"Capacidad reservada de ingeniería evolutiva, mes 34",Resultado de la ficha de familia y del paquete original; registro individual por código/ventana,"No duplicar padres, informes, ingeniería ni cobertura; no incluye horas de contraparte ni obras/adquisiciones del cliente","Backlog, estimación, autorización, versión y evidencia; se liquida sólo el trabajo realizado, sin cobrar dos veces actividades ya presupuestadas.",Nikolai Navea,80,A:16;D:8;S:4;Q:8;V:40;I:4,"Asignación y cuadrante integrado por código; entornos, usuarios y habilitaciones autorizados",RT-21.19--22; Art.78,2029-09-24,2029-09-27,SERVICIO-ACTIVO,Recepción por etapa o control del periodo; no acredita ejecución,RT-21.19--22; Art.78
1.12.12.deuda.34,"Capacidad reservada de ingeniería deuda, mes 34",1.12,Operación,"Capacidad reservada de ingeniería deuda, mes 34",Resultado de la ficha de familia y del paquete original; registro individual por código/ventana,"No duplicar padres, informes, ingeniería ni cobertura; no incluye horas de contraparte ni obras/adquisiciones del cliente","Backlog, estimación, autorización, versión y evidencia; se liquida sólo el trabajo realizado, sin cobrar dos veces actividades ya presupuestadas.",Nikolai Navea,32,D:8;Q:8;V:16,"Asignación y cuadrante integrado por código; entornos, usuarios y habilitaciones autorizados",RT-21.19--22; Art.78,2029-09-24,2029-09-27,SERVICIO-ACTIVO,Recepción por etapa o control del periodo; no acredita ejecución,RT-21.19--22; Art.78
1.12.12.correctiva.35,"Capacidad reservada de ingeniería correctiva, mes 35",1.12,Operación,"Capacidad reservada de ingeniería correctiva, mes 35",Resultado de la ficha de familia y del paquete original; registro individual por código/ventana,"No duplicar padres, informes, ingeniería ni cobertura; no incluye horas de contraparte ni obras/adquisiciones del cliente","Backlog, estimación, autorización, versión y evidencia; se liquida sólo el trabajo realizado, sin cobrar dos veces actividades ya presupuestadas.",Nikolai Navea,80,D:16;Q:16;V:40;I:8,"Asignación y cuadrante integrado por código; entornos, usuarios y habilitaciones autorizados",RT-21.19--22; Art.78,2029-10-16,2029-10-22,SERVICIO-ACTIVO,Recepción por etapa o control del periodo; no acredita ejecución,RT-21.19--22; Art.78
1.12.12.normativa.35,"Capacidad reservada de ingeniería normativa, mes 35",1.12,Operación,"Capacidad reservada de ingeniería normativa, mes 35",Resultado de la ficha de familia y del paquete original; registro individual por código/ventana,"No duplicar padres, informes, ingeniería ni cobertura; no incluye horas de contraparte ni obras/adquisiciones del cliente","Backlog, estimación, autorización, versión y evidencia; se liquida sólo el trabajo realizado, sin cobrar dos veces actividades ya presupuestadas.",Nikolai Navea,48,A:8;S:8;Q:8;V:24,"Asignación y cuadrante integrado por código; entornos, usuarios y habilitaciones autorizados",RT-21.19--22; Art.78,2029-10-16,2029-10-18,SERVICIO-ACTIVO,Recepción por etapa o control del periodo; no acredita ejecución,RT-21.19--22; Art.78
1.12.12.evolutiva.35,"Capacidad reservada de ingeniería evolutiva, mes 35",1.12,Operación,"Capacidad reservada de ingeniería evolutiva, mes 35",Resultado de la ficha de familia y del paquete original; registro individual por código/ventana,"No duplicar padres, informes, ingeniería ni cobertura; no incluye horas de contraparte ni obras/adquisiciones del cliente","Backlog, estimación, autorización, versión y evidencia; se liquida sólo el trabajo realizado, sin cobrar dos veces actividades ya presupuestadas.",Nikolai Navea,80,A:16;D:8;S:4;Q:8;V:40;I:4,"Asignación y cuadrante integrado por código; entornos, usuarios y habilitaciones autorizados",RT-21.19--22; Art.78,2029-10-18,2029-10-23,SERVICIO-ACTIVO,Recepción por etapa o control del periodo; no acredita ejecución,RT-21.19--22; Art.78
1.12.12.deuda.35,"Capacidad reservada de ingeniería deuda, mes 35",1.12,Operación,"Capacidad reservada de ingeniería deuda, mes 35",Resultado de la ficha de familia y del paquete original; registro individual por código/ventana,"No duplicar padres, informes, ingeniería ni cobertura; no incluye horas de contraparte ni obras/adquisiciones del cliente","Backlog, estimación, autorización, versión y evidencia; se liquida sólo el trabajo realizado, sin cobrar dos veces actividades ya presupuestadas.",Nikolai Navea,32,D:8;Q:8;V:16,"Asignación y cuadrante integrado por código; entornos, usuarios y habilitaciones autorizados",RT-21.19--22; Art.78,2029-10-18,2029-10-23,SERVICIO-ACTIVO,Recepción por etapa o control del periodo; no acredita ejecución,RT-21.19--22; Art.78
1.12.12.correctiva.36,"Capacidad reservada de ingeniería correctiva, mes 36",1.12,Operación,"Capacidad reservada de ingeniería correctiva, mes 36",Resultado de la ficha de familia y del paquete original; registro individual por código/ventana,"No duplicar padres, informes, ingeniería ni cobertura; no incluye horas de contraparte ni obras/adquisiciones del cliente","Backlog, estimación, autorización, versión y evidencia; se liquida sólo el trabajo realizado, sin cobrar dos veces actividades ya presupuestadas.",Nikolai Navea,80,D:16;Q:16;V:40;I:8,"Asignación y cuadrante integrado por código; entornos, usuarios y habilitaciones autorizados",RT-21.19--22; Art.78,2029-11-16,2029-11-22,SERVICIO-ACTIVO,Recepción por etapa o control del periodo; no acredita ejecución,RT-21.19--22; Art.78
1.12.12.normativa.36,"Capacidad reservada de ingeniería normativa, mes 36",1.12,Operación,"Capacidad reservada de ingeniería normativa, mes 36",Resultado de la ficha de familia y del paquete original; registro individual por código/ventana,"No duplicar padres, informes, ingeniería ni cobertura; no incluye horas de contraparte ni obras/adquisiciones del cliente","Backlog, estimación, autorización, versión y evidencia; se liquida sólo el trabajo realizado, sin cobrar dos veces actividades ya presupuestadas.",Nikolai Navea,48,A:8;S:8;Q:8;V:24,"Asignación y cuadrante integrado por código; entornos, usuarios y habilitaciones autorizados",RT-21.19--22; Art.78,2029-11-16,2029-11-20,SERVICIO-ACTIVO,Recepción por etapa o control del periodo; no acredita ejecución,RT-21.19--22; Art.78
1.12.12.evolutiva.36,"Capacidad reservada de ingeniería evolutiva, mes 36",1.12,Operación,"Capacidad reservada de ingeniería evolutiva, mes 36",Resultado de la ficha de familia y del paquete original; registro individual por código/ventana,"No duplicar padres, informes, ingeniería ni cobertura; no incluye horas de contraparte ni obras/adquisiciones del cliente","Backlog, estimación, autorización, versión y evidencia; se liquida sólo el trabajo realizado, sin cobrar dos veces actividades ya presupuestadas.",Nikolai Navea,80,A:16;D:8;S:4;Q:8;V:40;I:4,"Asignación y cuadrante integrado por código; entornos, usuarios y habilitaciones autorizados",RT-21.19--22; Art.78,2029-11-20,2029-11-23,SERVICIO-ACTIVO,Recepción por etapa o control del periodo; no acredita ejecución,RT-21.19--22; Art.78
1.12.12.deuda.36,"Capacidad reservada de ingeniería deuda, mes 36",1.12,Operación,"Capacidad reservada de ingeniería deuda, mes 36",Resultado de la ficha de familia y del paquete original; registro individual por código/ventana,"No duplicar padres, informes, ingeniería ni cobertura; no incluye horas de contraparte ni obras/adquisiciones del cliente","Backlog, estimación, autorización, versión y evidencia; se liquida sólo el trabajo realizado, sin cobrar dos veces actividades ya presupuestadas.",Nikolai Navea,32,D:8;Q:8;V:16,"Asignación y cuadrante integrado por código; entornos, usuarios y habilitaciones autorizados",RT-21.19--22; Art.78,2029-11-20,2029-11-23,SERVICIO-ACTIVO,Recepción por etapa o control del periodo; no acredita ejecución,RT-21.19--22; Art.78
1.12.12.correctiva.37,"Capacidad reservada de ingeniería correctiva, mes 37",1.12,Operación,"Capacidad reservada de ingeniería correctiva, mes 37",Resultado de la ficha de familia y del paquete original; registro individual por código/ventana,"No duplicar padres, informes, ingeniería ni cobertura; no incluye horas de contraparte ni obras/adquisiciones del cliente","Backlog, estimación, autorización, versión y evidencia; se liquida sólo el trabajo realizado, sin cobrar dos veces actividades ya presupuestadas.",Nikolai Navea,80,D:16;Q:16;V:40;I:8,"Asignación y cuadrante integrado por código; entornos, usuarios y habilitaciones autorizados",RT-21.19--22; Art.78,2029-12-17,2029-12-21,SERVICIO-ACTIVO,Recepción por etapa o control del periodo; no acredita ejecución,RT-21.19--22; Art.78
1.12.12.normativa.37,"Capacidad reservada de ingeniería normativa, mes 37",1.12,Operación,"Capacidad reservada de ingeniería normativa, mes 37",Resultado de la ficha de familia y del paquete original; registro individual por código/ventana,"No duplicar padres, informes, ingeniería ni cobertura; no incluye horas de contraparte ni obras/adquisiciones del cliente","Backlog, estimación, autorización, versión y evidencia; se liquida sólo el trabajo realizado, sin cobrar dos veces actividades ya presupuestadas.",Nikolai Navea,48,A:8;S:8;Q:8;V:24,"Asignación y cuadrante integrado por código; entornos, usuarios y habilitaciones autorizados",RT-21.19--22; Art.78,2029-12-17,2029-12-19,SERVICIO-ACTIVO,Recepción por etapa o control del periodo; no acredita ejecución,RT-21.19--22; Art.78
1.12.12.evolutiva.37,"Capacidad reservada de ingeniería evolutiva, mes 37",1.12,Operación,"Capacidad reservada de ingeniería evolutiva, mes 37",Resultado de la ficha de familia y del paquete original; registro individual por código/ventana,"No duplicar padres, informes, ingeniería ni cobertura; no incluye horas de contraparte ni obras/adquisiciones del cliente","Backlog, estimación, autorización, versión y evidencia; se liquida sólo el trabajo realizado, sin cobrar dos veces actividades ya presupuestadas.",Nikolai Navea,80,A:16;D:8;S:4;Q:8;V:40;I:4,"Asignación y cuadrante integrado por código; entornos, usuarios y habilitaciones autorizados",RT-21.19--22; Art.78,2029-12-19,2029-12-24,SERVICIO-ACTIVO,Recepción por etapa o control del periodo; no acredita ejecución,RT-21.19--22; Art.78
1.12.12.deuda.37,"Capacidad reservada de ingeniería deuda, mes 37",1.12,Operación,"Capacidad reservada de ingeniería deuda, mes 37",Resultado de la ficha de familia y del paquete original; registro individual por código/ventana,"No duplicar padres, informes, ingeniería ni cobertura; no incluye horas de contraparte ni obras/adquisiciones del cliente","Backlog, estimación, autorización, versión y evidencia; se liquida sólo el trabajo realizado, sin cobrar dos veces actividades ya presupuestadas.",Nikolai Navea,32,D:8;Q:8;V:16,"Asignación y cuadrante integrado por código; entornos, usuarios y habilitaciones autorizados",RT-21.19--22; Art.78,2029-12-19,2029-12-24,SERVICIO-ACTIVO,Recepción por etapa o control del periodo; no acredita ejecución,RT-21.19--22; Art.78
1.12.12.correctiva.38,"Capacidad reservada de ingeniería correctiva, mes 38",1.12,Operación,"Capacidad reservada de ingeniería correctiva, mes 38",Resultado de la ficha de familia y del paquete original; registro individual por código/ventana,"No duplicar padres, informes, ingeniería ni cobertura; no incluye horas de contraparte ni obras/adquisiciones del cliente","Backlog, estimación, autorización, versión y evidencia; se liquida sólo el trabajo realizado, sin cobrar dos veces actividades ya presupuestadas.",Nikolai Navea,80,D:16;Q:16;V:40;I:8,"Asignación y cuadrante integrado por código; entornos, usuarios y habilitaciones autorizados",RT-21.19--22; Art.78,2030-01-16,2030-01-22,SERVICIO-ACTIVO,Recepción por etapa o control del periodo; no acredita ejecución,RT-21.19--22; Art.78
1.12.12.normativa.38,"Capacidad reservada de ingeniería normativa, mes 38",1.12,Operación,"Capacidad reservada de ingeniería normativa, mes 38",Resultado de la ficha de familia y del paquete original; registro individual por código/ventana,"No duplicar padres, informes, ingeniería ni cobertura; no incluye horas de contraparte ni obras/adquisiciones del cliente","Backlog, estimación, autorización, versión y evidencia; se liquida sólo el trabajo realizado, sin cobrar dos veces actividades ya presupuestadas.",Nikolai Navea,48,A:8;S:8;Q:8;V:24,"Asignación y cuadrante integrado por código; entornos, usuarios y habilitaciones autorizados",RT-21.19--22; Art.78,2030-01-16,2030-01-18,SERVICIO-ACTIVO,Recepción por etapa o control del periodo; no acredita ejecución,RT-21.19--22; Art.78
1.12.12.evolutiva.38,"Capacidad reservada de ingeniería evolutiva, mes 38",1.12,Operación,"Capacidad reservada de ingeniería evolutiva, mes 38",Resultado de la ficha de familia y del paquete original; registro individual por código/ventana,"No duplicar padres, informes, ingeniería ni cobertura; no incluye horas de contraparte ni obras/adquisiciones del cliente","Backlog, estimación, autorización, versión y evidencia; se liquida sólo el trabajo realizado, sin cobrar dos veces actividades ya presupuestadas.",Nikolai Navea,80,A:16;D:8;S:4;Q:8;V:40;I:4,"Asignación y cuadrante integrado por código; entornos, usuarios y habilitaciones autorizados",RT-21.19--22; Art.78,2030-01-18,2030-01-23,SERVICIO-ACTIVO,Recepción por etapa o control del periodo; no acredita ejecución,RT-21.19--22; Art.78
1.12.12.deuda.38,"Capacidad reservada de ingeniería deuda, mes 38",1.12,Operación,"Capacidad reservada de ingeniería deuda, mes 38",Resultado de la ficha de familia y del paquete original; registro individual por código/ventana,"No duplicar padres, informes, ingeniería ni cobertura; no incluye horas de contraparte ni obras/adquisiciones del cliente","Backlog, estimación, autorización, versión y evidencia; se liquida sólo el trabajo realizado, sin cobrar dos veces actividades ya presupuestadas.",Nikolai Navea,32,D:8;Q:8;V:16,"Asignación y cuadrante integrado por código; entornos, usuarios y habilitaciones autorizados",RT-21.19--22; Art.78,2030-01-18,2030-01-23,SERVICIO-ACTIVO,Recepción por etapa o control del periodo; no acredita ejecución,RT-21.19--22; Art.78
1.12.12.correctiva.39,"Capacidad reservada de ingeniería correctiva, mes 39",1.12,Operación,"Capacidad reservada de ingeniería correctiva, mes 39",Resultado de la ficha de familia y del paquete original; registro individual por código/ventana,"No duplicar padres, informes, ingeniería ni cobertura; no incluye horas de contraparte ni obras/adquisiciones del cliente","Backlog, estimación, autorización, versión y evidencia; se liquida sólo el trabajo realizado, sin cobrar dos veces actividades ya presupuestadas.",Nikolai Navea,80,D:16;Q:16;V:40;I:8,"Asignación y cuadrante integrado por código; entornos, usuarios y habilitaciones autorizados",RT-21.19--22; Art.78,2030-02-18,2030-02-22,SERVICIO-ACTIVO,Recepción por etapa o control del periodo; no acredita ejecución,RT-21.19--22; Art.78
1.12.12.normativa.39,"Capacidad reservada de ingeniería normativa, mes 39",1.12,Operación,"Capacidad reservada de ingeniería normativa, mes 39",Resultado de la ficha de familia y del paquete original; registro individual por código/ventana,"No duplicar padres, informes, ingeniería ni cobertura; no incluye horas de contraparte ni obras/adquisiciones del cliente","Backlog, estimación, autorización, versión y evidencia; se liquida sólo el trabajo realizado, sin cobrar dos veces actividades ya presupuestadas.",Nikolai Navea,48,A:8;S:8;Q:8;V:24,"Asignación y cuadrante integrado por código; entornos, usuarios y habilitaciones autorizados",RT-21.19--22; Art.78,2030-02-18,2030-02-20,SERVICIO-ACTIVO,Recepción por etapa o control del periodo; no acredita ejecución,RT-21.19--22; Art.78
1.12.12.evolutiva.39,"Capacidad reservada de ingeniería evolutiva, mes 39",1.12,Operación,"Capacidad reservada de ingeniería evolutiva, mes 39",Resultado de la ficha de familia y del paquete original; registro individual por código/ventana,"No duplicar padres, informes, ingeniería ni cobertura; no incluye horas de contraparte ni obras/adquisiciones del cliente","Backlog, estimación, autorización, versión y evidencia; se liquida sólo el trabajo realizado, sin cobrar dos veces actividades ya presupuestadas.",Nikolai Navea,80,A:16;D:8;S:4;Q:8;V:40;I:4,"Asignación y cuadrante integrado por código; entornos, usuarios y habilitaciones autorizados",RT-21.19--22; Art.78,2030-02-20,2030-02-25,SERVICIO-ACTIVO,Recepción por etapa o control del periodo; no acredita ejecución,RT-21.19--22; Art.78
1.12.12.deuda.39,"Capacidad reservada de ingeniería deuda, mes 39",1.12,Operación,"Capacidad reservada de ingeniería deuda, mes 39",Resultado de la ficha de familia y del paquete original; registro individual por código/ventana,"No duplicar padres, informes, ingeniería ni cobertura; no incluye horas de contraparte ni obras/adquisiciones del cliente","Backlog, estimación, autorización, versión y evidencia; se liquida sólo el trabajo realizado, sin cobrar dos veces actividades ya presupuestadas.",Nikolai Navea,32,D:8;Q:8;V:16,"Asignación y cuadrante integrado por código; entornos, usuarios y habilitaciones autorizados",RT-21.19--22; Art.78,2030-02-20,2030-02-25,SERVICIO-ACTIVO,Recepción por etapa o control del periodo; no acredita ejecución,RT-21.19--22; Art.78
1.12.12.correctiva.40,"Capacidad reservada de ingeniería correctiva, mes 40",1.12,Operación,"Capacidad reservada de ingeniería correctiva, mes 40",Resultado de la ficha de familia y del paquete original; registro individual por código/ventana,"No duplicar padres, informes, ingeniería ni cobertura; no incluye horas de contraparte ni obras/adquisiciones del cliente","Backlog, estimación, autorización, versión y evidencia; se liquida sólo el trabajo realizado, sin cobrar dos veces actividades ya presupuestadas.",Nikolai Navea,80,D:16;Q:16;V:40;I:8,"Asignación y cuadrante integrado por código; entornos, usuarios y habilitaciones autorizados",RT-21.19--22; Art.78,2030-03-18,2030-03-22,SERVICIO-ACTIVO,Recepción por etapa o control del periodo; no acredita ejecución,RT-21.19--22; Art.78
1.12.12.normativa.40,"Capacidad reservada de ingeniería normativa, mes 40",1.12,Operación,"Capacidad reservada de ingeniería normativa, mes 40",Resultado de la ficha de familia y del paquete original; registro individual por código/ventana,"No duplicar padres, informes, ingeniería ni cobertura; no incluye horas de contraparte ni obras/adquisiciones del cliente","Backlog, estimación, autorización, versión y evidencia; se liquida sólo el trabajo realizado, sin cobrar dos veces actividades ya presupuestadas.",Nikolai Navea,48,A:8;S:8;Q:8;V:24,"Asignación y cuadrante integrado por código; entornos, usuarios y habilitaciones autorizados",RT-21.19--22; Art.78,2030-03-18,2030-03-20,SERVICIO-ACTIVO,Recepción por etapa o control del periodo; no acredita ejecución,RT-21.19--22; Art.78
1.12.12.evolutiva.40,"Capacidad reservada de ingeniería evolutiva, mes 40",1.12,Operación,"Capacidad reservada de ingeniería evolutiva, mes 40",Resultado de la ficha de familia y del paquete original; registro individual por código/ventana,"No duplicar padres, informes, ingeniería ni cobertura; no incluye horas de contraparte ni obras/adquisiciones del cliente","Backlog, estimación, autorización, versión y evidencia; se liquida sólo el trabajo realizado, sin cobrar dos veces actividades ya presupuestadas.",Nikolai Navea,80,A:16;D:8;S:4;Q:8;V:40;I:4,"Asignación y cuadrante integrado por código; entornos, usuarios y habilitaciones autorizados",RT-21.19--22; Art.78,2030-03-20,2030-03-25,SERVICIO-ACTIVO,Recepción por etapa o control del periodo; no acredita ejecución,RT-21.19--22; Art.78
1.12.12.deuda.40,"Capacidad reservada de ingeniería deuda, mes 40",1.12,Operación,"Capacidad reservada de ingeniería deuda, mes 40",Resultado de la ficha de familia y del paquete original; registro individual por código/ventana,"No duplicar padres, informes, ingeniería ni cobertura; no incluye horas de contraparte ni obras/adquisiciones del cliente","Backlog, estimación, autorización, versión y evidencia; se liquida sólo el trabajo realizado, sin cobrar dos veces actividades ya presupuestadas.",Nikolai Navea,32,D:8;Q:8;V:16,"Asignación y cuadrante integrado por código; entornos, usuarios y habilitaciones autorizados",RT-21.19--22; Art.78,2030-03-20,2030-03-25,SERVICIO-ACTIVO,Recepción por etapa o control del periodo; no acredita ejecución,RT-21.19--22; Art.78
1.12.12.correctiva.41,"Capacidad reservada de ingeniería correctiva, mes 41",1.12,Operación,"Capacidad reservada de ingeniería correctiva, mes 41",Resultado de la ficha de familia y del paquete original; registro individual por código/ventana,"No duplicar padres, informes, ingeniería ni cobertura; no incluye horas de contraparte ni obras/adquisiciones del cliente","Backlog, estimación, autorización, versión y evidencia; se liquida sólo el trabajo realizado, sin cobrar dos veces actividades ya presupuestadas.",Nikolai Navea,80,D:16;Q:16;V:40;I:8,"Asignación y cuadrante integrado por código; entornos, usuarios y habilitaciones autorizados",RT-21.19--22; Art.78,2030-04-16,2030-04-23,SERVICIO-ACTIVO,Recepción por etapa o control del periodo; no acredita ejecución,RT-21.19--22; Art.78
1.12.12.normativa.41,"Capacidad reservada de ingeniería normativa, mes 41",1.12,Operación,"Capacidad reservada de ingeniería normativa, mes 41",Resultado de la ficha de familia y del paquete original; registro individual por código/ventana,"No duplicar padres, informes, ingeniería ni cobertura; no incluye horas de contraparte ni obras/adquisiciones del cliente","Backlog, estimación, autorización, versión y evidencia; se liquida sólo el trabajo realizado, sin cobrar dos veces actividades ya presupuestadas.",Nikolai Navea,48,A:8;S:8;Q:8;V:24,"Asignación y cuadrante integrado por código; entornos, usuarios y habilitaciones autorizados",RT-21.19--22; Art.78,2030-04-16,2030-04-18,SERVICIO-ACTIVO,Recepción por etapa o control del periodo; no acredita ejecución,RT-21.19--22; Art.78
1.12.12.evolutiva.41,"Capacidad reservada de ingeniería evolutiva, mes 41",1.12,Operación,"Capacidad reservada de ingeniería evolutiva, mes 41",Resultado de la ficha de familia y del paquete original; registro individual por código/ventana,"No duplicar padres, informes, ingeniería ni cobertura; no incluye horas de contraparte ni obras/adquisiciones del cliente","Backlog, estimación, autorización, versión y evidencia; se liquida sólo el trabajo realizado, sin cobrar dos veces actividades ya presupuestadas.",Nikolai Navea,80,A:16;D:8;S:4;Q:8;V:40;I:4,"Asignación y cuadrante integrado por código; entornos, usuarios y habilitaciones autorizados",RT-21.19--22; Art.78,2030-04-18,2030-04-24,SERVICIO-ACTIVO,Recepción por etapa o control del periodo; no acredita ejecución,RT-21.19--22; Art.78
1.12.12.deuda.41,"Capacidad reservada de ingeniería deuda, mes 41",1.12,Operación,"Capacidad reservada de ingeniería deuda, mes 41",Resultado de la ficha de familia y del paquete original; registro individual por código/ventana,"No duplicar padres, informes, ingeniería ni cobertura; no incluye horas de contraparte ni obras/adquisiciones del cliente","Backlog, estimación, autorización, versión y evidencia; se liquida sólo el trabajo realizado, sin cobrar dos veces actividades ya presupuestadas.",Nikolai Navea,32,D:8;Q:8;V:16,"Asignación y cuadrante integrado por código; entornos, usuarios y habilitaciones autorizados",RT-21.19--22; Art.78,2030-04-18,2030-04-24,SERVICIO-ACTIVO,Recepción por etapa o control del periodo; no acredita ejecución,RT-21.19--22; Art.78
1.12.12.correctiva.42,"Capacidad reservada de ingeniería correctiva, mes 42",1.12,Operación,"Capacidad reservada de ingeniería correctiva, mes 42",Resultado de la ficha de familia y del paquete original; registro individual por código/ventana,"No duplicar padres, informes, ingeniería ni cobertura; no incluye horas de contraparte ni obras/adquisiciones del cliente","Backlog, estimación, autorización, versión y evidencia; se liquida sólo el trabajo realizado, sin cobrar dos veces actividades ya presupuestadas.",Nikolai Navea,80,D:16;Q:16;V:40;I:8,"Asignación y cuadrante integrado por código; entornos, usuarios y habilitaciones autorizados",RT-21.19--22; Art.78,2030-05-16,2030-05-23,SERVICIO-ACTIVO,Recepción por etapa o control del periodo; no acredita ejecución,RT-21.19--22; Art.78
1.12.12.normativa.42,"Capacidad reservada de ingeniería normativa, mes 42",1.12,Operación,"Capacidad reservada de ingeniería normativa, mes 42",Resultado de la ficha de familia y del paquete original; registro individual por código/ventana,"No duplicar padres, informes, ingeniería ni cobertura; no incluye horas de contraparte ni obras/adquisiciones del cliente","Backlog, estimación, autorización, versión y evidencia; se liquida sólo el trabajo realizado, sin cobrar dos veces actividades ya presupuestadas.",Nikolai Navea,48,A:8;S:8;Q:8;V:24,"Asignación y cuadrante integrado por código; entornos, usuarios y habilitaciones autorizados",RT-21.19--22; Art.78,2030-05-16,2030-05-20,SERVICIO-ACTIVO,Recepción por etapa o control del periodo; no acredita ejecución,RT-21.19--22; Art.78
1.12.12.evolutiva.42,"Capacidad reservada de ingeniería evolutiva, mes 42",1.12,Operación,"Capacidad reservada de ingeniería evolutiva, mes 42",Resultado de la ficha de familia y del paquete original; registro individual por código/ventana,"No duplicar padres, informes, ingeniería ni cobertura; no incluye horas de contraparte ni obras/adquisiciones del cliente","Backlog, estimación, autorización, versión y evidencia; se liquida sólo el trabajo realizado, sin cobrar dos veces actividades ya presupuestadas.",Nikolai Navea,80,A:16;D:8;S:4;Q:8;V:40;I:4,"Asignación y cuadrante integrado por código; entornos, usuarios y habilitaciones autorizados",RT-21.19--22; Art.78,2030-05-20,2030-05-24,SERVICIO-ACTIVO,Recepción por etapa o control del periodo; no acredita ejecución,RT-21.19--22; Art.78
1.12.12.deuda.42,"Capacidad reservada de ingeniería deuda, mes 42",1.12,Operación,"Capacidad reservada de ingeniería deuda, mes 42",Resultado de la ficha de familia y del paquete original; registro individual por código/ventana,"No duplicar padres, informes, ingeniería ni cobertura; no incluye horas de contraparte ni obras/adquisiciones del cliente","Backlog, estimación, autorización, versión y evidencia; se liquida sólo el trabajo realizado, sin cobrar dos veces actividades ya presupuestadas.",Nikolai Navea,32,D:8;Q:8;V:16,"Asignación y cuadrante integrado por código; entornos, usuarios y habilitaciones autorizados",RT-21.19--22; Art.78,2030-05-20,2030-05-24,SERVICIO-ACTIVO,Recepción por etapa o control del periodo; no acredita ejecución,RT-21.19--22; Art.78
1.12.12.correctiva.43,"Capacidad reservada de ingeniería correctiva, mes 43",1.12,Operación,"Capacidad reservada de ingeniería correctiva, mes 43",Resultado de la ficha de familia y del paquete original; registro individual por código/ventana,"No duplicar padres, informes, ingeniería ni cobertura; no incluye horas de contraparte ni obras/adquisiciones del cliente","Backlog, estimación, autorización, versión y evidencia; se liquida sólo el trabajo realizado, sin cobrar dos veces actividades ya presupuestadas.",Nikolai Navea,80,D:16;Q:16;V:40;I:8,"Asignación y cuadrante integrado por código; entornos, usuarios y habilitaciones autorizados",RT-21.19--22; Art.78,2030-06-17,2030-06-24,SERVICIO-ACTIVO,Recepción por etapa o control del periodo; no acredita ejecución,RT-21.19--22; Art.78
1.12.12.normativa.43,"Capacidad reservada de ingeniería normativa, mes 43",1.12,Operación,"Capacidad reservada de ingeniería normativa, mes 43",Resultado de la ficha de familia y del paquete original; registro individual por código/ventana,"No duplicar padres, informes, ingeniería ni cobertura; no incluye horas de contraparte ni obras/adquisiciones del cliente","Backlog, estimación, autorización, versión y evidencia; se liquida sólo el trabajo realizado, sin cobrar dos veces actividades ya presupuestadas.",Nikolai Navea,48,A:8;S:8;Q:8;V:24,"Asignación y cuadrante integrado por código; entornos, usuarios y habilitaciones autorizados",RT-21.19--22; Art.78,2030-06-17,2030-06-19,SERVICIO-ACTIVO,Recepción por etapa o control del periodo; no acredita ejecución,RT-21.19--22; Art.78
1.12.12.evolutiva.43,"Capacidad reservada de ingeniería evolutiva, mes 43",1.12,Operación,"Capacidad reservada de ingeniería evolutiva, mes 43",Resultado de la ficha de familia y del paquete original; registro individual por código/ventana,"No duplicar padres, informes, ingeniería ni cobertura; no incluye horas de contraparte ni obras/adquisiciones del cliente","Backlog, estimación, autorización, versión y evidencia; se liquida sólo el trabajo realizado, sin cobrar dos veces actividades ya presupuestadas.",Nikolai Navea,80,A:16;D:8;S:4;Q:8;V:40;I:4,"Asignación y cuadrante integrado por código; entornos, usuarios y habilitaciones autorizados",RT-21.19--22; Art.78,2030-06-19,2030-06-25,SERVICIO-ACTIVO,Recepción por etapa o control del periodo; no acredita ejecución,RT-21.19--22; Art.78
1.12.12.deuda.43,"Capacidad reservada de ingeniería deuda, mes 43",1.12,Operación,"Capacidad reservada de ingeniería deuda, mes 43",Resultado de la ficha de familia y del paquete original; registro individual por código/ventana,"No duplicar padres, informes, ingeniería ni cobertura; no incluye horas de contraparte ni obras/adquisiciones del cliente","Backlog, estimación, autorización, versión y evidencia; se liquida sólo el trabajo realizado, sin cobrar dos veces actividades ya presupuestadas.",Nikolai Navea,32,D:8;Q:8;V:16,"Asignación y cuadrante integrado por código; entornos, usuarios y habilitaciones autorizados",RT-21.19--22; Art.78,2030-06-19,2030-06-25,SERVICIO-ACTIVO,Recepción por etapa o control del periodo; no acredita ejecución,RT-21.19--22; Art.78
1.12.12.correctiva.44,"Capacidad reservada de ingeniería correctiva, mes 44",1.12,Operación,"Capacidad reservada de ingeniería correctiva, mes 44",Resultado de la ficha de familia y del paquete original; registro individual por código/ventana,"No duplicar padres, informes, ingeniería ni cobertura; no incluye horas de contraparte ni obras/adquisiciones del cliente","Backlog, estimación, autorización, versión y evidencia; se liquida sólo el trabajo realizado, sin cobrar dos veces actividades ya presupuestadas.",Nikolai Navea,80,D:16;Q:16;V:40;I:8,"Asignación y cuadrante integrado por código; entornos, usuarios y habilitaciones autorizados",RT-21.19--22; Art.78,2030-07-17,2030-07-23,SERVICIO-ACTIVO,Recepción por etapa o control del periodo; no acredita ejecución,RT-21.19--22; Art.78
1.12.12.normativa.44,"Capacidad reservada de ingeniería normativa, mes 44",1.12,Operación,"Capacidad reservada de ingeniería normativa, mes 44",Resultado de la ficha de familia y del paquete original; registro individual por código/ventana,"No duplicar padres, informes, ingeniería ni cobertura; no incluye horas de contraparte ni obras/adquisiciones del cliente","Backlog, estimación, autorización, versión y evidencia; se liquida sólo el trabajo realizado, sin cobrar dos veces actividades ya presupuestadas.",Nikolai Navea,48,A:8;S:8;Q:8;V:24,"Asignación y cuadrante integrado por código; entornos, usuarios y habilitaciones autorizados",RT-21.19--22; Art.78,2030-07-17,2030-07-19,SERVICIO-ACTIVO,Recepción por etapa o control del periodo; no acredita ejecución,RT-21.19--22; Art.78
1.12.12.evolutiva.44,"Capacidad reservada de ingeniería evolutiva, mes 44",1.12,Operación,"Capacidad reservada de ingeniería evolutiva, mes 44",Resultado de la ficha de familia y del paquete original; registro individual por código/ventana,"No duplicar padres, informes, ingeniería ni cobertura; no incluye horas de contraparte ni obras/adquisiciones del cliente","Backlog, estimación, autorización, versión y evidencia; se liquida sólo el trabajo realizado, sin cobrar dos veces actividades ya presupuestadas.",Nikolai Navea,80,A:16;D:8;S:4;Q:8;V:40;I:4,"Asignación y cuadrante integrado por código; entornos, usuarios y habilitaciones autorizados",RT-21.19--22; Art.78,2030-07-19,2030-07-24,SERVICIO-ACTIVO,Recepción por etapa o control del periodo; no acredita ejecución,RT-21.19--22; Art.78
1.12.12.deuda.44,"Capacidad reservada de ingeniería deuda, mes 44",1.12,Operación,"Capacidad reservada de ingeniería deuda, mes 44",Resultado de la ficha de familia y del paquete original; registro individual por código/ventana,"No duplicar padres, informes, ingeniería ni cobertura; no incluye horas de contraparte ni obras/adquisiciones del cliente","Backlog, estimación, autorización, versión y evidencia; se liquida sólo el trabajo realizado, sin cobrar dos veces actividades ya presupuestadas.",Nikolai Navea,32,D:8;Q:8;V:16,"Asignación y cuadrante integrado por código; entornos, usuarios y habilitaciones autorizados",RT-21.19--22; Art.78,2030-07-19,2030-07-24,SERVICIO-ACTIVO,Recepción por etapa o control del periodo; no acredita ejecución,RT-21.19--22; Art.78
1.12.12.correctiva.45,"Capacidad reservada de ingeniería correctiva, mes 45",1.12,Operación,"Capacidad reservada de ingeniería correctiva, mes 45",Resultado de la ficha de familia y del paquete original; registro individual por código/ventana,"No duplicar padres, informes, ingeniería ni cobertura; no incluye horas de contraparte ni obras/adquisiciones del cliente","Backlog, estimación, autorización, versión y evidencia; se liquida sólo el trabajo realizado, sin cobrar dos veces actividades ya presupuestadas.",Nikolai Navea,80,D:16;Q:16;V:40;I:8,"Asignación y cuadrante integrado por código; entornos, usuarios y habilitaciones autorizados",RT-21.19--22; Art.78,2030-08-16,2030-08-22,SERVICIO-ACTIVO,Recepción por etapa o control del periodo; no acredita ejecución,RT-21.19--22; Art.78
1.12.12.normativa.45,"Capacidad reservada de ingeniería normativa, mes 45",1.12,Operación,"Capacidad reservada de ingeniería normativa, mes 45",Resultado de la ficha de familia y del paquete original; registro individual por código/ventana,"No duplicar padres, informes, ingeniería ni cobertura; no incluye horas de contraparte ni obras/adquisiciones del cliente","Backlog, estimación, autorización, versión y evidencia; se liquida sólo el trabajo realizado, sin cobrar dos veces actividades ya presupuestadas.",Nikolai Navea,48,A:8;S:8;Q:8;V:24,"Asignación y cuadrante integrado por código; entornos, usuarios y habilitaciones autorizados",RT-21.19--22; Art.78,2030-08-16,2030-08-20,SERVICIO-ACTIVO,Recepción por etapa o control del periodo; no acredita ejecución,RT-21.19--22; Art.78
1.12.12.evolutiva.45,"Capacidad reservada de ingeniería evolutiva, mes 45",1.12,Operación,"Capacidad reservada de ingeniería evolutiva, mes 45",Resultado de la ficha de familia y del paquete original; registro individual por código/ventana,"No duplicar padres, informes, ingeniería ni cobertura; no incluye horas de contraparte ni obras/adquisiciones del cliente","Backlog, estimación, autorización, versión y evidencia; se liquida sólo el trabajo realizado, sin cobrar dos veces actividades ya presupuestadas.",Nikolai Navea,80,A:16;D:8;S:4;Q:8;V:40;I:4,"Asignación y cuadrante integrado por código; entornos, usuarios y habilitaciones autorizados",RT-21.19--22; Art.78,2030-08-20,2030-08-23,SERVICIO-ACTIVO,Recepción por etapa o control del periodo; no acredita ejecución,RT-21.19--22; Art.78
1.12.12.deuda.45,"Capacidad reservada de ingeniería deuda, mes 45",1.12,Operación,"Capacidad reservada de ingeniería deuda, mes 45",Resultado de la ficha de familia y del paquete original; registro individual por código/ventana,"No duplicar padres, informes, ingeniería ni cobertura; no incluye horas de contraparte ni obras/adquisiciones del cliente","Backlog, estimación, autorización, versión y evidencia; se liquida sólo el trabajo realizado, sin cobrar dos veces actividades ya presupuestadas.",Nikolai Navea,32,D:8;Q:8;V:16,"Asignación y cuadrante integrado por código; entornos, usuarios y habilitaciones autorizados",RT-21.19--22; Art.78,2030-08-20,2030-08-23,SERVICIO-ACTIVO,Recepción por etapa o control del periodo; no acredita ejecución,RT-21.19--22; Art.78
1.12.12.correctiva.46,"Capacidad reservada de ingeniería correctiva, mes 46",1.12,Operación,"Capacidad reservada de ingeniería correctiva, mes 46",Resultado de la ficha de familia y del paquete original; registro individual por código/ventana,"No duplicar padres, informes, ingeniería ni cobertura; no incluye horas de contraparte ni obras/adquisiciones del cliente","Backlog, estimación, autorización, versión y evidencia; se liquida sólo el trabajo realizado, sin cobrar dos veces actividades ya presupuestadas.",Nikolai Navea,80,D:16;Q:16;V:40;I:8,"Asignación y cuadrante integrado por código; entornos, usuarios y habilitaciones autorizados",RT-21.19--22; Art.78,2030-09-16,2030-09-25,SERVICIO-ACTIVO,Recepción por etapa o control del periodo; no acredita ejecución,RT-21.19--22; Art.78
1.12.12.normativa.46,"Capacidad reservada de ingeniería normativa, mes 46",1.12,Operación,"Capacidad reservada de ingeniería normativa, mes 46",Resultado de la ficha de familia y del paquete original; registro individual por código/ventana,"No duplicar padres, informes, ingeniería ni cobertura; no incluye horas de contraparte ni obras/adquisiciones del cliente","Backlog, estimación, autorización, versión y evidencia; se liquida sólo el trabajo realizado, sin cobrar dos veces actividades ya presupuestadas.",Nikolai Navea,48,A:8;S:8;Q:8;V:24,"Asignación y cuadrante integrado por código; entornos, usuarios y habilitaciones autorizados",RT-21.19--22; Art.78,2030-09-16,2030-09-23,SERVICIO-ACTIVO,Recepción por etapa o control del periodo; no acredita ejecución,RT-21.19--22; Art.78
1.12.12.evolutiva.46,"Capacidad reservada de ingeniería evolutiva, mes 46",1.12,Operación,"Capacidad reservada de ingeniería evolutiva, mes 46",Resultado de la ficha de familia y del paquete original; registro individual por código/ventana,"No duplicar padres, informes, ingeniería ni cobertura; no incluye horas de contraparte ni obras/adquisiciones del cliente","Backlog, estimación, autorización, versión y evidencia; se liquida sólo el trabajo realizado, sin cobrar dos veces actividades ya presupuestadas.",Nikolai Navea,80,A:16;D:8;S:4;Q:8;V:40;I:4,"Asignación y cuadrante integrado por código; entornos, usuarios y habilitaciones autorizados",RT-21.19--22; Art.78,2030-09-23,2030-09-26,SERVICIO-ACTIVO,Recepción por etapa o control del periodo; no acredita ejecución,RT-21.19--22; Art.78
1.12.12.deuda.46,"Capacidad reservada de ingeniería deuda, mes 46",1.12,Operación,"Capacidad reservada de ingeniería deuda, mes 46",Resultado de la ficha de familia y del paquete original; registro individual por código/ventana,"No duplicar padres, informes, ingeniería ni cobertura; no incluye horas de contraparte ni obras/adquisiciones del cliente","Backlog, estimación, autorización, versión y evidencia; se liquida sólo el trabajo realizado, sin cobrar dos veces actividades ya presupuestadas.",Nikolai Navea,32,D:8;Q:8;V:16,"Asignación y cuadrante integrado por código; entornos, usuarios y habilitaciones autorizados",RT-21.19--22; Art.78,2030-09-23,2030-09-26,SERVICIO-ACTIVO,Recepción por etapa o control del periodo; no acredita ejecución,RT-21.19--22; Art.78
1.12.12.correctiva.47,"Capacidad reservada de ingeniería correctiva, mes 47",1.12,Operación,"Capacidad reservada de ingeniería correctiva, mes 47",Resultado de la ficha de familia y del paquete original; registro individual por código/ventana,"No duplicar padres, informes, ingeniería ni cobertura; no incluye horas de contraparte ni obras/adquisiciones del cliente","Backlog, estimación, autorización, versión y evidencia; se liquida sólo el trabajo realizado, sin cobrar dos veces actividades ya presupuestadas.",Nikolai Navea,80,D:16;Q:16;V:40;I:8,"Asignación y cuadrante integrado por código; entornos, usuarios y habilitaciones autorizados",RT-21.19--22; Art.78,2030-10-16,2030-10-22,SERVICIO-ACTIVO,Recepción por etapa o control del periodo; no acredita ejecución,RT-21.19--22; Art.78
1.12.12.normativa.47,"Capacidad reservada de ingeniería normativa, mes 47",1.12,Operación,"Capacidad reservada de ingeniería normativa, mes 47",Resultado de la ficha de familia y del paquete original; registro individual por código/ventana,"No duplicar padres, informes, ingeniería ni cobertura; no incluye horas de contraparte ni obras/adquisiciones del cliente","Backlog, estimación, autorización, versión y evidencia; se liquida sólo el trabajo realizado, sin cobrar dos veces actividades ya presupuestadas.",Nikolai Navea,48,A:8;S:8;Q:8;V:24,"Asignación y cuadrante integrado por código; entornos, usuarios y habilitaciones autorizados",RT-21.19--22; Art.78,2030-10-16,2030-10-18,SERVICIO-ACTIVO,Recepción por etapa o control del periodo; no acredita ejecución,RT-21.19--22; Art.78
1.12.12.evolutiva.47,"Capacidad reservada de ingeniería evolutiva, mes 47",1.12,Operación,"Capacidad reservada de ingeniería evolutiva, mes 47",Resultado de la ficha de familia y del paquete original; registro individual por código/ventana,"No duplicar padres, informes, ingeniería ni cobertura; no incluye horas de contraparte ni obras/adquisiciones del cliente","Backlog, estimación, autorización, versión y evidencia; se liquida sólo el trabajo realizado, sin cobrar dos veces actividades ya presupuestadas.",Nikolai Navea,80,A:16;D:8;S:4;Q:8;V:40;I:4,"Asignación y cuadrante integrado por código; entornos, usuarios y habilitaciones autorizados",RT-21.19--22; Art.78,2030-10-18,2030-10-23,SERVICIO-ACTIVO,Recepción por etapa o control del periodo; no acredita ejecución,RT-21.19--22; Art.78
1.12.12.deuda.47,"Capacidad reservada de ingeniería deuda, mes 47",1.12,Operación,"Capacidad reservada de ingeniería deuda, mes 47",Resultado de la ficha de familia y del paquete original; registro individual por código/ventana,"No duplicar padres, informes, ingeniería ni cobertura; no incluye horas de contraparte ni obras/adquisiciones del cliente","Backlog, estimación, autorización, versión y evidencia; se liquida sólo el trabajo realizado, sin cobrar dos veces actividades ya presupuestadas.",Nikolai Navea,32,D:8;Q:8;V:16,"Asignación y cuadrante integrado por código; entornos, usuarios y habilitaciones autorizados",RT-21.19--22; Art.78,2030-10-18,2030-10-23,SERVICIO-ACTIVO,Recepción por etapa o control del periodo; no acredita ejecución,RT-21.19--22; Art.78
1.12.12.correctiva.48,"Capacidad reservada de ingeniería correctiva, mes 48",1.12,Operación,"Capacidad reservada de ingeniería correctiva, mes 48",Resultado de la ficha de familia y del paquete original; registro individual por código/ventana,"No duplicar padres, informes, ingeniería ni cobertura; no incluye horas de contraparte ni obras/adquisiciones del cliente","Backlog, estimación, autorización, versión y evidencia; se liquida sólo el trabajo realizado, sin cobrar dos veces actividades ya presupuestadas.",Nikolai Navea,80,D:16;Q:16;V:40;I:8,"Asignación y cuadrante integrado por código; entornos, usuarios y habilitaciones autorizados",RT-21.19--22; Art.78,2030-11-18,2030-11-22,SERVICIO-ACTIVO,Recepción por etapa o control del periodo; no acredita ejecución,RT-21.19--22; Art.78
1.12.12.normativa.48,"Capacidad reservada de ingeniería normativa, mes 48",1.12,Operación,"Capacidad reservada de ingeniería normativa, mes 48",Resultado de la ficha de familia y del paquete original; registro individual por código/ventana,"No duplicar padres, informes, ingeniería ni cobertura; no incluye horas de contraparte ni obras/adquisiciones del cliente","Backlog, estimación, autorización, versión y evidencia; se liquida sólo el trabajo realizado, sin cobrar dos veces actividades ya presupuestadas.",Nikolai Navea,48,A:8;S:8;Q:8;V:24,"Asignación y cuadrante integrado por código; entornos, usuarios y habilitaciones autorizados",RT-21.19--22; Art.78,2030-11-18,2030-11-20,SERVICIO-ACTIVO,Recepción por etapa o control del periodo; no acredita ejecución,RT-21.19--22; Art.78
1.12.12.evolutiva.48,"Capacidad reservada de ingeniería evolutiva, mes 48",1.12,Operación,"Capacidad reservada de ingeniería evolutiva, mes 48",Resultado de la ficha de familia y del paquete original; registro individual por código/ventana,"No duplicar padres, informes, ingeniería ni cobertura; no incluye horas de contraparte ni obras/adquisiciones del cliente","Backlog, estimación, autorización, versión y evidencia; se liquida sólo el trabajo realizado, sin cobrar dos veces actividades ya presupuestadas.",Nikolai Navea,80,A:16;D:8;S:4;Q:8;V:40;I:4,"Asignación y cuadrante integrado por código; entornos, usuarios y habilitaciones autorizados",RT-21.19--22; Art.78,2030-11-20,2030-11-25,SERVICIO-ACTIVO,Recepción por etapa o control del periodo; no acredita ejecución,RT-21.19--22; Art.78
1.12.12.deuda.48,"Capacidad reservada de ingeniería deuda, mes 48",1.12,Operación,"Capacidad reservada de ingeniería deuda, mes 48",Resultado de la ficha de familia y del paquete original; registro individual por código/ventana,"No duplicar padres, informes, ingeniería ni cobertura; no incluye horas de contraparte ni obras/adquisiciones del cliente","Backlog, estimación, autorización, versión y evidencia; se liquida sólo el trabajo realizado, sin cobrar dos veces actividades ya presupuestadas.",Nikolai Navea,32,D:8;Q:8;V:16,"Asignación y cuadrante integrado por código; entornos, usuarios y habilitaciones autorizados",RT-21.19--22; Art.78,2030-11-20,2030-11-25,SERVICIO-ACTIVO,Recepción por etapa o control del periodo; no acredita ejecución,RT-21.19--22; Art.78
1.12.12.correctiva.49,"Capacidad reservada de ingeniería correctiva, mes 49",1.12,Operación,"Capacidad reservada de ingeniería correctiva, mes 49",Resultado de la ficha de familia y del paquete original; registro individual por código/ventana,"No duplicar padres, informes, ingeniería ni cobertura; no incluye horas de contraparte ni obras/adquisiciones del cliente","Backlog, estimación, autorización, versión y evidencia; se liquida sólo el trabajo realizado, sin cobrar dos veces actividades ya presupuestadas.",Nikolai Navea,80,D:16;Q:16;V:40;I:8,"Asignación y cuadrante integrado por código; entornos, usuarios y habilitaciones autorizados",RT-21.19--22; Art.78,2030-12-16,2030-12-20,SERVICIO-ACTIVO,Recepción por etapa o control del periodo; no acredita ejecución,RT-21.19--22; Art.78
1.12.12.normativa.49,"Capacidad reservada de ingeniería normativa, mes 49",1.12,Operación,"Capacidad reservada de ingeniería normativa, mes 49",Resultado de la ficha de familia y del paquete original; registro individual por código/ventana,"No duplicar padres, informes, ingeniería ni cobertura; no incluye horas de contraparte ni obras/adquisiciones del cliente","Backlog, estimación, autorización, versión y evidencia; se liquida sólo el trabajo realizado, sin cobrar dos veces actividades ya presupuestadas.",Nikolai Navea,48,A:8;S:8;Q:8;V:24,"Asignación y cuadrante integrado por código; entornos, usuarios y habilitaciones autorizados",RT-21.19--22; Art.78,2030-12-16,2030-12-18,SERVICIO-ACTIVO,Recepción por etapa o control del periodo; no acredita ejecución,RT-21.19--22; Art.78
1.12.12.evolutiva.49,"Capacidad reservada de ingeniería evolutiva, mes 49",1.12,Operación,"Capacidad reservada de ingeniería evolutiva, mes 49",Resultado de la ficha de familia y del paquete original; registro individual por código/ventana,"No duplicar padres, informes, ingeniería ni cobertura; no incluye horas de contraparte ni obras/adquisiciones del cliente","Backlog, estimación, autorización, versión y evidencia; se liquida sólo el trabajo realizado, sin cobrar dos veces actividades ya presupuestadas.",Nikolai Navea,80,A:16;D:8;S:4;Q:8;V:40;I:4,"Asignación y cuadrante integrado por código; entornos, usuarios y habilitaciones autorizados",RT-21.19--22; Art.78,2030-12-18,2030-12-23,SERVICIO-ACTIVO,Recepción por etapa o control del periodo; no acredita ejecución,RT-21.19--22; Art.78
1.12.12.deuda.49,"Capacidad reservada de ingeniería deuda, mes 49",1.12,Operación,"Capacidad reservada de ingeniería deuda, mes 49",Resultado de la ficha de familia y del paquete original; registro individual por código/ventana,"No duplicar padres, informes, ingeniería ni cobertura; no incluye horas de contraparte ni obras/adquisiciones del cliente","Backlog, estimación, autorización, versión y evidencia; se liquida sólo el trabajo realizado, sin cobrar dos veces actividades ya presupuestadas.",Nikolai Navea,32,D:8;Q:8;V:16,"Asignación y cuadrante integrado por código; entornos, usuarios y habilitaciones autorizados",RT-21.19--22; Art.78,2030-12-18,2030-12-23,SERVICIO-ACTIVO,Recepción por etapa o control del periodo; no acredita ejecución,RT-21.19--22; Art.78
1.12.12.correctiva.50,"Capacidad reservada de ingeniería correctiva, mes 50",1.12,Operación,"Capacidad reservada de ingeniería correctiva, mes 50",Resultado de la ficha de familia y del paquete original; registro individual por código/ventana,"No duplicar padres, informes, ingeniería ni cobertura; no incluye horas de contraparte ni obras/adquisiciones del cliente","Backlog, estimación, autorización, versión y evidencia; se liquida sólo el trabajo realizado, sin cobrar dos veces actividades ya presupuestadas.",Nikolai Navea,80,D:16;Q:16;V:40;I:8,"Asignación y cuadrante integrado por código; entornos, usuarios y habilitaciones autorizados",RT-21.19--22; Art.78,2031-01-16,2031-01-22,SERVICIO-ACTIVO,Recepción por etapa o control del periodo; no acredita ejecución,RT-21.19--22; Art.78
1.12.12.normativa.50,"Capacidad reservada de ingeniería normativa, mes 50",1.12,Operación,"Capacidad reservada de ingeniería normativa, mes 50",Resultado de la ficha de familia y del paquete original; registro individual por código/ventana,"No duplicar padres, informes, ingeniería ni cobertura; no incluye horas de contraparte ni obras/adquisiciones del cliente","Backlog, estimación, autorización, versión y evidencia; se liquida sólo el trabajo realizado, sin cobrar dos veces actividades ya presupuestadas.",Nikolai Navea,48,A:8;S:8;Q:8;V:24,"Asignación y cuadrante integrado por código; entornos, usuarios y habilitaciones autorizados",RT-21.19--22; Art.78,2031-01-16,2031-01-20,SERVICIO-ACTIVO,Recepción por etapa o control del periodo; no acredita ejecución,RT-21.19--22; Art.78
1.12.12.evolutiva.50,"Capacidad reservada de ingeniería evolutiva, mes 50",1.12,Operación,"Capacidad reservada de ingeniería evolutiva, mes 50",Resultado de la ficha de familia y del paquete original; registro individual por código/ventana,"No duplicar padres, informes, ingeniería ni cobertura; no incluye horas de contraparte ni obras/adquisiciones del cliente","Backlog, estimación, autorización, versión y evidencia; se liquida sólo el trabajo realizado, sin cobrar dos veces actividades ya presupuestadas.",Nikolai Navea,80,A:16;D:8;S:4;Q:8;V:40;I:4,"Asignación y cuadrante integrado por código; entornos, usuarios y habilitaciones autorizados",RT-21.19--22; Art.78,2031-01-20,2031-01-23,SERVICIO-ACTIVO,Recepción por etapa o control del periodo; no acredita ejecución,RT-21.19--22; Art.78
1.12.12.deuda.50,"Capacidad reservada de ingeniería deuda, mes 50",1.12,Operación,"Capacidad reservada de ingeniería deuda, mes 50",Resultado de la ficha de familia y del paquete original; registro individual por código/ventana,"No duplicar padres, informes, ingeniería ni cobertura; no incluye horas de contraparte ni obras/adquisiciones del cliente","Backlog, estimación, autorización, versión y evidencia; se liquida sólo el trabajo realizado, sin cobrar dos veces actividades ya presupuestadas.",Nikolai Navea,32,D:8;Q:8;V:16,"Asignación y cuadrante integrado por código; entornos, usuarios y habilitaciones autorizados",RT-21.19--22; Art.78,2031-01-20,2031-01-23,SERVICIO-ACTIVO,Recepción por etapa o control del periodo; no acredita ejecución,RT-21.19--22; Art.78
1.12.12.correctiva.51,"Capacidad reservada de ingeniería correctiva, mes 51",1.12,Operación,"Capacidad reservada de ingeniería correctiva, mes 51",Resultado de la ficha de familia y del paquete original; registro individual por código/ventana,"No duplicar padres, informes, ingeniería ni cobertura; no incluye horas de contraparte ni obras/adquisiciones del cliente","Backlog, estimación, autorización, versión y evidencia; se liquida sólo el trabajo realizado, sin cobrar dos veces actividades ya presupuestadas.",Nikolai Navea,80,D:16;Q:16;V:40;I:8,"Asignación y cuadrante integrado por código; entornos, usuarios y habilitaciones autorizados",RT-21.19--22; Art.78,2031-02-17,2031-02-21,SERVICIO-ACTIVO,Recepción por etapa o control del periodo; no acredita ejecución,RT-21.19--22; Art.78
1.12.12.normativa.51,"Capacidad reservada de ingeniería normativa, mes 51",1.12,Operación,"Capacidad reservada de ingeniería normativa, mes 51",Resultado de la ficha de familia y del paquete original; registro individual por código/ventana,"No duplicar padres, informes, ingeniería ni cobertura; no incluye horas de contraparte ni obras/adquisiciones del cliente","Backlog, estimación, autorización, versión y evidencia; se liquida sólo el trabajo realizado, sin cobrar dos veces actividades ya presupuestadas.",Nikolai Navea,48,A:8;S:8;Q:8;V:24,"Asignación y cuadrante integrado por código; entornos, usuarios y habilitaciones autorizados",RT-21.19--22; Art.78,2031-02-17,2031-02-19,SERVICIO-ACTIVO,Recepción por etapa o control del periodo; no acredita ejecución,RT-21.19--22; Art.78
1.12.12.evolutiva.51,"Capacidad reservada de ingeniería evolutiva, mes 51",1.12,Operación,"Capacidad reservada de ingeniería evolutiva, mes 51",Resultado de la ficha de familia y del paquete original; registro individual por código/ventana,"No duplicar padres, informes, ingeniería ni cobertura; no incluye horas de contraparte ni obras/adquisiciones del cliente","Backlog, estimación, autorización, versión y evidencia; se liquida sólo el trabajo realizado, sin cobrar dos veces actividades ya presupuestadas.",Nikolai Navea,80,A:16;D:8;S:4;Q:8;V:40;I:4,"Asignación y cuadrante integrado por código; entornos, usuarios y habilitaciones autorizados",RT-21.19--22; Art.78,2031-02-19,2031-02-24,SERVICIO-ACTIVO,Recepción por etapa o control del periodo; no acredita ejecución,RT-21.19--22; Art.78
1.12.12.deuda.51,"Capacidad reservada de ingeniería deuda, mes 51",1.12,Operación,"Capacidad reservada de ingeniería deuda, mes 51",Resultado de la ficha de familia y del paquete original; registro individual por código/ventana,"No duplicar padres, informes, ingeniería ni cobertura; no incluye horas de contraparte ni obras/adquisiciones del cliente","Backlog, estimación, autorización, versión y evidencia; se liquida sólo el trabajo realizado, sin cobrar dos veces actividades ya presupuestadas.",Nikolai Navea,32,D:8;Q:8;V:16,"Asignación y cuadrante integrado por código; entornos, usuarios y habilitaciones autorizados",RT-21.19--22; Art.78,2031-02-19,2031-02-24,SERVICIO-ACTIVO,Recepción por etapa o control del periodo; no acredita ejecución,RT-21.19--22; Art.78
1.12.12.correctiva.52,"Capacidad reservada de ingeniería correctiva, mes 52",1.12,Operación,"Capacidad reservada de ingeniería correctiva, mes 52",Resultado de la ficha de familia y del paquete original; registro individual por código/ventana,"No duplicar padres, informes, ingeniería ni cobertura; no incluye horas de contraparte ni obras/adquisiciones del cliente","Backlog, estimación, autorización, versión y evidencia; se liquida sólo el trabajo realizado, sin cobrar dos veces actividades ya presupuestadas.",Nikolai Navea,80,D:16;Q:16;V:40;I:8,"Asignación y cuadrante integrado por código; entornos, usuarios y habilitaciones autorizados",RT-21.19--22; Art.78,2031-03-17,2031-03-21,SERVICIO-ACTIVO,Recepción por etapa o control del periodo; no acredita ejecución,RT-21.19--22; Art.78
1.12.12.normativa.52,"Capacidad reservada de ingeniería normativa, mes 52",1.12,Operación,"Capacidad reservada de ingeniería normativa, mes 52",Resultado de la ficha de familia y del paquete original; registro individual por código/ventana,"No duplicar padres, informes, ingeniería ni cobertura; no incluye horas de contraparte ni obras/adquisiciones del cliente","Backlog, estimación, autorización, versión y evidencia; se liquida sólo el trabajo realizado, sin cobrar dos veces actividades ya presupuestadas.",Nikolai Navea,48,A:8;S:8;Q:8;V:24,"Asignación y cuadrante integrado por código; entornos, usuarios y habilitaciones autorizados",RT-21.19--22; Art.78,2031-03-17,2031-03-19,SERVICIO-ACTIVO,Recepción por etapa o control del periodo; no acredita ejecución,RT-21.19--22; Art.78
1.12.12.evolutiva.52,"Capacidad reservada de ingeniería evolutiva, mes 52",1.12,Operación,"Capacidad reservada de ingeniería evolutiva, mes 52",Resultado de la ficha de familia y del paquete original; registro individual por código/ventana,"No duplicar padres, informes, ingeniería ni cobertura; no incluye horas de contraparte ni obras/adquisiciones del cliente","Backlog, estimación, autorización, versión y evidencia; se liquida sólo el trabajo realizado, sin cobrar dos veces actividades ya presupuestadas.",Nikolai Navea,80,A:16;D:8;S:4;Q:8;V:40;I:4,"Asignación y cuadrante integrado por código; entornos, usuarios y habilitaciones autorizados",RT-21.19--22; Art.78,2031-03-19,2031-03-24,SERVICIO-ACTIVO,Recepción por etapa o control del periodo; no acredita ejecución,RT-21.19--22; Art.78
1.12.12.deuda.52,"Capacidad reservada de ingeniería deuda, mes 52",1.12,Operación,"Capacidad reservada de ingeniería deuda, mes 52",Resultado de la ficha de familia y del paquete original; registro individual por código/ventana,"No duplicar padres, informes, ingeniería ni cobertura; no incluye horas de contraparte ni obras/adquisiciones del cliente","Backlog, estimación, autorización, versión y evidencia; se liquida sólo el trabajo realizado, sin cobrar dos veces actividades ya presupuestadas.",Nikolai Navea,32,D:8;Q:8;V:16,"Asignación y cuadrante integrado por código; entornos, usuarios y habilitaciones autorizados",RT-21.19--22; Art.78,2031-03-19,2031-03-24,SERVICIO-ACTIVO,Recepción por etapa o control del periodo; no acredita ejecución,RT-21.19--22; Art.78
1.12.12.correctiva.53,"Capacidad reservada de ingeniería correctiva, mes 53",1.12,Operación,"Capacidad reservada de ingeniería correctiva, mes 53",Resultado de la ficha de familia y del paquete original; registro individual por código/ventana,"No duplicar padres, informes, ingeniería ni cobertura; no incluye horas de contraparte ni obras/adquisiciones del cliente","Backlog, estimación, autorización, versión y evidencia; se liquida sólo el trabajo realizado, sin cobrar dos veces actividades ya presupuestadas.",Nikolai Navea,80,D:16;Q:16;V:40;I:8,"Asignación y cuadrante integrado por código; entornos, usuarios y habilitaciones autorizados",RT-21.19--22; Art.78,2031-04-16,2031-04-22,SERVICIO-ACTIVO,Recepción por etapa o control del periodo; no acredita ejecución,RT-21.19--22; Art.78
1.12.12.normativa.53,"Capacidad reservada de ingeniería normativa, mes 53",1.12,Operación,"Capacidad reservada de ingeniería normativa, mes 53",Resultado de la ficha de familia y del paquete original; registro individual por código/ventana,"No duplicar padres, informes, ingeniería ni cobertura; no incluye horas de contraparte ni obras/adquisiciones del cliente","Backlog, estimación, autorización, versión y evidencia; se liquida sólo el trabajo realizado, sin cobrar dos veces actividades ya presupuestadas.",Nikolai Navea,48,A:8;S:8;Q:8;V:24,"Asignación y cuadrante integrado por código; entornos, usuarios y habilitaciones autorizados",RT-21.19--22; Art.78,2031-04-16,2031-04-18,SERVICIO-ACTIVO,Recepción por etapa o control del periodo; no acredita ejecución,RT-21.19--22; Art.78
1.12.12.evolutiva.53,"Capacidad reservada de ingeniería evolutiva, mes 53",1.12,Operación,"Capacidad reservada de ingeniería evolutiva, mes 53",Resultado de la ficha de familia y del paquete original; registro individual por código/ventana,"No duplicar padres, informes, ingeniería ni cobertura; no incluye horas de contraparte ni obras/adquisiciones del cliente","Backlog, estimación, autorización, versión y evidencia; se liquida sólo el trabajo realizado, sin cobrar dos veces actividades ya presupuestadas.",Nikolai Navea,80,A:16;D:8;S:4;Q:8;V:40;I:4,"Asignación y cuadrante integrado por código; entornos, usuarios y habilitaciones autorizados",RT-21.19--22; Art.78,2031-04-18,2031-04-23,SERVICIO-ACTIVO,Recepción por etapa o control del periodo; no acredita ejecución,RT-21.19--22; Art.78
1.12.12.deuda.53,"Capacidad reservada de ingeniería deuda, mes 53",1.12,Operación,"Capacidad reservada de ingeniería deuda, mes 53",Resultado de la ficha de familia y del paquete original; registro individual por código/ventana,"No duplicar padres, informes, ingeniería ni cobertura; no incluye horas de contraparte ni obras/adquisiciones del cliente","Backlog, estimación, autorización, versión y evidencia; se liquida sólo el trabajo realizado, sin cobrar dos veces actividades ya presupuestadas.",Nikolai Navea,32,D:8;Q:8;V:16,"Asignación y cuadrante integrado por código; entornos, usuarios y habilitaciones autorizados",RT-21.19--22; Art.78,2031-04-18,2031-04-23,SERVICIO-ACTIVO,Recepción por etapa o control del periodo; no acredita ejecución,RT-21.19--22; Art.78
1.12.12.correctiva.54,"Capacidad reservada de ingeniería correctiva, mes 54",1.12,Operación,"Capacidad reservada de ingeniería correctiva, mes 54",Resultado de la ficha de familia y del paquete original; registro individual por código/ventana,"No duplicar padres, informes, ingeniería ni cobertura; no incluye horas de contraparte ni obras/adquisiciones del cliente","Backlog, estimación, autorización, versión y evidencia; se liquida sólo el trabajo realizado, sin cobrar dos veces actividades ya presupuestadas.",Nikolai Navea,80,D:16;Q:16;V:40;I:8,"Asignación y cuadrante integrado por código; entornos, usuarios y habilitaciones autorizados",RT-21.19--22; Art.78,2031-05-16,2031-05-23,SERVICIO-ACTIVO,Recepción por etapa o control del periodo; no acredita ejecución,RT-21.19--22; Art.78
1.12.12.normativa.54,"Capacidad reservada de ingeniería normativa, mes 54",1.12,Operación,"Capacidad reservada de ingeniería normativa, mes 54",Resultado de la ficha de familia y del paquete original; registro individual por código/ventana,"No duplicar padres, informes, ingeniería ni cobertura; no incluye horas de contraparte ni obras/adquisiciones del cliente","Backlog, estimación, autorización, versión y evidencia; se liquida sólo el trabajo realizado, sin cobrar dos veces actividades ya presupuestadas.",Nikolai Navea,48,A:8;S:8;Q:8;V:24,"Asignación y cuadrante integrado por código; entornos, usuarios y habilitaciones autorizados",RT-21.19--22; Art.78,2031-05-16,2031-05-20,SERVICIO-ACTIVO,Recepción por etapa o control del periodo; no acredita ejecución,RT-21.19--22; Art.78
1.12.12.evolutiva.54,"Capacidad reservada de ingeniería evolutiva, mes 54",1.12,Operación,"Capacidad reservada de ingeniería evolutiva, mes 54",Resultado de la ficha de familia y del paquete original; registro individual por código/ventana,"No duplicar padres, informes, ingeniería ni cobertura; no incluye horas de contraparte ni obras/adquisiciones del cliente","Backlog, estimación, autorización, versión y evidencia; se liquida sólo el trabajo realizado, sin cobrar dos veces actividades ya presupuestadas.",Nikolai Navea,80,A:16;D:8;S:4;Q:8;V:40;I:4,"Asignación y cuadrante integrado por código; entornos, usuarios y habilitaciones autorizados",RT-21.19--22; Art.78,2031-05-20,2031-05-26,SERVICIO-ACTIVO,Recepción por etapa o control del periodo; no acredita ejecución,RT-21.19--22; Art.78
1.12.12.deuda.54,"Capacidad reservada de ingeniería deuda, mes 54",1.12,Operación,"Capacidad reservada de ingeniería deuda, mes 54",Resultado de la ficha de familia y del paquete original; registro individual por código/ventana,"No duplicar padres, informes, ingeniería ni cobertura; no incluye horas de contraparte ni obras/adquisiciones del cliente","Backlog, estimación, autorización, versión y evidencia; se liquida sólo el trabajo realizado, sin cobrar dos veces actividades ya presupuestadas.",Nikolai Navea,32,D:8;Q:8;V:16,"Asignación y cuadrante integrado por código; entornos, usuarios y habilitaciones autorizados",RT-21.19--22; Art.78,2031-05-20,2031-05-26,SERVICIO-ACTIVO,Recepción por etapa o control del periodo; no acredita ejecución,RT-21.19--22; Art.78
1.12.12.correctiva.55,"Capacidad reservada de ingeniería correctiva, mes 55",1.12,Operación,"Capacidad reservada de ingeniería correctiva, mes 55",Resultado de la ficha de familia y del paquete original; registro individual por código/ventana,"No duplicar padres, informes, ingeniería ni cobertura; no incluye horas de contraparte ni obras/adquisiciones del cliente","Backlog, estimación, autorización, versión y evidencia; se liquida sólo el trabajo realizado, sin cobrar dos veces actividades ya presupuestadas.",Nikolai Navea,80,D:16;Q:16;V:40;I:8,"Asignación y cuadrante integrado por código; entornos, usuarios y habilitaciones autorizados",RT-21.19--22; Art.78,2031-06-16,2031-06-20,SERVICIO-ACTIVO,Recepción por etapa o control del periodo; no acredita ejecución,RT-21.19--22; Art.78
1.12.12.normativa.55,"Capacidad reservada de ingeniería normativa, mes 55",1.12,Operación,"Capacidad reservada de ingeniería normativa, mes 55",Resultado de la ficha de familia y del paquete original; registro individual por código/ventana,"No duplicar padres, informes, ingeniería ni cobertura; no incluye horas de contraparte ni obras/adquisiciones del cliente","Backlog, estimación, autorización, versión y evidencia; se liquida sólo el trabajo realizado, sin cobrar dos veces actividades ya presupuestadas.",Nikolai Navea,48,A:8;S:8;Q:8;V:24,"Asignación y cuadrante integrado por código; entornos, usuarios y habilitaciones autorizados",RT-21.19--22; Art.78,2031-06-16,2031-06-18,SERVICIO-ACTIVO,Recepción por etapa o control del periodo; no acredita ejecución,RT-21.19--22; Art.78
1.12.12.evolutiva.55,"Capacidad reservada de ingeniería evolutiva, mes 55",1.12,Operación,"Capacidad reservada de ingeniería evolutiva, mes 55",Resultado de la ficha de familia y del paquete original; registro individual por código/ventana,"No duplicar padres, informes, ingeniería ni cobertura; no incluye horas de contraparte ni obras/adquisiciones del cliente","Backlog, estimación, autorización, versión y evidencia; se liquida sólo el trabajo realizado, sin cobrar dos veces actividades ya presupuestadas.",Nikolai Navea,80,A:16;D:8;S:4;Q:8;V:40;I:4,"Asignación y cuadrante integrado por código; entornos, usuarios y habilitaciones autorizados",RT-21.19--22; Art.78,2031-06-18,2031-06-23,SERVICIO-ACTIVO,Recepción por etapa o control del periodo; no acredita ejecución,RT-21.19--22; Art.78
1.12.12.deuda.55,"Capacidad reservada de ingeniería deuda, mes 55",1.12,Operación,"Capacidad reservada de ingeniería deuda, mes 55",Resultado de la ficha de familia y del paquete original; registro individual por código/ventana,"No duplicar padres, informes, ingeniería ni cobertura; no incluye horas de contraparte ni obras/adquisiciones del cliente","Backlog, estimación, autorización, versión y evidencia; se liquida sólo el trabajo realizado, sin cobrar dos veces actividades ya presupuestadas.",Nikolai Navea,32,D:8;Q:8;V:16,"Asignación y cuadrante integrado por código; entornos, usuarios y habilitaciones autorizados",RT-21.19--22; Art.78,2031-06-18,2031-06-23,SERVICIO-ACTIVO,Recepción por etapa o control del periodo; no acredita ejecución,RT-21.19--22; Art.78
1.12.12.correctiva.56,"Capacidad reservada de ingeniería correctiva, mes 56",1.12,Operación,"Capacidad reservada de ingeniería correctiva, mes 56",Resultado de la ficha de familia y del paquete original; registro individual por código/ventana,"No duplicar padres, informes, ingeniería ni cobertura; no incluye horas de contraparte ni obras/adquisiciones del cliente","Backlog, estimación, autorización, versión y evidencia; se liquida sólo el trabajo realizado, sin cobrar dos veces actividades ya presupuestadas.",Nikolai Navea,80,D:16;Q:16;V:40;I:8,"Asignación y cuadrante integrado por código; entornos, usuarios y habilitaciones autorizados",RT-21.19--22; Art.78,2031-07-17,2031-07-23,SERVICIO-ACTIVO,Recepción por etapa o control del periodo; no acredita ejecución,RT-21.19--22; Art.78
1.12.12.normativa.56,"Capacidad reservada de ingeniería normativa, mes 56",1.12,Operación,"Capacidad reservada de ingeniería normativa, mes 56",Resultado de la ficha de familia y del paquete original; registro individual por código/ventana,"No duplicar padres, informes, ingeniería ni cobertura; no incluye horas de contraparte ni obras/adquisiciones del cliente","Backlog, estimación, autorización, versión y evidencia; se liquida sólo el trabajo realizado, sin cobrar dos veces actividades ya presupuestadas.",Nikolai Navea,48,A:8;S:8;Q:8;V:24,"Asignación y cuadrante integrado por código; entornos, usuarios y habilitaciones autorizados",RT-21.19--22; Art.78,2031-07-17,2031-07-21,SERVICIO-ACTIVO,Recepción por etapa o control del periodo; no acredita ejecución,RT-21.19--22; Art.78
1.12.12.evolutiva.56,"Capacidad reservada de ingeniería evolutiva, mes 56",1.12,Operación,"Capacidad reservada de ingeniería evolutiva, mes 56",Resultado de la ficha de familia y del paquete original; registro individual por código/ventana,"No duplicar padres, informes, ingeniería ni cobertura; no incluye horas de contraparte ni obras/adquisiciones del cliente","Backlog, estimación, autorización, versión y evidencia; se liquida sólo el trabajo realizado, sin cobrar dos veces actividades ya presupuestadas.",Nikolai Navea,80,A:16;D:8;S:4;Q:8;V:40;I:4,"Asignación y cuadrante integrado por código; entornos, usuarios y habilitaciones autorizados",RT-21.19--22; Art.78,2031-07-21,2031-07-24,SERVICIO-ACTIVO,Recepción por etapa o control del periodo; no acredita ejecución,RT-21.19--22; Art.78
1.12.12.deuda.56,"Capacidad reservada de ingeniería deuda, mes 56",1.12,Operación,"Capacidad reservada de ingeniería deuda, mes 56",Resultado de la ficha de familia y del paquete original; registro individual por código/ventana,"No duplicar padres, informes, ingeniería ni cobertura; no incluye horas de contraparte ni obras/adquisiciones del cliente","Backlog, estimación, autorización, versión y evidencia; se liquida sólo el trabajo realizado, sin cobrar dos veces actividades ya presupuestadas.",Nikolai Navea,32,D:8;Q:8;V:16,"Asignación y cuadrante integrado por código; entornos, usuarios y habilitaciones autorizados",RT-21.19--22; Art.78,2031-07-21,2031-07-24,SERVICIO-ACTIVO,Recepción por etapa o control del periodo; no acredita ejecución,RT-21.19--22; Art.78
1.12.2.2.31,Seguimiento incremental IN2 mes 31,1.12,Operación,Seguimiento incremental IN2 mes 31,Resultado de la ficha de familia y del paquete original; registro individual por código/ventana,"No duplicar padres, informes, ingeniería ni cobertura; no incluye horas de contraparte ni obras/adquisiciones del cliente",Estado de planes/trabajos y ventanas recibidos; seguimiento sin duplicar informes generales.,José Lara Arce,16,A:4;Q:4;O:8,"Asignación y cuadrante integrado por código; entornos, usuarios y habilitaciones autorizados",IN2.7; 16(57-M_inv),2029-06-18,2029-06-21,1.9.2.5.2,Recepción por etapa o control del periodo; no acredita ejecución,IN2.7; 16(57-M_inv)
1.12.2.2.32,Seguimiento incremental IN2 mes 32,1.12,Operación,Seguimiento incremental IN2 mes 32,Resultado de la ficha de familia y del paquete original; registro individual por código/ventana,"No duplicar padres, informes, ingeniería ni cobertura; no incluye horas de contraparte ni obras/adquisiciones del cliente",Estado de planes/trabajos y ventanas recibidos; seguimiento sin duplicar informes generales.,José Lara Arce,16,A:4;Q:4;O:8,"Asignación y cuadrante integrado por código; entornos, usuarios y habilitaciones autorizados",IN2.7; 16(57-M_inv),2029-07-17,2029-07-19,1.9.2.5.2,Recepción por etapa o control del periodo; no acredita ejecución,IN2.7; 16(57-M_inv)
1.12.2.2.33,Seguimiento incremental IN2 mes 33,1.12,Operación,Seguimiento incremental IN2 mes 33,Resultado de la ficha de familia y del paquete original; registro individual por código/ventana,"No duplicar padres, informes, ingeniería ni cobertura; no incluye horas de contraparte ni obras/adquisiciones del cliente",Estado de planes/trabajos y ventanas recibidos; seguimiento sin duplicar informes generales.,José Lara Arce,16,A:4;Q:4;O:8,"Asignación y cuadrante integrado por código; entornos, usuarios y habilitaciones autorizados",IN2.7; 16(57-M_inv),2029-08-16,2029-08-17,1.9.2.5.2,Recepción por etapa o control del periodo; no acredita ejecución,IN2.7; 16(57-M_inv)
1.12.2.2.34,Seguimiento incremental IN2 mes 34,1.12,Operación,Seguimiento incremental IN2 mes 34,Resultado de la ficha de familia y del paquete original; registro individual por código/ventana,"No duplicar padres, informes, ingeniería ni cobertura; no incluye horas de contraparte ni obras/adquisiciones del cliente",Estado de planes/trabajos y ventanas recibidos; seguimiento sin duplicar informes generales.,José Lara Arce,16,A:4;Q:4;O:8,"Asignación y cuadrante integrado por código; entornos, usuarios y habilitaciones autorizados",IN2.7; 16(57-M_inv),2029-09-20,2029-09-24,1.9.2.5.2,Recepción por etapa o control del periodo; no acredita ejecución,IN2.7; 16(57-M_inv)
1.12.2.2.35,Seguimiento incremental IN2 mes 35,1.12,Operación,Seguimiento incremental IN2 mes 35,Resultado de la ficha de familia y del paquete original; registro individual por código/ventana,"No duplicar padres, informes, ingeniería ni cobertura; no incluye horas de contraparte ni obras/adquisiciones del cliente",Estado de planes/trabajos y ventanas recibidos; seguimiento sin duplicar informes generales.,José Lara Arce,16,A:4;Q:4;O:8,"Asignación y cuadrante integrado por código; entornos, usuarios y habilitaciones autorizados",IN2.7; 16(57-M_inv),2029-10-16,2029-10-18,1.9.2.5.2,Recepción por etapa o control del periodo; no acredita ejecución,IN2.7; 16(57-M_inv)
1.12.2.2.36,Seguimiento incremental IN2 mes 36,1.12,Operación,Seguimiento incremental IN2 mes 36,Resultado de la ficha de familia y del paquete original; registro individual por código/ventana,"No duplicar padres, informes, ingeniería ni cobertura; no incluye horas de contraparte ni obras/adquisiciones del cliente",Estado de planes/trabajos y ventanas recibidos; seguimiento sin duplicar informes generales.,José Lara Arce,16,A:4;Q:4;O:8,"Asignación y cuadrante integrado por código; entornos, usuarios y habilitaciones autorizados",IN2.7; 16(57-M_inv),2029-11-16,2029-11-19,1.9.2.5.2,Recepción por etapa o control del periodo; no acredita ejecución,IN2.7; 16(57-M_inv)
1.12.2.2.37,Seguimiento incremental IN2 mes 37,1.12,Operación,Seguimiento incremental IN2 mes 37,Resultado de la ficha de familia y del paquete original; registro individual por código/ventana,"No duplicar padres, informes, ingeniería ni cobertura; no incluye horas de contraparte ni obras/adquisiciones del cliente",Estado de planes/trabajos y ventanas recibidos; seguimiento sin duplicar informes generales.,José Lara Arce,16,A:4;Q:4;O:8,"Asignación y cuadrante integrado por código; entornos, usuarios y habilitaciones autorizados",IN2.7; 16(57-M_inv),2029-12-17,2029-12-19,1.9.2.5.2,Recepción por etapa o control del periodo; no acredita ejecución,IN2.7; 16(57-M_inv)
1.12.2.2.38,Seguimiento incremental IN2 mes 38,1.12,Operación,Seguimiento incremental IN2 mes 38,Resultado de la ficha de familia y del paquete original; registro individual por código/ventana,"No duplicar padres, informes, ingeniería ni cobertura; no incluye horas de contraparte ni obras/adquisiciones del cliente",Estado de planes/trabajos y ventanas recibidos; seguimiento sin duplicar informes generales.,José Lara Arce,16,A:4;Q:4;O:8,"Asignación y cuadrante integrado por código; entornos, usuarios y habilitaciones autorizados",IN2.7; 16(57-M_inv),2030-01-16,2030-01-18,1.9.2.5.2,Recepción por etapa o control del periodo; no acredita ejecución,IN2.7; 16(57-M_inv)
1.12.2.2.39,Seguimiento incremental IN2 mes 39,1.12,Operación,Seguimiento incremental IN2 mes 39,Resultado de la ficha de familia y del paquete original; registro individual por código/ventana,"No duplicar padres, informes, ingeniería ni cobertura; no incluye horas de contraparte ni obras/adquisiciones del cliente",Estado de planes/trabajos y ventanas recibidos; seguimiento sin duplicar informes generales.,José Lara Arce,16,A:4;Q:4;O:8,"Asignación y cuadrante integrado por código; entornos, usuarios y habilitaciones autorizados",IN2.7; 16(57-M_inv),2030-02-18,2030-02-20,1.9.2.5.2,Recepción por etapa o control del periodo; no acredita ejecución,IN2.7; 16(57-M_inv)
1.12.2.2.40,Seguimiento incremental IN2 mes 40,1.12,Operación,Seguimiento incremental IN2 mes 40,Resultado de la ficha de familia y del paquete original; registro individual por código/ventana,"No duplicar padres, informes, ingeniería ni cobertura; no incluye horas de contraparte ni obras/adquisiciones del cliente",Estado de planes/trabajos y ventanas recibidos; seguimiento sin duplicar informes generales.,José Lara Arce,16,A:4;Q:4;O:8,"Asignación y cuadrante integrado por código; entornos, usuarios y habilitaciones autorizados",IN2.7; 16(57-M_inv),2030-03-18,2030-03-20,1.9.2.5.2,Recepción por etapa o control del periodo; no acredita ejecución,IN2.7; 16(57-M_inv)
1.12.2.2.41,Seguimiento incremental IN2 mes 41,1.12,Operación,Seguimiento incremental IN2 mes 41,Resultado de la ficha de familia y del paquete original; registro individual por código/ventana,"No duplicar padres, informes, ingeniería ni cobertura; no incluye horas de contraparte ni obras/adquisiciones del cliente",Estado de planes/trabajos y ventanas recibidos; seguimiento sin duplicar informes generales.,José Lara Arce,16,A:4;Q:4;O:8,"Asignación y cuadrante integrado por código; entornos, usuarios y habilitaciones autorizados",IN2.7; 16(57-M_inv),2030-04-16,2030-04-18,1.9.2.5.2,Recepción por etapa o control del periodo; no acredita ejecución,IN2.7; 16(57-M_inv)
1.12.2.2.42,Seguimiento incremental IN2 mes 42,1.12,Operación,Seguimiento incremental IN2 mes 42,Resultado de la ficha de familia y del paquete original; registro individual por código/ventana,"No duplicar padres, informes, ingeniería ni cobertura; no incluye horas de contraparte ni obras/adquisiciones del cliente",Estado de planes/trabajos y ventanas recibidos; seguimiento sin duplicar informes generales.,José Lara Arce,16,A:4;Q:4;O:8,"Asignación y cuadrante integrado por código; entornos, usuarios y habilitaciones autorizados",IN2.7; 16(57-M_inv),2030-05-16,2030-05-20,1.9.2.5.2,Recepción por etapa o control del periodo; no acredita ejecución,IN2.7; 16(57-M_inv)
1.12.2.2.43,Seguimiento incremental IN2 mes 43,1.12,Operación,Seguimiento incremental IN2 mes 43,Resultado de la ficha de familia y del paquete original; registro individual por código/ventana,"No duplicar padres, informes, ingeniería ni cobertura; no incluye horas de contraparte ni obras/adquisiciones del cliente",Estado de planes/trabajos y ventanas recibidos; seguimiento sin duplicar informes generales.,José Lara Arce,16,A:4;Q:4;O:8,"Asignación y cuadrante integrado por código; entornos, usuarios y habilitaciones autorizados",IN2.7; 16(57-M_inv),2030-06-17,2030-06-19,1.9.2.5.2,Recepción por etapa o control del periodo; no acredita ejecución,IN2.7; 16(57-M_inv)
1.12.2.2.44,Seguimiento incremental IN2 mes 44,1.12,Operación,Seguimiento incremental IN2 mes 44,Resultado de la ficha de familia y del paquete original; registro individual por código/ventana,"No duplicar padres, informes, ingeniería ni cobertura; no incluye horas de contraparte ni obras/adquisiciones del cliente",Estado de planes/trabajos y ventanas recibidos; seguimiento sin duplicar informes generales.,José Lara Arce,16,A:4;Q:4;O:8,"Asignación y cuadrante integrado por código; entornos, usuarios y habilitaciones autorizados",IN2.7; 16(57-M_inv),2030-07-17,2030-07-19,1.9.2.5.2,Recepción por etapa o control del periodo; no acredita ejecución,IN2.7; 16(57-M_inv)
1.12.2.2.45,Seguimiento incremental IN2 mes 45,1.12,Operación,Seguimiento incremental IN2 mes 45,Resultado de la ficha de familia y del paquete original; registro individual por código/ventana,"No duplicar padres, informes, ingeniería ni cobertura; no incluye horas de contraparte ni obras/adquisiciones del cliente",Estado de planes/trabajos y ventanas recibidos; seguimiento sin duplicar informes generales.,José Lara Arce,16,A:4;Q:4;O:8,"Asignación y cuadrante integrado por código; entornos, usuarios y habilitaciones autorizados",IN2.7; 16(57-M_inv),2030-08-16,2030-08-19,1.9.2.5.2,Recepción por etapa o control del periodo; no acredita ejecución,IN2.7; 16(57-M_inv)
1.12.2.2.46,Seguimiento incremental IN2 mes 46,1.12,Operación,Seguimiento incremental IN2 mes 46,Resultado de la ficha de familia y del paquete original; registro individual por código/ventana,"No duplicar padres, informes, ingeniería ni cobertura; no incluye horas de contraparte ni obras/adquisiciones del cliente",Estado de planes/trabajos y ventanas recibidos; seguimiento sin duplicar informes generales.,José Lara Arce,16,A:4;Q:4;O:8,"Asignación y cuadrante integrado por código; entornos, usuarios y habilitaciones autorizados",IN2.7; 16(57-M_inv),2030-09-16,2030-09-23,1.9.2.5.2,Recepción por etapa o control del periodo; no acredita ejecución,IN2.7; 16(57-M_inv)
1.12.2.2.47,Seguimiento incremental IN2 mes 47,1.12,Operación,Seguimiento incremental IN2 mes 47,Resultado de la ficha de familia y del paquete original; registro individual por código/ventana,"No duplicar padres, informes, ingeniería ni cobertura; no incluye horas de contraparte ni obras/adquisiciones del cliente",Estado de planes/trabajos y ventanas recibidos; seguimiento sin duplicar informes generales.,José Lara Arce,16,A:4;Q:4;O:8,"Asignación y cuadrante integrado por código; entornos, usuarios y habilitaciones autorizados",IN2.7; 16(57-M_inv),2030-10-16,2030-10-18,1.9.2.5.2,Recepción por etapa o control del periodo; no acredita ejecución,IN2.7; 16(57-M_inv)
1.12.2.2.48,Seguimiento incremental IN2 mes 48,1.12,Operación,Seguimiento incremental IN2 mes 48,Resultado de la ficha de familia y del paquete original; registro individual por código/ventana,"No duplicar padres, informes, ingeniería ni cobertura; no incluye horas de contraparte ni obras/adquisiciones del cliente",Estado de planes/trabajos y ventanas recibidos; seguimiento sin duplicar informes generales.,José Lara Arce,16,A:4;Q:4;O:8,"Asignación y cuadrante integrado por código; entornos, usuarios y habilitaciones autorizados",IN2.7; 16(57-M_inv),2030-11-18,2030-11-20,1.9.2.5.2,Recepción por etapa o control del periodo; no acredita ejecución,IN2.7; 16(57-M_inv)
1.12.2.2.49,Seguimiento incremental IN2 mes 49,1.12,Operación,Seguimiento incremental IN2 mes 49,Resultado de la ficha de familia y del paquete original; registro individual por código/ventana,"No duplicar padres, informes, ingeniería ni cobertura; no incluye horas de contraparte ni obras/adquisiciones del cliente",Estado de planes/trabajos y ventanas recibidos; seguimiento sin duplicar informes generales.,José Lara Arce,16,A:4;Q:4;O:8,"Asignación y cuadrante integrado por código; entornos, usuarios y habilitaciones autorizados",IN2.7; 16(57-M_inv),2030-12-16,2030-12-18,1.9.2.5.2,Recepción por etapa o control del periodo; no acredita ejecución,IN2.7; 16(57-M_inv)
1.12.2.2.50,Seguimiento incremental IN2 mes 50,1.12,Operación,Seguimiento incremental IN2 mes 50,Resultado de la ficha de familia y del paquete original; registro individual por código/ventana,"No duplicar padres, informes, ingeniería ni cobertura; no incluye horas de contraparte ni obras/adquisiciones del cliente",Estado de planes/trabajos y ventanas recibidos; seguimiento sin duplicar informes generales.,José Lara Arce,16,A:4;Q:4;O:8,"Asignación y cuadrante integrado por código; entornos, usuarios y habilitaciones autorizados",IN2.7; 16(57-M_inv),2031-01-16,2031-01-20,1.9.2.5.2,Recepción por etapa o control del periodo; no acredita ejecución,IN2.7; 16(57-M_inv)
1.12.2.2.51,Seguimiento incremental IN2 mes 51,1.12,Operación,Seguimiento incremental IN2 mes 51,Resultado de la ficha de familia y del paquete original; registro individual por código/ventana,"No duplicar padres, informes, ingeniería ni cobertura; no incluye horas de contraparte ni obras/adquisiciones del cliente",Estado de planes/trabajos y ventanas recibidos; seguimiento sin duplicar informes generales.,José Lara Arce,16,A:4;Q:4;O:8,"Asignación y cuadrante integrado por código; entornos, usuarios y habilitaciones autorizados",IN2.7; 16(57-M_inv),2031-02-17,2031-02-19,1.9.2.5.2,Recepción por etapa o control del periodo; no acredita ejecución,IN2.7; 16(57-M_inv)
1.12.2.2.52,Seguimiento incremental IN2 mes 52,1.12,Operación,Seguimiento incremental IN2 mes 52,Resultado de la ficha de familia y del paquete original; registro individual por código/ventana,"No duplicar padres, informes, ingeniería ni cobertura; no incluye horas de contraparte ni obras/adquisiciones del cliente",Estado de planes/trabajos y ventanas recibidos; seguimiento sin duplicar informes generales.,José Lara Arce,16,A:4;Q:4;O:8,"Asignación y cuadrante integrado por código; entornos, usuarios y habilitaciones autorizados",IN2.7; 16(57-M_inv),2031-03-17,2031-03-19,1.9.2.5.2,Recepción por etapa o control del periodo; no acredita ejecución,IN2.7; 16(57-M_inv)
1.12.2.2.53,Seguimiento incremental IN2 mes 53,1.12,Operación,Seguimiento incremental IN2 mes 53,Resultado de la ficha de familia y del paquete original; registro individual por código/ventana,"No duplicar padres, informes, ingeniería ni cobertura; no incluye horas de contraparte ni obras/adquisiciones del cliente",Estado de planes/trabajos y ventanas recibidos; seguimiento sin duplicar informes generales.,José Lara Arce,16,A:4;Q:4;O:8,"Asignación y cuadrante integrado por código; entornos, usuarios y habilitaciones autorizados",IN2.7; 16(57-M_inv),2031-04-16,2031-04-18,1.9.2.5.2,Recepción por etapa o control del periodo; no acredita ejecución,IN2.7; 16(57-M_inv)
1.12.2.2.54,Seguimiento incremental IN2 mes 54,1.12,Operación,Seguimiento incremental IN2 mes 54,Resultado de la ficha de familia y del paquete original; registro individual por código/ventana,"No duplicar padres, informes, ingeniería ni cobertura; no incluye horas de contraparte ni obras/adquisiciones del cliente",Estado de planes/trabajos y ventanas recibidos; seguimiento sin duplicar informes generales.,José Lara Arce,16,A:4;Q:4;O:8,"Asignación y cuadrante integrado por código; entornos, usuarios y habilitaciones autorizados",IN2.7; 16(57-M_inv),2031-05-16,2031-05-19,1.9.2.5.2,Recepción por etapa o control del periodo; no acredita ejecución,IN2.7; 16(57-M_inv)
1.12.2.2.55,Seguimiento incremental IN2 mes 55,1.12,Operación,Seguimiento incremental IN2 mes 55,Resultado de la ficha de familia y del paquete original; registro individual por código/ventana,"No duplicar padres, informes, ingeniería ni cobertura; no incluye horas de contraparte ni obras/adquisiciones del cliente",Estado de planes/trabajos y ventanas recibidos; seguimiento sin duplicar informes generales.,José Lara Arce,16,A:4;Q:4;O:8,"Asignación y cuadrante integrado por código; entornos, usuarios y habilitaciones autorizados",IN2.7; 16(57-M_inv),2031-06-16,2031-06-18,1.9.2.5.2,Recepción por etapa o control del periodo; no acredita ejecución,IN2.7; 16(57-M_inv)
1.12.2.2.56,Seguimiento incremental IN2 mes 56,1.12,Operación,Seguimiento incremental IN2 mes 56,Resultado de la ficha de familia y del paquete original; registro individual por código/ventana,"No duplicar padres, informes, ingeniería ni cobertura; no incluye horas de contraparte ni obras/adquisiciones del cliente",Estado de planes/trabajos y ventanas recibidos; seguimiento sin duplicar informes generales.,José Lara Arce,16,A:4;Q:4;O:8,"Asignación y cuadrante integrado por código; entornos, usuarios y habilitaciones autorizados",IN2.7; 16(57-M_inv),2031-07-17,2031-07-18,1.9.2.5.2,Recepción por etapa o control del periodo; no acredita ejecución,IN2.7; 16(57-M_inv)
1.9.2.5.4.1,"Revisión previa a botadura, lote 1 de cuatro embarcaciones",1.9,Operación,"Revisión previa a botadura, lote 1 de cuatro embarcaciones",Resultado de la ficha de familia y del paquete original; registro individual por código/ventana,"No duplicar padres, informes, ingeniería ni cobertura; no incluye horas de contraparte ni obras/adquisiciones del cliente","Plan, responsabilidades y trabajos revisados al menos tres semanas antes de botadura, sin interacción durante izaje.",José Lara Arce,16,A:4;Q:4;O:8,"Asignación y cuadrante integrado por código; entornos, usuarios y habilitaciones autorizados",IN2.5.4; cinco lotes/20 embarcaciones,2029-08-02,2029-08-03,1.9.2.5.2,Recepción por etapa o control del periodo; no acredita ejecución,IN2.5.4; cinco lotes/20 embarcaciones
1.9.2.5.4.2,"Revisión previa a botadura, lote 2 de cuatro embarcaciones",1.9,Operación,"Revisión previa a botadura, lote 2 de cuatro embarcaciones",Resultado de la ficha de familia y del paquete original; registro individual por código/ventana,"No duplicar padres, informes, ingeniería ni cobertura; no incluye horas de contraparte ni obras/adquisiciones del cliente","Plan, responsabilidades y trabajos revisados al menos tres semanas antes de botadura, sin interacción durante izaje.",José Lara Arce,16,A:4;Q:4;O:8,"Asignación y cuadrante integrado por código; entornos, usuarios y habilitaciones autorizados",IN2.5.4; cinco lotes/20 embarcaciones,2029-08-01,2029-08-02,1.9.2.5.2,Recepción por etapa o control del periodo; no acredita ejecución,IN2.5.4; cinco lotes/20 embarcaciones
1.9.2.5.4.3,"Revisión previa a botadura, lote 3 de cuatro embarcaciones",1.9,Operación,"Revisión previa a botadura, lote 3 de cuatro embarcaciones",Resultado de la ficha de familia y del paquete original; registro individual por código/ventana,"No duplicar padres, informes, ingeniería ni cobertura; no incluye horas de contraparte ni obras/adquisiciones del cliente","Plan, responsabilidades y trabajos revisados al menos tres semanas antes de botadura, sin interacción durante izaje.",José Lara Arce,16,A:4;Q:4;O:8,"Asignación y cuadrante integrado por código; entornos, usuarios y habilitaciones autorizados",IN2.5.4; cinco lotes/20 embarcaciones,2029-09-04,2029-09-05,1.9.2.5.2,Recepción por etapa o control del periodo; no acredita ejecución,IN2.5.4; cinco lotes/20 embarcaciones
1.9.2.5.4.4,"Revisión previa a botadura, lote 4 de cuatro embarcaciones",1.9,Operación,"Revisión previa a botadura, lote 4 de cuatro embarcaciones",Resultado de la ficha de familia y del paquete original; registro individual por código/ventana,"No duplicar padres, informes, ingeniería ni cobertura; no incluye horas de contraparte ni obras/adquisiciones del cliente","Plan, responsabilidades y trabajos revisados al menos tres semanas antes de botadura, sin interacción durante izaje.",José Lara Arce,16,A:4;Q:4;O:8,"Asignación y cuadrante integrado por código; entornos, usuarios y habilitaciones autorizados",IN2.5.4; cinco lotes/20 embarcaciones,2029-09-05,2029-09-06,1.9.2.5.2,Recepción por etapa o control del periodo; no acredita ejecución,IN2.5.4; cinco lotes/20 embarcaciones
1.9.2.5.4.5,"Revisión previa a botadura, lote 5 de cuatro embarcaciones",1.9,Operación,"Revisión previa a botadura, lote 5 de cuatro embarcaciones",Resultado de la ficha de familia y del paquete original; registro individual por código/ventana,"No duplicar padres, informes, ingeniería ni cobertura; no incluye horas de contraparte ni obras/adquisiciones del cliente","Plan, responsabilidades y trabajos revisados al menos tres semanas antes de botadura, sin interacción durante izaje.",José Lara Arce,16,A:4;Q:4;O:8,"Asignación y cuadrante integrado por código; entornos, usuarios y habilitaciones autorizados",IN2.5.4; cinco lotes/20 embarcaciones,2029-10-02,2029-10-03,1.9.2.5.2,Recepción por etapa o control del periodo; no acredita ejecución,IN2.5.4; cinco lotes/20 embarcaciones
1.10.3.1.1,"Reserva de subsanación y reensayo E1, bloque 1",1.10,E1 Desarrollo,"Reserva de subsanación y reensayo E1, bloque 1",Resultado de la ficha de familia y del paquete original; registro individual por código/ventana,"No duplicar padres, informes, ingeniería ni cobertura; no incluye horas de contraparte ni obras/adquisiciones del cliente","Hallazgos identificados cerrados, regresión y evidencia sobre misma versión; horas no ejecutadas quedan como reserva.",Nikolai Navea,80,D:8;S:8;Q:24;V:32;I:8,"Asignación y cuadrante integrado por código; entornos, usuarios y habilitaciones autorizados",BA18; BT20,2027-09-09,2027-09-15,ENS-REV-1-1,Recepción por etapa o control del periodo; no acredita ejecución,BA18; BT20
1.10.3.1.2,"Reserva de subsanación y reensayo E1, bloque 2",1.10,E1 Desarrollo,"Reserva de subsanación y reensayo E1, bloque 2",Resultado de la ficha de familia y del paquete original; registro individual por código/ventana,"No duplicar padres, informes, ingeniería ni cobertura; no incluye horas de contraparte ni obras/adquisiciones del cliente","Hallazgos identificados cerrados, regresión y evidencia sobre misma versión; horas no ejecutadas quedan como reserva.",Nikolai Navea,80,D:8;S:8;Q:24;V:32;I:8,"Asignación y cuadrante integrado por código; entornos, usuarios y habilitaciones autorizados",BA18; BT20,2027-09-13,2027-09-20,ENS-REV-1-1,Recepción por etapa o control del periodo; no acredita ejecución,BA18; BT20
1.10.3.1.3,"Reserva de subsanación y reensayo E1, bloque 3",1.10,E1 Desarrollo,"Reserva de subsanación y reensayo E1, bloque 3",Resultado de la ficha de familia y del paquete original; registro individual por código/ventana,"No duplicar padres, informes, ingeniería ni cobertura; no incluye horas de contraparte ni obras/adquisiciones del cliente","Hallazgos identificados cerrados, regresión y evidencia sobre misma versión; horas no ejecutadas quedan como reserva.",Nikolai Navea,80,D:8;S:8;Q:24;V:32;I:8,"Asignación y cuadrante integrado por código; entornos, usuarios y habilitaciones autorizados",BA18; BT20,2027-10-25,2027-10-29,ENS-REV-1-2,Recepción por etapa o control del periodo; no acredita ejecución,BA18; BT20
1.10.3.1.4,"Reserva de subsanación y reensayo E1, bloque 4",1.10,E1 Desarrollo,"Reserva de subsanación y reensayo E1, bloque 4",Resultado de la ficha de familia y del paquete original; registro individual por código/ventana,"No duplicar padres, informes, ingeniería ni cobertura; no incluye horas de contraparte ni obras/adquisiciones del cliente","Hallazgos identificados cerrados, regresión y evidencia sobre misma versión; horas no ejecutadas quedan como reserva.",Nikolai Navea,80,D:8;S:8;Q:24;V:32;I:8,"Asignación y cuadrante integrado por código; entornos, usuarios y habilitaciones autorizados",BA18; BT20,2027-10-27,2027-11-03,ENS-REV-1-2,Recepción por etapa o control del periodo; no acredita ejecución,BA18; BT20
1.10.3.2.1,"Reserva de subsanación y reensayo E2, bloque 1",1.10,E2 Desarrollo,"Reserva de subsanación y reensayo E2, bloque 1",Resultado de la ficha de familia y del paquete original; registro individual por código/ventana,"No duplicar padres, informes, ingeniería ni cobertura; no incluye horas de contraparte ni obras/adquisiciones del cliente","Hallazgos identificados cerrados, regresión y evidencia sobre misma versión; horas no ejecutadas quedan como reserva.",Nikolai Navea,80,D:8;S:8;Q:24;V:32;I:8,"Asignación y cuadrante integrado por código; entornos, usuarios y habilitaciones autorizados",BA18; BT20,2028-02-21,2028-02-25,ENS-REV-2-1,Recepción por etapa o control del periodo; no acredita ejecución,BA18; BT20
1.10.3.2.2,"Reserva de subsanación y reensayo E2, bloque 2",1.10,E2 Desarrollo,"Reserva de subsanación y reensayo E2, bloque 2",Resultado de la ficha de familia y del paquete original; registro individual por código/ventana,"No duplicar padres, informes, ingeniería ni cobertura; no incluye horas de contraparte ni obras/adquisiciones del cliente","Hallazgos identificados cerrados, regresión y evidencia sobre misma versión; horas no ejecutadas quedan como reserva.",Nikolai Navea,80,D:8;S:8;Q:24;V:32;I:8,"Asignación y cuadrante integrado por código; entornos, usuarios y habilitaciones autorizados",BA18; BT20,2028-02-24,2028-02-29,ENS-REV-2-1,Recepción por etapa o control del periodo; no acredita ejecución,BA18; BT20
1.10.3.2.3,"Reserva de subsanación y reensayo E2, bloque 3",1.10,E2 Desarrollo,"Reserva de subsanación y reensayo E2, bloque 3",Resultado de la ficha de familia y del paquete original; registro individual por código/ventana,"No duplicar padres, informes, ingeniería ni cobertura; no incluye horas de contraparte ni obras/adquisiciones del cliente","Hallazgos identificados cerrados, regresión y evidencia sobre misma versión; horas no ejecutadas quedan como reserva.",Nikolai Navea,80,D:8;S:8;Q:24;V:32;I:8,"Asignación y cuadrante integrado por código; entornos, usuarios y habilitaciones autorizados",BA18; BT20,2028-04-03,2028-04-07,ENS-REV-2-2,Recepción por etapa o control del periodo; no acredita ejecución,BA18; BT20
1.10.3.2.4,"Reserva de subsanación y reensayo E2, bloque 4",1.10,E2 Desarrollo,"Reserva de subsanación y reensayo E2, bloque 4",Resultado de la ficha de familia y del paquete original; registro individual por código/ventana,"No duplicar padres, informes, ingeniería ni cobertura; no incluye horas de contraparte ni obras/adquisiciones del cliente","Hallazgos identificados cerrados, regresión y evidencia sobre misma versión; horas no ejecutadas quedan como reserva.",Nikolai Navea,80,D:8;S:8;Q:24;V:32;I:8,"Asignación y cuadrante integrado por código; entornos, usuarios y habilitaciones autorizados",BA18; BT20,2028-04-06,2028-04-11,ENS-REV-2-2,Recepción por etapa o control del periodo; no acredita ejecución,BA18; BT20
1.1.5.1,Expediente transversal de alcance y contratos,1.1,E1 Desarrollo,Expediente transversal de alcance y contratos,Resultado de la ficha de familia y del paquete original; registro individual por código/ventana,"No duplicar padres, informes, ingeniería ni cobertura; no incluye horas de contraparte ni obras/adquisiciones del cliente","Cláusulas, documentos, responsables y control de vigencias; se distingue evidencia de oferta de obligaciones futuras.",Ignacio Silva,32,S:8;Q:8;I:8;J:8,"Asignación y cuadrante integrado por código; entornos, usuarios y habilitaciones autorizados",RT01/02/18/19; BA contrato,2027-01-05,2027-01-07,1.1.1.1,Recepción por etapa o control del periodo; no acredita ejecución,RT01/02/18/19; BA contrato
1.1.5.2,Expediente transversal de seguridad y privacidad,1.1,E1 Desarrollo,Expediente transversal de seguridad y privacidad,Resultado de la ficha de familia y del paquete original; registro individual por código/ventana,"No duplicar padres, informes, ingeniería ni cobertura; no incluye horas de contraparte ni obras/adquisiciones del cliente","Cláusulas, documentos, responsables y control de vigencias; se distingue evidencia de oferta de obligaciones futuras.",Ignacio Silva,32,S:8;Q:8;I:8;J:8,"Asignación y cuadrante integrado por código; entornos, usuarios y habilitaciones autorizados",RT01/02/18/19; BA contrato,2027-02-04,2027-02-08,1.1.1.1,Recepción por etapa o control del periodo; no acredita ejecución,RT01/02/18/19; BA contrato
1.1.5.3,Expediente transversal de IA y trazabilidad,1.1,E1 Desarrollo,Expediente transversal de IA y trazabilidad,Resultado de la ficha de familia y del paquete original; registro individual por código/ventana,"No duplicar padres, informes, ingeniería ni cobertura; no incluye horas de contraparte ni obras/adquisiciones del cliente","Cláusulas, documentos, responsables y control de vigencias; se distingue evidencia de oferta de obligaciones futuras.",Ignacio Silva,32,S:8;Q:8;I:8;J:8,"Asignación y cuadrante integrado por código; entornos, usuarios y habilitaciones autorizados",RT01/02/18/19; BA contrato,2027-02-03,2027-02-05,1.1.1.1,Recepción por etapa o control del periodo; no acredita ejecución,RT01/02/18/19; BA contrato
1.1.5.4,Expediente transversal de licencias y soporte,1.1,E1 Desarrollo,Expediente transversal de licencias y soporte,Resultado de la ficha de familia y del paquete original; registro individual por código/ventana,"No duplicar padres, informes, ingeniería ni cobertura; no incluye horas de contraparte ni obras/adquisiciones del cliente","Cláusulas, documentos, responsables y control de vigencias; se distingue evidencia de oferta de obligaciones futuras.",Ignacio Silva,32,S:8;Q:8;I:8;J:8,"Asignación y cuadrante integrado por código; entornos, usuarios y habilitaciones autorizados",RT01/02/18/19; BA contrato,2027-02-01,2027-02-03,1.1.1.1,Recepción por etapa o control del periodo; no acredita ejecución,RT01/02/18/19; BA contrato
1.1.5.5,Expediente transversal de custodia y propiedad,1.1,E1 Desarrollo,Expediente transversal de custodia y propiedad,Resultado de la ficha de familia y del paquete original; registro individual por código/ventana,"No duplicar padres, informes, ingeniería ni cobertura; no incluye horas de contraparte ni obras/adquisiciones del cliente","Cláusulas, documentos, responsables y control de vigencias; se distingue evidencia de oferta de obligaciones futuras.",Ignacio Silva,32,S:8;Q:8;I:8;J:8,"Asignación y cuadrante integrado por código; entornos, usuarios y habilitaciones autorizados",RT01/02/18/19; BA contrato,2027-01-06,2027-01-08,1.1.1.1,Recepción por etapa o control del periodo; no acredita ejecución,RT01/02/18/19; BA contrato
1.1.5.6,Expediente transversal de garantías y oferta económica,1.1,E1 Desarrollo,Expediente transversal de garantías y oferta económica,Resultado de la ficha de familia y del paquete original; registro individual por código/ventana,"No duplicar padres, informes, ingeniería ni cobertura; no incluye horas de contraparte ni obras/adquisiciones del cliente","Cláusulas, documentos, responsables y control de vigencias; se distingue evidencia de oferta de obligaciones futuras.",Ignacio Silva,32,S:8;Q:8;I:8;J:8,"Asignación y cuadrante integrado por código; entornos, usuarios y habilitaciones autorizados",RT01/02/18/19; BA contrato,2027-02-02,2027-02-04,1.1.1.1,Recepción por etapa o control del periodo; no acredita ejecución,RT01/02/18/19; BA contrato
1.11.5.1.2,Validación final del expediente vivo de marcha blanca E1,1.11,E1 Desarrollo,Validación final del expediente vivo de marcha blanca E1,Resultado de la ficha de familia y del paquete original; registro individual por código/ventana,"No duplicar padres, informes, ingeniería ni cobertura; no incluye horas de contraparte ni obras/adquisiciones del cliente",Los datos de las cuatro últimas semanas y las condiciones copulativas se incorporan al expediente; no anticipa aceptación.,Davor Serey,8,Q:4;J:4,"Asignación y cuadrante integrado por código; entornos, usuarios y habilitaciones autorizados",BA17.3/18,2028-03-01,2028-03-01,1.11.5.1.1;MARCHA-E1,Recepción por etapa o control del periodo; no acredita ejecución,BA17.3/18
1.11.5.2.2,Control final del expediente y preparación del cierre natural E2,1.11,Aceptación final de implementación,Control final del expediente y preparación del cierre natural E2,Resultado de la ficha de familia y del paquete original; registro individual por código/ventana,"No duplicar padres, informes, ingeniería ni cobertura; no incluye horas de contraparte ni obras/adquisiciones del cliente","Última evidencia recibida hasta cierre natural del 31 de julio; controles automáticos y registro final revisados por Calidad y Proyecto. El acta expresa de la Contraparte es una puerta separada, requerida y no obtenida.",Davor Serey,8,Q:4;J:4,"Asignación y cuadrante integrado por código; entornos, usuarios y habilitaciones autorizados",BA17.3/18,2028-07-31,2028-08-01,1.11.3.2.2;1.11.5.2.1,Recepción por etapa o control del periodo; no acredita ejecución,BA17.3/18
1.12.4.7.6,Control de continuidad adicional 7: resiliencia,1.12,Operación,Control de continuidad adicional 7: resiliencia,Resultado de la ficha de familia y del paquete original; registro individual por código/ventana,"No duplicar padres, informes, ingeniería ni cobertura; no incluye horas de contraparte ni obras/adquisiciones del cliente","Prueba sobre versión identificada y ventana autorizada, sin degradar E1; recuperación y retorno medidos.",Davor Serey,48,D:8;Q:16;I:8;O:16,"Asignación y cuadrante integrado por código; entornos, usuarios y habilitaciones autorizados",RT-15/20; frecuencia semestral; calendario protegido,2030-11-05,2030-11-11,SERVICIO-ACTIVO,Recepción por etapa o control del periodo; no acredita ejecución,RT-15/20; frecuencia semestral; calendario protegido
1.12.4.7.7,Control de continuidad adicional 7: DR real y retorno,1.12,Operación,Control de continuidad adicional 7: DR real y retorno,Resultado de la ficha de familia y del paquete original; registro individual por código/ventana,"No duplicar padres, informes, ingeniería ni cobertura; no incluye horas de contraparte ni obras/adquisiciones del cliente","Prueba sobre versión identificada y ventana autorizada, sin degradar E1; recuperación y retorno medidos.",José Lara Arce,64,D:8;S:8;Q:8;I:16;O:24,"Asignación y cuadrante integrado por código; entornos, usuarios y habilitaciones autorizados",RT-15/20; frecuencia semestral; calendario protegido,2030-11-07,2030-11-12,SERVICIO-ACTIVO,Recepción por etapa o control del periodo; no acredita ejecución,RT-15/20; frecuencia semestral; calendario protegido
1.12.4.8.6,Control de continuidad adicional 8: resiliencia,1.12,Operación,Control de continuidad adicional 8: resiliencia,Resultado de la ficha de familia y del paquete original; registro individual por código/ventana,"No duplicar padres, informes, ingeniería ni cobertura; no incluye horas de contraparte ni obras/adquisiciones del cliente","Prueba sobre versión identificada y ventana autorizada, sin degradar E1; recuperación y retorno medidos.",Davor Serey,48,D:8;Q:16;I:8;O:16,"Asignación y cuadrante integrado por código; entornos, usuarios y habilitaciones autorizados",RT-15/20; frecuencia semestral; calendario protegido,2031-03-20,2031-03-27,SERVICIO-ACTIVO,Recepción por etapa o control del periodo; no acredita ejecución,RT-15/20; frecuencia semestral; calendario protegido
1.12.4.8.7,Control de continuidad adicional 8: DR real y retorno,1.12,Operación,Control de continuidad adicional 8: DR real y retorno,Resultado de la ficha de familia y del paquete original; registro individual por código/ventana,"No duplicar padres, informes, ingeniería ni cobertura; no incluye horas de contraparte ni obras/adquisiciones del cliente","Prueba sobre versión identificada y ventana autorizada, sin degradar E1; recuperación y retorno medidos.",José Lara Arce,64,D:8;S:8;Q:8;I:16;O:24,"Asignación y cuadrante integrado por código; entornos, usuarios y habilitaciones autorizados",RT-15/20; frecuencia semestral; calendario protegido,2031-03-20,2031-03-26,SERVICIO-ACTIVO,Recepción por etapa o control del periodo; no acredita ejecución,RT-15/20; frecuencia semestral; calendario protegido
1.12.4.9.6,Control de continuidad adicional 9: resiliencia,1.12,Operación,Control de continuidad adicional 9: resiliencia,Resultado de la ficha de familia y del paquete original; registro individual por código/ventana,"No duplicar padres, informes, ingeniería ni cobertura; no incluye horas de contraparte ni obras/adquisiciones del cliente","Prueba sobre versión identificada y ventana autorizada, sin degradar E1; recuperación y retorno medidos.",Davor Serey,48,D:8;Q:16;I:8;O:16,"Asignación y cuadrante integrado por código; entornos, usuarios y habilitaciones autorizados",RT-15/20; frecuencia semestral; calendario protegido,2031-07-02,2031-07-08,SERVICIO-ACTIVO,Recepción por etapa o control del periodo; no acredita ejecución,RT-15/20; frecuencia semestral; calendario protegido
1.12.4.9.7,Control de continuidad adicional 9: DR real y retorno,1.12,Operación,Control de continuidad adicional 9: DR real y retorno,Resultado de la ficha de familia y del paquete original; registro individual por código/ventana,"No duplicar padres, informes, ingeniería ni cobertura; no incluye horas de contraparte ni obras/adquisiciones del cliente","Prueba sobre versión identificada y ventana autorizada, sin degradar E1; recuperación y retorno medidos.",José Lara Arce,64,D:8;S:8;Q:8;I:16;O:24,"Asignación y cuadrante integrado por código; entornos, usuarios y habilitaciones autorizados",RT-15/20; frecuencia semestral; calendario protegido,2031-07-04,2031-07-09,SERVICIO-ACTIVO,Recepción por etapa o control del periodo; no acredita ejecución,RT-15/20; frecuencia semestral; calendario protegido
1.4.1.1.4.1,"Análisis de reglas, excepciones y protocolo: Movimientos de salida y regreso identificados — lote 1/1",1.4,E1 Desarrollo,"Análisis de reglas, excepciones y protocolo: Movimientos de salida y regreso identificados — lote 1/1",Resultado de la ficha de familia y del paquete original; registro individual por código/ventana,"No duplicar padres, informes, ingeniería ni cobertura; no incluye horas de contraparte ni obras/adquisiciones del cliente","Lote identificado de reglas, contratos, construcción, pruebas o documentación del componente; evidencia versionada, revisión independiente y trazabilidad al flujo UCP. No reconstruye identidad, canales ni adaptadores comunes.",Ulysses Barreto,51,A:51,"Asignación y cuadrante integrado por código; entornos, usuarios y habilitaciones autorizados",RF-NAV-04/05; RN-01--03; modelo UCP y conciliación de alcance 1.4–1.6,2027-01-27,2027-01-28,1.4.1.1.1,Recepción por etapa o control del periodo; no acredita ejecución,RF-NAV-04/05; RN-01--03; modelo UCP y conciliación de alcance 1.4–1.6
1.4.1.1.4.2,Diseño de datos y restricciones del núcleo: Movimientos de salida y regreso identificados — lote 1/1,1.4,E1 Desarrollo,Diseño de datos y restricciones del núcleo: Movimientos de salida y regreso identificados — lote 1/1,Resultado de la ficha de familia y del paquete original; registro individual por código/ventana,"No duplicar padres, informes, ingeniería ni cobertura; no incluye horas de contraparte ni obras/adquisiciones del cliente","Lote identificado de reglas, contratos, construcción, pruebas o documentación del componente; evidencia versionada, revisión independiente y trazabilidad al flujo UCP. No reconstruye identidad, canales ni adaptadores comunes.",Nicolás Torfan,44,D:44,"Asignación y cuadrante integrado por código; entornos, usuarios y habilitaciones autorizados",RF-NAV-04/05; RN-01--03; modelo UCP y conciliación de alcance 1.4–1.6,2027-01-27,2027-01-29,1.4.1.1.1,Recepción por etapa o control del periodo; no acredita ejecución,RF-NAV-04/05; RN-01--03; modelo UCP y conciliación de alcance 1.4–1.6
1.4.1.1.4.3,Diseño de contratos internos y composición: Movimientos de salida y regreso identificados — lote 1/2,1.4,E1 Desarrollo,Diseño de contratos internos y composición: Movimientos de salida y regreso identificados — lote 1/2,Resultado de la ficha de familia y del paquete original; registro individual por código/ventana,"No duplicar padres, informes, ingeniería ni cobertura; no incluye horas de contraparte ni obras/adquisiciones del cliente","Lote identificado de reglas, contratos, construcción, pruebas o documentación del componente; evidencia versionada, revisión independiente y trazabilidad al flujo UCP. No reconstruye identidad, canales ni adaptadores comunes.",Fernando Guerrero,33,I:33,"Asignación y cuadrante integrado por código; entornos, usuarios y habilitaciones autorizados",RF-NAV-04/05; RN-01--03; modelo UCP y conciliación de alcance 1.4–1.6,2027-01-29,2027-02-01,1.4.1.1.1,Recepción por etapa o control del periodo; no acredita ejecución,RF-NAV-04/05; RN-01--03; modelo UCP y conciliación de alcance 1.4–1.6
1.4.1.1.4.4,Diseño de contratos internos y composición: Movimientos de salida y regreso identificados — lote 2/2,1.4,E1 Desarrollo,Diseño de contratos internos y composición: Movimientos de salida y regreso identificados — lote 2/2,Resultado de la ficha de familia y del paquete original; registro individual por código/ventana,"No duplicar padres, informes, ingeniería ni cobertura; no incluye horas de contraparte ni obras/adquisiciones del cliente","Lote identificado de reglas, contratos, construcción, pruebas o documentación del componente; evidencia versionada, revisión independiente y trazabilidad al flujo UCP. No reconstruye identidad, canales ni adaptadores comunes.",Fernando Guerrero,32,I:32,"Asignación y cuadrante integrado por código; entornos, usuarios y habilitaciones autorizados",RF-NAV-04/05; RN-01--03; modelo UCP y conciliación de alcance 1.4–1.6,2027-01-27,2027-01-29,1.4.1.1.1,Recepción por etapa o control del periodo; no acredita ejecución,RF-NAV-04/05; RN-01--03; modelo UCP y conciliación de alcance 1.4–1.6
1.4.1.1.5.1,Construcción funcional y pruebas unitarias: Movimientos de salida y regreso identificados — lote 1/4,1.4,E1 Desarrollo,Construcción funcional y pruebas unitarias: Movimientos de salida y regreso identificados — lote 1/4,Resultado de la ficha de familia y del paquete original; registro individual por código/ventana,"No duplicar padres, informes, ingeniería ni cobertura; no incluye horas de contraparte ni obras/adquisiciones del cliente","Lote identificado de reglas, contratos, construcción, pruebas o documentación del componente; evidencia versionada, revisión independiente y trazabilidad al flujo UCP. No reconstruye identidad, canales ni adaptadores comunes.",Nikolai Navea,51,V:51,"Asignación y cuadrante integrado por código; entornos, usuarios y habilitaciones autorizados",RF-NAV-04/05; RN-01--03; modelo UCP y conciliación de alcance 1.4–1.6,2027-07-21,2027-07-23,1.4.1.1.2;1.4.1.1.4.1;1.4.1.1.4.2;1.4.1.1.4.3;1.4.1.1.4.4,Recepción por etapa o control del periodo; no acredita ejecución,RF-NAV-04/05; RN-01--03; modelo UCP y conciliación de alcance 1.4–1.6
1.4.1.1.5.2,Construcción funcional y pruebas unitarias: Movimientos de salida y regreso identificados — lote 2/4,1.4,E1 Desarrollo,Construcción funcional y pruebas unitarias: Movimientos de salida y regreso identificados — lote 2/4,Resultado de la ficha de familia y del paquete original; registro individual por código/ventana,"No duplicar padres, informes, ingeniería ni cobertura; no incluye horas de contraparte ni obras/adquisiciones del cliente","Lote identificado de reglas, contratos, construcción, pruebas o documentación del componente; evidencia versionada, revisión independiente y trazabilidad al flujo UCP. No reconstruye identidad, canales ni adaptadores comunes.",Nikolai Navea,51,V:51,"Asignación y cuadrante integrado por código; entornos, usuarios y habilitaciones autorizados",RF-NAV-04/05; RN-01--03; modelo UCP y conciliación de alcance 1.4–1.6,2027-07-23,2027-07-27,1.4.1.1.2;1.4.1.1.4.1;1.4.1.1.4.2;1.4.1.1.4.3;1.4.1.1.4.4,Recepción por etapa o control del periodo; no acredita ejecución,RF-NAV-04/05; RN-01--03; modelo UCP y conciliación de alcance 1.4–1.6
1.4.1.1.5.3,Construcción funcional y pruebas unitarias: Movimientos de salida y regreso identificados — lote 3/4,1.4,E1 Desarrollo,Construcción funcional y pruebas unitarias: Movimientos de salida y regreso identificados — lote 3/4,Resultado de la ficha de familia y del paquete original; registro individual por código/ventana,"No duplicar padres, informes, ingeniería ni cobertura; no incluye horas de contraparte ni obras/adquisiciones del cliente","Lote identificado de reglas, contratos, construcción, pruebas o documentación del componente; evidencia versionada, revisión independiente y trazabilidad al flujo UCP. No reconstruye identidad, canales ni adaptadores comunes.",Nikolai Navea,51,V:51,"Asignación y cuadrante integrado por código; entornos, usuarios y habilitaciones autorizados",RF-NAV-04/05; RN-01--03; modelo UCP y conciliación de alcance 1.4–1.6,2027-07-21,2027-07-23,1.4.1.1.2;1.4.1.1.4.1;1.4.1.1.4.2;1.4.1.1.4.3;1.4.1.1.4.4,Recepción por etapa o control del periodo; no acredita ejecución,RF-NAV-04/05; RN-01--03; modelo UCP y conciliación de alcance 1.4–1.6
1.4.1.1.5.4,Construcción funcional y pruebas unitarias: Movimientos de salida y regreso identificados — lote 4/4,1.4,E1 Desarrollo,Construcción funcional y pruebas unitarias: Movimientos de salida y regreso identificados — lote 4/4,Resultado de la ficha de familia y del paquete original; registro individual por código/ventana,"No duplicar padres, informes, ingeniería ni cobertura; no incluye horas de contraparte ni obras/adquisiciones del cliente","Lote identificado de reglas, contratos, construcción, pruebas o documentación del componente; evidencia versionada, revisión independiente y trazabilidad al flujo UCP. No reconstruye identidad, canales ni adaptadores comunes.",Nikolai Navea,50,V:50,"Asignación y cuadrante integrado por código; entornos, usuarios y habilitaciones autorizados",RF-NAV-04/05; RN-01--03; modelo UCP y conciliación de alcance 1.4–1.6,2027-07-23,2027-07-27,1.4.1.1.2;1.4.1.1.4.1;1.4.1.1.4.2;1.4.1.1.4.3;1.4.1.1.4.4,Recepción por etapa o control del periodo; no acredita ejecución,RF-NAV-04/05; RN-01--03; modelo UCP y conciliación de alcance 1.4–1.6
1.4.1.1.6.1,"Verificación del núcleo, regresión y evidencia: Movimientos de salida y regreso identificados — lote 1/2",1.4,E1 Desarrollo,"Verificación del núcleo, regresión y evidencia: Movimientos de salida y regreso identificados — lote 1/2",Resultado de la ficha de familia y del paquete original; registro individual por código/ventana,"No duplicar padres, informes, ingeniería ni cobertura; no incluye horas de contraparte ni obras/adquisiciones del cliente","Lote identificado de reglas, contratos, construcción, pruebas o documentación del componente; evidencia versionada, revisión independiente y trazabilidad al flujo UCP. No reconstruye identidad, canales ni adaptadores comunes.",Davor Serey,49,Q:49,"Asignación y cuadrante integrado por código; entornos, usuarios y habilitaciones autorizados",RF-NAV-04/05; RN-01--03; modelo UCP y conciliación de alcance 1.4–1.6,2027-07-30,2027-08-02,1.4.1.1.3;1.4.1.1.5.1;1.4.1.1.5.2;1.4.1.1.5.3;1.4.1.1.5.4,Recepción por etapa o control del periodo; no acredita ejecución,RF-NAV-04/05; RN-01--03; modelo UCP y conciliación de alcance 1.4–1.6
1.4.1.1.6.2,"Verificación del núcleo, regresión y evidencia: Movimientos de salida y regreso identificados — lote 2/2",1.4,E1 Desarrollo,"Verificación del núcleo, regresión y evidencia: Movimientos de salida y regreso identificados — lote 2/2",Resultado de la ficha de familia y del paquete original; registro individual por código/ventana,"No duplicar padres, informes, ingeniería ni cobertura; no incluye horas de contraparte ni obras/adquisiciones del cliente","Lote identificado de reglas, contratos, construcción, pruebas o documentación del componente; evidencia versionada, revisión independiente y trazabilidad al flujo UCP. No reconstruye identidad, canales ni adaptadores comunes.",Davor Serey,49,Q:49,"Asignación y cuadrante integrado por código; entornos, usuarios y habilitaciones autorizados",RF-NAV-04/05; RN-01--03; modelo UCP y conciliación de alcance 1.4–1.6,2027-07-30,2027-08-02,1.4.1.1.3;1.4.1.1.5.1;1.4.1.1.5.2;1.4.1.1.5.3;1.4.1.1.5.4,Recepción por etapa o control del periodo; no acredita ejecución,RF-NAV-04/05; RN-01--03; modelo UCP y conciliación de alcance 1.4–1.6
1.4.1.1.7.1,Coordinación y documentación del núcleo: Movimientos de salida y regreso identificados — lote 1/2,1.4,E1 Desarrollo,Coordinación y documentación del núcleo: Movimientos de salida y regreso identificados — lote 1/2,Resultado de la ficha de familia y del paquete original; registro individual por código/ventana,"No duplicar padres, informes, ingeniería ni cobertura; no incluye horas de contraparte ni obras/adquisiciones del cliente","Lote identificado de reglas, contratos, construcción, pruebas o documentación del componente; evidencia versionada, revisión independiente y trazabilidad al flujo UCP. No reconstruye identidad, canales ni adaptadores comunes.",Ignacio Silva,53,J:53,"Asignación y cuadrante integrado por código; entornos, usuarios y habilitaciones autorizados",RF-NAV-04/05; RN-01--03; modelo UCP y conciliación de alcance 1.4–1.6,2027-08-02,2027-08-04,1.4.1.1.6.1;1.4.1.1.6.2,Recepción por etapa o control del periodo; no acredita ejecución,RF-NAV-04/05; RN-01--03; modelo UCP y conciliación de alcance 1.4–1.6
1.4.1.1.7.2,Coordinación y documentación del núcleo: Movimientos de salida y regreso identificados — lote 2/2,1.4,E1 Desarrollo,Coordinación y documentación del núcleo: Movimientos de salida y regreso identificados — lote 2/2,Resultado de la ficha de familia y del paquete original; registro individual por código/ventana,"No duplicar padres, informes, ingeniería ni cobertura; no incluye horas de contraparte ni obras/adquisiciones del cliente","Lote identificado de reglas, contratos, construcción, pruebas o documentación del componente; evidencia versionada, revisión independiente y trazabilidad al flujo UCP. No reconstruye identidad, canales ni adaptadores comunes.",Ignacio Silva,53,J:53,"Asignación y cuadrante integrado por código; entornos, usuarios y habilitaciones autorizados",RF-NAV-04/05; RN-01--03; modelo UCP y conciliación de alcance 1.4–1.6,2027-08-04,2027-08-06,1.4.1.1.6.1;1.4.1.1.6.2,Recepción por etapa o control del periodo; no acredita ejecución,RF-NAV-04/05; RN-01--03; modelo UCP y conciliación de alcance 1.4–1.6
1.4.1.2.4.1,"Análisis de reglas, excepciones y protocolo: Planes voluntarios y discrepancias operacionales — lote 1/1",1.4,E1 Desarrollo,"Análisis de reglas, excepciones y protocolo: Planes voluntarios y discrepancias operacionales — lote 1/1",Resultado de la ficha de familia y del paquete original; registro individual por código/ventana,"No duplicar padres, informes, ingeniería ni cobertura; no incluye horas de contraparte ni obras/adquisiciones del cliente","Lote identificado de reglas, contratos, construcción, pruebas o documentación del componente; evidencia versionada, revisión independiente y trazabilidad al flujo UCP. No reconstruye identidad, canales ni adaptadores comunes.",Ulysses Barreto,16,A:16,"Asignación y cuadrante integrado por código; entornos, usuarios y habilitaciones autorizados",RF-AUT-08; RF-NAV-06; RN-04/05; modelo UCP y conciliación de alcance 1.4–1.6,2027-01-28,2027-02-02,1.4.1.2.1,Recepción por etapa o control del periodo; no acredita ejecución,RF-AUT-08; RF-NAV-06; RN-04/05; modelo UCP y conciliación de alcance 1.4–1.6
1.4.1.2.4.2,Diseño de datos y restricciones del núcleo: Planes voluntarios y discrepancias operacionales — lote 1/1,1.4,E1 Desarrollo,Diseño de datos y restricciones del núcleo: Planes voluntarios y discrepancias operacionales — lote 1/1,Resultado de la ficha de familia y del paquete original; registro individual por código/ventana,"No duplicar padres, informes, ingeniería ni cobertura; no incluye horas de contraparte ni obras/adquisiciones del cliente","Lote identificado de reglas, contratos, construcción, pruebas o documentación del componente; evidencia versionada, revisión independiente y trazabilidad al flujo UCP. No reconstruye identidad, canales ni adaptadores comunes.",Nicolás Torfan,16,D:16,"Asignación y cuadrante integrado por código; entornos, usuarios y habilitaciones autorizados",RF-AUT-08; RF-NAV-06; RN-04/05; modelo UCP y conciliación de alcance 1.4–1.6,2027-01-29,2027-02-02,1.4.1.2.1,Recepción por etapa o control del periodo; no acredita ejecución,RF-AUT-08; RF-NAV-06; RN-04/05; modelo UCP y conciliación de alcance 1.4–1.6
1.4.1.2.4.3,Diseño de contratos internos y composición: Planes voluntarios y discrepancias operacionales — lote 1/1,1.4,E1 Desarrollo,Diseño de contratos internos y composición: Planes voluntarios y discrepancias operacionales — lote 1/1,Resultado de la ficha de familia y del paquete original; registro individual por código/ventana,"No duplicar padres, informes, ingeniería ni cobertura; no incluye horas de contraparte ni obras/adquisiciones del cliente","Lote identificado de reglas, contratos, construcción, pruebas o documentación del componente; evidencia versionada, revisión independiente y trazabilidad al flujo UCP. No reconstruye identidad, canales ni adaptadores comunes.",Fernando Guerrero,23,I:23,"Asignación y cuadrante integrado por código; entornos, usuarios y habilitaciones autorizados",RF-AUT-08; RF-NAV-06; RN-04/05; modelo UCP y conciliación de alcance 1.4–1.6,2027-02-01,2027-02-03,1.4.1.2.1,Recepción por etapa o control del periodo; no acredita ejecución,RF-AUT-08; RF-NAV-06; RN-04/05; modelo UCP y conciliación de alcance 1.4–1.6
1.4.1.2.5.1,Construcción funcional y pruebas unitarias: Planes voluntarios y discrepancias operacionales — lote 1/1,1.4,E1 Desarrollo,Construcción funcional y pruebas unitarias: Planes voluntarios y discrepancias operacionales — lote 1/1,Resultado de la ficha de familia y del paquete original; registro individual por código/ventana,"No duplicar padres, informes, ingeniería ni cobertura; no incluye horas de contraparte ni obras/adquisiciones del cliente","Lote identificado de reglas, contratos, construcción, pruebas o documentación del componente; evidencia versionada, revisión independiente y trazabilidad al flujo UCP. No reconstruye identidad, canales ni adaptadores comunes.",Nikolai Navea,62,V:62,"Asignación y cuadrante integrado por código; entornos, usuarios y habilitaciones autorizados",RF-AUT-08; RF-NAV-06; RN-04/05; modelo UCP y conciliación de alcance 1.4–1.6,2027-07-21,2027-07-23,1.4.1.2.2;1.4.1.2.4.1;1.4.1.2.4.2;1.4.1.2.4.3,Recepción por etapa o control del periodo; no acredita ejecución,RF-AUT-08; RF-NAV-06; RN-04/05; modelo UCP y conciliación de alcance 1.4–1.6
1.4.1.2.6.1,"Verificación del núcleo, regresión y evidencia: Planes voluntarios y discrepancias operacionales — lote 1/1",1.4,E1 Desarrollo,"Verificación del núcleo, regresión y evidencia: Planes voluntarios y discrepancias operacionales — lote 1/1",Resultado de la ficha de familia y del paquete original; registro individual por código/ventana,"No duplicar padres, informes, ingeniería ni cobertura; no incluye horas de contraparte ni obras/adquisiciones del cliente","Lote identificado de reglas, contratos, construcción, pruebas o documentación del componente; evidencia versionada, revisión independiente y trazabilidad al flujo UCP. No reconstruye identidad, canales ni adaptadores comunes.",Davor Serey,45,Q:45,"Asignación y cuadrante integrado por código; entornos, usuarios y habilitaciones autorizados",RF-AUT-08; RF-NAV-06; RN-04/05; modelo UCP y conciliación de alcance 1.4–1.6,2027-07-28,2027-07-30,1.4.1.2.3;1.4.1.2.5.1,Recepción por etapa o control del periodo; no acredita ejecución,RF-AUT-08; RF-NAV-06; RN-04/05; modelo UCP y conciliación de alcance 1.4–1.6
1.4.1.2.7.1,Coordinación y documentación del núcleo: Planes voluntarios y discrepancias operacionales — lote 1/1,1.4,E1 Desarrollo,Coordinación y documentación del núcleo: Planes voluntarios y discrepancias operacionales — lote 1/1,Resultado de la ficha de familia y del paquete original; registro individual por código/ventana,"No duplicar padres, informes, ingeniería ni cobertura; no incluye horas de contraparte ni obras/adquisiciones del cliente","Lote identificado de reglas, contratos, construcción, pruebas o documentación del componente; evidencia versionada, revisión independiente y trazabilidad al flujo UCP. No reconstruye identidad, canales ni adaptadores comunes.",Ignacio Silva,53,J:53,"Asignación y cuadrante integrado por código; entornos, usuarios y habilitaciones autorizados",RF-AUT-08; RF-NAV-06; RN-04/05; modelo UCP y conciliación de alcance 1.4–1.6,2027-07-30,2027-08-03,1.4.1.2.6.1,Recepción por etapa o control del periodo; no acredita ejecución,RF-AUT-08; RF-NAV-06; RN-04/05; modelo UCP y conciliación de alcance 1.4–1.6
1.4.1.3.4.1,"Análisis de reglas, excepciones y protocolo: Atención y escalamiento de planes vencidos — lote 1/1",1.4,E1 Desarrollo,"Análisis de reglas, excepciones y protocolo: Atención y escalamiento de planes vencidos — lote 1/1",Resultado de la ficha de familia y del paquete original; registro individual por código/ventana,"No duplicar padres, informes, ingeniería ni cobertura; no incluye horas de contraparte ni obras/adquisiciones del cliente","Lote identificado de reglas, contratos, construcción, pruebas o documentación del componente; evidencia versionada, revisión independiente y trazabilidad al flujo UCP. No reconstruye identidad, canales ni adaptadores comunes.",Ulysses Barreto,16,A:16,"Asignación y cuadrante integrado por código; entornos, usuarios y habilitaciones autorizados",RF-NAV-06; DEC-21; modelo UCP y conciliación de alcance 1.4–1.6,2027-01-28,2027-02-02,1.4.1.3.1,Recepción por etapa o control del periodo; no acredita ejecución,RF-NAV-06; DEC-21; modelo UCP y conciliación de alcance 1.4–1.6
1.4.1.3.4.2,Diseño de datos y restricciones del núcleo: Atención y escalamiento de planes vencidos — lote 1/1,1.4,E1 Desarrollo,Diseño de datos y restricciones del núcleo: Atención y escalamiento de planes vencidos — lote 1/1,Resultado de la ficha de familia y del paquete original; registro individual por código/ventana,"No duplicar padres, informes, ingeniería ni cobertura; no incluye horas de contraparte ni obras/adquisiciones del cliente","Lote identificado de reglas, contratos, construcción, pruebas o documentación del componente; evidencia versionada, revisión independiente y trazabilidad al flujo UCP. No reconstruye identidad, canales ni adaptadores comunes.",Nicolás Torfan,16,D:16,"Asignación y cuadrante integrado por código; entornos, usuarios y habilitaciones autorizados",RF-NAV-06; DEC-21; modelo UCP y conciliación de alcance 1.4–1.6,2027-01-29,2027-02-02,1.4.1.3.1,Recepción por etapa o control del periodo; no acredita ejecución,RF-NAV-06; DEC-21; modelo UCP y conciliación de alcance 1.4–1.6
1.4.1.3.4.3,Diseño de contratos internos y composición: Atención y escalamiento de planes vencidos — lote 1/1,1.4,E1 Desarrollo,Diseño de contratos internos y composición: Atención y escalamiento de planes vencidos — lote 1/1,Resultado de la ficha de familia y del paquete original; registro individual por código/ventana,"No duplicar padres, informes, ingeniería ni cobertura; no incluye horas de contraparte ni obras/adquisiciones del cliente","Lote identificado de reglas, contratos, construcción, pruebas o documentación del componente; evidencia versionada, revisión independiente y trazabilidad al flujo UCP. No reconstruye identidad, canales ni adaptadores comunes.",Fernando Guerrero,23,I:23,"Asignación y cuadrante integrado por código; entornos, usuarios y habilitaciones autorizados",RF-NAV-06; DEC-21; modelo UCP y conciliación de alcance 1.4–1.6,2027-02-03,2027-02-05,1.4.1.3.1,Recepción por etapa o control del periodo; no acredita ejecución,RF-NAV-06; DEC-21; modelo UCP y conciliación de alcance 1.4–1.6
1.4.1.3.5.1,Construcción funcional y pruebas unitarias: Atención y escalamiento de planes vencidos — lote 1/1,1.4,E1 Desarrollo,Construcción funcional y pruebas unitarias: Atención y escalamiento de planes vencidos — lote 1/1,Resultado de la ficha de familia y del paquete original; registro individual por código/ventana,"No duplicar padres, informes, ingeniería ni cobertura; no incluye horas de contraparte ni obras/adquisiciones del cliente","Lote identificado de reglas, contratos, construcción, pruebas o documentación del componente; evidencia versionada, revisión independiente y trazabilidad al flujo UCP. No reconstruye identidad, canales ni adaptadores comunes.",Nikolai Navea,61,V:61,"Asignación y cuadrante integrado por código; entornos, usuarios y habilitaciones autorizados",RF-NAV-06; DEC-21; modelo UCP y conciliación de alcance 1.4–1.6,2027-07-23,2027-07-28,1.4.1.3.2;1.4.1.3.4.1;1.4.1.3.4.2;1.4.1.3.4.3,Recepción por etapa o control del periodo; no acredita ejecución,RF-NAV-06; DEC-21; modelo UCP y conciliación de alcance 1.4–1.6
1.4.1.3.6.1,"Verificación del núcleo, regresión y evidencia: Atención y escalamiento de planes vencidos — lote 1/1",1.4,E1 Desarrollo,"Verificación del núcleo, regresión y evidencia: Atención y escalamiento de planes vencidos — lote 1/1",Resultado de la ficha de familia y del paquete original; registro individual por código/ventana,"No duplicar padres, informes, ingeniería ni cobertura; no incluye horas de contraparte ni obras/adquisiciones del cliente","Lote identificado de reglas, contratos, construcción, pruebas o documentación del componente; evidencia versionada, revisión independiente y trazabilidad al flujo UCP. No reconstruye identidad, canales ni adaptadores comunes.",Davor Serey,45,Q:45,"Asignación y cuadrante integrado por código; entornos, usuarios y habilitaciones autorizados",RF-NAV-06; DEC-21; modelo UCP y conciliación de alcance 1.4–1.6,2027-08-03,2027-08-05,1.4.1.3.3;1.4.1.3.5.1,Recepción por etapa o control del periodo; no acredita ejecución,RF-NAV-06; DEC-21; modelo UCP y conciliación de alcance 1.4–1.6
1.4.1.3.7.1,Coordinación y documentación del núcleo: Atención y escalamiento de planes vencidos — lote 1/1,1.4,E1 Desarrollo,Coordinación y documentación del núcleo: Atención y escalamiento de planes vencidos — lote 1/1,Resultado de la ficha de familia y del paquete original; registro individual por código/ventana,"No duplicar padres, informes, ingeniería ni cobertura; no incluye horas de contraparte ni obras/adquisiciones del cliente","Lote identificado de reglas, contratos, construcción, pruebas o documentación del componente; evidencia versionada, revisión independiente y trazabilidad al flujo UCP. No reconstruye identidad, canales ni adaptadores comunes.",Ignacio Silva,53,J:53,"Asignación y cuadrante integrado por código; entornos, usuarios y habilitaciones autorizados",RF-NAV-06; DEC-21; modelo UCP y conciliación de alcance 1.4–1.6,2027-08-05,2027-08-09,1.4.1.3.6.1,Recepción por etapa o control del periodo; no acredita ejecución,RF-NAV-06; DEC-21; modelo UCP y conciliación de alcance 1.4–1.6
1.4.1.4.4.1,"Análisis de reglas, excepciones y protocolo: Autorización operacional de amarra y compatibilidad — lote 1/1",1.4,E1 Desarrollo,"Análisis de reglas, excepciones y protocolo: Autorización operacional de amarra y compatibilidad — lote 1/1",Resultado de la ficha de familia y del paquete original; registro individual por código/ventana,"No duplicar padres, informes, ingeniería ni cobertura; no incluye horas de contraparte ni obras/adquisiciones del cliente","Lote identificado de reglas, contratos, construcción, pruebas o documentación del componente; evidencia versionada, revisión independiente y trazabilidad al flujo UCP. No reconstruye identidad, canales ni adaptadores comunes.",Ulysses Barreto,16,A:16,"Asignación y cuadrante integrado por código; entornos, usuarios y habilitaciones autorizados",AMA; DEC-01/05; SD5 autoridad local; modelo UCP y conciliación de alcance 1.4–1.6,2027-01-27,2027-01-29,1.4.1.4.1,Recepción por etapa o control del periodo; no acredita ejecución,AMA; DEC-01/05; SD5 autoridad local; modelo UCP y conciliación de alcance 1.4–1.6
1.4.1.4.4.2,Diseño de datos y restricciones del núcleo: Autorización operacional de amarra y compatibilidad — lote 1/1,1.4,E1 Desarrollo,Diseño de datos y restricciones del núcleo: Autorización operacional de amarra y compatibilidad — lote 1/1,Resultado de la ficha de familia y del paquete original; registro individual por código/ventana,"No duplicar padres, informes, ingeniería ni cobertura; no incluye horas de contraparte ni obras/adquisiciones del cliente","Lote identificado de reglas, contratos, construcción, pruebas o documentación del componente; evidencia versionada, revisión independiente y trazabilidad al flujo UCP. No reconstruye identidad, canales ni adaptadores comunes.",Nicolás Torfan,16,D:16,"Asignación y cuadrante integrado por código; entornos, usuarios y habilitaciones autorizados",AMA; DEC-01/05; SD5 autoridad local; modelo UCP y conciliación de alcance 1.4–1.6,2027-01-29,2027-02-02,1.4.1.4.1,Recepción por etapa o control del periodo; no acredita ejecución,AMA; DEC-01/05; SD5 autoridad local; modelo UCP y conciliación de alcance 1.4–1.6
1.4.1.4.4.3,Diseño de contratos internos y composición: Autorización operacional de amarra y compatibilidad — lote 1/1,1.4,E1 Desarrollo,Diseño de contratos internos y composición: Autorización operacional de amarra y compatibilidad — lote 1/1,Resultado de la ficha de familia y del paquete original; registro individual por código/ventana,"No duplicar padres, informes, ingeniería ni cobertura; no incluye horas de contraparte ni obras/adquisiciones del cliente","Lote identificado de reglas, contratos, construcción, pruebas o documentación del componente; evidencia versionada, revisión independiente y trazabilidad al flujo UCP. No reconstruye identidad, canales ni adaptadores comunes.",Fernando Guerrero,23,I:23,"Asignación y cuadrante integrado por código; entornos, usuarios y habilitaciones autorizados",AMA; DEC-01/05; SD5 autoridad local; modelo UCP y conciliación de alcance 1.4–1.6,2027-02-05,2027-02-08,1.4.1.4.1,Recepción por etapa o control del periodo; no acredita ejecución,AMA; DEC-01/05; SD5 autoridad local; modelo UCP y conciliación de alcance 1.4–1.6
1.4.1.4.5.1,Construcción funcional y pruebas unitarias: Autorización operacional de amarra y compatibilidad — lote 1/1,1.4,E1 Desarrollo,Construcción funcional y pruebas unitarias: Autorización operacional de amarra y compatibilidad — lote 1/1,Resultado de la ficha de familia y del paquete original; registro individual por código/ventana,"No duplicar padres, informes, ingeniería ni cobertura; no incluye horas de contraparte ni obras/adquisiciones del cliente","Lote identificado de reglas, contratos, construcción, pruebas o documentación del componente; evidencia versionada, revisión independiente y trazabilidad al flujo UCP. No reconstruye identidad, canales ni adaptadores comunes.",Nikolai Navea,61,V:61,"Asignación y cuadrante integrado por código; entornos, usuarios y habilitaciones autorizados",AMA; DEC-01/05; SD5 autoridad local; modelo UCP y conciliación de alcance 1.4–1.6,2027-07-21,2027-07-23,1.4.1.4.2;1.4.1.4.4.1;1.4.1.4.4.2;1.4.1.4.4.3,Recepción por etapa o control del periodo; no acredita ejecución,AMA; DEC-01/05; SD5 autoridad local; modelo UCP y conciliación de alcance 1.4–1.6
1.4.1.4.6.1,"Verificación del núcleo, regresión y evidencia: Autorización operacional de amarra y compatibilidad — lote 1/1",1.4,E1 Desarrollo,"Verificación del núcleo, regresión y evidencia: Autorización operacional de amarra y compatibilidad — lote 1/1",Resultado de la ficha de familia y del paquete original; registro individual por código/ventana,"No duplicar padres, informes, ingeniería ni cobertura; no incluye horas de contraparte ni obras/adquisiciones del cliente","Lote identificado de reglas, contratos, construcción, pruebas o documentación del componente; evidencia versionada, revisión independiente y trazabilidad al flujo UCP. No reconstruye identidad, canales ni adaptadores comunes.",Davor Serey,45,Q:45,"Asignación y cuadrante integrado por código; entornos, usuarios y habilitaciones autorizados",AMA; DEC-01/05; SD5 autoridad local; modelo UCP y conciliación de alcance 1.4–1.6,2027-08-03,2027-08-05,1.4.1.4.3;1.4.1.4.5.1,Recepción por etapa o control del periodo; no acredita ejecución,AMA; DEC-01/05; SD5 autoridad local; modelo UCP y conciliación de alcance 1.4–1.6
1.4.1.4.7.1,Coordinación y documentación del núcleo: Autorización operacional de amarra y compatibilidad — lote 1/1,1.4,E1 Desarrollo,Coordinación y documentación del núcleo: Autorización operacional de amarra y compatibilidad — lote 1/1,Resultado de la ficha de familia y del paquete original; registro individual por código/ventana,"No duplicar padres, informes, ingeniería ni cobertura; no incluye horas de contraparte ni obras/adquisiciones del cliente","Lote identificado de reglas, contratos, construcción, pruebas o documentación del componente; evidencia versionada, revisión independiente y trazabilidad al flujo UCP. No reconstruye identidad, canales ni adaptadores comunes.",Ignacio Silva,53,J:53,"Asignación y cuadrante integrado por código; entornos, usuarios y habilitaciones autorizados",AMA; DEC-01/05; SD5 autoridad local; modelo UCP y conciliación de alcance 1.4–1.6,2027-08-06,2027-08-10,1.4.1.4.6.1,Recepción por etapa o control del periodo; no acredita ejecución,AMA; DEC-01/05; SD5 autoridad local; modelo UCP y conciliación de alcance 1.4–1.6
1.4.2.1.4.1,"Análisis de reglas, excepciones y protocolo: Clases, nóminas y participación por intervalo — lote 1/1",1.4,E1 Desarrollo,"Análisis de reglas, excepciones y protocolo: Clases, nóminas y participación por intervalo — lote 1/1",Resultado de la ficha de familia y del paquete original; registro individual por código/ventana,"No duplicar padres, informes, ingeniería ni cobertura; no incluye horas de contraparte ni obras/adquisiciones del cliente","Lote identificado de reglas, contratos, construcción, pruebas o documentación del componente; evidencia versionada, revisión independiente y trazabilidad al flujo UCP. No reconstruye identidad, canales ni adaptadores comunes.",Ulysses Barreto,51,A:51,"Asignación y cuadrante integrado por código; entornos, usuarios y habilitaciones autorizados",RF-ESC-04/06/07; RN-10--13; modelo UCP y conciliación de alcance 1.4–1.6,2027-01-29,2027-02-02,1.4.2.1.1,Recepción por etapa o control del periodo; no acredita ejecución,RF-ESC-04/06/07; RN-10--13; modelo UCP y conciliación de alcance 1.4–1.6
1.4.2.1.4.2,"Diseño de datos y restricciones del núcleo: Clases, nóminas y participación por intervalo — lote 1/1",1.4,E1 Desarrollo,"Diseño de datos y restricciones del núcleo: Clases, nóminas y participación por intervalo — lote 1/1",Resultado de la ficha de familia y del paquete original; registro individual por código/ventana,"No duplicar padres, informes, ingeniería ni cobertura; no incluye horas de contraparte ni obras/adquisiciones del cliente","Lote identificado de reglas, contratos, construcción, pruebas o documentación del componente; evidencia versionada, revisión independiente y trazabilidad al flujo UCP. No reconstruye identidad, canales ni adaptadores comunes.",Nicolás Torfan,44,D:44,"Asignación y cuadrante integrado por código; entornos, usuarios y habilitaciones autorizados",RF-ESC-04/06/07; RN-10--13; modelo UCP y conciliación de alcance 1.4–1.6,2027-02-02,2027-02-04,1.4.2.1.1,Recepción por etapa o control del periodo; no acredita ejecución,RF-ESC-04/06/07; RN-10--13; modelo UCP y conciliación de alcance 1.4–1.6
1.4.2.1.4.3,"Diseño de contratos internos y composición: Clases, nóminas y participación por intervalo — lote 1/2",1.4,E1 Desarrollo,"Diseño de contratos internos y composición: Clases, nóminas y participación por intervalo — lote 1/2",Resultado de la ficha de familia y del paquete original; registro individual por código/ventana,"No duplicar padres, informes, ingeniería ni cobertura; no incluye horas de contraparte ni obras/adquisiciones del cliente","Lote identificado de reglas, contratos, construcción, pruebas o documentación del componente; evidencia versionada, revisión independiente y trazabilidad al flujo UCP. No reconstruye identidad, canales ni adaptadores comunes.",Fernando Guerrero,33,I:33,"Asignación y cuadrante integrado por código; entornos, usuarios y habilitaciones autorizados",RF-ESC-04/06/07; RN-10--13; modelo UCP y conciliación de alcance 1.4–1.6,2027-02-01,2027-02-03,1.4.2.1.1,Recepción por etapa o control del periodo; no acredita ejecución,RF-ESC-04/06/07; RN-10--13; modelo UCP y conciliación de alcance 1.4–1.6
1.4.2.1.4.4,"Diseño de contratos internos y composición: Clases, nóminas y participación por intervalo — lote 2/2",1.4,E1 Desarrollo,"Diseño de contratos internos y composición: Clases, nóminas y participación por intervalo — lote 2/2",Resultado de la ficha de familia y del paquete original; registro individual por código/ventana,"No duplicar padres, informes, ingeniería ni cobertura; no incluye horas de contraparte ni obras/adquisiciones del cliente","Lote identificado de reglas, contratos, construcción, pruebas o documentación del componente; evidencia versionada, revisión independiente y trazabilidad al flujo UCP. No reconstruye identidad, canales ni adaptadores comunes.",Fernando Guerrero,32,I:32,"Asignación y cuadrante integrado por código; entornos, usuarios y habilitaciones autorizados",RF-ESC-04/06/07; RN-10--13; modelo UCP y conciliación de alcance 1.4–1.6,2027-02-03,2027-02-05,1.4.2.1.1,Recepción por etapa o control del periodo; no acredita ejecución,RF-ESC-04/06/07; RN-10--13; modelo UCP y conciliación de alcance 1.4–1.6
1.4.2.1.5.1,"Construcción funcional y pruebas unitarias: Clases, nóminas y participación por intervalo — lote 1/4",1.4,E1 Desarrollo,"Construcción funcional y pruebas unitarias: Clases, nóminas y participación por intervalo — lote 1/4",Resultado de la ficha de familia y del paquete original; registro individual por código/ventana,"No duplicar padres, informes, ingeniería ni cobertura; no incluye horas de contraparte ni obras/adquisiciones del cliente","Lote identificado de reglas, contratos, construcción, pruebas o documentación del componente; evidencia versionada, revisión independiente y trazabilidad al flujo UCP. No reconstruye identidad, canales ni adaptadores comunes.",Nikolai Navea,51,V:51,"Asignación y cuadrante integrado por código; entornos, usuarios y habilitaciones autorizados",RF-ESC-04/06/07; RN-10--13; modelo UCP y conciliación de alcance 1.4–1.6,2027-07-23,2027-07-27,1.4.2.1.2;1.4.2.1.4.1;1.4.2.1.4.2;1.4.2.1.4.3;1.4.2.1.4.4,Recepción por etapa o control del periodo; no acredita ejecución,RF-ESC-04/06/07; RN-10--13; modelo UCP y conciliación de alcance 1.4–1.6
1.4.2.1.5.2,"Construcción funcional y pruebas unitarias: Clases, nóminas y participación por intervalo — lote 2/4",1.4,E1 Desarrollo,"Construcción funcional y pruebas unitarias: Clases, nóminas y participación por intervalo — lote 2/4",Resultado de la ficha de familia y del paquete original; registro individual por código/ventana,"No duplicar padres, informes, ingeniería ni cobertura; no incluye horas de contraparte ni obras/adquisiciones del cliente","Lote identificado de reglas, contratos, construcción, pruebas o documentación del componente; evidencia versionada, revisión independiente y trazabilidad al flujo UCP. No reconstruye identidad, canales ni adaptadores comunes.",Nikolai Navea,51,V:51,"Asignación y cuadrante integrado por código; entornos, usuarios y habilitaciones autorizados",RF-ESC-04/06/07; RN-10--13; modelo UCP y conciliación de alcance 1.4–1.6,2027-07-21,2027-07-23,1.4.2.1.2;1.4.2.1.4.1;1.4.2.1.4.2;1.4.2.1.4.3;1.4.2.1.4.4,Recepción por etapa o control del periodo; no acredita ejecución,RF-ESC-04/06/07; RN-10--13; modelo UCP y conciliación de alcance 1.4–1.6
1.4.2.1.5.3,"Construcción funcional y pruebas unitarias: Clases, nóminas y participación por intervalo — lote 3/4",1.4,E1 Desarrollo,"Construcción funcional y pruebas unitarias: Clases, nóminas y participación por intervalo — lote 3/4",Resultado de la ficha de familia y del paquete original; registro individual por código/ventana,"No duplicar padres, informes, ingeniería ni cobertura; no incluye horas de contraparte ni obras/adquisiciones del cliente","Lote identificado de reglas, contratos, construcción, pruebas o documentación del componente; evidencia versionada, revisión independiente y trazabilidad al flujo UCP. No reconstruye identidad, canales ni adaptadores comunes.",Nikolai Navea,51,V:51,"Asignación y cuadrante integrado por código; entornos, usuarios y habilitaciones autorizados",RF-ESC-04/06/07; RN-10--13; modelo UCP y conciliación de alcance 1.4–1.6,2027-07-23,2027-07-27,1.4.2.1.2;1.4.2.1.4.1;1.4.2.1.4.2;1.4.2.1.4.3;1.4.2.1.4.4,Recepción por etapa o control del periodo; no acredita ejecución,RF-ESC-04/06/07; RN-10--13; modelo UCP y conciliación de alcance 1.4–1.6
1.4.2.1.5.4,"Construcción funcional y pruebas unitarias: Clases, nóminas y participación por intervalo — lote 4/4",1.4,E1 Desarrollo,"Construcción funcional y pruebas unitarias: Clases, nóminas y participación por intervalo — lote 4/4",Resultado de la ficha de familia y del paquete original; registro individual por código/ventana,"No duplicar padres, informes, ingeniería ni cobertura; no incluye horas de contraparte ni obras/adquisiciones del cliente","Lote identificado de reglas, contratos, construcción, pruebas o documentación del componente; evidencia versionada, revisión independiente y trazabilidad al flujo UCP. No reconstruye identidad, canales ni adaptadores comunes.",Nikolai Navea,50,V:50,"Asignación y cuadrante integrado por código; entornos, usuarios y habilitaciones autorizados",RF-ESC-04/06/07; RN-10--13; modelo UCP y conciliación de alcance 1.4–1.6,2027-07-27,2027-07-29,1.4.2.1.2;1.4.2.1.4.1;1.4.2.1.4.2;1.4.2.1.4.3;1.4.2.1.4.4,Recepción por etapa o control del periodo; no acredita ejecución,RF-ESC-04/06/07; RN-10--13; modelo UCP y conciliación de alcance 1.4–1.6
1.4.2.1.6.1,"Verificación del núcleo, regresión y evidencia: Clases, nóminas y participación por intervalo — lote 1/2",1.4,E1 Desarrollo,"Verificación del núcleo, regresión y evidencia: Clases, nóminas y participación por intervalo — lote 1/2",Resultado de la ficha de familia y del paquete original; registro individual por código/ventana,"No duplicar padres, informes, ingeniería ni cobertura; no incluye horas de contraparte ni obras/adquisiciones del cliente","Lote identificado de reglas, contratos, construcción, pruebas o documentación del componente; evidencia versionada, revisión independiente y trazabilidad al flujo UCP. No reconstruye identidad, canales ni adaptadores comunes.",Davor Serey,49,Q:49,"Asignación y cuadrante integrado por código; entornos, usuarios y habilitaciones autorizados",RF-ESC-04/06/07; RN-10--13; modelo UCP y conciliación de alcance 1.4–1.6,2027-08-05,2027-08-09,1.4.2.1.3;1.4.2.1.5.1;1.4.2.1.5.2;1.4.2.1.5.3;1.4.2.1.5.4,Recepción por etapa o control del periodo; no acredita ejecución,RF-ESC-04/06/07; RN-10--13; modelo UCP y conciliación de alcance 1.4–1.6
1.4.2.1.6.2,"Verificación del núcleo, regresión y evidencia: Clases, nóminas y participación por intervalo — lote 2/2",1.4,E1 Desarrollo,"Verificación del núcleo, regresión y evidencia: Clases, nóminas y participación por intervalo — lote 2/2",Resultado de la ficha de familia y del paquete original; registro individual por código/ventana,"No duplicar padres, informes, ingeniería ni cobertura; no incluye horas de contraparte ni obras/adquisiciones del cliente","Lote identificado de reglas, contratos, construcción, pruebas o documentación del componente; evidencia versionada, revisión independiente y trazabilidad al flujo UCP. No reconstruye identidad, canales ni adaptadores comunes.",Davor Serey,49,Q:49,"Asignación y cuadrante integrado por código; entornos, usuarios y habilitaciones autorizados",RF-ESC-04/06/07; RN-10--13; modelo UCP y conciliación de alcance 1.4–1.6,2027-08-05,2027-08-09,1.4.2.1.3;1.4.2.1.5.1;1.4.2.1.5.2;1.4.2.1.5.3;1.4.2.1.5.4,Recepción por etapa o control del periodo; no acredita ejecución,RF-ESC-04/06/07; RN-10--13; modelo UCP y conciliación de alcance 1.4–1.6
1.4.2.1.7.1,"Coordinación y documentación del núcleo: Clases, nóminas y participación por intervalo — lote 1/2",1.4,E1 Desarrollo,"Coordinación y documentación del núcleo: Clases, nóminas y participación por intervalo — lote 1/2",Resultado de la ficha de familia y del paquete original; registro individual por código/ventana,"No duplicar padres, informes, ingeniería ni cobertura; no incluye horas de contraparte ni obras/adquisiciones del cliente","Lote identificado de reglas, contratos, construcción, pruebas o documentación del componente; evidencia versionada, revisión independiente y trazabilidad al flujo UCP. No reconstruye identidad, canales ni adaptadores comunes.",Ignacio Silva,53,J:53,"Asignación y cuadrante integrado por código; entornos, usuarios y habilitaciones autorizados",RF-ESC-04/06/07; RN-10--13; modelo UCP y conciliación de alcance 1.4–1.6,2027-08-09,2027-08-11,1.4.2.1.6.1;1.4.2.1.6.2,Recepción por etapa o control del periodo; no acredita ejecución,RF-ESC-04/06/07; RN-10--13; modelo UCP y conciliación de alcance 1.4–1.6
1.4.2.1.7.2,"Coordinación y documentación del núcleo: Clases, nóminas y participación por intervalo — lote 2/2",1.4,E1 Desarrollo,"Coordinación y documentación del núcleo: Clases, nóminas y participación por intervalo — lote 2/2",Resultado de la ficha de familia y del paquete original; registro individual por código/ventana,"No duplicar padres, informes, ingeniería ni cobertura; no incluye horas de contraparte ni obras/adquisiciones del cliente","Lote identificado de reglas, contratos, construcción, pruebas o documentación del componente; evidencia versionada, revisión independiente y trazabilidad al flujo UCP. No reconstruye identidad, canales ni adaptadores comunes.",Ignacio Silva,53,J:53,"Asignación y cuadrante integrado por código; entornos, usuarios y habilitaciones autorizados",RF-ESC-04/06/07; RN-10--13; modelo UCP y conciliación de alcance 1.4–1.6,2027-08-09,2027-08-11,1.4.2.1.6.1;1.4.2.1.6.2,Recepción por etapa o control del periodo; no acredita ejecución,RF-ESC-04/06/07; RN-10--13; modelo UCP y conciliación de alcance 1.4–1.6
1.4.2.2.4.1,"Análisis de reglas, excepciones y protocolo: Retiros coordinados y entrega única de alumno — lote 1/1",1.4,E1 Desarrollo,"Análisis de reglas, excepciones y protocolo: Retiros coordinados y entrega única de alumno — lote 1/1",Resultado de la ficha de familia y del paquete original; registro individual por código/ventana,"No duplicar padres, informes, ingeniería ni cobertura; no incluye horas de contraparte ni obras/adquisiciones del cliente","Lote identificado de reglas, contratos, construcción, pruebas o documentación del componente; evidencia versionada, revisión independiente y trazabilidad al flujo UCP. No reconstruye identidad, canales ni adaptadores comunes.",Ulysses Barreto,15,A:15,"Asignación y cuadrante integrado por código; entornos, usuarios y habilitaciones autorizados",RF-ESC-08/09/10; modelo UCP y conciliación de alcance 1.4–1.6,2027-01-27,2027-01-29,1.4.2.2.1,Recepción por etapa o control del periodo; no acredita ejecución,RF-ESC-08/09/10; modelo UCP y conciliación de alcance 1.4–1.6
1.4.2.2.4.2,Diseño de datos y restricciones del núcleo: Retiros coordinados y entrega única de alumno — lote 1/1,1.4,E1 Desarrollo,Diseño de datos y restricciones del núcleo: Retiros coordinados y entrega única de alumno — lote 1/1,Resultado de la ficha de familia y del paquete original; registro individual por código/ventana,"No duplicar padres, informes, ingeniería ni cobertura; no incluye horas de contraparte ni obras/adquisiciones del cliente","Lote identificado de reglas, contratos, construcción, pruebas o documentación del componente; evidencia versionada, revisión independiente y trazabilidad al flujo UCP. No reconstruye identidad, canales ni adaptadores comunes.",Nicolás Torfan,16,D:16,"Asignación y cuadrante integrado por código; entornos, usuarios y habilitaciones autorizados",RF-ESC-08/09/10; modelo UCP y conciliación de alcance 1.4–1.6,2027-02-04,2027-02-08,1.4.2.2.1,Recepción por etapa o control del periodo; no acredita ejecución,RF-ESC-08/09/10; modelo UCP y conciliación de alcance 1.4–1.6
1.4.2.2.4.3,Diseño de contratos internos y composición: Retiros coordinados y entrega única de alumno — lote 1/1,1.4,E1 Desarrollo,Diseño de contratos internos y composición: Retiros coordinados y entrega única de alumno — lote 1/1,Resultado de la ficha de familia y del paquete original; registro individual por código/ventana,"No duplicar padres, informes, ingeniería ni cobertura; no incluye horas de contraparte ni obras/adquisiciones del cliente","Lote identificado de reglas, contratos, construcción, pruebas o documentación del componente; evidencia versionada, revisión independiente y trazabilidad al flujo UCP. No reconstruye identidad, canales ni adaptadores comunes.",Fernando Guerrero,23,I:23,"Asignación y cuadrante integrado por código; entornos, usuarios y habilitaciones autorizados",RF-ESC-08/09/10; modelo UCP y conciliación de alcance 1.4–1.6,2027-02-05,2027-02-09,1.4.2.2.1,Recepción por etapa o control del periodo; no acredita ejecución,RF-ESC-08/09/10; modelo UCP y conciliación de alcance 1.4–1.6
1.4.2.2.5.1,Construcción funcional y pruebas unitarias: Retiros coordinados y entrega única de alumno — lote 1/1,1.4,E1 Desarrollo,Construcción funcional y pruebas unitarias: Retiros coordinados y entrega única de alumno — lote 1/1,Resultado de la ficha de familia y del paquete original; registro individual por código/ventana,"No duplicar padres, informes, ingeniería ni cobertura; no incluye horas de contraparte ni obras/adquisiciones del cliente","Lote identificado de reglas, contratos, construcción, pruebas o documentación del componente; evidencia versionada, revisión independiente y trazabilidad al flujo UCP. No reconstruye identidad, canales ni adaptadores comunes.",Nikolai Navea,61,V:61,"Asignación y cuadrante integrado por código; entornos, usuarios y habilitaciones autorizados",RF-ESC-08/09/10; modelo UCP y conciliación de alcance 1.4–1.6,2027-07-22,2027-07-27,1.4.2.2.2;1.4.2.2.4.1;1.4.2.2.4.2;1.4.2.2.4.3,Recepción por etapa o control del periodo; no acredita ejecución,RF-ESC-08/09/10; modelo UCP y conciliación de alcance 1.4–1.6
1.4.2.2.6.1,"Verificación del núcleo, regresión y evidencia: Retiros coordinados y entrega única de alumno — lote 1/1",1.4,E1 Desarrollo,"Verificación del núcleo, regresión y evidencia: Retiros coordinados y entrega única de alumno — lote 1/1",Resultado de la ficha de familia y del paquete original; registro individual por código/ventana,"No duplicar padres, informes, ingeniería ni cobertura; no incluye horas de contraparte ni obras/adquisiciones del cliente","Lote identificado de reglas, contratos, construcción, pruebas o documentación del componente; evidencia versionada, revisión independiente y trazabilidad al flujo UCP. No reconstruye identidad, canales ni adaptadores comunes.",Davor Serey,45,Q:45,"Asignación y cuadrante integrado por código; entornos, usuarios y habilitaciones autorizados",RF-ESC-08/09/10; modelo UCP y conciliación de alcance 1.4–1.6,2027-08-09,2027-08-11,1.4.2.2.3;1.4.2.2.5.1,Recepción por etapa o control del periodo; no acredita ejecución,RF-ESC-08/09/10; modelo UCP y conciliación de alcance 1.4–1.6
1.4.2.2.7.1,Coordinación y documentación del núcleo: Retiros coordinados y entrega única de alumno — lote 1/1,1.4,E1 Desarrollo,Coordinación y documentación del núcleo: Retiros coordinados y entrega única de alumno — lote 1/1,Resultado de la ficha de familia y del paquete original; registro individual por código/ventana,"No duplicar padres, informes, ingeniería ni cobertura; no incluye horas de contraparte ni obras/adquisiciones del cliente","Lote identificado de reglas, contratos, construcción, pruebas o documentación del componente; evidencia versionada, revisión independiente y trazabilidad al flujo UCP. No reconstruye identidad, canales ni adaptadores comunes.",Ignacio Silva,53,J:53,"Asignación y cuadrante integrado por código; entornos, usuarios y habilitaciones autorizados",RF-ESC-08/09/10; modelo UCP y conciliación de alcance 1.4–1.6,2027-08-11,2027-08-13,1.4.2.2.6.1,Recepción por etapa o control del periodo; no acredita ejecución,RF-ESC-08/09/10; modelo UCP y conciliación de alcance 1.4–1.6
1.4.2.3.4.1,"Análisis de reglas, excepciones y protocolo: Retorno de participantes y vista mínima de salud — lote 1/1",1.4,E1 Desarrollo,"Análisis de reglas, excepciones y protocolo: Retorno de participantes y vista mínima de salud — lote 1/1",Resultado de la ficha de familia y del paquete original; registro individual por código/ventana,"No duplicar padres, informes, ingeniería ni cobertura; no incluye horas de contraparte ni obras/adquisiciones del cliente","Lote identificado de reglas, contratos, construcción, pruebas o documentación del componente; evidencia versionada, revisión independiente y trazabilidad al flujo UCP. No reconstruye identidad, canales ni adaptadores comunes.",Ulysses Barreto,51,A:51,"Asignación y cuadrante integrado por código; entornos, usuarios y habilitaciones autorizados",RF-ESC-14; SD5 Escuela náutica; modelo UCP y conciliación de alcance 1.4–1.6,2027-02-02,2027-02-03,1.4.2.3.1,Recepción por etapa o control del periodo; no acredita ejecución,RF-ESC-14; SD5 Escuela náutica; modelo UCP y conciliación de alcance 1.4–1.6
1.4.2.3.4.2,Diseño de datos y restricciones del núcleo: Retorno de participantes y vista mínima de salud — lote 1/1,1.4,E1 Desarrollo,Diseño de datos y restricciones del núcleo: Retorno de participantes y vista mínima de salud — lote 1/1,Resultado de la ficha de familia y del paquete original; registro individual por código/ventana,"No duplicar padres, informes, ingeniería ni cobertura; no incluye horas de contraparte ni obras/adquisiciones del cliente","Lote identificado de reglas, contratos, construcción, pruebas o documentación del componente; evidencia versionada, revisión independiente y trazabilidad al flujo UCP. No reconstruye identidad, canales ni adaptadores comunes.",Nicolás Torfan,44,D:44,"Asignación y cuadrante integrado por código; entornos, usuarios y habilitaciones autorizados",RF-ESC-14; SD5 Escuela náutica; modelo UCP y conciliación de alcance 1.4–1.6,2027-02-04,2027-02-08,1.4.2.3.1,Recepción por etapa o control del periodo; no acredita ejecución,RF-ESC-14; SD5 Escuela náutica; modelo UCP y conciliación de alcance 1.4–1.6
1.4.2.3.4.3,Diseño de contratos internos y composición: Retorno de participantes y vista mínima de salud — lote 1/2,1.4,E1 Desarrollo,Diseño de contratos internos y composición: Retorno de participantes y vista mínima de salud — lote 1/2,Resultado de la ficha de familia y del paquete original; registro individual por código/ventana,"No duplicar padres, informes, ingeniería ni cobertura; no incluye horas de contraparte ni obras/adquisiciones del cliente","Lote identificado de reglas, contratos, construcción, pruebas o documentación del componente; evidencia versionada, revisión independiente y trazabilidad al flujo UCP. No reconstruye identidad, canales ni adaptadores comunes.",Fernando Guerrero,33,I:33,"Asignación y cuadrante integrado por código; entornos, usuarios y habilitaciones autorizados",RF-ESC-14; SD5 Escuela náutica; modelo UCP y conciliación de alcance 1.4–1.6,2027-02-09,2027-02-10,1.4.2.3.1,Recepción por etapa o control del periodo; no acredita ejecución,RF-ESC-14; SD5 Escuela náutica; modelo UCP y conciliación de alcance 1.4–1.6
1.4.2.3.4.4,Diseño de contratos internos y composición: Retorno de participantes y vista mínima de salud — lote 2/2,1.4,E1 Desarrollo,Diseño de contratos internos y composición: Retorno de participantes y vista mínima de salud — lote 2/2,Resultado de la ficha de familia y del paquete original; registro individual por código/ventana,"No duplicar padres, informes, ingeniería ni cobertura; no incluye horas de contraparte ni obras/adquisiciones del cliente","Lote identificado de reglas, contratos, construcción, pruebas o documentación del componente; evidencia versionada, revisión independiente y trazabilidad al flujo UCP. No reconstruye identidad, canales ni adaptadores comunes.",Fernando Guerrero,32,I:32,"Asignación y cuadrante integrado por código; entornos, usuarios y habilitaciones autorizados",RF-ESC-14; SD5 Escuela náutica; modelo UCP y conciliación de alcance 1.4–1.6,2027-02-03,2027-02-05,1.4.2.3.1,Recepción por etapa o control del periodo; no acredita ejecución,RF-ESC-14; SD5 Escuela náutica; modelo UCP y conciliación de alcance 1.4–1.6
1.4.2.3.5.1,Construcción funcional y pruebas unitarias: Retorno de participantes y vista mínima de salud — lote 1/4,1.4,E1 Desarrollo,Construcción funcional y pruebas unitarias: Retorno de participantes y vista mínima de salud — lote 1/4,Resultado de la ficha de familia y del paquete original; registro individual por código/ventana,"No duplicar padres, informes, ingeniería ni cobertura; no incluye horas de contraparte ni obras/adquisiciones del cliente","Lote identificado de reglas, contratos, construcción, pruebas o documentación del componente; evidencia versionada, revisión independiente y trazabilidad al flujo UCP. No reconstruye identidad, canales ni adaptadores comunes.",Nikolai Navea,51,V:51,"Asignación y cuadrante integrado por código; entornos, usuarios y habilitaciones autorizados",RF-ESC-14; SD5 Escuela náutica; modelo UCP y conciliación de alcance 1.4–1.6,2027-07-27,2027-07-28,1.4.2.3.2;1.4.2.3.4.1;1.4.2.3.4.2;1.4.2.3.4.3;1.4.2.3.4.4,Recepción por etapa o control del periodo; no acredita ejecución,RF-ESC-14; SD5 Escuela náutica; modelo UCP y conciliación de alcance 1.4–1.6
1.4.2.3.5.2,Construcción funcional y pruebas unitarias: Retorno de participantes y vista mínima de salud — lote 2/4,1.4,E1 Desarrollo,Construcción funcional y pruebas unitarias: Retorno de participantes y vista mínima de salud — lote 2/4,Resultado de la ficha de familia y del paquete original; registro individual por código/ventana,"No duplicar padres, informes, ingeniería ni cobertura; no incluye horas de contraparte ni obras/adquisiciones del cliente","Lote identificado de reglas, contratos, construcción, pruebas o documentación del componente; evidencia versionada, revisión independiente y trazabilidad al flujo UCP. No reconstruye identidad, canales ni adaptadores comunes.",Nikolai Navea,51,V:51,"Asignación y cuadrante integrado por código; entornos, usuarios y habilitaciones autorizados",RF-ESC-14; SD5 Escuela náutica; modelo UCP y conciliación de alcance 1.4–1.6,2027-07-28,2027-07-30,1.4.2.3.2;1.4.2.3.4.1;1.4.2.3.4.2;1.4.2.3.4.3;1.4.2.3.4.4,Recepción por etapa o control del periodo; no acredita ejecución,RF-ESC-14; SD5 Escuela náutica; modelo UCP y conciliación de alcance 1.4–1.6
1.4.2.3.5.3,Construcción funcional y pruebas unitarias: Retorno de participantes y vista mínima de salud — lote 3/4,1.4,E1 Desarrollo,Construcción funcional y pruebas unitarias: Retorno de participantes y vista mínima de salud — lote 3/4,Resultado de la ficha de familia y del paquete original; registro individual por código/ventana,"No duplicar padres, informes, ingeniería ni cobertura; no incluye horas de contraparte ni obras/adquisiciones del cliente","Lote identificado de reglas, contratos, construcción, pruebas o documentación del componente; evidencia versionada, revisión independiente y trazabilidad al flujo UCP. No reconstruye identidad, canales ni adaptadores comunes.",Nikolai Navea,51,V:51,"Asignación y cuadrante integrado por código; entornos, usuarios y habilitaciones autorizados",RF-ESC-14; SD5 Escuela náutica; modelo UCP y conciliación de alcance 1.4–1.6,2027-07-26,2027-07-27,1.4.2.3.2;1.4.2.3.4.1;1.4.2.3.4.2;1.4.2.3.4.3;1.4.2.3.4.4,Recepción por etapa o control del periodo; no acredita ejecución,RF-ESC-14; SD5 Escuela náutica; modelo UCP y conciliación de alcance 1.4–1.6
1.4.2.3.5.4,Construcción funcional y pruebas unitarias: Retorno de participantes y vista mínima de salud — lote 4/4,1.4,E1 Desarrollo,Construcción funcional y pruebas unitarias: Retorno de participantes y vista mínima de salud — lote 4/4,Resultado de la ficha de familia y del paquete original; registro individual por código/ventana,"No duplicar padres, informes, ingeniería ni cobertura; no incluye horas de contraparte ni obras/adquisiciones del cliente","Lote identificado de reglas, contratos, construcción, pruebas o documentación del componente; evidencia versionada, revisión independiente y trazabilidad al flujo UCP. No reconstruye identidad, canales ni adaptadores comunes.",Nikolai Navea,50,V:50,"Asignación y cuadrante integrado por código; entornos, usuarios y habilitaciones autorizados",RF-ESC-14; SD5 Escuela náutica; modelo UCP y conciliación de alcance 1.4–1.6,2027-07-27,2027-07-29,1.4.2.3.2;1.4.2.3.4.1;1.4.2.3.4.2;1.4.2.3.4.3;1.4.2.3.4.4,Recepción por etapa o control del periodo; no acredita ejecución,RF-ESC-14; SD5 Escuela náutica; modelo UCP y conciliación de alcance 1.4–1.6
1.4.2.3.6.1,"Verificación del núcleo, regresión y evidencia: Retorno de participantes y vista mínima de salud — lote 1/2",1.4,E1 Desarrollo,"Verificación del núcleo, regresión y evidencia: Retorno de participantes y vista mínima de salud — lote 1/2",Resultado de la ficha de familia y del paquete original; registro individual por código/ventana,"No duplicar padres, informes, ingeniería ni cobertura; no incluye horas de contraparte ni obras/adquisiciones del cliente","Lote identificado de reglas, contratos, construcción, pruebas o documentación del componente; evidencia versionada, revisión independiente y trazabilidad al flujo UCP. No reconstruye identidad, canales ni adaptadores comunes.",Davor Serey,49,Q:49,"Asignación y cuadrante integrado por código; entornos, usuarios y habilitaciones autorizados",RF-ESC-14; SD5 Escuela náutica; modelo UCP y conciliación de alcance 1.4–1.6,2027-08-09,2027-08-11,1.4.2.3.3;1.4.2.3.5.1;1.4.2.3.5.2;1.4.2.3.5.3;1.4.2.3.5.4,Recepción por etapa o control del periodo; no acredita ejecución,RF-ESC-14; SD5 Escuela náutica; modelo UCP y conciliación de alcance 1.4–1.6
1.4.2.3.6.2,"Verificación del núcleo, regresión y evidencia: Retorno de participantes y vista mínima de salud — lote 2/2",1.4,E1 Desarrollo,"Verificación del núcleo, regresión y evidencia: Retorno de participantes y vista mínima de salud — lote 2/2",Resultado de la ficha de familia y del paquete original; registro individual por código/ventana,"No duplicar padres, informes, ingeniería ni cobertura; no incluye horas de contraparte ni obras/adquisiciones del cliente","Lote identificado de reglas, contratos, construcción, pruebas o documentación del componente; evidencia versionada, revisión independiente y trazabilidad al flujo UCP. No reconstruye identidad, canales ni adaptadores comunes.",Davor Serey,49,Q:49,"Asignación y cuadrante integrado por código; entornos, usuarios y habilitaciones autorizados",RF-ESC-14; SD5 Escuela náutica; modelo UCP y conciliación de alcance 1.4–1.6,2027-08-09,2027-08-11,1.4.2.3.3;1.4.2.3.5.1;1.4.2.3.5.2;1.4.2.3.5.3;1.4.2.3.5.4,Recepción por etapa o control del periodo; no acredita ejecución,RF-ESC-14; SD5 Escuela náutica; modelo UCP y conciliación de alcance 1.4–1.6
1.4.2.3.7.1,Coordinación y documentación del núcleo: Retorno de participantes y vista mínima de salud — lote 1/2,1.4,E1 Desarrollo,Coordinación y documentación del núcleo: Retorno de participantes y vista mínima de salud — lote 1/2,Resultado de la ficha de familia y del paquete original; registro individual por código/ventana,"No duplicar padres, informes, ingeniería ni cobertura; no incluye horas de contraparte ni obras/adquisiciones del cliente","Lote identificado de reglas, contratos, construcción, pruebas o documentación del componente; evidencia versionada, revisión independiente y trazabilidad al flujo UCP. No reconstruye identidad, canales ni adaptadores comunes.",Ignacio Silva,53,J:53,"Asignación y cuadrante integrado por código; entornos, usuarios y habilitaciones autorizados",RF-ESC-14; SD5 Escuela náutica; modelo UCP y conciliación de alcance 1.4–1.6,2027-08-13,2027-08-17,1.4.2.3.6.1;1.4.2.3.6.2,Recepción por etapa o control del periodo; no acredita ejecución,RF-ESC-14; SD5 Escuela náutica; modelo UCP y conciliación de alcance 1.4–1.6
1.4.2.3.7.2,Coordinación y documentación del núcleo: Retorno de participantes y vista mínima de salud — lote 2/2,1.4,E1 Desarrollo,Coordinación y documentación del núcleo: Retorno de participantes y vista mínima de salud — lote 2/2,Resultado de la ficha de familia y del paquete original; registro individual por código/ventana,"No duplicar padres, informes, ingeniería ni cobertura; no incluye horas de contraparte ni obras/adquisiciones del cliente","Lote identificado de reglas, contratos, construcción, pruebas o documentación del componente; evidencia versionada, revisión independiente y trazabilidad al flujo UCP. No reconstruye identidad, canales ni adaptadores comunes.",Ignacio Silva,52,J:52,"Asignación y cuadrante integrado por código; entornos, usuarios y habilitaciones autorizados",RF-ESC-14; SD5 Escuela náutica; modelo UCP y conciliación de alcance 1.4–1.6,2027-08-13,2027-08-17,1.4.2.3.6.1;1.4.2.3.6.2,Recepción por etapa o control del periodo; no acredita ejecución,RF-ESC-14; SD5 Escuela náutica; modelo UCP y conciliación de alcance 1.4–1.6
1.4.3.1.4.1,"Análisis de reglas, excepciones y protocolo: Inventario y condiciones de puestos y fondeos — lote 1/1",1.4,E1 Desarrollo,"Análisis de reglas, excepciones y protocolo: Inventario y condiciones de puestos y fondeos — lote 1/1",Resultado de la ficha de familia y del paquete original; registro individual por código/ventana,"No duplicar padres, informes, ingeniería ni cobertura; no incluye horas de contraparte ni obras/adquisiciones del cliente","Lote identificado de reglas, contratos, construcción, pruebas o documentación del componente; evidencia versionada, revisión independiente y trazabilidad al flujo UCP. No reconstruye identidad, canales ni adaptadores comunes.",Ulysses Barreto,15,A:15,"Asignación y cuadrante integrado por código; entornos, usuarios y habilitaciones autorizados",BOY; AMA; SD5 Infraestructura; modelo UCP y conciliación de alcance 1.4–1.6,2027-01-27,2027-01-29,1.4.3.1.1,Recepción por etapa o control del periodo; no acredita ejecución,BOY; AMA; SD5 Infraestructura; modelo UCP y conciliación de alcance 1.4–1.6
1.4.3.1.4.2,Diseño de datos y restricciones del núcleo: Inventario y condiciones de puestos y fondeos — lote 1/1,1.4,E1 Desarrollo,Diseño de datos y restricciones del núcleo: Inventario y condiciones de puestos y fondeos — lote 1/1,Resultado de la ficha de familia y del paquete original; registro individual por código/ventana,"No duplicar padres, informes, ingeniería ni cobertura; no incluye horas de contraparte ni obras/adquisiciones del cliente","Lote identificado de reglas, contratos, construcción, pruebas o documentación del componente; evidencia versionada, revisión independiente y trazabilidad al flujo UCP. No reconstruye identidad, canales ni adaptadores comunes.",Nicolás Torfan,16,D:16,"Asignación y cuadrante integrado por código; entornos, usuarios y habilitaciones autorizados",BOY; AMA; SD5 Infraestructura; modelo UCP y conciliación de alcance 1.4–1.6,2027-01-29,2027-02-02,1.4.3.1.1,Recepción por etapa o control del periodo; no acredita ejecución,BOY; AMA; SD5 Infraestructura; modelo UCP y conciliación de alcance 1.4–1.6
1.4.3.1.4.3,Diseño de contratos internos y composición: Inventario y condiciones de puestos y fondeos — lote 1/1,1.4,E1 Desarrollo,Diseño de contratos internos y composición: Inventario y condiciones de puestos y fondeos — lote 1/1,Resultado de la ficha de familia y del paquete original; registro individual por código/ventana,"No duplicar padres, informes, ingeniería ni cobertura; no incluye horas de contraparte ni obras/adquisiciones del cliente","Lote identificado de reglas, contratos, construcción, pruebas o documentación del componente; evidencia versionada, revisión independiente y trazabilidad al flujo UCP. No reconstruye identidad, canales ni adaptadores comunes.",Fernando Guerrero,23,I:23,"Asignación y cuadrante integrado por código; entornos, usuarios y habilitaciones autorizados",BOY; AMA; SD5 Infraestructura; modelo UCP y conciliación de alcance 1.4–1.6,2027-02-05,2027-02-09,1.4.3.1.1,Recepción por etapa o control del periodo; no acredita ejecución,BOY; AMA; SD5 Infraestructura; modelo UCP y conciliación de alcance 1.4–1.6
1.4.3.1.5.1,Construcción funcional y pruebas unitarias: Inventario y condiciones de puestos y fondeos — lote 1/1,1.4,E1 Desarrollo,Construcción funcional y pruebas unitarias: Inventario y condiciones de puestos y fondeos — lote 1/1,Resultado de la ficha de familia y del paquete original; registro individual por código/ventana,"No duplicar padres, informes, ingeniería ni cobertura; no incluye horas de contraparte ni obras/adquisiciones del cliente","Lote identificado de reglas, contratos, construcción, pruebas o documentación del componente; evidencia versionada, revisión independiente y trazabilidad al flujo UCP. No reconstruye identidad, canales ni adaptadores comunes.",Nikolai Navea,61,V:61,"Asignación y cuadrante integrado por código; entornos, usuarios y habilitaciones autorizados",BOY; AMA; SD5 Infraestructura; modelo UCP y conciliación de alcance 1.4–1.6,2027-07-29,2027-08-02,1.4.3.1.2;1.4.3.1.4.1;1.4.3.1.4.2;1.4.3.1.4.3,Recepción por etapa o control del periodo; no acredita ejecución,BOY; AMA; SD5 Infraestructura; modelo UCP y conciliación de alcance 1.4–1.6
1.4.3.1.6.1,"Verificación del núcleo, regresión y evidencia: Inventario y condiciones de puestos y fondeos — lote 1/1",1.4,E1 Desarrollo,"Verificación del núcleo, regresión y evidencia: Inventario y condiciones de puestos y fondeos — lote 1/1",Resultado de la ficha de familia y del paquete original; registro individual por código/ventana,"No duplicar padres, informes, ingeniería ni cobertura; no incluye horas de contraparte ni obras/adquisiciones del cliente","Lote identificado de reglas, contratos, construcción, pruebas o documentación del componente; evidencia versionada, revisión independiente y trazabilidad al flujo UCP. No reconstruye identidad, canales ni adaptadores comunes.",Davor Serey,45,Q:45,"Asignación y cuadrante integrado por código; entornos, usuarios y habilitaciones autorizados",BOY; AMA; SD5 Infraestructura; modelo UCP y conciliación de alcance 1.4–1.6,2027-08-11,2027-08-13,1.4.3.1.3;1.4.3.1.5.1,Recepción por etapa o control del periodo; no acredita ejecución,BOY; AMA; SD5 Infraestructura; modelo UCP y conciliación de alcance 1.4–1.6
1.4.3.1.7.1,Coordinación y documentación del núcleo: Inventario y condiciones de puestos y fondeos — lote 1/1,1.4,E1 Desarrollo,Coordinación y documentación del núcleo: Inventario y condiciones de puestos y fondeos — lote 1/1,Resultado de la ficha de familia y del paquete original; registro individual por código/ventana,"No duplicar padres, informes, ingeniería ni cobertura; no incluye horas de contraparte ni obras/adquisiciones del cliente","Lote identificado de reglas, contratos, construcción, pruebas o documentación del componente; evidencia versionada, revisión independiente y trazabilidad al flujo UCP. No reconstruye identidad, canales ni adaptadores comunes.",Ignacio Silva,53,J:53,"Asignación y cuadrante integrado por código; entornos, usuarios y habilitaciones autorizados",BOY; AMA; SD5 Infraestructura; modelo UCP y conciliación de alcance 1.4–1.6,2027-08-13,2027-08-17,1.4.3.1.6.1,Recepción por etapa o control del periodo; no acredita ejecución,BOY; AMA; SD5 Infraestructura; modelo UCP y conciliación de alcance 1.4–1.6
1.4.3.2.4.1,"Análisis de reglas, excepciones y protocolo: Inspecciones de boyas y evidencia desconectada — lote 1/1",1.4,E1 Desarrollo,"Análisis de reglas, excepciones y protocolo: Inspecciones de boyas y evidencia desconectada — lote 1/1",Resultado de la ficha de familia y del paquete original; registro individual por código/ventana,"No duplicar padres, informes, ingeniería ni cobertura; no incluye horas de contraparte ni obras/adquisiciones del cliente","Lote identificado de reglas, contratos, construcción, pruebas o documentación del componente; evidencia versionada, revisión independiente y trazabilidad al flujo UCP. No reconstruye identidad, canales ni adaptadores comunes.",Ulysses Barreto,51,A:51,"Asignación y cuadrante integrado por código; entornos, usuarios y habilitaciones autorizados",BOY; CA-13; SD3 cubierta; modelo UCP y conciliación de alcance 1.4–1.6,2027-02-03,2027-02-05,1.4.3.2.1,Recepción por etapa o control del periodo; no acredita ejecución,BOY; CA-13; SD3 cubierta; modelo UCP y conciliación de alcance 1.4–1.6
1.4.3.2.4.2,Diseño de datos y restricciones del núcleo: Inspecciones de boyas y evidencia desconectada — lote 1/1,1.4,E1 Desarrollo,Diseño de datos y restricciones del núcleo: Inspecciones de boyas y evidencia desconectada — lote 1/1,Resultado de la ficha de familia y del paquete original; registro individual por código/ventana,"No duplicar padres, informes, ingeniería ni cobertura; no incluye horas de contraparte ni obras/adquisiciones del cliente","Lote identificado de reglas, contratos, construcción, pruebas o documentación del componente; evidencia versionada, revisión independiente y trazabilidad al flujo UCP. No reconstruye identidad, canales ni adaptadores comunes.",Nicolás Torfan,44,D:44,"Asignación y cuadrante integrado por código; entornos, usuarios y habilitaciones autorizados",BOY; CA-13; SD3 cubierta; modelo UCP y conciliación de alcance 1.4–1.6,2027-02-08,2027-02-10,1.4.3.2.1,Recepción por etapa o control del periodo; no acredita ejecución,BOY; CA-13; SD3 cubierta; modelo UCP y conciliación de alcance 1.4–1.6
1.4.3.2.4.3,Diseño de contratos internos y composición: Inspecciones de boyas y evidencia desconectada — lote 1/2,1.4,E1 Desarrollo,Diseño de contratos internos y composición: Inspecciones de boyas y evidencia desconectada — lote 1/2,Resultado de la ficha de familia y del paquete original; registro individual por código/ventana,"No duplicar padres, informes, ingeniería ni cobertura; no incluye horas de contraparte ni obras/adquisiciones del cliente","Lote identificado de reglas, contratos, construcción, pruebas o documentación del componente; evidencia versionada, revisión independiente y trazabilidad al flujo UCP. No reconstruye identidad, canales ni adaptadores comunes.",Fernando Guerrero,33,I:33,"Asignación y cuadrante integrado por código; entornos, usuarios y habilitaciones autorizados",BOY; CA-13; SD3 cubierta; modelo UCP y conciliación de alcance 1.4–1.6,2027-02-01,2027-02-03,1.4.3.2.1,Recepción por etapa o control del periodo; no acredita ejecución,BOY; CA-13; SD3 cubierta; modelo UCP y conciliación de alcance 1.4–1.6
1.4.3.2.4.4,Diseño de contratos internos y composición: Inspecciones de boyas y evidencia desconectada — lote 2/2,1.4,E1 Desarrollo,Diseño de contratos internos y composición: Inspecciones de boyas y evidencia desconectada — lote 2/2,Resultado de la ficha de familia y del paquete original; registro individual por código/ventana,"No duplicar padres, informes, ingeniería ni cobertura; no incluye horas de contraparte ni obras/adquisiciones del cliente","Lote identificado de reglas, contratos, construcción, pruebas o documentación del componente; evidencia versionada, revisión independiente y trazabilidad al flujo UCP. No reconstruye identidad, canales ni adaptadores comunes.",Fernando Guerrero,32,I:32,"Asignación y cuadrante integrado por código; entornos, usuarios y habilitaciones autorizados",BOY; CA-13; SD3 cubierta; modelo UCP y conciliación de alcance 1.4–1.6,2027-02-03,2027-02-05,1.4.3.2.1,Recepción por etapa o control del periodo; no acredita ejecución,BOY; CA-13; SD3 cubierta; modelo UCP y conciliación de alcance 1.4–1.6
1.4.3.2.5.1,Construcción funcional y pruebas unitarias: Inspecciones de boyas y evidencia desconectada — lote 1/4,1.4,E1 Desarrollo,Construcción funcional y pruebas unitarias: Inspecciones de boyas y evidencia desconectada — lote 1/4,Resultado de la ficha de familia y del paquete original; registro individual por código/ventana,"No duplicar padres, informes, ingeniería ni cobertura; no incluye horas de contraparte ni obras/adquisiciones del cliente","Lote identificado de reglas, contratos, construcción, pruebas o documentación del componente; evidencia versionada, revisión independiente y trazabilidad al flujo UCP. No reconstruye identidad, canales ni adaptadores comunes.",Nikolai Navea,51,V:51,"Asignación y cuadrante integrado por código; entornos, usuarios y habilitaciones autorizados",BOY; CA-13; SD3 cubierta; modelo UCP y conciliación de alcance 1.4–1.6,2027-07-26,2027-07-27,1.4.3.2.2;1.4.3.2.4.1;1.4.3.2.4.2;1.4.3.2.4.3;1.4.3.2.4.4,Recepción por etapa o control del periodo; no acredita ejecución,BOY; CA-13; SD3 cubierta; modelo UCP y conciliación de alcance 1.4–1.6
1.4.3.2.5.2,Construcción funcional y pruebas unitarias: Inspecciones de boyas y evidencia desconectada — lote 2/4,1.4,E1 Desarrollo,Construcción funcional y pruebas unitarias: Inspecciones de boyas y evidencia desconectada — lote 2/4,Resultado de la ficha de familia y del paquete original; registro individual por código/ventana,"No duplicar padres, informes, ingeniería ni cobertura; no incluye horas de contraparte ni obras/adquisiciones del cliente","Lote identificado de reglas, contratos, construcción, pruebas o documentación del componente; evidencia versionada, revisión independiente y trazabilidad al flujo UCP. No reconstruye identidad, canales ni adaptadores comunes.",Nikolai Navea,51,V:51,"Asignación y cuadrante integrado por código; entornos, usuarios y habilitaciones autorizados",BOY; CA-13; SD3 cubierta; modelo UCP y conciliación de alcance 1.4–1.6,2027-07-27,2027-07-29,1.4.3.2.2;1.4.3.2.4.1;1.4.3.2.4.2;1.4.3.2.4.3;1.4.3.2.4.4,Recepción por etapa o control del periodo; no acredita ejecución,BOY; CA-13; SD3 cubierta; modelo UCP y conciliación de alcance 1.4–1.6
1.4.3.2.5.3,Construcción funcional y pruebas unitarias: Inspecciones de boyas y evidencia desconectada — lote 3/4,1.4,E1 Desarrollo,Construcción funcional y pruebas unitarias: Inspecciones de boyas y evidencia desconectada — lote 3/4,Resultado de la ficha de familia y del paquete original; registro individual por código/ventana,"No duplicar padres, informes, ingeniería ni cobertura; no incluye horas de contraparte ni obras/adquisiciones del cliente","Lote identificado de reglas, contratos, construcción, pruebas o documentación del componente; evidencia versionada, revisión independiente y trazabilidad al flujo UCP. No reconstruye identidad, canales ni adaptadores comunes.",Nikolai Navea,51,V:51,"Asignación y cuadrante integrado por código; entornos, usuarios y habilitaciones autorizados",BOY; CA-13; SD3 cubierta; modelo UCP y conciliación de alcance 1.4–1.6,2027-07-29,2027-08-02,1.4.3.2.2;1.4.3.2.4.1;1.4.3.2.4.2;1.4.3.2.4.3;1.4.3.2.4.4,Recepción por etapa o control del periodo; no acredita ejecución,BOY; CA-13; SD3 cubierta; modelo UCP y conciliación de alcance 1.4–1.6
1.4.3.2.5.4,Construcción funcional y pruebas unitarias: Inspecciones de boyas y evidencia desconectada — lote 4/4,1.4,E1 Desarrollo,Construcción funcional y pruebas unitarias: Inspecciones de boyas y evidencia desconectada — lote 4/4,Resultado de la ficha de familia y del paquete original; registro individual por código/ventana,"No duplicar padres, informes, ingeniería ni cobertura; no incluye horas de contraparte ni obras/adquisiciones del cliente","Lote identificado de reglas, contratos, construcción, pruebas o documentación del componente; evidencia versionada, revisión independiente y trazabilidad al flujo UCP. No reconstruye identidad, canales ni adaptadores comunes.",Nikolai Navea,50,V:50,"Asignación y cuadrante integrado por código; entornos, usuarios y habilitaciones autorizados",BOY; CA-13; SD3 cubierta; modelo UCP y conciliación de alcance 1.4–1.6,2027-07-26,2027-07-27,1.4.3.2.2;1.4.3.2.4.1;1.4.3.2.4.2;1.4.3.2.4.3;1.4.3.2.4.4,Recepción por etapa o control del periodo; no acredita ejecución,BOY; CA-13; SD3 cubierta; modelo UCP y conciliación de alcance 1.4–1.6
1.4.3.2.6.1,"Verificación del núcleo, regresión y evidencia: Inspecciones de boyas y evidencia desconectada — lote 1/2",1.4,E1 Desarrollo,"Verificación del núcleo, regresión y evidencia: Inspecciones de boyas y evidencia desconectada — lote 1/2",Resultado de la ficha de familia y del paquete original; registro individual por código/ventana,"No duplicar padres, informes, ingeniería ni cobertura; no incluye horas de contraparte ni obras/adquisiciones del cliente","Lote identificado de reglas, contratos, construcción, pruebas o documentación del componente; evidencia versionada, revisión independiente y trazabilidad al flujo UCP. No reconstruye identidad, canales ni adaptadores comunes.",Davor Serey,49,Q:49,"Asignación y cuadrante integrado por código; entornos, usuarios y habilitaciones autorizados",BOY; CA-13; SD3 cubierta; modelo UCP y conciliación de alcance 1.4–1.6,2027-08-11,2027-08-13,1.4.3.2.3;1.4.3.2.5.1;1.4.3.2.5.2;1.4.3.2.5.3;1.4.3.2.5.4,Recepción por etapa o control del periodo; no acredita ejecución,BOY; CA-13; SD3 cubierta; modelo UCP y conciliación de alcance 1.4–1.6
1.4.3.2.6.2,"Verificación del núcleo, regresión y evidencia: Inspecciones de boyas y evidencia desconectada — lote 2/2",1.4,E1 Desarrollo,"Verificación del núcleo, regresión y evidencia: Inspecciones de boyas y evidencia desconectada — lote 2/2",Resultado de la ficha de familia y del paquete original; registro individual por código/ventana,"No duplicar padres, informes, ingeniería ni cobertura; no incluye horas de contraparte ni obras/adquisiciones del cliente","Lote identificado de reglas, contratos, construcción, pruebas o documentación del componente; evidencia versionada, revisión independiente y trazabilidad al flujo UCP. No reconstruye identidad, canales ni adaptadores comunes.",Davor Serey,48,Q:48,"Asignación y cuadrante integrado por código; entornos, usuarios y habilitaciones autorizados",BOY; CA-13; SD3 cubierta; modelo UCP y conciliación de alcance 1.4–1.6,2027-08-05,2027-08-09,1.4.3.2.3;1.4.3.2.5.1;1.4.3.2.5.2;1.4.3.2.5.3;1.4.3.2.5.4,Recepción por etapa o control del periodo; no acredita ejecución,BOY; CA-13; SD3 cubierta; modelo UCP y conciliación de alcance 1.4–1.6
1.4.3.2.7.1,Coordinación y documentación del núcleo: Inspecciones de boyas y evidencia desconectada — lote 1/2,1.4,E1 Desarrollo,Coordinación y documentación del núcleo: Inspecciones de boyas y evidencia desconectada — lote 1/2,Resultado de la ficha de familia y del paquete original; registro individual por código/ventana,"No duplicar padres, informes, ingeniería ni cobertura; no incluye horas de contraparte ni obras/adquisiciones del cliente","Lote identificado de reglas, contratos, construcción, pruebas o documentación del componente; evidencia versionada, revisión independiente y trazabilidad al flujo UCP. No reconstruye identidad, canales ni adaptadores comunes.",Ignacio Silva,53,J:53,"Asignación y cuadrante integrado por código; entornos, usuarios y habilitaciones autorizados",BOY; CA-13; SD3 cubierta; modelo UCP y conciliación de alcance 1.4–1.6,2027-08-17,2027-08-18,1.4.3.2.6.1;1.4.3.2.6.2,Recepción por etapa o control del periodo; no acredita ejecución,BOY; CA-13; SD3 cubierta; modelo UCP y conciliación de alcance 1.4–1.6
1.4.3.2.7.2,Coordinación y documentación del núcleo: Inspecciones de boyas y evidencia desconectada — lote 2/2,1.4,E1 Desarrollo,Coordinación y documentación del núcleo: Inspecciones de boyas y evidencia desconectada — lote 2/2,Resultado de la ficha de familia y del paquete original; registro individual por código/ventana,"No duplicar padres, informes, ingeniería ni cobertura; no incluye horas de contraparte ni obras/adquisiciones del cliente","Lote identificado de reglas, contratos, construcción, pruebas o documentación del componente; evidencia versionada, revisión independiente y trazabilidad al flujo UCP. No reconstruye identidad, canales ni adaptadores comunes.",Ignacio Silva,52,J:52,"Asignación y cuadrante integrado por código; entornos, usuarios y habilitaciones autorizados",BOY; CA-13; SD3 cubierta; modelo UCP y conciliación de alcance 1.4–1.6,2027-08-17,2027-08-18,1.4.3.2.6.1;1.4.3.2.6.2,Recepción por etapa o control del periodo; no acredita ejecución,BOY; CA-13; SD3 cubierta; modelo UCP y conciliación de alcance 1.4–1.6
1.4.3.3.4.1,"Análisis de reglas, excepciones y protocolo: Asociaciones temporales de medidores e instalaciones — lote 1/1",1.4,E1 Desarrollo,"Análisis de reglas, excepciones y protocolo: Asociaciones temporales de medidores e instalaciones — lote 1/1",Resultado de la ficha de familia y del paquete original; registro individual por código/ventana,"No duplicar padres, informes, ingeniería ni cobertura; no incluye horas de contraparte ni obras/adquisiciones del cliente","Lote identificado de reglas, contratos, construcción, pruebas o documentación del componente; evidencia versionada, revisión independiente y trazabilidad al flujo UCP. No reconstruye identidad, canales ni adaptadores comunes.",Ulysses Barreto,15,A:15,"Asignación y cuadrante integrado por código; entornos, usuarios y habilitaciones autorizados",CON; SD5 Infraestructura; modelo UCP y conciliación de alcance 1.4–1.6,2027-01-29,2027-02-02,1.4.3.3.1,Recepción por etapa o control del periodo; no acredita ejecución,CON; SD5 Infraestructura; modelo UCP y conciliación de alcance 1.4–1.6
1.4.3.3.4.2,Diseño de datos y restricciones del núcleo: Asociaciones temporales de medidores e instalaciones — lote 1/1,1.4,E1 Desarrollo,Diseño de datos y restricciones del núcleo: Asociaciones temporales de medidores e instalaciones — lote 1/1,Resultado de la ficha de familia y del paquete original; registro individual por código/ventana,"No duplicar padres, informes, ingeniería ni cobertura; no incluye horas de contraparte ni obras/adquisiciones del cliente","Lote identificado de reglas, contratos, construcción, pruebas o documentación del componente; evidencia versionada, revisión independiente y trazabilidad al flujo UCP. No reconstruye identidad, canales ni adaptadores comunes.",Nicolás Torfan,16,D:16,"Asignación y cuadrante integrado por código; entornos, usuarios y habilitaciones autorizados",CON; SD5 Infraestructura; modelo UCP y conciliación de alcance 1.4–1.6,2027-02-01,2027-02-03,1.4.3.3.1,Recepción por etapa o control del periodo; no acredita ejecución,CON; SD5 Infraestructura; modelo UCP y conciliación de alcance 1.4–1.6
1.4.3.3.4.3,Diseño de contratos internos y composición: Asociaciones temporales de medidores e instalaciones — lote 1/1,1.4,E1 Desarrollo,Diseño de contratos internos y composición: Asociaciones temporales de medidores e instalaciones — lote 1/1,Resultado de la ficha de familia y del paquete original; registro individual por código/ventana,"No duplicar padres, informes, ingeniería ni cobertura; no incluye horas de contraparte ni obras/adquisiciones del cliente","Lote identificado de reglas, contratos, construcción, pruebas o documentación del componente; evidencia versionada, revisión independiente y trazabilidad al flujo UCP. No reconstruye identidad, canales ni adaptadores comunes.",Fernando Guerrero,23,I:23,"Asignación y cuadrante integrado por código; entornos, usuarios y habilitaciones autorizados",CON; SD5 Infraestructura; modelo UCP y conciliación de alcance 1.4–1.6,2027-02-05,2027-02-08,1.4.3.3.1,Recepción por etapa o control del periodo; no acredita ejecución,CON; SD5 Infraestructura; modelo UCP y conciliación de alcance 1.4–1.6
1.4.3.3.5.1,Construcción funcional y pruebas unitarias: Asociaciones temporales de medidores e instalaciones — lote 1/1,1.4,E1 Desarrollo,Construcción funcional y pruebas unitarias: Asociaciones temporales de medidores e instalaciones — lote 1/1,Resultado de la ficha de familia y del paquete original; registro individual por código/ventana,"No duplicar padres, informes, ingeniería ni cobertura; no incluye horas de contraparte ni obras/adquisiciones del cliente","Lote identificado de reglas, contratos, construcción, pruebas o documentación del componente; evidencia versionada, revisión independiente y trazabilidad al flujo UCP. No reconstruye identidad, canales ni adaptadores comunes.",Nikolai Navea,61,V:61,"Asignación y cuadrante integrado por código; entornos, usuarios y habilitaciones autorizados",CON; SD5 Infraestructura; modelo UCP y conciliación de alcance 1.4–1.6,2027-07-27,2027-07-29,1.4.3.3.2;1.4.3.3.4.1;1.4.3.3.4.2;1.4.3.3.4.3,Recepción por etapa o control del periodo; no acredita ejecución,CON; SD5 Infraestructura; modelo UCP y conciliación de alcance 1.4–1.6
1.4.3.3.6.1,"Verificación del núcleo, regresión y evidencia: Asociaciones temporales de medidores e instalaciones — lote 1/1",1.4,E1 Desarrollo,"Verificación del núcleo, regresión y evidencia: Asociaciones temporales de medidores e instalaciones — lote 1/1",Resultado de la ficha de familia y del paquete original; registro individual por código/ventana,"No duplicar padres, informes, ingeniería ni cobertura; no incluye horas de contraparte ni obras/adquisiciones del cliente","Lote identificado de reglas, contratos, construcción, pruebas o documentación del componente; evidencia versionada, revisión independiente y trazabilidad al flujo UCP. No reconstruye identidad, canales ni adaptadores comunes.",Davor Serey,45,Q:45,"Asignación y cuadrante integrado por código; entornos, usuarios y habilitaciones autorizados",CON; SD5 Infraestructura; modelo UCP y conciliación de alcance 1.4–1.6,2027-08-03,2027-08-05,1.4.3.3.3;1.4.3.3.5.1,Recepción por etapa o control del periodo; no acredita ejecución,CON; SD5 Infraestructura; modelo UCP y conciliación de alcance 1.4–1.6
1.4.3.3.7.1,Coordinación y documentación del núcleo: Asociaciones temporales de medidores e instalaciones — lote 1/1,1.4,E1 Desarrollo,Coordinación y documentación del núcleo: Asociaciones temporales de medidores e instalaciones — lote 1/1,Resultado de la ficha de familia y del paquete original; registro individual por código/ventana,"No duplicar padres, informes, ingeniería ni cobertura; no incluye horas de contraparte ni obras/adquisiciones del cliente","Lote identificado de reglas, contratos, construcción, pruebas o documentación del componente; evidencia versionada, revisión independiente y trazabilidad al flujo UCP. No reconstruye identidad, canales ni adaptadores comunes.",Ignacio Silva,53,J:53,"Asignación y cuadrante integrado por código; entornos, usuarios y habilitaciones autorizados",CON; SD5 Infraestructura; modelo UCP y conciliación de alcance 1.4–1.6,2027-08-05,2027-08-09,1.4.3.3.6.1,Recepción por etapa o control del periodo; no acredita ejecución,CON; SD5 Infraestructura; modelo UCP y conciliación de alcance 1.4–1.6
1.5.1.1.4.1,"Análisis de reglas, excepciones y protocolo: Maestros de faena y habilitaciones de consulta inicial — lote 1/1",1.5,E1 Desarrollo,"Análisis de reglas, excepciones y protocolo: Maestros de faena y habilitaciones de consulta inicial — lote 1/1",Resultado de la ficha de familia y del paquete original; registro individual por código/ventana,"No duplicar padres, informes, ingeniería ni cobertura; no incluye horas de contraparte ni obras/adquisiciones del cliente","Lote identificado de reglas, contratos, construcción, pruebas o documentación del componente; evidencia versionada, revisión independiente y trazabilidad al flujo UCP. No reconstruye identidad, canales ni adaptadores comunes.",Ulysses Barreto,15,A:15,"Asignación y cuadrante integrado por código; entornos, usuarios y habilitaciones autorizados",VAR/CTR; reparto E1 SD3; modelo UCP y conciliación de alcance 1.4–1.6,2027-01-29,2027-02-02,1.5.1.1.1,Recepción por etapa o control del periodo; no acredita ejecución,VAR/CTR; reparto E1 SD3; modelo UCP y conciliación de alcance 1.4–1.6
1.5.1.1.4.2,Diseño de datos y restricciones del núcleo: Maestros de faena y habilitaciones de consulta inicial — lote 1/1,1.5,E1 Desarrollo,Diseño de datos y restricciones del núcleo: Maestros de faena y habilitaciones de consulta inicial — lote 1/1,Resultado de la ficha de familia y del paquete original; registro individual por código/ventana,"No duplicar padres, informes, ingeniería ni cobertura; no incluye horas de contraparte ni obras/adquisiciones del cliente","Lote identificado de reglas, contratos, construcción, pruebas o documentación del componente; evidencia versionada, revisión independiente y trazabilidad al flujo UCP. No reconstruye identidad, canales ni adaptadores comunes.",Nicolás Torfan,16,D:16,"Asignación y cuadrante integrado por código; entornos, usuarios y habilitaciones autorizados",VAR/CTR; reparto E1 SD3; modelo UCP y conciliación de alcance 1.4–1.6,2027-02-01,2027-02-03,1.5.1.1.1,Recepción por etapa o control del periodo; no acredita ejecución,VAR/CTR; reparto E1 SD3; modelo UCP y conciliación de alcance 1.4–1.6
1.5.1.1.4.3,Diseño de contratos internos y composición: Maestros de faena y habilitaciones de consulta inicial — lote 1/1,1.5,E1 Desarrollo,Diseño de contratos internos y composición: Maestros de faena y habilitaciones de consulta inicial — lote 1/1,Resultado de la ficha de familia y del paquete original; registro individual por código/ventana,"No duplicar padres, informes, ingeniería ni cobertura; no incluye horas de contraparte ni obras/adquisiciones del cliente","Lote identificado de reglas, contratos, construcción, pruebas o documentación del componente; evidencia versionada, revisión independiente y trazabilidad al flujo UCP. No reconstruye identidad, canales ni adaptadores comunes.",Fernando Guerrero,23,I:23,"Asignación y cuadrante integrado por código; entornos, usuarios y habilitaciones autorizados",VAR/CTR; reparto E1 SD3; modelo UCP y conciliación de alcance 1.4–1.6,2027-02-08,2027-02-10,1.5.1.1.1,Recepción por etapa o control del periodo; no acredita ejecución,VAR/CTR; reparto E1 SD3; modelo UCP y conciliación de alcance 1.4–1.6
1.5.1.1.5.1,Construcción funcional y pruebas unitarias: Maestros de faena y habilitaciones de consulta inicial — lote 1/1,1.5,E1 Desarrollo,Construcción funcional y pruebas unitarias: Maestros de faena y habilitaciones de consulta inicial — lote 1/1,Resultado de la ficha de familia y del paquete original; registro individual por código/ventana,"No duplicar padres, informes, ingeniería ni cobertura; no incluye horas de contraparte ni obras/adquisiciones del cliente","Lote identificado de reglas, contratos, construcción, pruebas o documentación del componente; evidencia versionada, revisión independiente y trazabilidad al flujo UCP. No reconstruye identidad, canales ni adaptadores comunes.",Nikolai Navea,61,V:61,"Asignación y cuadrante integrado por código; entornos, usuarios y habilitaciones autorizados",VAR/CTR; reparto E1 SD3; modelo UCP y conciliación de alcance 1.4–1.6,2027-07-29,2027-08-02,1.5.1.1.2;1.5.1.1.4.1;1.5.1.1.4.2;1.5.1.1.4.3,Recepción por etapa o control del periodo; no acredita ejecución,VAR/CTR; reparto E1 SD3; modelo UCP y conciliación de alcance 1.4–1.6
1.5.1.1.6.1,"Verificación del núcleo, regresión y evidencia: Maestros de faena y habilitaciones de consulta inicial — lote 1/1",1.5,E1 Desarrollo,"Verificación del núcleo, regresión y evidencia: Maestros de faena y habilitaciones de consulta inicial — lote 1/1",Resultado de la ficha de familia y del paquete original; registro individual por código/ventana,"No duplicar padres, informes, ingeniería ni cobertura; no incluye horas de contraparte ni obras/adquisiciones del cliente","Lote identificado de reglas, contratos, construcción, pruebas o documentación del componente; evidencia versionada, revisión independiente y trazabilidad al flujo UCP. No reconstruye identidad, canales ni adaptadores comunes.",Davor Serey,45,Q:45,"Asignación y cuadrante integrado por código; entornos, usuarios y habilitaciones autorizados",VAR/CTR; reparto E1 SD3; modelo UCP y conciliación de alcance 1.4–1.6,2027-08-09,2027-08-12,1.5.1.1.3;1.5.1.1.5.1,Recepción por etapa o control del periodo; no acredita ejecución,VAR/CTR; reparto E1 SD3; modelo UCP y conciliación de alcance 1.4–1.6
1.5.1.1.7.1,Coordinación y documentación del núcleo: Maestros de faena y habilitaciones de consulta inicial — lote 1/1,1.5,E1 Desarrollo,Coordinación y documentación del núcleo: Maestros de faena y habilitaciones de consulta inicial — lote 1/1,Resultado de la ficha de familia y del paquete original; registro individual por código/ventana,"No duplicar padres, informes, ingeniería ni cobertura; no incluye horas de contraparte ni obras/adquisiciones del cliente","Lote identificado de reglas, contratos, construcción, pruebas o documentación del componente; evidencia versionada, revisión independiente y trazabilidad al flujo UCP. No reconstruye identidad, canales ni adaptadores comunes.",Ignacio Silva,53,J:53,"Asignación y cuadrante integrado por código; entornos, usuarios y habilitaciones autorizados",VAR/CTR; reparto E1 SD3; modelo UCP y conciliación de alcance 1.4–1.6,2027-08-12,2027-08-13,1.5.1.1.6.1,Recepción por etapa o control del periodo; no acredita ejecución,VAR/CTR; reparto E1 SD3; modelo UCP y conciliación de alcance 1.4–1.6
1.5.2.1.4.1,"Análisis de reglas, excepciones y protocolo: Despacho identificado y captura segura de combustible — lote 1/1",1.5,E1 Desarrollo,"Análisis de reglas, excepciones y protocolo: Despacho identificado y captura segura de combustible — lote 1/1",Resultado de la ficha de familia y del paquete original; registro individual por código/ventana,"No duplicar padres, informes, ingeniería ni cobertura; no incluye horas de contraparte ni obras/adquisiciones del cliente","Lote identificado de reglas, contratos, construcción, pruebas o documentación del componente; evidencia versionada, revisión independiente y trazabilidad al flujo UCP. No reconstruye identidad, canales ni adaptadores comunes.",Ulysses Barreto,15,A:15,"Asignación y cuadrante integrado por código; entornos, usuarios y habilitaciones autorizados",CON; C07 RT-03.10/RT-05.10; modelo UCP y conciliación de alcance 1.4–1.6,2027-01-29,2027-02-02,1.5.2.1.1,Recepción por etapa o control del periodo; no acredita ejecución,CON; C07 RT-03.10/RT-05.10; modelo UCP y conciliación de alcance 1.4–1.6
1.5.2.1.4.2,Diseño de datos y restricciones del núcleo: Despacho identificado y captura segura de combustible — lote 1/1,1.5,E1 Desarrollo,Diseño de datos y restricciones del núcleo: Despacho identificado y captura segura de combustible — lote 1/1,Resultado de la ficha de familia y del paquete original; registro individual por código/ventana,"No duplicar padres, informes, ingeniería ni cobertura; no incluye horas de contraparte ni obras/adquisiciones del cliente","Lote identificado de reglas, contratos, construcción, pruebas o documentación del componente; evidencia versionada, revisión independiente y trazabilidad al flujo UCP. No reconstruye identidad, canales ni adaptadores comunes.",Nicolás Torfan,16,D:16,"Asignación y cuadrante integrado por código; entornos, usuarios y habilitaciones autorizados",CON; C07 RT-03.10/RT-05.10; modelo UCP y conciliación de alcance 1.4–1.6,2027-02-03,2027-02-05,1.5.2.1.1,Recepción por etapa o control del periodo; no acredita ejecución,CON; C07 RT-03.10/RT-05.10; modelo UCP y conciliación de alcance 1.4–1.6
1.5.2.1.4.3,Diseño de contratos internos y composición: Despacho identificado y captura segura de combustible — lote 1/1,1.5,E1 Desarrollo,Diseño de contratos internos y composición: Despacho identificado y captura segura de combustible — lote 1/1,Resultado de la ficha de familia y del paquete original; registro individual por código/ventana,"No duplicar padres, informes, ingeniería ni cobertura; no incluye horas de contraparte ni obras/adquisiciones del cliente","Lote identificado de reglas, contratos, construcción, pruebas o documentación del componente; evidencia versionada, revisión independiente y trazabilidad al flujo UCP. No reconstruye identidad, canales ni adaptadores comunes.",Fernando Guerrero,23,I:23,"Asignación y cuadrante integrado por código; entornos, usuarios y habilitaciones autorizados",CON; C07 RT-03.10/RT-05.10; modelo UCP y conciliación de alcance 1.4–1.6,2027-01-27,2027-01-28,1.5.2.1.1,Recepción por etapa o control del periodo; no acredita ejecución,CON; C07 RT-03.10/RT-05.10; modelo UCP y conciliación de alcance 1.4–1.6
1.5.2.1.5.1,Construcción funcional y pruebas unitarias: Despacho identificado y captura segura de combustible — lote 1/1,1.5,E1 Desarrollo,Construcción funcional y pruebas unitarias: Despacho identificado y captura segura de combustible — lote 1/1,Resultado de la ficha de familia y del paquete original; registro individual por código/ventana,"No duplicar padres, informes, ingeniería ni cobertura; no incluye horas de contraparte ni obras/adquisiciones del cliente","Lote identificado de reglas, contratos, construcción, pruebas o documentación del componente; evidencia versionada, revisión independiente y trazabilidad al flujo UCP. No reconstruye identidad, canales ni adaptadores comunes.",Nikolai Navea,61,V:61,"Asignación y cuadrante integrado por código; entornos, usuarios y habilitaciones autorizados",CON; C07 RT-03.10/RT-05.10; modelo UCP y conciliación de alcance 1.4–1.6,2027-07-21,2027-07-23,1.5.2.1.2;1.5.2.1.4.1;1.5.2.1.4.2;1.5.2.1.4.3,Recepción por etapa o control del periodo; no acredita ejecución,CON; C07 RT-03.10/RT-05.10; modelo UCP y conciliación de alcance 1.4–1.6
1.5.2.1.6.1,"Verificación del núcleo, regresión y evidencia: Despacho identificado y captura segura de combustible — lote 1/1",1.5,E1 Desarrollo,"Verificación del núcleo, regresión y evidencia: Despacho identificado y captura segura de combustible — lote 1/1",Resultado de la ficha de familia y del paquete original; registro individual por código/ventana,"No duplicar padres, informes, ingeniería ni cobertura; no incluye horas de contraparte ni obras/adquisiciones del cliente","Lote identificado de reglas, contratos, construcción, pruebas o documentación del componente; evidencia versionada, revisión independiente y trazabilidad al flujo UCP. No reconstruye identidad, canales ni adaptadores comunes.",Davor Serey,45,Q:45,"Asignación y cuadrante integrado por código; entornos, usuarios y habilitaciones autorizados",CON; C07 RT-03.10/RT-05.10; modelo UCP y conciliación de alcance 1.4–1.6,2027-08-02,2027-08-04,1.5.2.1.3;1.5.2.1.5.1,Recepción por etapa o control del periodo; no acredita ejecución,CON; C07 RT-03.10/RT-05.10; modelo UCP y conciliación de alcance 1.4–1.6
1.5.2.1.7.1,Coordinación y documentación del núcleo: Despacho identificado y captura segura de combustible — lote 1/1,1.5,E1 Desarrollo,Coordinación y documentación del núcleo: Despacho identificado y captura segura de combustible — lote 1/1,Resultado de la ficha de familia y del paquete original; registro individual por código/ventana,"No duplicar padres, informes, ingeniería ni cobertura; no incluye horas de contraparte ni obras/adquisiciones del cliente","Lote identificado de reglas, contratos, construcción, pruebas o documentación del componente; evidencia versionada, revisión independiente y trazabilidad al flujo UCP. No reconstruye identidad, canales ni adaptadores comunes.",Ignacio Silva,53,J:53,"Asignación y cuadrante integrado por código; entornos, usuarios y habilitaciones autorizados",CON; C07 RT-03.10/RT-05.10; modelo UCP y conciliación de alcance 1.4–1.6,2027-08-04,2027-08-06,1.5.2.1.6.1,Recepción por etapa o control del periodo; no acredita ejecución,CON; C07 RT-03.10/RT-05.10; modelo UCP y conciliación de alcance 1.4–1.6
1.5.2.2.4.1,"Análisis de reglas, excepciones y protocolo: Conciliación de tramos y rectificación de despachos — lote 1/1",1.5,E1 Desarrollo,"Análisis de reglas, excepciones y protocolo: Conciliación de tramos y rectificación de despachos — lote 1/1",Resultado de la ficha de familia y del paquete original; registro individual por código/ventana,"No duplicar padres, informes, ingeniería ni cobertura; no incluye horas de contraparte ni obras/adquisiciones del cliente","Lote identificado de reglas, contratos, construcción, pruebas o documentación del componente; evidencia versionada, revisión independiente y trazabilidad al flujo UCP. No reconstruye identidad, canales ni adaptadores comunes.",Ulysses Barreto,15,A:15,"Asignación y cuadrante integrado por código; entornos, usuarios y habilitaciones autorizados",SD5 Combustible; modelo UCP y conciliación de alcance 1.4–1.6,2027-01-27,2027-01-29,1.5.2.2.1,Recepción por etapa o control del periodo; no acredita ejecución,SD5 Combustible; modelo UCP y conciliación de alcance 1.4–1.6
1.5.2.2.4.2,Diseño de datos y restricciones del núcleo: Conciliación de tramos y rectificación de despachos — lote 1/1,1.5,E1 Desarrollo,Diseño de datos y restricciones del núcleo: Conciliación de tramos y rectificación de despachos — lote 1/1,Resultado de la ficha de familia y del paquete original; registro individual por código/ventana,"No duplicar padres, informes, ingeniería ni cobertura; no incluye horas de contraparte ni obras/adquisiciones del cliente","Lote identificado de reglas, contratos, construcción, pruebas o documentación del componente; evidencia versionada, revisión independiente y trazabilidad al flujo UCP. No reconstruye identidad, canales ni adaptadores comunes.",Nicolás Torfan,16,D:16,"Asignación y cuadrante integrado por código; entornos, usuarios y habilitaciones autorizados",SD5 Combustible; modelo UCP y conciliación de alcance 1.4–1.6,2027-02-03,2027-02-05,1.5.2.2.1,Recepción por etapa o control del periodo; no acredita ejecución,SD5 Combustible; modelo UCP y conciliación de alcance 1.4–1.6
1.5.2.2.4.3,Diseño de contratos internos y composición: Conciliación de tramos y rectificación de despachos — lote 1/1,1.5,E1 Desarrollo,Diseño de contratos internos y composición: Conciliación de tramos y rectificación de despachos — lote 1/1,Resultado de la ficha de familia y del paquete original; registro individual por código/ventana,"No duplicar padres, informes, ingeniería ni cobertura; no incluye horas de contraparte ni obras/adquisiciones del cliente","Lote identificado de reglas, contratos, construcción, pruebas o documentación del componente; evidencia versionada, revisión independiente y trazabilidad al flujo UCP. No reconstruye identidad, canales ni adaptadores comunes.",Fernando Guerrero,23,I:23,"Asignación y cuadrante integrado por código; entornos, usuarios y habilitaciones autorizados",SD5 Combustible; modelo UCP y conciliación de alcance 1.4–1.6,2027-01-27,2027-01-28,1.5.2.2.1,Recepción por etapa o control del periodo; no acredita ejecución,SD5 Combustible; modelo UCP y conciliación de alcance 1.4–1.6
1.5.2.2.5.1,Construcción funcional y pruebas unitarias: Conciliación de tramos y rectificación de despachos — lote 1/1,1.5,E1 Desarrollo,Construcción funcional y pruebas unitarias: Conciliación de tramos y rectificación de despachos — lote 1/1,Resultado de la ficha de familia y del paquete original; registro individual por código/ventana,"No duplicar padres, informes, ingeniería ni cobertura; no incluye horas de contraparte ni obras/adquisiciones del cliente","Lote identificado de reglas, contratos, construcción, pruebas o documentación del componente; evidencia versionada, revisión independiente y trazabilidad al flujo UCP. No reconstruye identidad, canales ni adaptadores comunes.",Nikolai Navea,61,V:61,"Asignación y cuadrante integrado por código; entornos, usuarios y habilitaciones autorizados",SD5 Combustible; modelo UCP y conciliación de alcance 1.4–1.6,2027-07-23,2027-07-28,1.5.2.2.2;1.5.2.2.4.1;1.5.2.2.4.2;1.5.2.2.4.3,Recepción por etapa o control del periodo; no acredita ejecución,SD5 Combustible; modelo UCP y conciliación de alcance 1.4–1.6
1.5.2.2.6.1,"Verificación del núcleo, regresión y evidencia: Conciliación de tramos y rectificación de despachos — lote 1/1",1.5,E1 Desarrollo,"Verificación del núcleo, regresión y evidencia: Conciliación de tramos y rectificación de despachos — lote 1/1",Resultado de la ficha de familia y del paquete original; registro individual por código/ventana,"No duplicar padres, informes, ingeniería ni cobertura; no incluye horas de contraparte ni obras/adquisiciones del cliente","Lote identificado de reglas, contratos, construcción, pruebas o documentación del componente; evidencia versionada, revisión independiente y trazabilidad al flujo UCP. No reconstruye identidad, canales ni adaptadores comunes.",Davor Serey,45,Q:45,"Asignación y cuadrante integrado por código; entornos, usuarios y habilitaciones autorizados",SD5 Combustible; modelo UCP y conciliación de alcance 1.4–1.6,2027-08-04,2027-08-06,1.5.2.2.3;1.5.2.2.5.1,Recepción por etapa o control del periodo; no acredita ejecución,SD5 Combustible; modelo UCP y conciliación de alcance 1.4–1.6
1.5.2.2.7.1,Coordinación y documentación del núcleo: Conciliación de tramos y rectificación de despachos — lote 1/1,1.5,E1 Desarrollo,Coordinación y documentación del núcleo: Conciliación de tramos y rectificación de despachos — lote 1/1,Resultado de la ficha de familia y del paquete original; registro individual por código/ventana,"No duplicar padres, informes, ingeniería ni cobertura; no incluye horas de contraparte ni obras/adquisiciones del cliente","Lote identificado de reglas, contratos, construcción, pruebas o documentación del componente; evidencia versionada, revisión independiente y trazabilidad al flujo UCP. No reconstruye identidad, canales ni adaptadores comunes.",Ignacio Silva,53,J:53,"Asignación y cuadrante integrado por código; entornos, usuarios y habilitaciones autorizados",SD5 Combustible; modelo UCP y conciliación de alcance 1.4–1.6,2027-08-09,2027-08-11,1.5.2.2.6.1,Recepción por etapa o control del periodo; no acredita ejecución,SD5 Combustible; modelo UCP y conciliación de alcance 1.4–1.6
1.5.3.1.4.1,"Análisis de reglas, excepciones y protocolo: Intervalos y series conciliadas de agua y energía — lote 1/1",1.5,E1 Desarrollo,"Análisis de reglas, excepciones y protocolo: Intervalos y series conciliadas de agua y energía — lote 1/1",Resultado de la ficha de familia y del paquete original; registro individual por código/ventana,"No duplicar padres, informes, ingeniería ni cobertura; no incluye horas de contraparte ni obras/adquisiciones del cliente","Lote identificado de reglas, contratos, construcción, pruebas o documentación del componente; evidencia versionada, revisión independiente y trazabilidad al flujo UCP. No reconstruye identidad, canales ni adaptadores comunes.",Ulysses Barreto,15,A:15,"Asignación y cuadrante integrado por código; entornos, usuarios y habilitaciones autorizados",CON/AMB; CA-18/19; modelo UCP y conciliación de alcance 1.4–1.6,2027-01-29,2027-02-02,1.5.3.1.1,Recepción por etapa o control del periodo; no acredita ejecución,CON/AMB; CA-18/19; modelo UCP y conciliación de alcance 1.4–1.6
1.5.3.1.4.2,Diseño de datos y restricciones del núcleo: Intervalos y series conciliadas de agua y energía — lote 1/1,1.5,E1 Desarrollo,Diseño de datos y restricciones del núcleo: Intervalos y series conciliadas de agua y energía — lote 1/1,Resultado de la ficha de familia y del paquete original; registro individual por código/ventana,"No duplicar padres, informes, ingeniería ni cobertura; no incluye horas de contraparte ni obras/adquisiciones del cliente","Lote identificado de reglas, contratos, construcción, pruebas o documentación del componente; evidencia versionada, revisión independiente y trazabilidad al flujo UCP. No reconstruye identidad, canales ni adaptadores comunes.",Nicolás Torfan,15,D:15,"Asignación y cuadrante integrado por código; entornos, usuarios y habilitaciones autorizados",CON/AMB; CA-18/19; modelo UCP y conciliación de alcance 1.4–1.6,2027-01-29,2027-02-02,1.5.3.1.1,Recepción por etapa o control del periodo; no acredita ejecución,CON/AMB; CA-18/19; modelo UCP y conciliación de alcance 1.4–1.6
1.5.3.1.4.3,Diseño de contratos internos y composición: Intervalos y series conciliadas de agua y energía — lote 1/1,1.5,E1 Desarrollo,Diseño de contratos internos y composición: Intervalos y series conciliadas de agua y energía — lote 1/1,Resultado de la ficha de familia y del paquete original; registro individual por código/ventana,"No duplicar padres, informes, ingeniería ni cobertura; no incluye horas de contraparte ni obras/adquisiciones del cliente","Lote identificado de reglas, contratos, construcción, pruebas o documentación del componente; evidencia versionada, revisión independiente y trazabilidad al flujo UCP. No reconstruye identidad, canales ni adaptadores comunes.",Fernando Guerrero,23,I:23,"Asignación y cuadrante integrado por código; entornos, usuarios y habilitaciones autorizados",CON/AMB; CA-18/19; modelo UCP y conciliación de alcance 1.4–1.6,2027-01-29,2027-02-02,1.5.3.1.1,Recepción por etapa o control del periodo; no acredita ejecución,CON/AMB; CA-18/19; modelo UCP y conciliación de alcance 1.4–1.6
1.5.3.1.5.1,Construcción funcional y pruebas unitarias: Intervalos y series conciliadas de agua y energía — lote 1/1,1.5,E1 Desarrollo,Construcción funcional y pruebas unitarias: Intervalos y series conciliadas de agua y energía — lote 1/1,Resultado de la ficha de familia y del paquete original; registro individual por código/ventana,"No duplicar padres, informes, ingeniería ni cobertura; no incluye horas de contraparte ni obras/adquisiciones del cliente","Lote identificado de reglas, contratos, construcción, pruebas o documentación del componente; evidencia versionada, revisión independiente y trazabilidad al flujo UCP. No reconstruye identidad, canales ni adaptadores comunes.",Nikolai Navea,61,V:61,"Asignación y cuadrante integrado por código; entornos, usuarios y habilitaciones autorizados",CON/AMB; CA-18/19; modelo UCP y conciliación de alcance 1.4–1.6,2027-07-28,2027-07-30,1.5.3.1.2;1.5.3.1.4.1;1.5.3.1.4.2;1.5.3.1.4.3,Recepción por etapa o control del periodo; no acredita ejecución,CON/AMB; CA-18/19; modelo UCP y conciliación de alcance 1.4–1.6
1.5.3.1.6.1,"Verificación del núcleo, regresión y evidencia: Intervalos y series conciliadas de agua y energía — lote 1/1",1.5,E1 Desarrollo,"Verificación del núcleo, regresión y evidencia: Intervalos y series conciliadas de agua y energía — lote 1/1",Resultado de la ficha de familia y del paquete original; registro individual por código/ventana,"No duplicar padres, informes, ingeniería ni cobertura; no incluye horas de contraparte ni obras/adquisiciones del cliente","Lote identificado de reglas, contratos, construcción, pruebas o documentación del componente; evidencia versionada, revisión independiente y trazabilidad al flujo UCP. No reconstruye identidad, canales ni adaptadores comunes.",Davor Serey,45,Q:45,"Asignación y cuadrante integrado por código; entornos, usuarios y habilitaciones autorizados",CON/AMB; CA-18/19; modelo UCP y conciliación de alcance 1.4–1.6,2027-08-06,2027-08-10,1.5.3.1.3;1.5.3.1.5.1,Recepción por etapa o control del periodo; no acredita ejecución,CON/AMB; CA-18/19; modelo UCP y conciliación de alcance 1.4–1.6
1.5.3.1.7.1,Coordinación y documentación del núcleo: Intervalos y series conciliadas de agua y energía — lote 1/1,1.5,E1 Desarrollo,Coordinación y documentación del núcleo: Intervalos y series conciliadas de agua y energía — lote 1/1,Resultado de la ficha de familia y del paquete original; registro individual por código/ventana,"No duplicar padres, informes, ingeniería ni cobertura; no incluye horas de contraparte ni obras/adquisiciones del cliente","Lote identificado de reglas, contratos, construcción, pruebas o documentación del componente; evidencia versionada, revisión independiente y trazabilidad al flujo UCP. No reconstruye identidad, canales ni adaptadores comunes.",Ignacio Silva,53,J:53,"Asignación y cuadrante integrado por código; entornos, usuarios y habilitaciones autorizados",CON/AMB; CA-18/19; modelo UCP y conciliación de alcance 1.4–1.6,2027-08-13,2027-08-17,1.5.3.1.6.1,Recepción por etapa o control del periodo; no acredita ejecución,CON/AMB; CA-18/19; modelo UCP y conciliación de alcance 1.4–1.6
1.5.3.2.4.1,"Análisis de reglas, excepciones y protocolo: Consultas de consumo y evidencia ambiental inicial — lote 1/1",1.5,E1 Desarrollo,"Análisis de reglas, excepciones y protocolo: Consultas de consumo y evidencia ambiental inicial — lote 1/1",Resultado de la ficha de familia y del paquete original; registro individual por código/ventana,"No duplicar padres, informes, ingeniería ni cobertura; no incluye horas de contraparte ni obras/adquisiciones del cliente","Lote identificado de reglas, contratos, construcción, pruebas o documentación del componente; evidencia versionada, revisión independiente y trazabilidad al flujo UCP. No reconstruye identidad, canales ni adaptadores comunes.",Ulysses Barreto,15,A:15,"Asignación y cuadrante integrado por código; entornos, usuarios y habilitaciones autorizados",AMB; CA-19; SD3 historia ambiental; modelo UCP y conciliación de alcance 1.4–1.6,2027-01-29,2027-02-02,1.5.3.2.1,Recepción por etapa o control del periodo; no acredita ejecución,AMB; CA-19; SD3 historia ambiental; modelo UCP y conciliación de alcance 1.4–1.6
1.5.3.2.4.2,Diseño de datos y restricciones del núcleo: Consultas de consumo y evidencia ambiental inicial — lote 1/1,1.5,E1 Desarrollo,Diseño de datos y restricciones del núcleo: Consultas de consumo y evidencia ambiental inicial — lote 1/1,Resultado de la ficha de familia y del paquete original; registro individual por código/ventana,"No duplicar padres, informes, ingeniería ni cobertura; no incluye horas de contraparte ni obras/adquisiciones del cliente","Lote identificado de reglas, contratos, construcción, pruebas o documentación del componente; evidencia versionada, revisión independiente y trazabilidad al flujo UCP. No reconstruye identidad, canales ni adaptadores comunes.",Nicolás Torfan,15,D:15,"Asignación y cuadrante integrado por código; entornos, usuarios y habilitaciones autorizados",AMB; CA-19; SD3 historia ambiental; modelo UCP y conciliación de alcance 1.4–1.6,2027-01-27,2027-01-29,1.5.3.2.1,Recepción por etapa o control del periodo; no acredita ejecución,AMB; CA-19; SD3 historia ambiental; modelo UCP y conciliación de alcance 1.4–1.6
1.5.3.2.4.3,Diseño de contratos internos y composición: Consultas de consumo y evidencia ambiental inicial — lote 1/1,1.5,E1 Desarrollo,Diseño de contratos internos y composición: Consultas de consumo y evidencia ambiental inicial — lote 1/1,Resultado de la ficha de familia y del paquete original; registro individual por código/ventana,"No duplicar padres, informes, ingeniería ni cobertura; no incluye horas de contraparte ni obras/adquisiciones del cliente","Lote identificado de reglas, contratos, construcción, pruebas o documentación del componente; evidencia versionada, revisión independiente y trazabilidad al flujo UCP. No reconstruye identidad, canales ni adaptadores comunes.",Fernando Guerrero,23,I:23,"Asignación y cuadrante integrado por código; entornos, usuarios y habilitaciones autorizados",AMB; CA-19; SD3 historia ambiental; modelo UCP y conciliación de alcance 1.4–1.6,2027-01-27,2027-01-28,1.5.3.2.1,Recepción por etapa o control del periodo; no acredita ejecución,AMB; CA-19; SD3 historia ambiental; modelo UCP y conciliación de alcance 1.4–1.6
1.5.3.2.5.1,Construcción funcional y pruebas unitarias: Consultas de consumo y evidencia ambiental inicial — lote 1/1,1.5,E1 Desarrollo,Construcción funcional y pruebas unitarias: Consultas de consumo y evidencia ambiental inicial — lote 1/1,Resultado de la ficha de familia y del paquete original; registro individual por código/ventana,"No duplicar padres, informes, ingeniería ni cobertura; no incluye horas de contraparte ni obras/adquisiciones del cliente","Lote identificado de reglas, contratos, construcción, pruebas o documentación del componente; evidencia versionada, revisión independiente y trazabilidad al flujo UCP. No reconstruye identidad, canales ni adaptadores comunes.",Nikolai Navea,61,V:61,"Asignación y cuadrante integrado por código; entornos, usuarios y habilitaciones autorizados",AMB; CA-19; SD3 historia ambiental; modelo UCP y conciliación de alcance 1.4–1.6,2027-07-21,2027-07-23,1.5.3.2.2;1.5.3.2.4.1;1.5.3.2.4.2;1.5.3.2.4.3,Recepción por etapa o control del periodo; no acredita ejecución,AMB; CA-19; SD3 historia ambiental; modelo UCP y conciliación de alcance 1.4–1.6
1.5.3.2.6.1,"Verificación del núcleo, regresión y evidencia: Consultas de consumo y evidencia ambiental inicial — lote 1/1",1.5,E1 Desarrollo,"Verificación del núcleo, regresión y evidencia: Consultas de consumo y evidencia ambiental inicial — lote 1/1",Resultado de la ficha de familia y del paquete original; registro individual por código/ventana,"No duplicar padres, informes, ingeniería ni cobertura; no incluye horas de contraparte ni obras/adquisiciones del cliente","Lote identificado de reglas, contratos, construcción, pruebas o documentación del componente; evidencia versionada, revisión independiente y trazabilidad al flujo UCP. No reconstruye identidad, canales ni adaptadores comunes.",Davor Serey,45,Q:45,"Asignación y cuadrante integrado por código; entornos, usuarios y habilitaciones autorizados",AMB; CA-19; SD3 historia ambiental; modelo UCP y conciliación de alcance 1.4–1.6,2027-08-02,2027-08-04,1.5.3.2.3;1.5.3.2.5.1,Recepción por etapa o control del periodo; no acredita ejecución,AMB; CA-19; SD3 historia ambiental; modelo UCP y conciliación de alcance 1.4–1.6
1.5.3.2.7.1,Coordinación y documentación del núcleo: Consultas de consumo y evidencia ambiental inicial — lote 1/1,1.5,E1 Desarrollo,Coordinación y documentación del núcleo: Consultas de consumo y evidencia ambiental inicial — lote 1/1,Resultado de la ficha de familia y del paquete original; registro individual por código/ventana,"No duplicar padres, informes, ingeniería ni cobertura; no incluye horas de contraparte ni obras/adquisiciones del cliente","Lote identificado de reglas, contratos, construcción, pruebas o documentación del componente; evidencia versionada, revisión independiente y trazabilidad al flujo UCP. No reconstruye identidad, canales ni adaptadores comunes.",Ignacio Silva,53,J:53,"Asignación y cuadrante integrado por código; entornos, usuarios y habilitaciones autorizados",AMB; CA-19; SD3 historia ambiental; modelo UCP y conciliación de alcance 1.4–1.6,2027-08-04,2027-08-06,1.5.3.2.6.1,Recepción por etapa o control del periodo; no acredita ejecución,AMB; CA-19; SD3 historia ambiental; modelo UCP y conciliación de alcance 1.4–1.6
1.6.1.1.4.1,"Análisis de reglas, excepciones y protocolo: Maestros de personas, organizaciones y embarcaciones — lote 1/1",1.6,E1 Desarrollo,"Análisis de reglas, excepciones y protocolo: Maestros de personas, organizaciones y embarcaciones — lote 1/1",Resultado de la ficha de familia y del paquete original; registro individual por código/ventana,"No duplicar padres, informes, ingeniería ni cobertura; no incluye horas de contraparte ni obras/adquisiciones del cliente","Lote identificado de reglas, contratos, construcción, pruebas o documentación del componente; evidencia versionada, revisión independiente y trazabilidad al flujo UCP. No reconstruye identidad, canales ni adaptadores comunes.",Ulysses Barreto,15,A:15,"Asignación y cuadrante integrado por código; entornos, usuarios y habilitaciones autorizados",ADM/AUT; SD5 Clientes y contratos; modelo UCP y conciliación de alcance 1.4–1.6,2027-01-27,2027-01-29,1.6.1.1.1,Recepción por etapa o control del periodo; no acredita ejecución,ADM/AUT; SD5 Clientes y contratos; modelo UCP y conciliación de alcance 1.4–1.6
1.6.1.1.4.2,"Diseño de datos y restricciones del núcleo: Maestros de personas, organizaciones y embarcaciones — lote 1/1",1.6,E1 Desarrollo,"Diseño de datos y restricciones del núcleo: Maestros de personas, organizaciones y embarcaciones — lote 1/1",Resultado de la ficha de familia y del paquete original; registro individual por código/ventana,"No duplicar padres, informes, ingeniería ni cobertura; no incluye horas de contraparte ni obras/adquisiciones del cliente","Lote identificado de reglas, contratos, construcción, pruebas o documentación del componente; evidencia versionada, revisión independiente y trazabilidad al flujo UCP. No reconstruye identidad, canales ni adaptadores comunes.",Nicolás Torfan,15,D:15,"Asignación y cuadrante integrado por código; entornos, usuarios y habilitaciones autorizados",ADM/AUT; SD5 Clientes y contratos; modelo UCP y conciliación de alcance 1.4–1.6,2027-01-27,2027-01-29,1.6.1.1.1,Recepción por etapa o control del periodo; no acredita ejecución,ADM/AUT; SD5 Clientes y contratos; modelo UCP y conciliación de alcance 1.4–1.6
1.6.1.1.4.3,"Diseño de contratos internos y composición: Maestros de personas, organizaciones y embarcaciones — lote 1/1",1.6,E1 Desarrollo,"Diseño de contratos internos y composición: Maestros de personas, organizaciones y embarcaciones — lote 1/1",Resultado de la ficha de familia y del paquete original; registro individual por código/ventana,"No duplicar padres, informes, ingeniería ni cobertura; no incluye horas de contraparte ni obras/adquisiciones del cliente","Lote identificado de reglas, contratos, construcción, pruebas o documentación del componente; evidencia versionada, revisión independiente y trazabilidad al flujo UCP. No reconstruye identidad, canales ni adaptadores comunes.",Fernando Guerrero,23,I:23,"Asignación y cuadrante integrado por código; entornos, usuarios y habilitaciones autorizados",ADM/AUT; SD5 Clientes y contratos; modelo UCP y conciliación de alcance 1.4–1.6,2027-02-02,2027-02-03,1.6.1.1.1,Recepción por etapa o control del periodo; no acredita ejecución,ADM/AUT; SD5 Clientes y contratos; modelo UCP y conciliación de alcance 1.4–1.6
1.6.1.1.5.1,"Construcción funcional y pruebas unitarias: Maestros de personas, organizaciones y embarcaciones — lote 1/1",1.6,E1 Desarrollo,"Construcción funcional y pruebas unitarias: Maestros de personas, organizaciones y embarcaciones — lote 1/1",Resultado de la ficha de familia y del paquete original; registro individual por código/ventana,"No duplicar padres, informes, ingeniería ni cobertura; no incluye horas de contraparte ni obras/adquisiciones del cliente","Lote identificado de reglas, contratos, construcción, pruebas o documentación del componente; evidencia versionada, revisión independiente y trazabilidad al flujo UCP. No reconstruye identidad, canales ni adaptadores comunes.",Nikolai Navea,61,V:61,"Asignación y cuadrante integrado por código; entornos, usuarios y habilitaciones autorizados",ADM/AUT; SD5 Clientes y contratos; modelo UCP y conciliación de alcance 1.4–1.6,2027-07-23,2027-07-28,1.6.1.1.2;1.6.1.1.4.1;1.6.1.1.4.2;1.6.1.1.4.3,Recepción por etapa o control del periodo; no acredita ejecución,ADM/AUT; SD5 Clientes y contratos; modelo UCP y conciliación de alcance 1.4–1.6
1.6.1.1.6.1,"Verificación del núcleo, regresión y evidencia: Maestros de personas, organizaciones y embarcaciones — lote 1/1",1.6,E1 Desarrollo,"Verificación del núcleo, regresión y evidencia: Maestros de personas, organizaciones y embarcaciones — lote 1/1",Resultado de la ficha de familia y del paquete original; registro individual por código/ventana,"No duplicar padres, informes, ingeniería ni cobertura; no incluye horas de contraparte ni obras/adquisiciones del cliente","Lote identificado de reglas, contratos, construcción, pruebas o documentación del componente; evidencia versionada, revisión independiente y trazabilidad al flujo UCP. No reconstruye identidad, canales ni adaptadores comunes.",Davor Serey,45,Q:45,"Asignación y cuadrante integrado por código; entornos, usuarios y habilitaciones autorizados",ADM/AUT; SD5 Clientes y contratos; modelo UCP y conciliación de alcance 1.4–1.6,2027-08-10,2027-08-12,1.6.1.1.3;1.6.1.1.5.1,Recepción por etapa o control del periodo; no acredita ejecución,ADM/AUT; SD5 Clientes y contratos; modelo UCP y conciliación de alcance 1.4–1.6
1.6.1.1.7.1,"Coordinación y documentación del núcleo: Maestros de personas, organizaciones y embarcaciones — lote 1/1",1.6,E1 Desarrollo,"Coordinación y documentación del núcleo: Maestros de personas, organizaciones y embarcaciones — lote 1/1",Resultado de la ficha de familia y del paquete original; registro individual por código/ventana,"No duplicar padres, informes, ingeniería ni cobertura; no incluye horas de contraparte ni obras/adquisiciones del cliente","Lote identificado de reglas, contratos, construcción, pruebas o documentación del componente; evidencia versionada, revisión independiente y trazabilidad al flujo UCP. No reconstruye identidad, canales ni adaptadores comunes.",Ignacio Silva,53,J:53,"Asignación y cuadrante integrado por código; entornos, usuarios y habilitaciones autorizados",ADM/AUT; SD5 Clientes y contratos; modelo UCP y conciliación de alcance 1.4–1.6,2027-08-12,2027-08-16,1.6.1.1.6.1,Recepción por etapa o control del periodo; no acredita ejecución,ADM/AUT; SD5 Clientes y contratos; modelo UCP y conciliación de alcance 1.4–1.6
1.6.1.2.4.1,"Análisis de reglas, excepciones y protocolo: Contratos y documentos vigentes de consulta E1 — lote 1/1",1.6,E1 Desarrollo,"Análisis de reglas, excepciones y protocolo: Contratos y documentos vigentes de consulta E1 — lote 1/1",Resultado de la ficha de familia y del paquete original; registro individual por código/ventana,"No duplicar padres, informes, ingeniería ni cobertura; no incluye horas de contraparte ni obras/adquisiciones del cliente","Lote identificado de reglas, contratos, construcción, pruebas o documentación del componente; evidencia versionada, revisión independiente y trazabilidad al flujo UCP. No reconstruye identidad, canales ni adaptadores comunes.",Ulysses Barreto,15,A:15,"Asignación y cuadrante integrado por código; entornos, usuarios y habilitaciones autorizados",SD3 reparto E1; SD5 contratos; modelo UCP y conciliación de alcance 1.4–1.6,2027-01-27,2027-01-29,1.6.1.2.1,Recepción por etapa o control del periodo; no acredita ejecución,SD3 reparto E1; SD5 contratos; modelo UCP y conciliación de alcance 1.4–1.6
1.6.1.2.4.2,Diseño de datos y restricciones del núcleo: Contratos y documentos vigentes de consulta E1 — lote 1/1,1.6,E1 Desarrollo,Diseño de datos y restricciones del núcleo: Contratos y documentos vigentes de consulta E1 — lote 1/1,Resultado de la ficha de familia y del paquete original; registro individual por código/ventana,"No duplicar padres, informes, ingeniería ni cobertura; no incluye horas de contraparte ni obras/adquisiciones del cliente","Lote identificado de reglas, contratos, construcción, pruebas o documentación del componente; evidencia versionada, revisión independiente y trazabilidad al flujo UCP. No reconstruye identidad, canales ni adaptadores comunes.",Nicolás Torfan,15,D:15,"Asignación y cuadrante integrado por código; entornos, usuarios y habilitaciones autorizados",SD3 reparto E1; SD5 contratos; modelo UCP y conciliación de alcance 1.4–1.6,2027-02-02,2027-02-04,1.6.1.2.1,Recepción por etapa o control del periodo; no acredita ejecución,SD3 reparto E1; SD5 contratos; modelo UCP y conciliación de alcance 1.4–1.6
1.6.1.2.4.3,Diseño de contratos internos y composición: Contratos y documentos vigentes de consulta E1 — lote 1/1,1.6,E1 Desarrollo,Diseño de contratos internos y composición: Contratos y documentos vigentes de consulta E1 — lote 1/1,Resultado de la ficha de familia y del paquete original; registro individual por código/ventana,"No duplicar padres, informes, ingeniería ni cobertura; no incluye horas de contraparte ni obras/adquisiciones del cliente","Lote identificado de reglas, contratos, construcción, pruebas o documentación del componente; evidencia versionada, revisión independiente y trazabilidad al flujo UCP. No reconstruye identidad, canales ni adaptadores comunes.",Fernando Guerrero,23,I:23,"Asignación y cuadrante integrado por código; entornos, usuarios y habilitaciones autorizados",SD3 reparto E1; SD5 contratos; modelo UCP y conciliación de alcance 1.4–1.6,2027-02-03,2027-02-05,1.6.1.2.1,Recepción por etapa o control del periodo; no acredita ejecución,SD3 reparto E1; SD5 contratos; modelo UCP y conciliación de alcance 1.4–1.6
1.6.1.2.5.1,Construcción funcional y pruebas unitarias: Contratos y documentos vigentes de consulta E1 — lote 1/1,1.6,E1 Desarrollo,Construcción funcional y pruebas unitarias: Contratos y documentos vigentes de consulta E1 — lote 1/1,Resultado de la ficha de familia y del paquete original; registro individual por código/ventana,"No duplicar padres, informes, ingeniería ni cobertura; no incluye horas de contraparte ni obras/adquisiciones del cliente","Lote identificado de reglas, contratos, construcción, pruebas o documentación del componente; evidencia versionada, revisión independiente y trazabilidad al flujo UCP. No reconstruye identidad, canales ni adaptadores comunes.",Nikolai Navea,61,V:61,"Asignación y cuadrante integrado por código; entornos, usuarios y habilitaciones autorizados",SD3 reparto E1; SD5 contratos; modelo UCP y conciliación de alcance 1.4–1.6,2027-07-28,2027-07-30,1.6.1.2.2;1.6.1.2.4.1;1.6.1.2.4.2;1.6.1.2.4.3,Recepción por etapa o control del periodo; no acredita ejecución,SD3 reparto E1; SD5 contratos; modelo UCP y conciliación de alcance 1.4–1.6
1.6.1.2.6.1,"Verificación del núcleo, regresión y evidencia: Contratos y documentos vigentes de consulta E1 — lote 1/1",1.6,E1 Desarrollo,"Verificación del núcleo, regresión y evidencia: Contratos y documentos vigentes de consulta E1 — lote 1/1",Resultado de la ficha de familia y del paquete original; registro individual por código/ventana,"No duplicar padres, informes, ingeniería ni cobertura; no incluye horas de contraparte ni obras/adquisiciones del cliente","Lote identificado de reglas, contratos, construcción, pruebas o documentación del componente; evidencia versionada, revisión independiente y trazabilidad al flujo UCP. No reconstruye identidad, canales ni adaptadores comunes.",Davor Serey,45,Q:45,"Asignación y cuadrante integrado por código; entornos, usuarios y habilitaciones autorizados",SD3 reparto E1; SD5 contratos; modelo UCP y conciliación de alcance 1.4–1.6,2027-08-03,2027-08-05,1.6.1.2.3;1.6.1.2.5.1,Recepción por etapa o control del periodo; no acredita ejecución,SD3 reparto E1; SD5 contratos; modelo UCP y conciliación de alcance 1.4–1.6
1.6.1.2.7.1,Coordinación y documentación del núcleo: Contratos y documentos vigentes de consulta E1 — lote 1/1,1.6,E1 Desarrollo,Coordinación y documentación del núcleo: Contratos y documentos vigentes de consulta E1 — lote 1/1,Resultado de la ficha de familia y del paquete original; registro individual por código/ventana,"No duplicar padres, informes, ingeniería ni cobertura; no incluye horas de contraparte ni obras/adquisiciones del cliente","Lote identificado de reglas, contratos, construcción, pruebas o documentación del componente; evidencia versionada, revisión independiente y trazabilidad al flujo UCP. No reconstruye identidad, canales ni adaptadores comunes.",Ignacio Silva,53,J:53,"Asignación y cuadrante integrado por código; entornos, usuarios y habilitaciones autorizados",SD3 reparto E1; SD5 contratos; modelo UCP y conciliación de alcance 1.4–1.6,2027-08-06,2027-08-10,1.6.1.2.6.1,Recepción por etapa o control del periodo; no acredita ejecución,SD3 reparto E1; SD5 contratos; modelo UCP y conciliación de alcance 1.4–1.6
1.6.1.3.4.1,"Análisis de reglas, excepciones y protocolo: Atención a visitas y asignación transitoria inicial — lote 1/1",1.6,E1 Desarrollo,"Análisis de reglas, excepciones y protocolo: Atención a visitas y asignación transitoria inicial — lote 1/1",Resultado de la ficha de familia y del paquete original; registro individual por código/ventana,"No duplicar padres, informes, ingeniería ni cobertura; no incluye horas de contraparte ni obras/adquisiciones del cliente","Lote identificado de reglas, contratos, construcción, pruebas o documentación del componente; evidencia versionada, revisión independiente y trazabilidad al flujo UCP. No reconstruye identidad, canales ni adaptadores comunes.",Ulysses Barreto,15,A:15,"Asignación y cuadrante integrado por código; entornos, usuarios y habilitaciones autorizados",AMA/AUT; SD3 atención náutica; modelo UCP y conciliación de alcance 1.4–1.6,2027-01-27,2027-01-29,1.6.1.3.1,Recepción por etapa o control del periodo; no acredita ejecución,AMA/AUT; SD3 atención náutica; modelo UCP y conciliación de alcance 1.4–1.6
1.6.1.3.4.2,Diseño de datos y restricciones del núcleo: Atención a visitas y asignación transitoria inicial — lote 1/1,1.6,E1 Desarrollo,Diseño de datos y restricciones del núcleo: Atención a visitas y asignación transitoria inicial — lote 1/1,Resultado de la ficha de familia y del paquete original; registro individual por código/ventana,"No duplicar padres, informes, ingeniería ni cobertura; no incluye horas de contraparte ni obras/adquisiciones del cliente","Lote identificado de reglas, contratos, construcción, pruebas o documentación del componente; evidencia versionada, revisión independiente y trazabilidad al flujo UCP. No reconstruye identidad, canales ni adaptadores comunes.",Nicolás Torfan,15,D:15,"Asignación y cuadrante integrado por código; entornos, usuarios y habilitaciones autorizados",AMA/AUT; SD3 atención náutica; modelo UCP y conciliación de alcance 1.4–1.6,2027-02-04,2027-02-08,1.6.1.3.1,Recepción por etapa o control del periodo; no acredita ejecución,AMA/AUT; SD3 atención náutica; modelo UCP y conciliación de alcance 1.4–1.6
1.6.1.3.4.3,Diseño de contratos internos y composición: Atención a visitas y asignación transitoria inicial — lote 1/1,1.6,E1 Desarrollo,Diseño de contratos internos y composición: Atención a visitas y asignación transitoria inicial — lote 1/1,Resultado de la ficha de familia y del paquete original; registro individual por código/ventana,"No duplicar padres, informes, ingeniería ni cobertura; no incluye horas de contraparte ni obras/adquisiciones del cliente","Lote identificado de reglas, contratos, construcción, pruebas o documentación del componente; evidencia versionada, revisión independiente y trazabilidad al flujo UCP. No reconstruye identidad, canales ni adaptadores comunes.",Fernando Guerrero,23,I:23,"Asignación y cuadrante integrado por código; entornos, usuarios y habilitaciones autorizados",AMA/AUT; SD3 atención náutica; modelo UCP y conciliación de alcance 1.4–1.6,2027-02-05,2027-02-08,1.6.1.3.1,Recepción por etapa o control del periodo; no acredita ejecución,AMA/AUT; SD3 atención náutica; modelo UCP y conciliación de alcance 1.4–1.6
1.6.1.3.5.1,Construcción funcional y pruebas unitarias: Atención a visitas y asignación transitoria inicial — lote 1/1,1.6,E1 Desarrollo,Construcción funcional y pruebas unitarias: Atención a visitas y asignación transitoria inicial — lote 1/1,Resultado de la ficha de familia y del paquete original; registro individual por código/ventana,"No duplicar padres, informes, ingeniería ni cobertura; no incluye horas de contraparte ni obras/adquisiciones del cliente","Lote identificado de reglas, contratos, construcción, pruebas o documentación del componente; evidencia versionada, revisión independiente y trazabilidad al flujo UCP. No reconstruye identidad, canales ni adaptadores comunes.",Nikolai Navea,61,V:61,"Asignación y cuadrante integrado por código; entornos, usuarios y habilitaciones autorizados",AMA/AUT; SD3 atención náutica; modelo UCP y conciliación de alcance 1.4–1.6,2027-07-21,2027-07-23,1.6.1.3.2;1.6.1.3.4.1;1.6.1.3.4.2;1.6.1.3.4.3,Recepción por etapa o control del periodo; no acredita ejecución,AMA/AUT; SD3 atención náutica; modelo UCP y conciliación de alcance 1.4–1.6
1.6.1.3.6.1,"Verificación del núcleo, regresión y evidencia: Atención a visitas y asignación transitoria inicial — lote 1/1",1.6,E1 Desarrollo,"Verificación del núcleo, regresión y evidencia: Atención a visitas y asignación transitoria inicial — lote 1/1",Resultado de la ficha de familia y del paquete original; registro individual por código/ventana,"No duplicar padres, informes, ingeniería ni cobertura; no incluye horas de contraparte ni obras/adquisiciones del cliente","Lote identificado de reglas, contratos, construcción, pruebas o documentación del componente; evidencia versionada, revisión independiente y trazabilidad al flujo UCP. No reconstruye identidad, canales ni adaptadores comunes.",Davor Serey,45,Q:45,"Asignación y cuadrante integrado por código; entornos, usuarios y habilitaciones autorizados",AMA/AUT; SD3 atención náutica; modelo UCP y conciliación de alcance 1.4–1.6,2027-07-28,2027-07-30,1.6.1.3.3;1.6.1.3.5.1,Recepción por etapa o control del periodo; no acredita ejecución,AMA/AUT; SD3 atención náutica; modelo UCP y conciliación de alcance 1.4–1.6
1.6.1.3.7.1,Coordinación y documentación del núcleo: Atención a visitas y asignación transitoria inicial — lote 1/1,1.6,E1 Desarrollo,Coordinación y documentación del núcleo: Atención a visitas y asignación transitoria inicial — lote 1/1,Resultado de la ficha de familia y del paquete original; registro individual por código/ventana,"No duplicar padres, informes, ingeniería ni cobertura; no incluye horas de contraparte ni obras/adquisiciones del cliente","Lote identificado de reglas, contratos, construcción, pruebas o documentación del componente; evidencia versionada, revisión independiente y trazabilidad al flujo UCP. No reconstruye identidad, canales ni adaptadores comunes.",Ignacio Silva,53,J:53,"Asignación y cuadrante integrado por código; entornos, usuarios y habilitaciones autorizados",AMA/AUT; SD3 atención náutica; modelo UCP y conciliación de alcance 1.4–1.6,2027-08-02,2027-08-04,1.6.1.3.6.1,Recepción por etapa o control del periodo; no acredita ejecución,AMA/AUT; SD3 atención náutica; modelo UCP y conciliación de alcance 1.4–1.6
1.5.1.2.4.1,"Análisis de reglas, excepciones y protocolo: Agenda de varadero y posiciones compatibles — lote 1/1",1.5,E2 Desarrollo,"Análisis de reglas, excepciones y protocolo: Agenda de varadero y posiciones compatibles — lote 1/1",Resultado de la ficha de familia y del paquete original; registro individual por código/ventana,"No duplicar padres, informes, ingeniería ni cobertura; no incluye horas de contraparte ni obras/adquisiciones del cliente","Lote identificado de reglas, contratos, construcción, pruebas o documentación del componente; evidencia versionada, revisión independiente y trazabilidad al flujo UCP. No reconstruye identidad, canales ni adaptadores comunes.",Ulysses Barreto,16,A:16,"Asignación y cuadrante integrado por código; entornos, usuarios y habilitaciones autorizados",RF-VAR; 180 puestos SD3; modelo UCP y conciliación de alcance 1.4–1.6,2027-12-03,2027-12-07,1.5.1.2.1,Recepción por etapa o control del periodo; no acredita ejecución,RF-VAR; 180 puestos SD3; modelo UCP y conciliación de alcance 1.4–1.6
1.5.1.2.4.2,Diseño de datos y restricciones del núcleo: Agenda de varadero y posiciones compatibles — lote 1/1,1.5,E2 Desarrollo,Diseño de datos y restricciones del núcleo: Agenda de varadero y posiciones compatibles — lote 1/1,Resultado de la ficha de familia y del paquete original; registro individual por código/ventana,"No duplicar padres, informes, ingeniería ni cobertura; no incluye horas de contraparte ni obras/adquisiciones del cliente","Lote identificado de reglas, contratos, construcción, pruebas o documentación del componente; evidencia versionada, revisión independiente y trazabilidad al flujo UCP. No reconstruye identidad, canales ni adaptadores comunes.",Nicolás Torfan,16,D:16,"Asignación y cuadrante integrado por código; entornos, usuarios y habilitaciones autorizados",RF-VAR; 180 puestos SD3; modelo UCP y conciliación de alcance 1.4–1.6,2027-12-03,2027-12-07,1.5.1.2.1,Recepción por etapa o control del periodo; no acredita ejecución,RF-VAR; 180 puestos SD3; modelo UCP y conciliación de alcance 1.4–1.6
1.5.1.2.4.3,Diseño de contratos internos y composición: Agenda de varadero y posiciones compatibles — lote 1/1,1.5,E2 Desarrollo,Diseño de contratos internos y composición: Agenda de varadero y posiciones compatibles — lote 1/1,Resultado de la ficha de familia y del paquete original; registro individual por código/ventana,"No duplicar padres, informes, ingeniería ni cobertura; no incluye horas de contraparte ni obras/adquisiciones del cliente","Lote identificado de reglas, contratos, construcción, pruebas o documentación del componente; evidencia versionada, revisión independiente y trazabilidad al flujo UCP. No reconstruye identidad, canales ni adaptadores comunes.",Fernando Guerrero,23,I:23,"Asignación y cuadrante integrado por código; entornos, usuarios y habilitaciones autorizados",RF-VAR; 180 puestos SD3; modelo UCP y conciliación de alcance 1.4–1.6,2027-12-03,2027-12-06,1.5.1.2.1,Recepción por etapa o control del periodo; no acredita ejecución,RF-VAR; 180 puestos SD3; modelo UCP y conciliación de alcance 1.4–1.6
1.5.1.2.5.1,Construcción funcional y pruebas unitarias: Agenda de varadero y posiciones compatibles — lote 1/1,1.5,E2 Desarrollo,Construcción funcional y pruebas unitarias: Agenda de varadero y posiciones compatibles — lote 1/1,Resultado de la ficha de familia y del paquete original; registro individual por código/ventana,"No duplicar padres, informes, ingeniería ni cobertura; no incluye horas de contraparte ni obras/adquisiciones del cliente","Lote identificado de reglas, contratos, construcción, pruebas o documentación del componente; evidencia versionada, revisión independiente y trazabilidad al flujo UCP. No reconstruye identidad, canales ni adaptadores comunes.",Nikolai Navea,62,V:62,"Asignación y cuadrante integrado por código; entornos, usuarios y habilitaciones autorizados",RF-VAR; 180 puestos SD3; modelo UCP y conciliación de alcance 1.4–1.6,2028-01-20,2028-01-24,1.5.1.2.2;1.5.1.2.4.1;1.5.1.2.4.2;1.5.1.2.4.3,Recepción por etapa o control del periodo; no acredita ejecución,RF-VAR; 180 puestos SD3; modelo UCP y conciliación de alcance 1.4–1.6
1.5.1.2.6.1,"Verificación del núcleo, regresión y evidencia: Agenda de varadero y posiciones compatibles — lote 1/1",1.5,E2 Desarrollo,"Verificación del núcleo, regresión y evidencia: Agenda de varadero y posiciones compatibles — lote 1/1",Resultado de la ficha de familia y del paquete original; registro individual por código/ventana,"No duplicar padres, informes, ingeniería ni cobertura; no incluye horas de contraparte ni obras/adquisiciones del cliente","Lote identificado de reglas, contratos, construcción, pruebas o documentación del componente; evidencia versionada, revisión independiente y trazabilidad al flujo UCP. No reconstruye identidad, canales ni adaptadores comunes.",Davor Serey,45,Q:45,"Asignación y cuadrante integrado por código; entornos, usuarios y habilitaciones autorizados",RF-VAR; 180 puestos SD3; modelo UCP y conciliación de alcance 1.4–1.6,2028-02-08,2028-02-10,1.5.1.2.3;1.5.1.2.5.1,Recepción por etapa o control del periodo; no acredita ejecución,RF-VAR; 180 puestos SD3; modelo UCP y conciliación de alcance 1.4–1.6
1.5.1.2.7.1,Coordinación y documentación del núcleo: Agenda de varadero y posiciones compatibles — lote 1/1,1.5,E2 Desarrollo,Coordinación y documentación del núcleo: Agenda de varadero y posiciones compatibles — lote 1/1,Resultado de la ficha de familia y del paquete original; registro individual por código/ventana,"No duplicar padres, informes, ingeniería ni cobertura; no incluye horas de contraparte ni obras/adquisiciones del cliente","Lote identificado de reglas, contratos, construcción, pruebas o documentación del componente; evidencia versionada, revisión independiente y trazabilidad al flujo UCP. No reconstruye identidad, canales ni adaptadores comunes.",Ignacio Silva,53,J:53,"Asignación y cuadrante integrado por código; entornos, usuarios y habilitaciones autorizados",RF-VAR; 180 puestos SD3; modelo UCP y conciliación de alcance 1.4–1.6,2028-02-10,2028-02-11,1.5.1.2.6.1,Recepción por etapa o control del periodo; no acredita ejecución,RF-VAR; 180 puestos SD3; modelo UCP y conciliación de alcance 1.4–1.6
1.5.1.3.4.1,"Análisis de reglas, excepciones y protocolo: Plan de izaje, validación y suspensión de faena — lote 1/1",1.5,E2 Desarrollo,"Análisis de reglas, excepciones y protocolo: Plan de izaje, validación y suspensión de faena — lote 1/1",Resultado de la ficha de familia y del paquete original; registro individual por código/ventana,"No duplicar padres, informes, ingeniería ni cobertura; no incluye horas de contraparte ni obras/adquisiciones del cliente","Lote identificado de reglas, contratos, construcción, pruebas o documentación del componente; evidencia versionada, revisión independiente y trazabilidad al flujo UCP. No reconstruye identidad, canales ni adaptadores comunes.",Ulysses Barreto,16,A:16,"Asignación y cuadrante integrado por código; entornos, usuarios y habilitaciones autorizados",RF-VAR-04--08; DEC-12/13; RN-15/16; modelo UCP y conciliación de alcance 1.4–1.6,2027-12-20,2027-12-22,1.5.1.3.1,Recepción por etapa o control del periodo; no acredita ejecución,RF-VAR-04--08; DEC-12/13; RN-15/16; modelo UCP y conciliación de alcance 1.4–1.6
1.5.1.3.4.2,"Diseño de datos y restricciones del núcleo: Plan de izaje, validación y suspensión de faena — lote 1/1",1.5,E2 Desarrollo,"Diseño de datos y restricciones del núcleo: Plan de izaje, validación y suspensión de faena — lote 1/1",Resultado de la ficha de familia y del paquete original; registro individual por código/ventana,"No duplicar padres, informes, ingeniería ni cobertura; no incluye horas de contraparte ni obras/adquisiciones del cliente","Lote identificado de reglas, contratos, construcción, pruebas o documentación del componente; evidencia versionada, revisión independiente y trazabilidad al flujo UCP. No reconstruye identidad, canales ni adaptadores comunes.",Nicolás Torfan,16,D:16,"Asignación y cuadrante integrado por código; entornos, usuarios y habilitaciones autorizados",RF-VAR-04--08; DEC-12/13; RN-15/16; modelo UCP y conciliación de alcance 1.4–1.6,2027-12-20,2027-12-22,1.5.1.3.1,Recepción por etapa o control del periodo; no acredita ejecución,RF-VAR-04--08; DEC-12/13; RN-15/16; modelo UCP y conciliación de alcance 1.4–1.6
1.5.1.3.4.3,"Diseño de contratos internos y composición: Plan de izaje, validación y suspensión de faena — lote 1/1",1.5,E2 Desarrollo,"Diseño de contratos internos y composición: Plan de izaje, validación y suspensión de faena — lote 1/1",Resultado de la ficha de familia y del paquete original; registro individual por código/ventana,"No duplicar padres, informes, ingeniería ni cobertura; no incluye horas de contraparte ni obras/adquisiciones del cliente","Lote identificado de reglas, contratos, construcción, pruebas o documentación del componente; evidencia versionada, revisión independiente y trazabilidad al flujo UCP. No reconstruye identidad, canales ni adaptadores comunes.",Fernando Guerrero,23,I:23,"Asignación y cuadrante integrado por código; entornos, usuarios y habilitaciones autorizados",RF-VAR-04--08; DEC-12/13; RN-15/16; modelo UCP y conciliación de alcance 1.4–1.6,2027-12-20,2027-12-21,1.5.1.3.1,Recepción por etapa o control del periodo; no acredita ejecución,RF-VAR-04--08; DEC-12/13; RN-15/16; modelo UCP y conciliación de alcance 1.4–1.6
1.5.1.3.5.1,"Construcción funcional y pruebas unitarias: Plan de izaje, validación y suspensión de faena — lote 1/1",1.5,E2 Desarrollo,"Construcción funcional y pruebas unitarias: Plan de izaje, validación y suspensión de faena — lote 1/1",Resultado de la ficha de familia y del paquete original; registro individual por código/ventana,"No duplicar padres, informes, ingeniería ni cobertura; no incluye horas de contraparte ni obras/adquisiciones del cliente","Lote identificado de reglas, contratos, construcción, pruebas o documentación del componente; evidencia versionada, revisión independiente y trazabilidad al flujo UCP. No reconstruye identidad, canales ni adaptadores comunes.",Nikolai Navea,61,V:61,"Asignación y cuadrante integrado por código; entornos, usuarios y habilitaciones autorizados",RF-VAR-04--08; DEC-12/13; RN-15/16; modelo UCP y conciliación de alcance 1.4–1.6,2028-01-26,2028-01-28,1.5.1.3.2;1.5.1.3.4.1;1.5.1.3.4.2;1.5.1.3.4.3,Recepción por etapa o control del periodo; no acredita ejecución,RF-VAR-04--08; DEC-12/13; RN-15/16; modelo UCP y conciliación de alcance 1.4–1.6
1.5.1.3.6.1,"Verificación del núcleo, regresión y evidencia: Plan de izaje, validación y suspensión de faena — lote 1/1",1.5,E2 Desarrollo,"Verificación del núcleo, regresión y evidencia: Plan de izaje, validación y suspensión de faena — lote 1/1",Resultado de la ficha de familia y del paquete original; registro individual por código/ventana,"No duplicar padres, informes, ingeniería ni cobertura; no incluye horas de contraparte ni obras/adquisiciones del cliente","Lote identificado de reglas, contratos, construcción, pruebas o documentación del componente; evidencia versionada, revisión independiente y trazabilidad al flujo UCP. No reconstruye identidad, canales ni adaptadores comunes.",Davor Serey,45,Q:45,"Asignación y cuadrante integrado por código; entornos, usuarios y habilitaciones autorizados",RF-VAR-04--08; DEC-12/13; RN-15/16; modelo UCP y conciliación de alcance 1.4–1.6,2028-02-18,2028-02-22,1.5.1.3.3;1.5.1.3.5.1,Recepción por etapa o control del periodo; no acredita ejecución,RF-VAR-04--08; DEC-12/13; RN-15/16; modelo UCP y conciliación de alcance 1.4–1.6
1.5.1.3.7.1,"Coordinación y documentación del núcleo: Plan de izaje, validación y suspensión de faena — lote 1/1",1.5,E2 Desarrollo,"Coordinación y documentación del núcleo: Plan de izaje, validación y suspensión de faena — lote 1/1",Resultado de la ficha de familia y del paquete original; registro individual por código/ventana,"No duplicar padres, informes, ingeniería ni cobertura; no incluye horas de contraparte ni obras/adquisiciones del cliente","Lote identificado de reglas, contratos, construcción, pruebas o documentación del componente; evidencia versionada, revisión independiente y trazabilidad al flujo UCP. No reconstruye identidad, canales ni adaptadores comunes.",Ignacio Silva,53,J:53,"Asignación y cuadrante integrado por código; entornos, usuarios y habilitaciones autorizados",RF-VAR-04--08; DEC-12/13; RN-15/16; modelo UCP y conciliación de alcance 1.4–1.6,2028-02-22,2028-02-24,1.5.1.3.6.1,Recepción por etapa o control del periodo; no acredita ejecución,RF-VAR-04--08; DEC-12/13; RN-15/16; modelo UCP y conciliación de alcance 1.4–1.6
1.5.1.4.4.1,"Análisis de reglas, excepciones y protocolo: Órdenes, ejecución y reprogramación de trabajos — lote 1/1",1.5,E2 Desarrollo,"Análisis de reglas, excepciones y protocolo: Órdenes, ejecución y reprogramación de trabajos — lote 1/1",Resultado de la ficha de familia y del paquete original; registro individual por código/ventana,"No duplicar padres, informes, ingeniería ni cobertura; no incluye horas de contraparte ni obras/adquisiciones del cliente","Lote identificado de reglas, contratos, construcción, pruebas o documentación del componente; evidencia versionada, revisión independiente y trazabilidad al flujo UCP. No reconstruye identidad, canales ni adaptadores comunes.",Ulysses Barreto,15,A:15,"Asignación y cuadrante integrado por código; entornos, usuarios y habilitaciones autorizados",SD5 Varadero y contratistas; modelo UCP y conciliación de alcance 1.4–1.6,2027-12-03,2027-12-07,1.5.1.4.1,Recepción por etapa o control del periodo; no acredita ejecución,SD5 Varadero y contratistas; modelo UCP y conciliación de alcance 1.4–1.6
1.5.1.4.4.2,"Diseño de datos y restricciones del núcleo: Órdenes, ejecución y reprogramación de trabajos — lote 1/1",1.5,E2 Desarrollo,"Diseño de datos y restricciones del núcleo: Órdenes, ejecución y reprogramación de trabajos — lote 1/1",Resultado de la ficha de familia y del paquete original; registro individual por código/ventana,"No duplicar padres, informes, ingeniería ni cobertura; no incluye horas de contraparte ni obras/adquisiciones del cliente","Lote identificado de reglas, contratos, construcción, pruebas o documentación del componente; evidencia versionada, revisión independiente y trazabilidad al flujo UCP. No reconstruye identidad, canales ni adaptadores comunes.",Nicolás Torfan,16,D:16,"Asignación y cuadrante integrado por código; entornos, usuarios y habilitaciones autorizados",SD5 Varadero y contratistas; modelo UCP y conciliación de alcance 1.4–1.6,2027-12-07,2027-12-10,1.5.1.4.1,Recepción por etapa o control del periodo; no acredita ejecución,SD5 Varadero y contratistas; modelo UCP y conciliación de alcance 1.4–1.6
1.5.1.4.4.3,"Diseño de contratos internos y composición: Órdenes, ejecución y reprogramación de trabajos — lote 1/1",1.5,E2 Desarrollo,"Diseño de contratos internos y composición: Órdenes, ejecución y reprogramación de trabajos — lote 1/1",Resultado de la ficha de familia y del paquete original; registro individual por código/ventana,"No duplicar padres, informes, ingeniería ni cobertura; no incluye horas de contraparte ni obras/adquisiciones del cliente","Lote identificado de reglas, contratos, construcción, pruebas o documentación del componente; evidencia versionada, revisión independiente y trazabilidad al flujo UCP. No reconstruye identidad, canales ni adaptadores comunes.",Fernando Guerrero,23,I:23,"Asignación y cuadrante integrado por código; entornos, usuarios y habilitaciones autorizados",SD5 Varadero y contratistas; modelo UCP y conciliación de alcance 1.4–1.6,2027-12-06,2027-12-09,1.5.1.4.1,Recepción por etapa o control del periodo; no acredita ejecución,SD5 Varadero y contratistas; modelo UCP y conciliación de alcance 1.4–1.6
1.5.1.4.5.1,"Construcción funcional y pruebas unitarias: Órdenes, ejecución y reprogramación de trabajos — lote 1/1",1.5,E2 Desarrollo,"Construcción funcional y pruebas unitarias: Órdenes, ejecución y reprogramación de trabajos — lote 1/1",Resultado de la ficha de familia y del paquete original; registro individual por código/ventana,"No duplicar padres, informes, ingeniería ni cobertura; no incluye horas de contraparte ni obras/adquisiciones del cliente","Lote identificado de reglas, contratos, construcción, pruebas o documentación del componente; evidencia versionada, revisión independiente y trazabilidad al flujo UCP. No reconstruye identidad, canales ni adaptadores comunes.",Nikolai Navea,61,V:61,"Asignación y cuadrante integrado por código; entornos, usuarios y habilitaciones autorizados",SD5 Varadero y contratistas; modelo UCP y conciliación de alcance 1.4–1.6,2028-01-24,2028-01-26,1.5.1.4.2;1.5.1.4.4.1;1.5.1.4.4.2;1.5.1.4.4.3,Recepción por etapa o control del periodo; no acredita ejecución,SD5 Varadero y contratistas; modelo UCP y conciliación de alcance 1.4–1.6
1.5.1.4.6.1,"Verificación del núcleo, regresión y evidencia: Órdenes, ejecución y reprogramación de trabajos — lote 1/1",1.5,E2 Desarrollo,"Verificación del núcleo, regresión y evidencia: Órdenes, ejecución y reprogramación de trabajos — lote 1/1",Resultado de la ficha de familia y del paquete original; registro individual por código/ventana,"No duplicar padres, informes, ingeniería ni cobertura; no incluye horas de contraparte ni obras/adquisiciones del cliente","Lote identificado de reglas, contratos, construcción, pruebas o documentación del componente; evidencia versionada, revisión independiente y trazabilidad al flujo UCP. No reconstruye identidad, canales ni adaptadores comunes.",Davor Serey,45,Q:45,"Asignación y cuadrante integrado por código; entornos, usuarios y habilitaciones autorizados",SD5 Varadero y contratistas; modelo UCP y conciliación de alcance 1.4–1.6,2028-02-03,2028-02-07,1.5.1.4.3;1.5.1.4.5.1,Recepción por etapa o control del periodo; no acredita ejecución,SD5 Varadero y contratistas; modelo UCP y conciliación de alcance 1.4–1.6
1.5.1.4.7.1,"Coordinación y documentación del núcleo: Órdenes, ejecución y reprogramación de trabajos — lote 1/1",1.5,E2 Desarrollo,"Coordinación y documentación del núcleo: Órdenes, ejecución y reprogramación de trabajos — lote 1/1",Resultado de la ficha de familia y del paquete original; registro individual por código/ventana,"No duplicar padres, informes, ingeniería ni cobertura; no incluye horas de contraparte ni obras/adquisiciones del cliente","Lote identificado de reglas, contratos, construcción, pruebas o documentación del componente; evidencia versionada, revisión independiente y trazabilidad al flujo UCP. No reconstruye identidad, canales ni adaptadores comunes.",Ignacio Silva,53,J:53,"Asignación y cuadrante integrado por código; entornos, usuarios y habilitaciones autorizados",SD5 Varadero y contratistas; modelo UCP y conciliación de alcance 1.4–1.6,2028-02-07,2028-02-09,1.5.1.4.6.1,Recepción por etapa o control del periodo; no acredita ejecución,SD5 Varadero y contratistas; modelo UCP y conciliación de alcance 1.4–1.6
1.5.1.5.4.1,"Análisis de reglas, excepciones y protocolo: Acreditación, inducción y acceso a intervención — lote 1/1",1.5,E2 Desarrollo,"Análisis de reglas, excepciones y protocolo: Acreditación, inducción y acceso a intervención — lote 1/1",Resultado de la ficha de familia y del paquete original; registro individual por código/ventana,"No duplicar padres, informes, ingeniería ni cobertura; no incluye horas de contraparte ni obras/adquisiciones del cliente","Lote identificado de reglas, contratos, construcción, pruebas o documentación del componente; evidencia versionada, revisión independiente y trazabilidad al flujo UCP. No reconstruye identidad, canales ni adaptadores comunes.",Ulysses Barreto,15,A:15,"Asignación y cuadrante integrado por código; entornos, usuarios y habilitaciones autorizados",RF-CTR; SD3 contratistas/portería; modelo UCP y conciliación de alcance 1.4–1.6,2027-12-20,2027-12-22,1.5.1.5.1,Recepción por etapa o control del periodo; no acredita ejecución,RF-CTR; SD3 contratistas/portería; modelo UCP y conciliación de alcance 1.4–1.6
1.5.1.5.4.2,"Diseño de datos y restricciones del núcleo: Acreditación, inducción y acceso a intervención — lote 1/1",1.5,E2 Desarrollo,"Diseño de datos y restricciones del núcleo: Acreditación, inducción y acceso a intervención — lote 1/1",Resultado de la ficha de familia y del paquete original; registro individual por código/ventana,"No duplicar padres, informes, ingeniería ni cobertura; no incluye horas de contraparte ni obras/adquisiciones del cliente","Lote identificado de reglas, contratos, construcción, pruebas o documentación del componente; evidencia versionada, revisión independiente y trazabilidad al flujo UCP. No reconstruye identidad, canales ni adaptadores comunes.",Nicolás Torfan,16,D:16,"Asignación y cuadrante integrado por código; entornos, usuarios y habilitaciones autorizados",RF-CTR; SD3 contratistas/portería; modelo UCP y conciliación de alcance 1.4–1.6,2027-12-20,2027-12-22,1.5.1.5.1,Recepción por etapa o control del periodo; no acredita ejecución,RF-CTR; SD3 contratistas/portería; modelo UCP y conciliación de alcance 1.4–1.6
1.5.1.5.4.3,"Diseño de contratos internos y composición: Acreditación, inducción y acceso a intervención — lote 1/1",1.5,E2 Desarrollo,"Diseño de contratos internos y composición: Acreditación, inducción y acceso a intervención — lote 1/1",Resultado de la ficha de familia y del paquete original; registro individual por código/ventana,"No duplicar padres, informes, ingeniería ni cobertura; no incluye horas de contraparte ni obras/adquisiciones del cliente","Lote identificado de reglas, contratos, construcción, pruebas o documentación del componente; evidencia versionada, revisión independiente y trazabilidad al flujo UCP. No reconstruye identidad, canales ni adaptadores comunes.",Fernando Guerrero,23,I:23,"Asignación y cuadrante integrado por código; entornos, usuarios y habilitaciones autorizados",RF-CTR; SD3 contratistas/portería; modelo UCP y conciliación de alcance 1.4–1.6,2027-12-20,2027-12-21,1.5.1.5.1,Recepción por etapa o control del periodo; no acredita ejecución,RF-CTR; SD3 contratistas/portería; modelo UCP y conciliación de alcance 1.4–1.6
1.5.1.5.5.1,"Construcción funcional y pruebas unitarias: Acreditación, inducción y acceso a intervención — lote 1/1",1.5,E2 Desarrollo,"Construcción funcional y pruebas unitarias: Acreditación, inducción y acceso a intervención — lote 1/1",Resultado de la ficha de familia y del paquete original; registro individual por código/ventana,"No duplicar padres, informes, ingeniería ni cobertura; no incluye horas de contraparte ni obras/adquisiciones del cliente","Lote identificado de reglas, contratos, construcción, pruebas o documentación del componente; evidencia versionada, revisión independiente y trazabilidad al flujo UCP. No reconstruye identidad, canales ni adaptadores comunes.",Nikolai Navea,61,V:61,"Asignación y cuadrante integrado por código; entornos, usuarios y habilitaciones autorizados",RF-CTR; SD3 contratistas/portería; modelo UCP y conciliación de alcance 1.4–1.6,2028-01-25,2028-01-27,1.5.1.5.2;1.5.1.5.4.1;1.5.1.5.4.2;1.5.1.5.4.3,Recepción por etapa o control del periodo; no acredita ejecución,RF-CTR; SD3 contratistas/portería; modelo UCP y conciliación de alcance 1.4–1.6
1.5.1.5.6.1,"Verificación del núcleo, regresión y evidencia: Acreditación, inducción y acceso a intervención — lote 1/1",1.5,E2 Desarrollo,"Verificación del núcleo, regresión y evidencia: Acreditación, inducción y acceso a intervención — lote 1/1",Resultado de la ficha de familia y del paquete original; registro individual por código/ventana,"No duplicar padres, informes, ingeniería ni cobertura; no incluye horas de contraparte ni obras/adquisiciones del cliente","Lote identificado de reglas, contratos, construcción, pruebas o documentación del componente; evidencia versionada, revisión independiente y trazabilidad al flujo UCP. No reconstruye identidad, canales ni adaptadores comunes.",Davor Serey,45,Q:45,"Asignación y cuadrante integrado por código; entornos, usuarios y habilitaciones autorizados",RF-CTR; SD3 contratistas/portería; modelo UCP y conciliación de alcance 1.4–1.6,2028-02-18,2028-02-22,1.5.1.5.3;1.5.1.5.5.1,Recepción por etapa o control del periodo; no acredita ejecución,RF-CTR; SD3 contratistas/portería; modelo UCP y conciliación de alcance 1.4–1.6
1.5.1.5.7.1,"Coordinación y documentación del núcleo: Acreditación, inducción y acceso a intervención — lote 1/1",1.5,E2 Desarrollo,"Coordinación y documentación del núcleo: Acreditación, inducción y acceso a intervención — lote 1/1",Resultado de la ficha de familia y del paquete original; registro individual por código/ventana,"No duplicar padres, informes, ingeniería ni cobertura; no incluye horas de contraparte ni obras/adquisiciones del cliente","Lote identificado de reglas, contratos, construcción, pruebas o documentación del componente; evidencia versionada, revisión independiente y trazabilidad al flujo UCP. No reconstruye identidad, canales ni adaptadores comunes.",Ignacio Silva,53,J:53,"Asignación y cuadrante integrado por código; entornos, usuarios y habilitaciones autorizados",RF-CTR; SD3 contratistas/portería; modelo UCP y conciliación de alcance 1.4–1.6,2028-02-22,2028-02-24,1.5.1.5.6.1,Recepción por etapa o control del periodo; no acredita ejecución,RF-CTR; SD3 contratistas/portería; modelo UCP y conciliación de alcance 1.4–1.6
1.5.3.3.4.1,"Análisis de reglas, excepciones y protocolo: Recepción de residuos y discrepancias de origen — lote 1/1",1.5,E2 Desarrollo,"Análisis de reglas, excepciones y protocolo: Recepción de residuos y discrepancias de origen — lote 1/1",Resultado de la ficha de familia y del paquete original; registro individual por código/ventana,"No duplicar padres, informes, ingeniería ni cobertura; no incluye horas de contraparte ni obras/adquisiciones del cliente","Lote identificado de reglas, contratos, construcción, pruebas o documentación del componente; evidencia versionada, revisión independiente y trazabilidad al flujo UCP. No reconstruye identidad, canales ni adaptadores comunes.",Ulysses Barreto,15,A:15,"Asignación y cuadrante integrado por código; entornos, usuarios y habilitaciones autorizados",AMB; RN-19--21; SD5 residuos; modelo UCP y conciliación de alcance 1.4–1.6,2027-12-03,2027-12-07,1.5.3.3.1,Recepción por etapa o control del periodo; no acredita ejecución,AMB; RN-19--21; SD5 residuos; modelo UCP y conciliación de alcance 1.4–1.6
1.5.3.3.4.2,Diseño de datos y restricciones del núcleo: Recepción de residuos y discrepancias de origen — lote 1/1,1.5,E2 Desarrollo,Diseño de datos y restricciones del núcleo: Recepción de residuos y discrepancias de origen — lote 1/1,Resultado de la ficha de familia y del paquete original; registro individual por código/ventana,"No duplicar padres, informes, ingeniería ni cobertura; no incluye horas de contraparte ni obras/adquisiciones del cliente","Lote identificado de reglas, contratos, construcción, pruebas o documentación del componente; evidencia versionada, revisión independiente y trazabilidad al flujo UCP. No reconstruye identidad, canales ni adaptadores comunes.",Nicolás Torfan,16,D:16,"Asignación y cuadrante integrado por código; entornos, usuarios y habilitaciones autorizados",AMB; RN-19--21; SD5 residuos; modelo UCP y conciliación de alcance 1.4–1.6,2027-12-03,2027-12-07,1.5.3.3.1,Recepción por etapa o control del periodo; no acredita ejecución,AMB; RN-19--21; SD5 residuos; modelo UCP y conciliación de alcance 1.4–1.6
1.5.3.3.4.3,Diseño de contratos internos y composición: Recepción de residuos y discrepancias de origen — lote 1/1,1.5,E2 Desarrollo,Diseño de contratos internos y composición: Recepción de residuos y discrepancias de origen — lote 1/1,Resultado de la ficha de familia y del paquete original; registro individual por código/ventana,"No duplicar padres, informes, ingeniería ni cobertura; no incluye horas de contraparte ni obras/adquisiciones del cliente","Lote identificado de reglas, contratos, construcción, pruebas o documentación del componente; evidencia versionada, revisión independiente y trazabilidad al flujo UCP. No reconstruye identidad, canales ni adaptadores comunes.",Fernando Guerrero,23,I:23,"Asignación y cuadrante integrado por código; entornos, usuarios y habilitaciones autorizados",AMB; RN-19--21; SD5 residuos; modelo UCP y conciliación de alcance 1.4–1.6,2027-12-09,2027-12-13,1.5.3.3.1,Recepción por etapa o control del periodo; no acredita ejecución,AMB; RN-19--21; SD5 residuos; modelo UCP y conciliación de alcance 1.4–1.6
1.5.3.3.5.1,Construcción funcional y pruebas unitarias: Recepción de residuos y discrepancias de origen — lote 1/1,1.5,E2 Desarrollo,Construcción funcional y pruebas unitarias: Recepción de residuos y discrepancias de origen — lote 1/1,Resultado de la ficha de familia y del paquete original; registro individual por código/ventana,"No duplicar padres, informes, ingeniería ni cobertura; no incluye horas de contraparte ni obras/adquisiciones del cliente","Lote identificado de reglas, contratos, construcción, pruebas o documentación del componente; evidencia versionada, revisión independiente y trazabilidad al flujo UCP. No reconstruye identidad, canales ni adaptadores comunes.",Nikolai Navea,61,V:61,"Asignación y cuadrante integrado por código; entornos, usuarios y habilitaciones autorizados",AMB; RN-19--21; SD5 residuos; modelo UCP y conciliación de alcance 1.4–1.6,2028-01-24,2028-01-26,1.5.3.3.2;1.5.3.3.4.1;1.5.3.3.4.2;1.5.3.3.4.3,Recepción por etapa o control del periodo; no acredita ejecución,AMB; RN-19--21; SD5 residuos; modelo UCP y conciliación de alcance 1.4–1.6
1.5.3.3.6.1,"Verificación del núcleo, regresión y evidencia: Recepción de residuos y discrepancias de origen — lote 1/1",1.5,E2 Desarrollo,"Verificación del núcleo, regresión y evidencia: Recepción de residuos y discrepancias de origen — lote 1/1",Resultado de la ficha de familia y del paquete original; registro individual por código/ventana,"No duplicar padres, informes, ingeniería ni cobertura; no incluye horas de contraparte ni obras/adquisiciones del cliente","Lote identificado de reglas, contratos, construcción, pruebas o documentación del componente; evidencia versionada, revisión independiente y trazabilidad al flujo UCP. No reconstruye identidad, canales ni adaptadores comunes.",Davor Serey,45,Q:45,"Asignación y cuadrante integrado por código; entornos, usuarios y habilitaciones autorizados",AMB; RN-19--21; SD5 residuos; modelo UCP y conciliación de alcance 1.4–1.6,2028-02-07,2028-02-09,1.5.3.3.3;1.5.3.3.5.1,Recepción por etapa o control del periodo; no acredita ejecución,AMB; RN-19--21; SD5 residuos; modelo UCP y conciliación de alcance 1.4–1.6
1.5.3.3.7.1,Coordinación y documentación del núcleo: Recepción de residuos y discrepancias de origen — lote 1/1,1.5,E2 Desarrollo,Coordinación y documentación del núcleo: Recepción de residuos y discrepancias de origen — lote 1/1,Resultado de la ficha de familia y del paquete original; registro individual por código/ventana,"No duplicar padres, informes, ingeniería ni cobertura; no incluye horas de contraparte ni obras/adquisiciones del cliente","Lote identificado de reglas, contratos, construcción, pruebas o documentación del componente; evidencia versionada, revisión independiente y trazabilidad al flujo UCP. No reconstruye identidad, canales ni adaptadores comunes.",Ignacio Silva,53,J:53,"Asignación y cuadrante integrado por código; entornos, usuarios y habilitaciones autorizados",AMB; RN-19--21; SD5 residuos; modelo UCP y conciliación de alcance 1.4–1.6,2028-02-11,2028-02-15,1.5.3.3.6.1,Recepción por etapa o control del periodo; no acredita ejecución,AMB; RN-19--21; SD5 residuos; modelo UCP y conciliación de alcance 1.4–1.6
1.5.3.4.4.1,"Análisis de reglas, excepciones y protocolo: Entregas RESPEL parciales y certificados vinculados — lote 1/1",1.5,E2 Desarrollo,"Análisis de reglas, excepciones y protocolo: Entregas RESPEL parciales y certificados vinculados — lote 1/1",Resultado de la ficha de familia y del paquete original; registro individual por código/ventana,"No duplicar padres, informes, ingeniería ni cobertura; no incluye horas de contraparte ni obras/adquisiciones del cliente","Lote identificado de reglas, contratos, construcción, pruebas o documentación del componente; evidencia versionada, revisión independiente y trazabilidad al flujo UCP. No reconstruye identidad, canales ni adaptadores comunes.",Ulysses Barreto,51,A:51,"Asignación y cuadrante integrado por código; entornos, usuarios y habilitaciones autorizados",AMB; SD5 Entrega a gestor; modelo UCP y conciliación de alcance 1.4–1.6,2027-12-20,2027-12-21,1.5.3.4.1,Recepción por etapa o control del periodo; no acredita ejecución,AMB; SD5 Entrega a gestor; modelo UCP y conciliación de alcance 1.4–1.6
1.5.3.4.4.2,Diseño de datos y restricciones del núcleo: Entregas RESPEL parciales y certificados vinculados — lote 1/1,1.5,E2 Desarrollo,Diseño de datos y restricciones del núcleo: Entregas RESPEL parciales y certificados vinculados — lote 1/1,Resultado de la ficha de familia y del paquete original; registro individual por código/ventana,"No duplicar padres, informes, ingeniería ni cobertura; no incluye horas de contraparte ni obras/adquisiciones del cliente","Lote identificado de reglas, contratos, construcción, pruebas o documentación del componente; evidencia versionada, revisión independiente y trazabilidad al flujo UCP. No reconstruye identidad, canales ni adaptadores comunes.",Nicolás Torfan,44,D:44,"Asignación y cuadrante integrado por código; entornos, usuarios y habilitaciones autorizados",AMB; SD5 Entrega a gestor; modelo UCP y conciliación de alcance 1.4–1.6,2027-12-20,2027-12-22,1.5.3.4.1,Recepción por etapa o control del periodo; no acredita ejecución,AMB; SD5 Entrega a gestor; modelo UCP y conciliación de alcance 1.4–1.6
1.5.3.4.4.3,Diseño de contratos internos y composición: Entregas RESPEL parciales y certificados vinculados — lote 1/2,1.5,E2 Desarrollo,Diseño de contratos internos y composición: Entregas RESPEL parciales y certificados vinculados — lote 1/2,Resultado de la ficha de familia y del paquete original; registro individual por código/ventana,"No duplicar padres, informes, ingeniería ni cobertura; no incluye horas de contraparte ni obras/adquisiciones del cliente","Lote identificado de reglas, contratos, construcción, pruebas o documentación del componente; evidencia versionada, revisión independiente y trazabilidad al flujo UCP. No reconstruye identidad, canales ni adaptadores comunes.",Fernando Guerrero,33,I:33,"Asignación y cuadrante integrado por código; entornos, usuarios y habilitaciones autorizados",AMB; SD5 Entrega a gestor; modelo UCP y conciliación de alcance 1.4–1.6,2027-12-21,2027-12-23,1.5.3.4.1,Recepción por etapa o control del periodo; no acredita ejecución,AMB; SD5 Entrega a gestor; modelo UCP y conciliación de alcance 1.4–1.6
1.5.3.4.4.4,Diseño de contratos internos y composición: Entregas RESPEL parciales y certificados vinculados — lote 2/2,1.5,E2 Desarrollo,Diseño de contratos internos y composición: Entregas RESPEL parciales y certificados vinculados — lote 2/2,Resultado de la ficha de familia y del paquete original; registro individual por código/ventana,"No duplicar padres, informes, ingeniería ni cobertura; no incluye horas de contraparte ni obras/adquisiciones del cliente","Lote identificado de reglas, contratos, construcción, pruebas o documentación del componente; evidencia versionada, revisión independiente y trazabilidad al flujo UCP. No reconstruye identidad, canales ni adaptadores comunes.",Fernando Guerrero,32,I:32,"Asignación y cuadrante integrado por código; entornos, usuarios y habilitaciones autorizados",AMB; SD5 Entrega a gestor; modelo UCP y conciliación de alcance 1.4–1.6,2027-12-21,2027-12-24,1.5.3.4.1,Recepción por etapa o control del periodo; no acredita ejecución,AMB; SD5 Entrega a gestor; modelo UCP y conciliación de alcance 1.4–1.6
1.5.3.4.5.1,Construcción funcional y pruebas unitarias: Entregas RESPEL parciales y certificados vinculados — lote 1/4,1.5,E2 Desarrollo,Construcción funcional y pruebas unitarias: Entregas RESPEL parciales y certificados vinculados — lote 1/4,Resultado de la ficha de familia y del paquete original; registro individual por código/ventana,"No duplicar padres, informes, ingeniería ni cobertura; no incluye horas de contraparte ni obras/adquisiciones del cliente","Lote identificado de reglas, contratos, construcción, pruebas o documentación del componente; evidencia versionada, revisión independiente y trazabilidad al flujo UCP. No reconstruye identidad, canales ni adaptadores comunes.",Nikolai Navea,51,V:51,"Asignación y cuadrante integrado por código; entornos, usuarios y habilitaciones autorizados",AMB; SD5 Entrega a gestor; modelo UCP y conciliación de alcance 1.4–1.6,2028-01-20,2028-01-24,1.5.3.4.2;1.5.3.4.4.1;1.5.3.4.4.2;1.5.3.4.4.3;1.5.3.4.4.4,Recepción por etapa o control del periodo; no acredita ejecución,AMB; SD5 Entrega a gestor; modelo UCP y conciliación de alcance 1.4–1.6
1.5.3.4.5.2,Construcción funcional y pruebas unitarias: Entregas RESPEL parciales y certificados vinculados — lote 2/4,1.5,E2 Desarrollo,Construcción funcional y pruebas unitarias: Entregas RESPEL parciales y certificados vinculados — lote 2/4,Resultado de la ficha de familia y del paquete original; registro individual por código/ventana,"No duplicar padres, informes, ingeniería ni cobertura; no incluye horas de contraparte ni obras/adquisiciones del cliente","Lote identificado de reglas, contratos, construcción, pruebas o documentación del componente; evidencia versionada, revisión independiente y trazabilidad al flujo UCP. No reconstruye identidad, canales ni adaptadores comunes.",Nikolai Navea,51,V:51,"Asignación y cuadrante integrado por código; entornos, usuarios y habilitaciones autorizados",AMB; SD5 Entrega a gestor; modelo UCP y conciliación de alcance 1.4–1.6,2028-01-24,2028-01-26,1.5.3.4.2;1.5.3.4.4.1;1.5.3.4.4.2;1.5.3.4.4.3;1.5.3.4.4.4,Recepción por etapa o control del periodo; no acredita ejecución,AMB; SD5 Entrega a gestor; modelo UCP y conciliación de alcance 1.4–1.6
1.5.3.4.5.3,Construcción funcional y pruebas unitarias: Entregas RESPEL parciales y certificados vinculados — lote 3/4,1.5,E2 Desarrollo,Construcción funcional y pruebas unitarias: Entregas RESPEL parciales y certificados vinculados — lote 3/4,Resultado de la ficha de familia y del paquete original; registro individual por código/ventana,"No duplicar padres, informes, ingeniería ni cobertura; no incluye horas de contraparte ni obras/adquisiciones del cliente","Lote identificado de reglas, contratos, construcción, pruebas o documentación del componente; evidencia versionada, revisión independiente y trazabilidad al flujo UCP. No reconstruye identidad, canales ni adaptadores comunes.",Nikolai Navea,51,V:51,"Asignación y cuadrante integrado por código; entornos, usuarios y habilitaciones autorizados",AMB; SD5 Entrega a gestor; modelo UCP y conciliación de alcance 1.4–1.6,2028-01-26,2028-01-28,1.5.3.4.2;1.5.3.4.4.1;1.5.3.4.4.2;1.5.3.4.4.3;1.5.3.4.4.4,Recepción por etapa o control del periodo; no acredita ejecución,AMB; SD5 Entrega a gestor; modelo UCP y conciliación de alcance 1.4–1.6
1.5.3.4.5.4,Construcción funcional y pruebas unitarias: Entregas RESPEL parciales y certificados vinculados — lote 4/4,1.5,E2 Desarrollo,Construcción funcional y pruebas unitarias: Entregas RESPEL parciales y certificados vinculados — lote 4/4,Resultado de la ficha de familia y del paquete original; registro individual por código/ventana,"No duplicar padres, informes, ingeniería ni cobertura; no incluye horas de contraparte ni obras/adquisiciones del cliente","Lote identificado de reglas, contratos, construcción, pruebas o documentación del componente; evidencia versionada, revisión independiente y trazabilidad al flujo UCP. No reconstruye identidad, canales ni adaptadores comunes.",Nikolai Navea,50,V:50,"Asignación y cuadrante integrado por código; entornos, usuarios y habilitaciones autorizados",AMB; SD5 Entrega a gestor; modelo UCP y conciliación de alcance 1.4–1.6,2028-01-20,2028-01-24,1.5.3.4.2;1.5.3.4.4.1;1.5.3.4.4.2;1.5.3.4.4.3;1.5.3.4.4.4,Recepción por etapa o control del periodo; no acredita ejecución,AMB; SD5 Entrega a gestor; modelo UCP y conciliación de alcance 1.4–1.6
1.5.3.4.6.1,"Verificación del núcleo, regresión y evidencia: Entregas RESPEL parciales y certificados vinculados — lote 1/2",1.5,E2 Desarrollo,"Verificación del núcleo, regresión y evidencia: Entregas RESPEL parciales y certificados vinculados — lote 1/2",Resultado de la ficha de familia y del paquete original; registro individual por código/ventana,"No duplicar padres, informes, ingeniería ni cobertura; no incluye horas de contraparte ni obras/adquisiciones del cliente","Lote identificado de reglas, contratos, construcción, pruebas o documentación del componente; evidencia versionada, revisión independiente y trazabilidad al flujo UCP. No reconstruye identidad, canales ni adaptadores comunes.",Davor Serey,49,Q:49,"Asignación y cuadrante integrado por código; entornos, usuarios y habilitaciones autorizados",AMB; SD5 Entrega a gestor; modelo UCP y conciliación de alcance 1.4–1.6,2028-02-18,2028-02-22,1.5.3.4.3;1.5.3.4.5.1;1.5.3.4.5.2;1.5.3.4.5.3;1.5.3.4.5.4,Recepción por etapa o control del periodo; no acredita ejecución,AMB; SD5 Entrega a gestor; modelo UCP y conciliación de alcance 1.4–1.6
1.5.3.4.6.2,"Verificación del núcleo, regresión y evidencia: Entregas RESPEL parciales y certificados vinculados — lote 2/2",1.5,E2 Desarrollo,"Verificación del núcleo, regresión y evidencia: Entregas RESPEL parciales y certificados vinculados — lote 2/2",Resultado de la ficha de familia y del paquete original; registro individual por código/ventana,"No duplicar padres, informes, ingeniería ni cobertura; no incluye horas de contraparte ni obras/adquisiciones del cliente","Lote identificado de reglas, contratos, construcción, pruebas o documentación del componente; evidencia versionada, revisión independiente y trazabilidad al flujo UCP. No reconstruye identidad, canales ni adaptadores comunes.",Davor Serey,49,Q:49,"Asignación y cuadrante integrado por código; entornos, usuarios y habilitaciones autorizados",AMB; SD5 Entrega a gestor; modelo UCP y conciliación de alcance 1.4–1.6,2028-02-22,2028-02-24,1.5.3.4.3;1.5.3.4.5.1;1.5.3.4.5.2;1.5.3.4.5.3;1.5.3.4.5.4,Recepción por etapa o control del periodo; no acredita ejecución,AMB; SD5 Entrega a gestor; modelo UCP y conciliación de alcance 1.4–1.6
1.5.3.4.7.1,Coordinación y documentación del núcleo: Entregas RESPEL parciales y certificados vinculados — lote 1/2,1.5,E2 Desarrollo,Coordinación y documentación del núcleo: Entregas RESPEL parciales y certificados vinculados — lote 1/2,Resultado de la ficha de familia y del paquete original; registro individual por código/ventana,"No duplicar padres, informes, ingeniería ni cobertura; no incluye horas de contraparte ni obras/adquisiciones del cliente","Lote identificado de reglas, contratos, construcción, pruebas o documentación del componente; evidencia versionada, revisión independiente y trazabilidad al flujo UCP. No reconstruye identidad, canales ni adaptadores comunes.",Ignacio Silva,53,J:53,"Asignación y cuadrante integrado por código; entornos, usuarios y habilitaciones autorizados",AMB; SD5 Entrega a gestor; modelo UCP y conciliación de alcance 1.4–1.6,2028-02-24,2028-02-28,1.5.3.4.6.1;1.5.3.4.6.2,Recepción por etapa o control del periodo; no acredita ejecución,AMB; SD5 Entrega a gestor; modelo UCP y conciliación de alcance 1.4–1.6
1.5.3.4.7.2,Coordinación y documentación del núcleo: Entregas RESPEL parciales y certificados vinculados — lote 2/2,1.5,E2 Desarrollo,Coordinación y documentación del núcleo: Entregas RESPEL parciales y certificados vinculados — lote 2/2,Resultado de la ficha de familia y del paquete original; registro individual por código/ventana,"No duplicar padres, informes, ingeniería ni cobertura; no incluye horas de contraparte ni obras/adquisiciones del cliente","Lote identificado de reglas, contratos, construcción, pruebas o documentación del componente; evidencia versionada, revisión independiente y trazabilidad al flujo UCP. No reconstruye identidad, canales ni adaptadores comunes.",Ignacio Silva,53,J:53,"Asignación y cuadrante integrado por código; entornos, usuarios y habilitaciones autorizados",AMB; SD5 Entrega a gestor; modelo UCP y conciliación de alcance 1.4–1.6,2028-02-24,2028-02-28,1.5.3.4.6.1;1.5.3.4.6.2,Recepción por etapa o control del periodo; no acredita ejecución,AMB; SD5 Entrega a gestor; modelo UCP y conciliación de alcance 1.4–1.6
1.5.3.5.4.1,"Análisis de reglas, excepciones y protocolo: Indicadores ambientales e imputación comercial de consumo — lote 1/1",1.5,E2 Desarrollo,"Análisis de reglas, excepciones y protocolo: Indicadores ambientales e imputación comercial de consumo — lote 1/1",Resultado de la ficha de familia y del paquete original; registro individual por código/ventana,"No duplicar padres, informes, ingeniería ni cobertura; no incluye horas de contraparte ni obras/adquisiciones del cliente","Lote identificado de reglas, contratos, construcción, pruebas o documentación del componente; evidencia versionada, revisión independiente y trazabilidad al flujo UCP. No reconstruye identidad, canales ni adaptadores comunes.",Ulysses Barreto,15,A:15,"Asignación y cuadrante integrado por código; entornos, usuarios y habilitaciones autorizados",CA-18/19; SD5 MediciónConsolidada; modelo UCP y conciliación de alcance 1.4–1.6,2027-12-03,2027-12-07,1.5.3.5.1,Recepción por etapa o control del periodo; no acredita ejecución,CA-18/19; SD5 MediciónConsolidada; modelo UCP y conciliación de alcance 1.4–1.6
1.5.3.5.4.2,Diseño de datos y restricciones del núcleo: Indicadores ambientales e imputación comercial de consumo — lote 1/1,1.5,E2 Desarrollo,Diseño de datos y restricciones del núcleo: Indicadores ambientales e imputación comercial de consumo — lote 1/1,Resultado de la ficha de familia y del paquete original; registro individual por código/ventana,"No duplicar padres, informes, ingeniería ni cobertura; no incluye horas de contraparte ni obras/adquisiciones del cliente","Lote identificado de reglas, contratos, construcción, pruebas o documentación del componente; evidencia versionada, revisión independiente y trazabilidad al flujo UCP. No reconstruye identidad, canales ni adaptadores comunes.",Nicolás Torfan,16,D:16,"Asignación y cuadrante integrado por código; entornos, usuarios y habilitaciones autorizados",CA-18/19; SD5 MediciónConsolidada; modelo UCP y conciliación de alcance 1.4–1.6,2027-12-07,2027-12-10,1.5.3.5.1,Recepción por etapa o control del periodo; no acredita ejecución,CA-18/19; SD5 MediciónConsolidada; modelo UCP y conciliación de alcance 1.4–1.6
1.5.3.5.4.3,Diseño de contratos internos y composición: Indicadores ambientales e imputación comercial de consumo — lote 1/1,1.5,E2 Desarrollo,Diseño de contratos internos y composición: Indicadores ambientales e imputación comercial de consumo — lote 1/1,Resultado de la ficha de familia y del paquete original; registro individual por código/ventana,"No duplicar padres, informes, ingeniería ni cobertura; no incluye horas de contraparte ni obras/adquisiciones del cliente","Lote identificado de reglas, contratos, construcción, pruebas o documentación del componente; evidencia versionada, revisión independiente y trazabilidad al flujo UCP. No reconstruye identidad, canales ni adaptadores comunes.",Fernando Guerrero,23,I:23,"Asignación y cuadrante integrado por código; entornos, usuarios y habilitaciones autorizados",CA-18/19; SD5 MediciónConsolidada; modelo UCP y conciliación de alcance 1.4–1.6,2027-12-13,2027-12-14,1.5.3.5.1,Recepción por etapa o control del periodo; no acredita ejecución,CA-18/19; SD5 MediciónConsolidada; modelo UCP y conciliación de alcance 1.4–1.6
1.5.3.5.5.1,Construcción funcional y pruebas unitarias: Indicadores ambientales e imputación comercial de consumo — lote 1/1,1.5,E2 Desarrollo,Construcción funcional y pruebas unitarias: Indicadores ambientales e imputación comercial de consumo — lote 1/1,Resultado de la ficha de familia y del paquete original; registro individual por código/ventana,"No duplicar padres, informes, ingeniería ni cobertura; no incluye horas de contraparte ni obras/adquisiciones del cliente","Lote identificado de reglas, contratos, construcción, pruebas o documentación del componente; evidencia versionada, revisión independiente y trazabilidad al flujo UCP. No reconstruye identidad, canales ni adaptadores comunes.",Nikolai Navea,61,V:61,"Asignación y cuadrante integrado por código; entornos, usuarios y habilitaciones autorizados",CA-18/19; SD5 MediciónConsolidada; modelo UCP y conciliación de alcance 1.4–1.6,2028-01-20,2028-01-24,1.5.3.5.2;1.5.3.5.4.1;1.5.3.5.4.2;1.5.3.5.4.3,Recepción por etapa o control del periodo; no acredita ejecución,CA-18/19; SD5 MediciónConsolidada; modelo UCP y conciliación de alcance 1.4–1.6
1.5.3.5.6.1,"Verificación del núcleo, regresión y evidencia: Indicadores ambientales e imputación comercial de consumo — lote 1/1",1.5,E2 Desarrollo,"Verificación del núcleo, regresión y evidencia: Indicadores ambientales e imputación comercial de consumo — lote 1/1",Resultado de la ficha de familia y del paquete original; registro individual por código/ventana,"No duplicar padres, informes, ingeniería ni cobertura; no incluye horas de contraparte ni obras/adquisiciones del cliente","Lote identificado de reglas, contratos, construcción, pruebas o documentación del componente; evidencia versionada, revisión independiente y trazabilidad al flujo UCP. No reconstruye identidad, canales ni adaptadores comunes.",Davor Serey,45,Q:45,"Asignación y cuadrante integrado por código; entornos, usuarios y habilitaciones autorizados",CA-18/19; SD5 MediciónConsolidada; modelo UCP y conciliación de alcance 1.4–1.6,2028-02-09,2028-02-14,1.5.3.5.3;1.5.3.5.5.1,Recepción por etapa o control del periodo; no acredita ejecución,CA-18/19; SD5 MediciónConsolidada; modelo UCP y conciliación de alcance 1.4–1.6
1.5.3.5.7.1,Coordinación y documentación del núcleo: Indicadores ambientales e imputación comercial de consumo — lote 1/1,1.5,E2 Desarrollo,Coordinación y documentación del núcleo: Indicadores ambientales e imputación comercial de consumo — lote 1/1,Resultado de la ficha de familia y del paquete original; registro individual por código/ventana,"No duplicar padres, informes, ingeniería ni cobertura; no incluye horas de contraparte ni obras/adquisiciones del cliente","Lote identificado de reglas, contratos, construcción, pruebas o documentación del componente; evidencia versionada, revisión independiente y trazabilidad al flujo UCP. No reconstruye identidad, canales ni adaptadores comunes.",Ignacio Silva,53,J:53,"Asignación y cuadrante integrado por código; entornos, usuarios y habilitaciones autorizados",CA-18/19; SD5 MediciónConsolidada; modelo UCP y conciliación de alcance 1.4–1.6,2028-02-15,2028-02-17,1.5.3.5.6.1,Recepción por etapa o control del periodo; no acredita ejecución,CA-18/19; SD5 MediciónConsolidada; modelo UCP y conciliación de alcance 1.4–1.6
1.6.1.4.4.1,"Análisis de reglas, excepciones y protocolo: Espera y gestión contractual completa — lote 1/1",1.6,E2 Desarrollo,"Análisis de reglas, excepciones y protocolo: Espera y gestión contractual completa — lote 1/1",Resultado de la ficha de familia y del paquete original; registro individual por código/ventana,"No duplicar padres, informes, ingeniería ni cobertura; no incluye horas de contraparte ni obras/adquisiciones del cliente","Lote identificado de reglas, contratos, construcción, pruebas o documentación del componente; evidencia versionada, revisión independiente y trazabilidad al flujo UCP. No reconstruye identidad, canales ni adaptadores comunes.",Ulysses Barreto,51,A:51,"Asignación y cuadrante integrado por código; entornos, usuarios y habilitaciones autorizados",AMA/ADM; SD3 reparto E2; modelo UCP y conciliación de alcance 1.4–1.6,2027-12-21,2027-12-23,1.6.1.4.1,Recepción por etapa o control del periodo; no acredita ejecución,AMA/ADM; SD3 reparto E2; modelo UCP y conciliación de alcance 1.4–1.6
1.6.1.4.4.2,Diseño de datos y restricciones del núcleo: Espera y gestión contractual completa — lote 1/1,1.6,E2 Desarrollo,Diseño de datos y restricciones del núcleo: Espera y gestión contractual completa — lote 1/1,Resultado de la ficha de familia y del paquete original; registro individual por código/ventana,"No duplicar padres, informes, ingeniería ni cobertura; no incluye horas de contraparte ni obras/adquisiciones del cliente","Lote identificado de reglas, contratos, construcción, pruebas o documentación del componente; evidencia versionada, revisión independiente y trazabilidad al flujo UCP. No reconstruye identidad, canales ni adaptadores comunes.",Nicolás Torfan,44,D:44,"Asignación y cuadrante integrado por código; entornos, usuarios y habilitaciones autorizados",AMA/ADM; SD3 reparto E2; modelo UCP y conciliación de alcance 1.4–1.6,2027-12-22,2027-12-24,1.6.1.4.1,Recepción por etapa o control del periodo; no acredita ejecución,AMA/ADM; SD3 reparto E2; modelo UCP y conciliación de alcance 1.4–1.6
1.6.1.4.4.3,Diseño de contratos internos y composición: Espera y gestión contractual completa — lote 1/2,1.6,E2 Desarrollo,Diseño de contratos internos y composición: Espera y gestión contractual completa — lote 1/2,Resultado de la ficha de familia y del paquete original; registro individual por código/ventana,"No duplicar padres, informes, ingeniería ni cobertura; no incluye horas de contraparte ni obras/adquisiciones del cliente","Lote identificado de reglas, contratos, construcción, pruebas o documentación del componente; evidencia versionada, revisión independiente y trazabilidad al flujo UCP. No reconstruye identidad, canales ni adaptadores comunes.",Fernando Guerrero,33,I:33,"Asignación y cuadrante integrado por código; entornos, usuarios y habilitaciones autorizados",AMA/ADM; SD3 reparto E2; modelo UCP y conciliación de alcance 1.4–1.6,2027-12-23,2027-12-24,1.6.1.4.1,Recepción por etapa o control del periodo; no acredita ejecución,AMA/ADM; SD3 reparto E2; modelo UCP y conciliación de alcance 1.4–1.6
1.6.1.4.4.4,Diseño de contratos internos y composición: Espera y gestión contractual completa — lote 2/2,1.6,E2 Desarrollo,Diseño de contratos internos y composición: Espera y gestión contractual completa — lote 2/2,Resultado de la ficha de familia y del paquete original; registro individual por código/ventana,"No duplicar padres, informes, ingeniería ni cobertura; no incluye horas de contraparte ni obras/adquisiciones del cliente","Lote identificado de reglas, contratos, construcción, pruebas o documentación del componente; evidencia versionada, revisión independiente y trazabilidad al flujo UCP. No reconstruye identidad, canales ni adaptadores comunes.",Fernando Guerrero,32,I:32,"Asignación y cuadrante integrado por código; entornos, usuarios y habilitaciones autorizados",AMA/ADM; SD3 reparto E2; modelo UCP y conciliación de alcance 1.4–1.6,2027-12-24,2027-12-28,1.6.1.4.1,Recepción por etapa o control del periodo; no acredita ejecución,AMA/ADM; SD3 reparto E2; modelo UCP y conciliación de alcance 1.4–1.6
1.6.1.4.5.1,Construcción funcional y pruebas unitarias: Espera y gestión contractual completa — lote 1/4,1.6,E2 Desarrollo,Construcción funcional y pruebas unitarias: Espera y gestión contractual completa — lote 1/4,Resultado de la ficha de familia y del paquete original; registro individual por código/ventana,"No duplicar padres, informes, ingeniería ni cobertura; no incluye horas de contraparte ni obras/adquisiciones del cliente","Lote identificado de reglas, contratos, construcción, pruebas o documentación del componente; evidencia versionada, revisión independiente y trazabilidad al flujo UCP. No reconstruye identidad, canales ni adaptadores comunes.",Nikolai Navea,51,V:51,"Asignación y cuadrante integrado por código; entornos, usuarios y habilitaciones autorizados",AMA/ADM; SD3 reparto E2; modelo UCP y conciliación de alcance 1.4–1.6,2028-01-24,2028-01-26,1.6.1.4.2;1.6.1.4.4.1;1.6.1.4.4.2;1.6.1.4.4.3;1.6.1.4.4.4,Recepción por etapa o control del periodo; no acredita ejecución,AMA/ADM; SD3 reparto E2; modelo UCP y conciliación de alcance 1.4–1.6
1.6.1.4.5.2,Construcción funcional y pruebas unitarias: Espera y gestión contractual completa — lote 2/4,1.6,E2 Desarrollo,Construcción funcional y pruebas unitarias: Espera y gestión contractual completa — lote 2/4,Resultado de la ficha de familia y del paquete original; registro individual por código/ventana,"No duplicar padres, informes, ingeniería ni cobertura; no incluye horas de contraparte ni obras/adquisiciones del cliente","Lote identificado de reglas, contratos, construcción, pruebas o documentación del componente; evidencia versionada, revisión independiente y trazabilidad al flujo UCP. No reconstruye identidad, canales ni adaptadores comunes.",Nikolai Navea,51,V:51,"Asignación y cuadrante integrado por código; entornos, usuarios y habilitaciones autorizados",AMA/ADM; SD3 reparto E2; modelo UCP y conciliación de alcance 1.4–1.6,2028-01-26,2028-01-28,1.6.1.4.2;1.6.1.4.4.1;1.6.1.4.4.2;1.6.1.4.4.3;1.6.1.4.4.4,Recepción por etapa o control del periodo; no acredita ejecución,AMA/ADM; SD3 reparto E2; modelo UCP y conciliación de alcance 1.4–1.6
1.6.1.4.5.3,Construcción funcional y pruebas unitarias: Espera y gestión contractual completa — lote 3/4,1.6,E2 Desarrollo,Construcción funcional y pruebas unitarias: Espera y gestión contractual completa — lote 3/4,Resultado de la ficha de familia y del paquete original; registro individual por código/ventana,"No duplicar padres, informes, ingeniería ni cobertura; no incluye horas de contraparte ni obras/adquisiciones del cliente","Lote identificado de reglas, contratos, construcción, pruebas o documentación del componente; evidencia versionada, revisión independiente y trazabilidad al flujo UCP. No reconstruye identidad, canales ni adaptadores comunes.",Nikolai Navea,51,V:51,"Asignación y cuadrante integrado por código; entornos, usuarios y habilitaciones autorizados",AMA/ADM; SD3 reparto E2; modelo UCP y conciliación de alcance 1.4–1.6,2028-01-20,2028-01-24,1.6.1.4.2;1.6.1.4.4.1;1.6.1.4.4.2;1.6.1.4.4.3;1.6.1.4.4.4,Recepción por etapa o control del periodo; no acredita ejecución,AMA/ADM; SD3 reparto E2; modelo UCP y conciliación de alcance 1.4–1.6
1.6.1.4.5.4,Construcción funcional y pruebas unitarias: Espera y gestión contractual completa — lote 4/4,1.6,E2 Desarrollo,Construcción funcional y pruebas unitarias: Espera y gestión contractual completa — lote 4/4,Resultado de la ficha de familia y del paquete original; registro individual por código/ventana,"No duplicar padres, informes, ingeniería ni cobertura; no incluye horas de contraparte ni obras/adquisiciones del cliente","Lote identificado de reglas, contratos, construcción, pruebas o documentación del componente; evidencia versionada, revisión independiente y trazabilidad al flujo UCP. No reconstruye identidad, canales ni adaptadores comunes.",Nikolai Navea,50,V:50,"Asignación y cuadrante integrado por código; entornos, usuarios y habilitaciones autorizados",AMA/ADM; SD3 reparto E2; modelo UCP y conciliación de alcance 1.4–1.6,2028-01-24,2028-01-26,1.6.1.4.2;1.6.1.4.4.1;1.6.1.4.4.2;1.6.1.4.4.3;1.6.1.4.4.4,Recepción por etapa o control del periodo; no acredita ejecución,AMA/ADM; SD3 reparto E2; modelo UCP y conciliación de alcance 1.4–1.6
1.6.1.4.6.1,"Verificación del núcleo, regresión y evidencia: Espera y gestión contractual completa — lote 1/2",1.6,E2 Desarrollo,"Verificación del núcleo, regresión y evidencia: Espera y gestión contractual completa — lote 1/2",Resultado de la ficha de familia y del paquete original; registro individual por código/ventana,"No duplicar padres, informes, ingeniería ni cobertura; no incluye horas de contraparte ni obras/adquisiciones del cliente","Lote identificado de reglas, contratos, construcción, pruebas o documentación del componente; evidencia versionada, revisión independiente y trazabilidad al flujo UCP. No reconstruye identidad, canales ni adaptadores comunes.",Davor Serey,49,Q:49,"Asignación y cuadrante integrado por código; entornos, usuarios y habilitaciones autorizados",AMA/ADM; SD3 reparto E2; modelo UCP y conciliación de alcance 1.4–1.6,2028-02-22,2028-02-24,1.6.1.4.3;1.6.1.4.5.1;1.6.1.4.5.2;1.6.1.4.5.3;1.6.1.4.5.4,Recepción por etapa o control del periodo; no acredita ejecución,AMA/ADM; SD3 reparto E2; modelo UCP y conciliación de alcance 1.4–1.6
1.6.1.4.6.2,"Verificación del núcleo, regresión y evidencia: Espera y gestión contractual completa — lote 2/2",1.6,E2 Desarrollo,"Verificación del núcleo, regresión y evidencia: Espera y gestión contractual completa — lote 2/2",Resultado de la ficha de familia y del paquete original; registro individual por código/ventana,"No duplicar padres, informes, ingeniería ni cobertura; no incluye horas de contraparte ni obras/adquisiciones del cliente","Lote identificado de reglas, contratos, construcción, pruebas o documentación del componente; evidencia versionada, revisión independiente y trazabilidad al flujo UCP. No reconstruye identidad, canales ni adaptadores comunes.",Davor Serey,48,Q:48,"Asignación y cuadrante integrado por código; entornos, usuarios y habilitaciones autorizados",AMA/ADM; SD3 reparto E2; modelo UCP y conciliación de alcance 1.4–1.6,2028-02-24,2028-02-28,1.6.1.4.3;1.6.1.4.5.1;1.6.1.4.5.2;1.6.1.4.5.3;1.6.1.4.5.4,Recepción por etapa o control del periodo; no acredita ejecución,AMA/ADM; SD3 reparto E2; modelo UCP y conciliación de alcance 1.4–1.6
1.6.1.4.7.1,Coordinación y documentación del núcleo: Espera y gestión contractual completa — lote 1/2,1.6,E2 Desarrollo,Coordinación y documentación del núcleo: Espera y gestión contractual completa — lote 1/2,Resultado de la ficha de familia y del paquete original; registro individual por código/ventana,"No duplicar padres, informes, ingeniería ni cobertura; no incluye horas de contraparte ni obras/adquisiciones del cliente","Lote identificado de reglas, contratos, construcción, pruebas o documentación del componente; evidencia versionada, revisión independiente y trazabilidad al flujo UCP. No reconstruye identidad, canales ni adaptadores comunes.",Ignacio Silva,53,J:53,"Asignación y cuadrante integrado por código; entornos, usuarios y habilitaciones autorizados",AMA/ADM; SD3 reparto E2; modelo UCP y conciliación de alcance 1.4–1.6,2028-02-28,2028-03-01,1.6.1.4.6.1;1.6.1.4.6.2,Recepción por etapa o control del periodo; no acredita ejecución,AMA/ADM; SD3 reparto E2; modelo UCP y conciliación de alcance 1.4–1.6
1.6.1.4.7.2,Coordinación y documentación del núcleo: Espera y gestión contractual completa — lote 2/2,1.6,E2 Desarrollo,Coordinación y documentación del núcleo: Espera y gestión contractual completa — lote 2/2,Resultado de la ficha de familia y del paquete original; registro individual por código/ventana,"No duplicar padres, informes, ingeniería ni cobertura; no incluye horas de contraparte ni obras/adquisiciones del cliente","Lote identificado de reglas, contratos, construcción, pruebas o documentación del componente; evidencia versionada, revisión independiente y trazabilidad al flujo UCP. No reconstruye identidad, canales ni adaptadores comunes.",Ignacio Silva,53,J:53,"Asignación y cuadrante integrado por código; entornos, usuarios y habilitaciones autorizados",AMA/ADM; SD3 reparto E2; modelo UCP y conciliación de alcance 1.4–1.6,2028-02-29,2028-03-02,1.6.1.4.6.1;1.6.1.4.6.2,Recepción por etapa o control del periodo; no acredita ejecución,AMA/ADM; SD3 reparto E2; modelo UCP y conciliación de alcance 1.4–1.6
1.6.2.1.4.1,"Análisis de reglas, excepciones y protocolo: Hechos facturables, tarifas y lotes de envío — lote 1/1",1.6,E2 Desarrollo,"Análisis de reglas, excepciones y protocolo: Hechos facturables, tarifas y lotes de envío — lote 1/1",Resultado de la ficha de familia y del paquete original; registro individual por código/ventana,"No duplicar padres, informes, ingeniería ni cobertura; no incluye horas de contraparte ni obras/adquisiciones del cliente","Lote identificado de reglas, contratos, construcción, pruebas o documentación del componente; evidencia versionada, revisión independiente y trazabilidad al flujo UCP. No reconstruye identidad, canales ni adaptadores comunes.",Ulysses Barreto,15,A:15,"Asignación y cuadrante integrado por código; entornos, usuarios y habilitaciones autorizados",FAC; SD5 Finanzas y cobranza; modelo UCP y conciliación de alcance 1.4–1.6,2027-12-03,2027-12-07,1.6.2.1.1,Recepción por etapa o control del periodo; no acredita ejecución,FAC; SD5 Finanzas y cobranza; modelo UCP y conciliación de alcance 1.4–1.6
1.6.2.1.4.2,"Diseño de datos y restricciones del núcleo: Hechos facturables, tarifas y lotes de envío — lote 1/1",1.6,E2 Desarrollo,"Diseño de datos y restricciones del núcleo: Hechos facturables, tarifas y lotes de envío — lote 1/1",Resultado de la ficha de familia y del paquete original; registro individual por código/ventana,"No duplicar padres, informes, ingeniería ni cobertura; no incluye horas de contraparte ni obras/adquisiciones del cliente","Lote identificado de reglas, contratos, construcción, pruebas o documentación del componente; evidencia versionada, revisión independiente y trazabilidad al flujo UCP. No reconstruye identidad, canales ni adaptadores comunes.",Nicolás Torfan,15,D:15,"Asignación y cuadrante integrado por código; entornos, usuarios y habilitaciones autorizados",FAC; SD5 Finanzas y cobranza; modelo UCP y conciliación de alcance 1.4–1.6,2027-12-03,2027-12-07,1.6.2.1.1,Recepción por etapa o control del periodo; no acredita ejecución,FAC; SD5 Finanzas y cobranza; modelo UCP y conciliación de alcance 1.4–1.6
1.6.2.1.4.3,"Diseño de contratos internos y composición: Hechos facturables, tarifas y lotes de envío — lote 1/1",1.6,E2 Desarrollo,"Diseño de contratos internos y composición: Hechos facturables, tarifas y lotes de envío — lote 1/1",Resultado de la ficha de familia y del paquete original; registro individual por código/ventana,"No duplicar padres, informes, ingeniería ni cobertura; no incluye horas de contraparte ni obras/adquisiciones del cliente","Lote identificado de reglas, contratos, construcción, pruebas o documentación del componente; evidencia versionada, revisión independiente y trazabilidad al flujo UCP. No reconstruye identidad, canales ni adaptadores comunes.",Fernando Guerrero,23,I:23,"Asignación y cuadrante integrado por código; entornos, usuarios y habilitaciones autorizados",FAC; SD5 Finanzas y cobranza; modelo UCP y conciliación de alcance 1.4–1.6,2027-12-03,2027-12-06,1.6.2.1.1,Recepción por etapa o control del periodo; no acredita ejecución,FAC; SD5 Finanzas y cobranza; modelo UCP y conciliación de alcance 1.4–1.6
1.6.2.1.5.1,"Construcción funcional y pruebas unitarias: Hechos facturables, tarifas y lotes de envío — lote 1/1",1.6,E2 Desarrollo,"Construcción funcional y pruebas unitarias: Hechos facturables, tarifas y lotes de envío — lote 1/1",Resultado de la ficha de familia y del paquete original; registro individual por código/ventana,"No duplicar padres, informes, ingeniería ni cobertura; no incluye horas de contraparte ni obras/adquisiciones del cliente","Lote identificado de reglas, contratos, construcción, pruebas o documentación del componente; evidencia versionada, revisión independiente y trazabilidad al flujo UCP. No reconstruye identidad, canales ni adaptadores comunes.",Nikolai Navea,61,V:61,"Asignación y cuadrante integrado por código; entornos, usuarios y habilitaciones autorizados",FAC; SD5 Finanzas y cobranza; modelo UCP y conciliación de alcance 1.4–1.6,2028-01-24,2028-01-26,1.6.2.1.2;1.6.2.1.4.1;1.6.2.1.4.2;1.6.2.1.4.3,Recepción por etapa o control del periodo; no acredita ejecución,FAC; SD5 Finanzas y cobranza; modelo UCP y conciliación de alcance 1.4–1.6
1.6.2.1.6.1,"Verificación del núcleo, regresión y evidencia: Hechos facturables, tarifas y lotes de envío — lote 1/1",1.6,E2 Desarrollo,"Verificación del núcleo, regresión y evidencia: Hechos facturables, tarifas y lotes de envío — lote 1/1",Resultado de la ficha de familia y del paquete original; registro individual por código/ventana,"No duplicar padres, informes, ingeniería ni cobertura; no incluye horas de contraparte ni obras/adquisiciones del cliente","Lote identificado de reglas, contratos, construcción, pruebas o documentación del componente; evidencia versionada, revisión independiente y trazabilidad al flujo UCP. No reconstruye identidad, canales ni adaptadores comunes.",Davor Serey,45,Q:45,"Asignación y cuadrante integrado por código; entornos, usuarios y habilitaciones autorizados",FAC; SD5 Finanzas y cobranza; modelo UCP y conciliación de alcance 1.4–1.6,2028-02-03,2028-02-07,1.6.2.1.3;1.6.2.1.5.1,Recepción por etapa o control del periodo; no acredita ejecución,FAC; SD5 Finanzas y cobranza; modelo UCP y conciliación de alcance 1.4–1.6
1.6.2.1.7.1,"Coordinación y documentación del núcleo: Hechos facturables, tarifas y lotes de envío — lote 1/1",1.6,E2 Desarrollo,"Coordinación y documentación del núcleo: Hechos facturables, tarifas y lotes de envío — lote 1/1",Resultado de la ficha de familia y del paquete original; registro individual por código/ventana,"No duplicar padres, informes, ingeniería ni cobertura; no incluye horas de contraparte ni obras/adquisiciones del cliente","Lote identificado de reglas, contratos, construcción, pruebas o documentación del componente; evidencia versionada, revisión independiente y trazabilidad al flujo UCP. No reconstruye identidad, canales ni adaptadores comunes.",Ignacio Silva,53,J:53,"Asignación y cuadrante integrado por código; entornos, usuarios y habilitaciones autorizados",FAC; SD5 Finanzas y cobranza; modelo UCP y conciliación de alcance 1.4–1.6,2028-02-07,2028-02-09,1.6.2.1.6.1,Recepción por etapa o control del periodo; no acredita ejecución,FAC; SD5 Finanzas y cobranza; modelo UCP y conciliación de alcance 1.4–1.6
1.6.2.2.4.1,"Análisis de reglas, excepciones y protocolo: Respuesta contable, pagos y saldos informados — lote 1/1",1.6,E2 Desarrollo,"Análisis de reglas, excepciones y protocolo: Respuesta contable, pagos y saldos informados — lote 1/1",Resultado de la ficha de familia y del paquete original; registro individual por código/ventana,"No duplicar padres, informes, ingeniería ni cobertura; no incluye horas de contraparte ni obras/adquisiciones del cliente","Lote identificado de reglas, contratos, construcción, pruebas o documentación del componente; evidencia versionada, revisión independiente y trazabilidad al flujo UCP. No reconstruye identidad, canales ni adaptadores comunes.",Ulysses Barreto,15,A:15,"Asignación y cuadrante integrado por código; entornos, usuarios y habilitaciones autorizados",FAC; SD5 autoridad externa; modelo UCP y conciliación de alcance 1.4–1.6,2027-12-20,2027-12-22,1.6.2.2.1,Recepción por etapa o control del periodo; no acredita ejecución,FAC; SD5 autoridad externa; modelo UCP y conciliación de alcance 1.4–1.6
1.6.2.2.4.2,"Diseño de datos y restricciones del núcleo: Respuesta contable, pagos y saldos informados — lote 1/1",1.6,E2 Desarrollo,"Diseño de datos y restricciones del núcleo: Respuesta contable, pagos y saldos informados — lote 1/1",Resultado de la ficha de familia y del paquete original; registro individual por código/ventana,"No duplicar padres, informes, ingeniería ni cobertura; no incluye horas de contraparte ni obras/adquisiciones del cliente","Lote identificado de reglas, contratos, construcción, pruebas o documentación del componente; evidencia versionada, revisión independiente y trazabilidad al flujo UCP. No reconstruye identidad, canales ni adaptadores comunes.",Nicolás Torfan,15,D:15,"Asignación y cuadrante integrado por código; entornos, usuarios y habilitaciones autorizados",FAC; SD5 autoridad externa; modelo UCP y conciliación de alcance 1.4–1.6,2027-12-22,2027-12-24,1.6.2.2.1,Recepción por etapa o control del periodo; no acredita ejecución,FAC; SD5 autoridad externa; modelo UCP y conciliación de alcance 1.4–1.6
1.6.2.2.4.3,"Diseño de contratos internos y composición: Respuesta contable, pagos y saldos informados — lote 1/1",1.6,E2 Desarrollo,"Diseño de contratos internos y composición: Respuesta contable, pagos y saldos informados — lote 1/1",Resultado de la ficha de familia y del paquete original; registro individual por código/ventana,"No duplicar padres, informes, ingeniería ni cobertura; no incluye horas de contraparte ni obras/adquisiciones del cliente","Lote identificado de reglas, contratos, construcción, pruebas o documentación del componente; evidencia versionada, revisión independiente y trazabilidad al flujo UCP. No reconstruye identidad, canales ni adaptadores comunes.",Fernando Guerrero,23,I:23,"Asignación y cuadrante integrado por código; entornos, usuarios y habilitaciones autorizados",FAC; SD5 autoridad externa; modelo UCP y conciliación de alcance 1.4–1.6,2027-12-24,2027-12-28,1.6.2.2.1,Recepción por etapa o control del periodo; no acredita ejecución,FAC; SD5 autoridad externa; modelo UCP y conciliación de alcance 1.4–1.6
1.6.2.2.5.1,"Construcción funcional y pruebas unitarias: Respuesta contable, pagos y saldos informados — lote 1/1",1.6,E2 Desarrollo,"Construcción funcional y pruebas unitarias: Respuesta contable, pagos y saldos informados — lote 1/1",Resultado de la ficha de familia y del paquete original; registro individual por código/ventana,"No duplicar padres, informes, ingeniería ni cobertura; no incluye horas de contraparte ni obras/adquisiciones del cliente","Lote identificado de reglas, contratos, construcción, pruebas o documentación del componente; evidencia versionada, revisión independiente y trazabilidad al flujo UCP. No reconstruye identidad, canales ni adaptadores comunes.",Nikolai Navea,61,V:61,"Asignación y cuadrante integrado por código; entornos, usuarios y habilitaciones autorizados",FAC; SD5 autoridad externa; modelo UCP y conciliación de alcance 1.4–1.6,2028-01-26,2028-01-28,1.6.2.2.2;1.6.2.2.4.1;1.6.2.2.4.2;1.6.2.2.4.3,Recepción por etapa o control del periodo; no acredita ejecución,FAC; SD5 autoridad externa; modelo UCP y conciliación de alcance 1.4–1.6
1.6.2.2.6.1,"Verificación del núcleo, regresión y evidencia: Respuesta contable, pagos y saldos informados — lote 1/1",1.6,E2 Desarrollo,"Verificación del núcleo, regresión y evidencia: Respuesta contable, pagos y saldos informados — lote 1/1",Resultado de la ficha de familia y del paquete original; registro individual por código/ventana,"No duplicar padres, informes, ingeniería ni cobertura; no incluye horas de contraparte ni obras/adquisiciones del cliente","Lote identificado de reglas, contratos, construcción, pruebas o documentación del componente; evidencia versionada, revisión independiente y trazabilidad al flujo UCP. No reconstruye identidad, canales ni adaptadores comunes.",Davor Serey,45,Q:45,"Asignación y cuadrante integrado por código; entornos, usuarios y habilitaciones autorizados",FAC; SD5 autoridad externa; modelo UCP y conciliación de alcance 1.4–1.6,2028-02-24,2028-02-28,1.6.2.2.3;1.6.2.2.5.1,Recepción por etapa o control del periodo; no acredita ejecución,FAC; SD5 autoridad externa; modelo UCP y conciliación de alcance 1.4–1.6
1.6.2.2.7.1,"Coordinación y documentación del núcleo: Respuesta contable, pagos y saldos informados — lote 1/1",1.6,E2 Desarrollo,"Coordinación y documentación del núcleo: Respuesta contable, pagos y saldos informados — lote 1/1",Resultado de la ficha de familia y del paquete original; registro individual por código/ventana,"No duplicar padres, informes, ingeniería ni cobertura; no incluye horas de contraparte ni obras/adquisiciones del cliente","Lote identificado de reglas, contratos, construcción, pruebas o documentación del componente; evidencia versionada, revisión independiente y trazabilidad al flujo UCP. No reconstruye identidad, canales ni adaptadores comunes.",Ignacio Silva,53,J:53,"Asignación y cuadrante integrado por código; entornos, usuarios y habilitaciones autorizados",FAC; SD5 autoridad externa; modelo UCP y conciliación de alcance 1.4–1.6,2028-03-01,2028-03-03,1.6.2.2.6.1,Recepción por etapa o control del periodo; no acredita ejecución,FAC; SD5 autoridad externa; modelo UCP y conciliación de alcance 1.4–1.6
1.6.2.3.4.1,"Análisis de reglas, excepciones y protocolo: Cobranza y medidas con decisión competente — lote 1/1",1.6,E2 Desarrollo,"Análisis de reglas, excepciones y protocolo: Cobranza y medidas con decisión competente — lote 1/1",Resultado de la ficha de familia y del paquete original; registro individual por código/ventana,"No duplicar padres, informes, ingeniería ni cobertura; no incluye horas de contraparte ni obras/adquisiciones del cliente","Lote identificado de reglas, contratos, construcción, pruebas o documentación del componente; evidencia versionada, revisión independiente y trazabilidad al flujo UCP. No reconstruye identidad, canales ni adaptadores comunes.",Ulysses Barreto,15,A:15,"Asignación y cuadrante integrado por código; entornos, usuarios y habilitaciones autorizados",FAC; DEC-17/18; modelo UCP y conciliación de alcance 1.4–1.6,2027-12-03,2027-12-07,1.6.2.3.1,Recepción por etapa o control del periodo; no acredita ejecución,FAC; DEC-17/18; modelo UCP y conciliación de alcance 1.4–1.6
1.6.2.3.4.2,Diseño de datos y restricciones del núcleo: Cobranza y medidas con decisión competente — lote 1/1,1.6,E2 Desarrollo,Diseño de datos y restricciones del núcleo: Cobranza y medidas con decisión competente — lote 1/1,Resultado de la ficha de familia y del paquete original; registro individual por código/ventana,"No duplicar padres, informes, ingeniería ni cobertura; no incluye horas de contraparte ni obras/adquisiciones del cliente","Lote identificado de reglas, contratos, construcción, pruebas o documentación del componente; evidencia versionada, revisión independiente y trazabilidad al flujo UCP. No reconstruye identidad, canales ni adaptadores comunes.",Nicolás Torfan,15,D:15,"Asignación y cuadrante integrado por código; entornos, usuarios y habilitaciones autorizados",FAC; DEC-17/18; modelo UCP y conciliación de alcance 1.4–1.6,2027-12-07,2027-12-10,1.6.2.3.1,Recepción por etapa o control del periodo; no acredita ejecución,FAC; DEC-17/18; modelo UCP y conciliación de alcance 1.4–1.6
1.6.2.3.4.3,Diseño de contratos internos y composición: Cobranza y medidas con decisión competente — lote 1/1,1.6,E2 Desarrollo,Diseño de contratos internos y composición: Cobranza y medidas con decisión competente — lote 1/1,Resultado de la ficha de familia y del paquete original; registro individual por código/ventana,"No duplicar padres, informes, ingeniería ni cobertura; no incluye horas de contraparte ni obras/adquisiciones del cliente","Lote identificado de reglas, contratos, construcción, pruebas o documentación del componente; evidencia versionada, revisión independiente y trazabilidad al flujo UCP. No reconstruye identidad, canales ni adaptadores comunes.",Fernando Guerrero,23,I:23,"Asignación y cuadrante integrado por código; entornos, usuarios y habilitaciones autorizados",FAC; DEC-17/18; modelo UCP y conciliación de alcance 1.4–1.6,2027-12-06,2027-12-09,1.6.2.3.1,Recepción por etapa o control del periodo; no acredita ejecución,FAC; DEC-17/18; modelo UCP y conciliación de alcance 1.4–1.6
1.6.2.3.5.1,Construcción funcional y pruebas unitarias: Cobranza y medidas con decisión competente — lote 1/1,1.6,E2 Desarrollo,Construcción funcional y pruebas unitarias: Cobranza y medidas con decisión competente — lote 1/1,Resultado de la ficha de familia y del paquete original; registro individual por código/ventana,"No duplicar padres, informes, ingeniería ni cobertura; no incluye horas de contraparte ni obras/adquisiciones del cliente","Lote identificado de reglas, contratos, construcción, pruebas o documentación del componente; evidencia versionada, revisión independiente y trazabilidad al flujo UCP. No reconstruye identidad, canales ni adaptadores comunes.",Nikolai Navea,61,V:61,"Asignación y cuadrante integrado por código; entornos, usuarios y habilitaciones autorizados",FAC; DEC-17/18; modelo UCP y conciliación de alcance 1.4–1.6,2028-01-24,2028-01-26,1.6.2.3.2;1.6.2.3.4.1;1.6.2.3.4.2;1.6.2.3.4.3,Recepción por etapa o control del periodo; no acredita ejecución,FAC; DEC-17/18; modelo UCP y conciliación de alcance 1.4–1.6
1.6.2.3.6.1,"Verificación del núcleo, regresión y evidencia: Cobranza y medidas con decisión competente — lote 1/1",1.6,E2 Desarrollo,"Verificación del núcleo, regresión y evidencia: Cobranza y medidas con decisión competente — lote 1/1",Resultado de la ficha de familia y del paquete original; registro individual por código/ventana,"No duplicar padres, informes, ingeniería ni cobertura; no incluye horas de contraparte ni obras/adquisiciones del cliente","Lote identificado de reglas, contratos, construcción, pruebas o documentación del componente; evidencia versionada, revisión independiente y trazabilidad al flujo UCP. No reconstruye identidad, canales ni adaptadores comunes.",Davor Serey,45,Q:45,"Asignación y cuadrante integrado por código; entornos, usuarios y habilitaciones autorizados",FAC; DEC-17/18; modelo UCP y conciliación de alcance 1.4–1.6,2028-02-08,2028-02-10,1.6.2.3.3;1.6.2.3.5.1,Recepción por etapa o control del periodo; no acredita ejecución,FAC; DEC-17/18; modelo UCP y conciliación de alcance 1.4–1.6
1.6.2.3.7.1,Coordinación y documentación del núcleo: Cobranza y medidas con decisión competente — lote 1/1,1.6,E2 Desarrollo,Coordinación y documentación del núcleo: Cobranza y medidas con decisión competente — lote 1/1,Resultado de la ficha de familia y del paquete original; registro individual por código/ventana,"No duplicar padres, informes, ingeniería ni cobertura; no incluye horas de contraparte ni obras/adquisiciones del cliente","Lote identificado de reglas, contratos, construcción, pruebas o documentación del componente; evidencia versionada, revisión independiente y trazabilidad al flujo UCP. No reconstruye identidad, canales ni adaptadores comunes.",Ignacio Silva,53,J:53,"Asignación y cuadrante integrado por código; entornos, usuarios y habilitaciones autorizados",FAC; DEC-17/18; modelo UCP y conciliación de alcance 1.4–1.6,2028-02-15,2028-02-17,1.6.2.3.6.1,Recepción por etapa o control del periodo; no acredita ejecución,FAC; DEC-17/18; modelo UCP y conciliación de alcance 1.4–1.6
1.6.2.4.4.1,"Análisis de reglas, excepciones y protocolo: Expedientes de custodia y exportación íntegra — lote 1/1",1.6,E2 Desarrollo,"Análisis de reglas, excepciones y protocolo: Expedientes de custodia y exportación íntegra — lote 1/1",Resultado de la ficha de familia y del paquete original; registro individual por código/ventana,"No duplicar padres, informes, ingeniería ni cobertura; no incluye horas de contraparte ni obras/adquisiciones del cliente","Lote identificado de reglas, contratos, construcción, pruebas o documentación del componente; evidencia versionada, revisión independiente y trazabilidad al flujo UCP. No reconstruye identidad, canales ni adaptadores comunes.",Ulysses Barreto,15,A:15,"Asignación y cuadrante integrado por código; entornos, usuarios y habilitaciones autorizados",FAC; C07 RT-05.15; 14 abandonadas; modelo UCP y conciliación de alcance 1.4–1.6,2027-12-20,2027-12-22,1.6.2.4.1,Recepción por etapa o control del periodo; no acredita ejecución,FAC; C07 RT-05.15; 14 abandonadas; modelo UCP y conciliación de alcance 1.4–1.6
1.6.2.4.4.2,Diseño de datos y restricciones del núcleo: Expedientes de custodia y exportación íntegra — lote 1/1,1.6,E2 Desarrollo,Diseño de datos y restricciones del núcleo: Expedientes de custodia y exportación íntegra — lote 1/1,Resultado de la ficha de familia y del paquete original; registro individual por código/ventana,"No duplicar padres, informes, ingeniería ni cobertura; no incluye horas de contraparte ni obras/adquisiciones del cliente","Lote identificado de reglas, contratos, construcción, pruebas o documentación del componente; evidencia versionada, revisión independiente y trazabilidad al flujo UCP. No reconstruye identidad, canales ni adaptadores comunes.",Nicolás Torfan,15,D:15,"Asignación y cuadrante integrado por código; entornos, usuarios y habilitaciones autorizados",FAC; C07 RT-05.15; 14 abandonadas; modelo UCP y conciliación de alcance 1.4–1.6,2027-12-22,2027-12-24,1.6.2.4.1,Recepción por etapa o control del periodo; no acredita ejecución,FAC; C07 RT-05.15; 14 abandonadas; modelo UCP y conciliación de alcance 1.4–1.6
1.6.2.4.4.3,Diseño de contratos internos y composición: Expedientes de custodia y exportación íntegra — lote 1/1,1.6,E2 Desarrollo,Diseño de contratos internos y composición: Expedientes de custodia y exportación íntegra — lote 1/1,Resultado de la ficha de familia y del paquete original; registro individual por código/ventana,"No duplicar padres, informes, ingeniería ni cobertura; no incluye horas de contraparte ni obras/adquisiciones del cliente","Lote identificado de reglas, contratos, construcción, pruebas o documentación del componente; evidencia versionada, revisión independiente y trazabilidad al flujo UCP. No reconstruye identidad, canales ni adaptadores comunes.",Fernando Guerrero,23,I:23,"Asignación y cuadrante integrado por código; entornos, usuarios y habilitaciones autorizados",FAC; C07 RT-05.15; 14 abandonadas; modelo UCP y conciliación de alcance 1.4–1.6,2027-12-20,2027-12-21,1.6.2.4.1,Recepción por etapa o control del periodo; no acredita ejecución,FAC; C07 RT-05.15; 14 abandonadas; modelo UCP y conciliación de alcance 1.4–1.6
1.6.2.4.5.1,Construcción funcional y pruebas unitarias: Expedientes de custodia y exportación íntegra — lote 1/1,1.6,E2 Desarrollo,Construcción funcional y pruebas unitarias: Expedientes de custodia y exportación íntegra — lote 1/1,Resultado de la ficha de familia y del paquete original; registro individual por código/ventana,"No duplicar padres, informes, ingeniería ni cobertura; no incluye horas de contraparte ni obras/adquisiciones del cliente","Lote identificado de reglas, contratos, construcción, pruebas o documentación del componente; evidencia versionada, revisión independiente y trazabilidad al flujo UCP. No reconstruye identidad, canales ni adaptadores comunes.",Nikolai Navea,61,V:61,"Asignación y cuadrante integrado por código; entornos, usuarios y habilitaciones autorizados",FAC; C07 RT-05.15; 14 abandonadas; modelo UCP y conciliación de alcance 1.4–1.6,2028-01-28,2028-02-01,1.6.2.4.2;1.6.2.4.4.1;1.6.2.4.4.2;1.6.2.4.4.3,Recepción por etapa o control del periodo; no acredita ejecución,FAC; C07 RT-05.15; 14 abandonadas; modelo UCP y conciliación de alcance 1.4–1.6
1.6.2.4.6.1,"Verificación del núcleo, regresión y evidencia: Expedientes de custodia y exportación íntegra — lote 1/1",1.6,E2 Desarrollo,"Verificación del núcleo, regresión y evidencia: Expedientes de custodia y exportación íntegra — lote 1/1",Resultado de la ficha de familia y del paquete original; registro individual por código/ventana,"No duplicar padres, informes, ingeniería ni cobertura; no incluye horas de contraparte ni obras/adquisiciones del cliente","Lote identificado de reglas, contratos, construcción, pruebas o documentación del componente; evidencia versionada, revisión independiente y trazabilidad al flujo UCP. No reconstruye identidad, canales ni adaptadores comunes.",Davor Serey,45,Q:45,"Asignación y cuadrante integrado por código; entornos, usuarios y habilitaciones autorizados",FAC; C07 RT-05.15; 14 abandonadas; modelo UCP y conciliación de alcance 1.4–1.6,2028-02-24,2028-02-28,1.6.2.4.3;1.6.2.4.5.1,Recepción por etapa o control del periodo; no acredita ejecución,FAC; C07 RT-05.15; 14 abandonadas; modelo UCP y conciliación de alcance 1.4–1.6
1.6.2.4.7.1,Coordinación y documentación del núcleo: Expedientes de custodia y exportación íntegra — lote 1/1,1.6,E2 Desarrollo,Coordinación y documentación del núcleo: Expedientes de custodia y exportación íntegra — lote 1/1,Resultado de la ficha de familia y del paquete original; registro individual por código/ventana,"No duplicar padres, informes, ingeniería ni cobertura; no incluye horas de contraparte ni obras/adquisiciones del cliente","Lote identificado de reglas, contratos, construcción, pruebas o documentación del componente; evidencia versionada, revisión independiente y trazabilidad al flujo UCP. No reconstruye identidad, canales ni adaptadores comunes.",Ignacio Silva,53,J:53,"Asignación y cuadrante integrado por código; entornos, usuarios y habilitaciones autorizados",FAC; C07 RT-05.15; 14 abandonadas; modelo UCP y conciliación de alcance 1.4–1.6,2028-03-02,2028-03-06,1.6.2.4.6.1,Recepción por etapa o control del periodo; no acredita ejecución,FAC; C07 RT-05.15; 14 abandonadas; modelo UCP y conciliación de alcance 1.4–1.6
1.12.13.21,Referentes y protocolo técnico transferidos,1.12.13,Operación,Referentes y protocolo técnico transferidos,"Mentoría mensual a referentes técnicos y suplentes; casos, transferencia y continuidad del conocimiento.","No duplicar mesa, estabilización, ingeniería correctiva ni salida; sin formación nueva o intervención productiva durante congelamiento.","Referente y suplente; agenda/casos; acta, documentación y verificación independiente; pendientes con dueño/plazo. No sustituye mesa, estabilización ni salida.",José Lara Arce,24,I:4;L:16;Q:4,MEN-IL-01 técnico implantación/integración y MEN-Q-01 verificación independiente; entorno seguro y referentes cliente,Inicio 2026-12-01; referentes designados; acompañamiento remoto de procedimientos vigentes durante congelamiento,2028-08-01,2028-08-31,CORTE-E2,Recepción mensual de mentoría,RT-22.07/08; BA89/90
1.12.13.22,Casos de recuperación y conciliación acompañados,1.12.13,Operación,Casos de recuperación y conciliación acompañados,"Mentoría mensual a referentes técnicos y suplentes; casos, transferencia y continuidad del conocimiento.","No duplicar mesa, estabilización, ingeniería correctiva ni salida; sin formación nueva o intervención productiva durante congelamiento.","Referente y suplente; agenda/casos; acta, documentación y verificación independiente; pendientes con dueño/plazo. No sustituye mesa, estabilización ni salida.",José Lara Arce,24,I:4;L:16;Q:4,MEN-IL-01 técnico implantación/integración y MEN-Q-01 verificación independiente; entorno seguro y referentes cliente,Inicio 2026-12-01; referentes designados; acompañamiento remoto de procedimientos vigentes durante congelamiento,2028-09-01,2028-09-29,1.12.13.21,Recepción mensual de mentoría,RT-22.07/08; BA89/90
1.12.13.23,Cambios e indicadores acompañados,1.12.13,Operación,Cambios e indicadores acompañados,"Mentoría mensual a referentes técnicos y suplentes; casos, transferencia y continuidad del conocimiento.","No duplicar mesa, estabilización, ingeniería correctiva ni salida; sin formación nueva o intervención productiva durante congelamiento.","Referente y suplente; agenda/casos; acta, documentación y verificación independiente; pendientes con dueño/plazo. No sustituye mesa, estabilización ni salida.",José Lara Arce,24,I:4;L:16;Q:4,MEN-IL-01 técnico implantación/integración y MEN-Q-01 verificación independiente; entorno seguro y referentes cliente,Inicio 2026-12-01; referentes designados; acompañamiento remoto de procedimientos vigentes durante congelamiento,2028-10-02,2028-10-31,1.12.13.22,Recepción mensual de mentoría,RT-22.07/08; BA89/90
1.12.13.24,Procedimientos estacionales transferidos,1.12.13,Operación,Procedimientos estacionales transferidos,"Mentoría mensual a referentes técnicos y suplentes; casos, transferencia y continuidad del conocimiento.","No duplicar mesa, estabilización, ingeniería correctiva ni salida; sin formación nueva o intervención productiva durante congelamiento.","Referente y suplente; agenda/casos; acta, documentación y verificación independiente; pendientes con dueño/plazo. No sustituye mesa, estabilización ni salida.",José Lara Arce,24,I:4;L:16;Q:4,MEN-IL-01 técnico implantación/integración y MEN-Q-01 verificación independiente; entorno seguro y referentes cliente,Inicio 2026-12-01; referentes designados; acompañamiento remoto de procedimientos vigentes durante congelamiento,2028-11-02,2028-11-30,1.12.13.23,Recepción mensual de mentoría,RT-22.07/08; BA89/90
1.12.13.25,Casos y suplencia acompañados en congelamiento,1.12.13,Operación,Casos y suplencia acompañados en congelamiento,"Mentoría mensual a referentes técnicos y suplentes; casos, transferencia y continuidad del conocimiento.","No duplicar mesa, estabilización, ingeniería correctiva ni salida; sin formación nueva o intervención productiva durante congelamiento.","Referente y suplente; agenda/casos; acta, documentación y verificación independiente; pendientes con dueño/plazo. No sustituye mesa, estabilización ni salida.",José Lara Arce,24,I:4;L:16;Q:4,MEN-IL-01 técnico implantación/integración y MEN-Q-01 verificación independiente; entorno seguro y referentes cliente,Inicio 2026-12-01; referentes designados; acompañamiento remoto de procedimientos vigentes durante congelamiento,2028-12-01,2028-12-29,1.12.13.24,Recepción mensual de mentoría,RT-22.07/08; BA89/90
1.12.13.26,Transferencia técnica y continuidad del conocimiento recibidas,1.12.13,Operación,Transferencia técnica y continuidad del conocimiento recibidas,"Mentoría mensual a referentes técnicos y suplentes; casos, transferencia y continuidad del conocimiento.","No duplicar mesa, estabilización, ingeniería correctiva ni salida; sin formación nueva o intervención productiva durante congelamiento.","Referente y suplente; agenda/casos; acta, documentación y verificación independiente; pendientes con dueño/plazo. No sustituye mesa, estabilización ni salida.",José Lara Arce,24,I:4;L:16;Q:4,MEN-IL-01 técnico implantación/integración y MEN-Q-01 verificación independiente; entorno seguro y referentes cliente,Inicio 2026-12-01; referentes designados; acompañamiento remoto de procedimientos vigentes durante congelamiento,2029-01-02,2029-01-31,1.12.13.25,Recepción mensual de mentoría,RT-22.07/08; BA89/90
